# Pfizer Continuum Project Plan

How a schedule from MS Project changed from version to version. A marks actual dates.

## Version 1 (saved 2013-01-04)

Note of the change: Updated project plan for 2013.

| ID | WBS | Task | Duration | Start | Finish | Predecessors | Complete | Total float | Constraint |
| --- | --- | --- | --- | --- | --- | --- | --- | --- | --- |
| 1 | 1 | **caArray** | 271d | 2012-12-03 A | 2013-12-16 |  | 5% | 0d | start no earlier than 2012-12-03 |
| 2 | 1.1 | **caArray 2.5.1** | 151d | 2012-12-03 A | 2013-07-01 |  | 10% | 56d |  |
| 3 |  | MILESTONE: PROJECT KICKOFF | 1d | 2012-12-06 A | 2012-12-06 A |  | 100% |  | start no earlier than 2012-12-06 |
| 4 |  | User Support - Rembrandt, etc. | 3d | 2012-12-03 A | 2012-12-05 A |  | 100% |  |  |
| 5 |  | Support Apache upgrade of all tiers | 5d | 2012-12-06 A | 2012-12-12 A | 4 | 100% |  |  |
| 6 |  | Review TRANSCEND UAT plan | 1d | 2012-12-13 A | 2012-12-13 A | 5 | 100% |  |  |
| 7 |  | Vacation and Team Member Unavailability | 10d | 2012-12-14 A | 2012-12-27 A | 6 | 100% |  |  |
| 8 |  | OSDI: Obtain GitHub accounts for all team members | 1d | 2012-12-28 A | 2012-12-28 A | 7 | 100% |  |  |
| 9 |  | OSDI: Do initial analysis, generate author list, fill out checklist | 3d | 2012-12-31 A | 2013-01-02 A | 8 | 100% |  |  |
| 10 |  | Rewrite PMP in EPLC format and update Project Plan | 2d | 2013-01-03 A | 2013-01-04 A | 9 | 100% |  |  |
| 11 |  | OSDI: Obtain access to NCIP channel in GitHub (Dependency) | 5d | 2012-12-31 | 2013-01-04 | 8 |  | 58d |  |
| 12 |  | OSDI: Generate a local git copy | 2d | 2013-01-03 A | 2013-01-04 A | 9 | 100% |  |  |
| 13 |  | OSDI: Split software and tools from docs and test data. | 2d | 2013-01-07 | 2013-01-08 | 12 |  | 0d |  |
| 14 |  | OSDI: Migrate local git copy to GitHub under NCIP | 2d | 2013-01-09 | 2013-01-10 | 11, 13 |  | 0d |  |
| 15 |  | OSDI: Change license/copyright text and merge into GitHub repo. | 1d | 2013-01-11 | 2013-01-11 | 14 |  | 0d |  |
| 16 |  | OSDI: Make build changes. (Remove svn dependencies, pull jboss from the tools directory, etc.) | 5d | 2013-01-14 | 2013-01-18 | 15 |  | 0d |  |
| 17 |  | OSDI: Work with the Systems team to update and test the Dev AHP build. | 5d | 2013-01-21 | 2013-01-25 | 16 |  | 0d |  |
| 18 |  | OSDI: Final test of AHP build on Dev tier | 1d | 2013-01-28 | 2013-01-28 | 17 |  | 0d |  |
| 19 |  | OSDI: Update README and other documentation | 1d | 2013-01-29 | 2013-01-29 | 18 |  | 0d |  |
| 20 |  | OSDI: Work with the Systems team to update and test AHP build on other tiers | 16d | 2013-01-30 | 2013-02-20 | 19 |  | 91d |  |
| 21 |  | Bug Fixes - performance | 20d | 2013-01-30 | 2013-02-26 | 19 |  | 0d |  |
| 22 |  | Data Migration to File System | 30d | 2013-02-27 | 2013-04-09 | 21 |  | 0d |  |
| 23 |  | Section 508 Compliance Improvements | 10d | 2013-04-10 | 2013-04-23 | 22 |  | 25d |  |
| 24 |  | CSM/UPT upgrade | 10d | 2013-04-24 | 2013-05-07 | 23 |  | 25d |  |
| 25 |  | Automated Regression Testing on QA tier | 5d | 2013-04-10 | 2013-04-16 | 22 |  | 0d |  |
| 26 |  | Manual Regression Testing on QA tier | 4d | 2013-04-17 | 2013-04-22 | 25 |  | 0d |  |
| 27 |  | Installer Testing | 4d | 2013-04-23 | 2013-04-26 | 26 |  | 30d |  |
| 28 |  | Section 508 testing on QA tier | 2d | 2013-04-29 | 2013-04-30 | 27 |  | 30d |  |
| 29 |  | Appscan on QA tier | 20d | 2013-04-23 | 2013-05-20 | 26 |  | 0d |  |
| 30 |  | Test Results Review and Reporting | 3d | 2013-05-21 | 2013-05-23 | 29 |  | 0d |  |
| 31 |  | Deploy to STAGE | 1d | 2013-05-24 | 2013-05-24 | 30 |  | 0d |  |
| 32 |  | Appscan on STAGE tier | 20d | 2013-05-27 | 2013-06-21 | 31 |  | 56d |  |
| 33 |  | Automated Regression Testing on STAGE | 4d | 2013-05-27 | 2013-05-30 | 31 |  | 14d |  |
| 34 |  | API Testing on STAGE | 2d | 2013-05-31 | 2013-06-03 | 33 |  | 14d |  |
| 35 |  | Test Results Review and Reporting | 3d | 2013-06-24 | 2013-06-26 | 33, 34, 32 |  | 56d |  |
| 36 |  | Create release artifacts | 1d | 2013-05-27 | 2013-05-27 | 31 |  | 25d |  |
| 37 |  | Deploy to PRODUCTION | 2d | 2013-06-27 | 2013-06-28 | 35 |  | 56d |  |
| 38 |  | Update product landing page | 1d | 2013-07-01 | 2013-07-01 | 37 |  | 56d |  |
| 39 |  | QA smoke tests PRODUCTION | 1d | 2013-07-01 | 2013-07-01 | 37 |  | 56d |  |
| 40 |  | MILESTONE: RELEASE 2.5.1 | 0d | 2013-07-01 | 2013-07-01 | 39 |  | 56d | start no earlier than 2012-01-09 |
| 41 |  | User Support | 85d | 2012-12-03 | 2013-03-29 |  |  | 122d |  |
| 42 | 1.2 | **caArray 2.5.2** | 146d | 2013-05-27 | 2013-12-16 |  |  | 0d |  |
| 43 |  | FISMA POAM | 20d | 2013-05-27 | 2013-06-21 | 31 |  | 0d |  |
| 44 |  | Support Gforge Retirement | 5d | 2013-06-24 | 2013-06-28 | 43 |  | 0d |  |
| 45 |  | Bug Fixes | 20d | 2013-07-01 | 2013-07-26 | 44 |  | 0d |  |
| 46 |  | Java 7 upgrade | 40d | 2013-07-29 | 2013-09-20 | 45 |  | 0d |  |
| 47 |  | Any Improvements Requested | 10d | 2013-09-23 | 2013-10-04 | 46 |  | 0d |  |
| 48 |  | MILESTONE: EPLC REVIEW (as needed) | 2d | 2013-10-07 | 2013-10-08 | 47 |  | 0d | start no earlier than 2012-01-09 |
| 49 |  | Automated Regression Testing on QA tier | 5d | 2013-10-09 | 2013-10-15 | 48 |  | 0d |  |
| 50 |  | Manual Regression Testing on QA tier | 4d | 2013-10-16 | 2013-10-21 | 49 |  | 0d |  |
| 51 |  | Installer Testing | 4d | 2013-10-22 | 2013-10-25 | 50 |  | 34d |  |
| 52 |  | Section 508 testing on QA tier | 2d | 2013-10-28 | 2013-10-29 | 51 |  | 34d |  |
| 53 |  | Appscan on QA tier | 15d | 2013-10-22 | 2013-11-11 | 50 |  | 0d |  |
| 54 |  | Test Results Review and Reporting | 3d | 2013-11-12 | 2013-11-14 | 53 |  | 0d |  |
| 55 |  | Deploy to STAGE | 1d | 2013-11-15 | 2013-11-15 | 54 |  | 0d |  |
| 56 |  | Appscan on STAGE tier | 15d | 2013-11-18 | 2013-12-06 | 55 |  | 0d |  |
| 57 |  | Automated Regression Testing on STAGE | 4d | 2013-11-18 | 2013-11-21 | 55 |  | 9d |  |
| 58 |  | API Testing on STAGE | 2d | 2013-11-22 | 2013-11-25 | 57 |  | 9d |  |
| 59 |  | Test Results Review and Reporting | 3d | 2013-12-09 | 2013-12-11 | 56, 57, 58 |  | 0d |  |
| 60 |  | Create release artifacts | 1d | 2013-11-18 | 2013-11-18 | 55 |  | 20d |  |
| 61 |  | Deploy to PRODUCTION | 2d | 2013-12-12 | 2013-12-13 | 59 |  | 0d |  |
| 62 |  | Update product landing page | 0.5d | 2013-12-16 | 2013-12-16 | 61 |  | 0.5d |  |
| 63 |  | QA smoke tests PRODUCTION | 1d | 2013-12-16 | 2013-12-16 | 61 |  | 0d |  |
| 64 |  | MILESTONE: RELEASE 2.5.2 | 0d | 2013-12-16 | 2013-12-16 | 63 |  | 0d | start no earlier than 2012-01-09 |
| 65 |  | User Support | 88d | 2013-07-02 | 2013-10-31 | 2 |  | 56d |  |
| 68 |  | *QA and Systems are EXTERNAL resources/dependencies | 0d | 2012-12-03 | 2012-12-03 |  |  | 225d |  |

## Version 2 (saved 2013-02-05)

Note of the change: Committing changes made during the svn to git migration.

Last finish 2013-12-16 → 2013-11-29 (-17d). Complete tasks 9 → 15.

Removed: 41 User Support; 46 Java 7 upgrade

Changed:

| ID | Task | Start | Finish | Duration | Complete | Total float | Predecessors | Other |
| --- | --- | --- | --- | --- | --- | --- | --- | --- |
| 1 | **caArray** |  | 2013-12-16 → 2013-11-29 (-17d) | 271d → 260d | 5% → 9% |  |  |  |
| 2 | **caArray 2.5.1** |  | 2013-07-01 → 2013-05-13 (-49d) | 151d → 116d | 10% → 32% | 56d → 144d |  |  |
| 11 | OSDI: Obtain access to NCIP channel in GitHub (Dependency) | 2012-12-31 A | 2013-01-04 → 2013-01-08 A (+4d) | 5d → 7d | 0% → 100% | 58d → none |  |  |
| 13 | OSDI: Split software and tools from docs and test data. | 2013-01-07 A | 2013-01-08 → 2013-01-09 A (+1d) | 2d → 3d | 0% → 100% | 0d → none |  | resources Winston; Rashmi → Winston |
| 14 | OSDI: Migrate local git copy to GitHub under NCIP | 2013-01-09 → 2013-01-10 A (+1d) | 2013-01-10 → 2013-01-15 A (+5d) | 2d → 4d | 0% → 100% | 0d → none |  |  |
| 15 | OSDI: Change license/copyright text and merge into GitHub repo. | 2013-01-11 → 2013-01-16 A (+5d) | 2013-01-11 → 2013-01-17 A (+6d) | 1d → 2d | 0% → 100% | 0d → none |  |  |
| 16 | OSDI: Make build changes. (Remove svn dependencies, pull jboss from the tools directory, etc.) | 2013-01-14 → 2013-01-18 A (+4d) | 2013-01-18 → 2013-01-25 A (+7d) | 5d → 6d | 0% → 100% | 0d → none |  |  |
| 17 | OSDI: Update README and other documentation | 2013-01-29 → 2013-02-04 A (+6d) | 2013-01-29 → 2013-02-04 A (+6d) |  | 0% → 100% | 0d → none | 20 → 16 |  |
| 18 | Section 508 Compliance Improvements | 2013-04-10 → 2013-02-05 A (-64d) | 2013-04-23 → 2013-02-13 (-69d) | 10d → 7d | 0% → 10% | 25d → 6d | 44 → 17 | resources Winston → Winston; Rashmi |
| 19 | OSDI: Work with the Systems team to update and test the Dev AHP build. | 2013-01-21 → 2013-02-14 (+24d) | 2013-01-25 → 2013-02-19 (+25d) | 5d → 4d |  | 0d → 6d | 16 → 16, 18 |  |
| 20 | OSDI: Final test of AHP build on Dev tier | 2013-01-28 → 2013-02-20 (+23d) | 2013-01-28 → 2013-02-20 (+23d) |  |  | 0d → 6d |  |  |
| 21 | OSDI: Work with the Systems team to update and test AHP build on other tiers | 2013-01-30 → 2013-02-21 (+22d) | 2013-02-20 → 2013-03-14 (+22d) |  |  | 91d → 186d | 17 → 20 |  |
| 22 | Bug Fixes - performance | 2013-01-30 → 2013-02-21 (+22d) | 2013-02-26 → 2013-03-04 (+6d) | 20d → 8d |  | 0d → 8d | 17 → 20 |  |
| 23 | Automated Regression Testing on QA tier | 2013-04-10 → 2013-03-05 (-36d) | 2013-04-16 → 2013-03-11 (-36d) |  |  | 0d → 13d | 44 → 22 |  |
| 24 | Manual Regression Testing on QA tier | 2013-04-17 → 2013-03-12 (-36d) | 2013-04-22 → 2013-03-15 (-38d) |  |  | 0d → 13d |  |  |
| 25 | Installer Testing | 2013-04-23 → 2013-03-18 (-36d) | 2013-04-26 → 2013-03-21 (-36d) |  |  | 30d → 13d |  |  |
| 26 | Section 508 testing on QA tier | 2013-04-29 → 2013-03-22 (-38d) | 2013-04-30 → 2013-03-25 (-36d) |  |  | 30d → 13d |  |  |
| 27 | Appscan on QA tier | 2013-04-23 → 2013-03-05 (-49d) | 2013-05-20 → 2013-04-01 (-49d) |  |  | 0d → 8d | 24 → 22 |  |
| 28 | Test Results Review and Reporting | 2013-05-21 → 2013-04-02 (-49d) | 2013-05-23 → 2013-04-04 (-49d) |  |  | 0d → 8d | 27 → 27, 23, 24, 25, 26 |  |
| 29 | Deploy to STAGE | 2013-05-24 → 2013-04-05 (-49d) | 2013-05-24 → 2013-04-05 (-49d) |  |  | 0d → 8d |  |  |
| 30 | Appscan on STAGE tier | 2013-05-27 → 2013-04-08 (-49d) | 2013-06-21 → 2013-05-03 (-49d) |  |  | 56d → 144d |  |  |
| 31 | Automated Regression Testing on STAGE | 2013-05-27 → 2013-04-08 (-49d) | 2013-05-30 → 2013-04-11 (-49d) |  |  | 14d → 158d |  |  |
| 32 | API Testing on STAGE | 2013-05-31 → 2013-04-12 (-49d) | 2013-06-03 → 2013-04-15 (-49d) |  |  | 14d → 158d |  |  |
| 33 | Test Results Review and Reporting | 2013-06-24 → 2013-05-06 (-49d) | 2013-06-26 → 2013-05-08 (-49d) |  |  | 56d → 144d |  |  |
| 34 | Create release artifacts | 2013-05-27 → 2013-04-08 (-49d) | 2013-05-27 → 2013-04-08 (-49d) |  |  | 25d → 169d |  |  |
| 35 | Deploy to PRODUCTION | 2013-06-27 → 2013-05-09 (-49d) | 2013-06-28 → 2013-05-10 (-49d) |  |  | 56d → 144d |  |  |
| 36 | Update product landing page | 2013-07-01 → 2013-05-13 (-49d) | 2013-07-01 → 2013-05-13 (-49d) |  |  | 56d → 144d |  |  |
| 37 | QA smoke tests PRODUCTION | 2013-07-01 → 2013-05-13 (-49d) | 2013-07-01 → 2013-05-13 (-49d) |  |  | 56d → 144d |  |  |
| 38 | MILESTONE: RELEASE 2.5.1 | 2013-07-01 → 2013-05-13 (-49d) | 2013-07-01 → 2013-05-13 (-49d) |  |  | 56d → 144d |  |  |
| 39 | **caArray 2.5.2** | 2013-05-27 → 2013-04-08 (-49d) | 2013-12-16 → 2013-11-19 (-27d) | 146d → 162d |  | 0d → 8d |  |  |
| 40 | CSM/UPT upgrade | 2013-04-24 → 2013-04-08 (-16d) | 2013-05-07 → 2013-04-19 (-18d) |  |  | 25d → 8d | 18 → 29 |  |
| 41 | FISMA POAM | 2013-05-27 → 2013-04-22 (-35d) | 2013-06-21 → 2013-05-17 (-35d) |  |  | 0d → 8d | 29 → 40 |  |
| 42 | Support Gforge Retirement | 2013-06-24 → 2013-05-20 (-35d) | 2013-06-28 → 2013-05-24 (-35d) |  |  | 0d → 8d |  |  |
| 43 | Bug Fixes - performance, etc. | 2013-07-01 → 2013-05-27 (-35d) | 2013-07-26 → 2013-06-21 (-35d) |  |  | 0d → 8d |  | was named Bug Fixes |
| 44 | Data Migration to File System | 2013-02-27 → 2013-06-24 (+117d) | 2013-04-09 → 2013-08-02 (+115d) |  |  | 0d → 8d | 22 → 43 |  |
| 45 | Any Improvements Requested | 2013-09-23 → 2013-08-05 (-49d) | 2013-10-04 → 2013-08-30 (-35d) | 10d → 20d |  | 0d → 8d | Java 7 upgrade → 44 |  |
| 46 | MILESTONE: EPLC REVIEW (as needed) | 2013-10-07 → 2013-09-02 (-35d) | 2013-10-08 → 2013-09-03 (-35d) |  |  | 0d → 8d |  |  |
| 47 | Automated Regression Testing on QA tier | 2013-10-09 → 2013-09-04 (-35d) | 2013-10-15 → 2013-09-10 (-35d) |  |  | 0d → 8d |  |  |
| 48 | Manual Regression Testing on QA tier | 2013-10-16 → 2013-09-11 (-35d) | 2013-10-21 → 2013-09-16 (-35d) |  |  | 0d → 18d |  |  |
| 49 | Installer Testing | 2013-10-22 → 2013-09-17 (-35d) | 2013-10-25 → 2013-09-20 (-35d) |  |  | 34d → 18d |  |  |
| 50 | Section 508 testing on QA tier | 2013-10-28 → 2013-09-23 (-35d) | 2013-10-29 → 2013-09-24 (-35d) |  |  | 34d → 18d |  |  |
| 51 | Appscan on QA tier | 2013-10-22 → 2013-09-11 (-41d) | 2013-11-11 → 2013-10-08 (-34d) | 15d → 20d |  | 0d → 8d | 48 → 47 |  |
| 52 | Test Results Review and Reporting | 2013-11-12 → 2013-10-09 (-34d) | 2013-11-14 → 2013-10-11 (-34d) |  |  | 0d → 8d | 51 → 51, 47, 48, 49, 50 |  |
| 53 | Deploy to STAGE | 2013-11-15 → 2013-10-14 (-32d) | 2013-11-15 → 2013-10-14 (-32d) |  |  | 0d → 8d |  |  |
| 54 | Appscan on STAGE tier | 2013-11-18 → 2013-10-15 (-34d) | 2013-12-06 → 2013-11-11 (-25d) | 15d → 20d |  | 0d → 8d |  |  |
| 55 | Automated Regression Testing on STAGE | 2013-11-18 → 2013-10-15 (-34d) | 2013-11-21 → 2013-10-18 (-34d) |  |  | 9d → 22d |  |  |
| 56 | API Testing on STAGE | 2013-11-22 → 2013-10-21 (-32d) | 2013-11-25 → 2013-10-22 (-34d) |  |  | 9d → 22d |  |  |
| 57 | Test Results Review and Reporting | 2013-12-09 → 2013-11-12 (-27d) | 2013-12-11 → 2013-11-14 (-27d) |  |  | 0d → 8d |  |  |
| 58 | Create release artifacts | 2013-11-18 → 2013-10-15 (-34d) | 2013-11-18 → 2013-10-15 (-34d) |  |  | 20d → 33d |  |  |
| 59 | Deploy to PRODUCTION | 2013-12-12 → 2013-11-15 (-27d) | 2013-12-13 → 2013-11-18 (-25d) |  |  | 0d → 8d |  |  |
| 60 | Update product landing page | 2013-12-16 → 2013-11-19 (-27d) | 2013-12-16 → 2013-11-19 (-27d) | 0.5d → 1d |  | 0.5d → 8d |  |  |
| 61 | QA smoke tests PRODUCTION | 2013-12-16 → 2013-11-19 (-27d) | 2013-12-16 → 2013-11-19 (-27d) |  |  | 0d → 8d |  |  |
| 62 | MILESTONE: RELEASE 2.5.2 | 2013-12-16 → 2013-11-19 (-27d) | 2013-12-16 → 2013-11-19 (-27d) |  |  | 0d → 8d |  |  |
| 63 | User Support | 2013-07-02 → 2012-12-07 (-207d) | 2013-10-31 → 2013-11-29 (+29d) | 88d → 256d |  | 56d → 0d | 2 → 3 |  |

## Version 3 (saved 2013-02-06)

Note of the change: Updated agenda, project plan, action items and risks.

Last finish stays 2013-11-29.

Changed:

| ID | Task | Other |
| --- | --- | --- |
| 26 | QA reviews Section 508 compliance report | was named Section 508 testing on QA tier |

## Version 4 (saved 2013-02-19)

Note of the change: Updated project plan.

Last finish stays 2013-11-29.

Changed:

| ID | Task | Start | Finish | Duration | Complete | Total float |
| --- | --- | --- | --- | --- | --- | --- |
| 2 | **caArray 2.5.1** |  | 2013-05-13 → 2013-05-20 (+7d) | 116d → 121d | 32% → 34% | 144d → 139d |
| 18 | Section 508 Compliance Improvements |  | 2013-02-13 → 2013-02-18 (+5d) | 7d → 10d | 10% → 50% | 6d → 3d |
| 19 | OSDI: Work with the Systems team to update and test the Dev AHP build. | 2013-02-14 → 2013-02-19 (+5d) | 2013-02-19 → 2013-02-22 (+3d) |  |  | 6d → 3d |
| 20 | OSDI: Final test of AHP build on Dev tier | 2013-02-20 → 2013-02-25 (+5d) | 2013-02-20 → 2013-02-25 (+5d) |  |  | 6d → 3d |
| 21 | OSDI: Work with the Systems team to update and test AHP build on other tiers | 2013-02-21 → 2013-02-26 (+5d) | 2013-03-14 → 2013-03-19 (+5d) |  |  | 186d → 183d |
| 22 | Bug Fixes - performance | 2013-02-21 → 2013-02-26 (+5d) | 2013-03-04 → 2013-03-11 (+7d) | 8d → 10d |  | 8d → 3d |
| 23 | Automated Regression Testing on QA tier | 2013-03-05 → 2013-03-12 (+7d) | 2013-03-11 → 2013-03-18 (+7d) |  |  | 13d → 8d |
| 24 | Manual Regression Testing on QA tier | 2013-03-12 → 2013-03-19 (+7d) | 2013-03-15 → 2013-03-22 (+7d) |  |  | 13d → 8d |
| 25 | Installer Testing | 2013-03-18 → 2013-03-25 (+7d) | 2013-03-21 → 2013-03-28 (+7d) |  |  | 13d → 8d |
| 26 | QA reviews Section 508 compliance report | 2013-03-22 → 2013-03-29 (+7d) | 2013-03-25 → 2013-04-01 (+7d) |  |  | 13d → 8d |
| 27 | Appscan on QA tier | 2013-03-05 → 2013-03-12 (+7d) | 2013-04-01 → 2013-04-08 (+7d) |  |  | 8d → 3d |
| 28 | Test Results Review and Reporting | 2013-04-02 → 2013-04-09 (+7d) | 2013-04-04 → 2013-04-11 (+7d) |  |  | 8d → 3d |
| 29 | Deploy to STAGE | 2013-04-05 → 2013-04-12 (+7d) | 2013-04-05 → 2013-04-12 (+7d) |  |  | 8d → 3d |
| 30 | Appscan on STAGE tier | 2013-04-08 → 2013-04-15 (+7d) | 2013-05-03 → 2013-05-10 (+7d) |  |  | 144d → 139d |
| 31 | Automated Regression Testing on STAGE | 2013-04-08 → 2013-04-15 (+7d) | 2013-04-11 → 2013-04-18 (+7d) |  |  | 158d → 153d |
| 32 | API Testing on STAGE | 2013-04-12 → 2013-04-19 (+7d) | 2013-04-15 → 2013-04-22 (+7d) |  |  | 158d → 153d |
| 33 | Test Results Review and Reporting | 2013-05-06 → 2013-05-13 (+7d) | 2013-05-08 → 2013-05-15 (+7d) |  |  | 144d → 139d |
| 34 | Create release artifacts | 2013-04-08 → 2013-04-15 (+7d) | 2013-04-08 → 2013-04-15 (+7d) |  |  | 169d → 164d |
| 35 | Deploy to PRODUCTION | 2013-05-09 → 2013-05-16 (+7d) | 2013-05-10 → 2013-05-17 (+7d) |  |  | 144d → 139d |
| 36 | Update product landing page | 2013-05-13 → 2013-05-20 (+7d) | 2013-05-13 → 2013-05-20 (+7d) |  |  | 144d → 139d |
| 37 | QA smoke tests PRODUCTION | 2013-05-13 → 2013-05-20 (+7d) | 2013-05-13 → 2013-05-20 (+7d) |  |  | 144d → 139d |
| 38 | MILESTONE: RELEASE 2.5.1 | 2013-05-13 → 2013-05-20 (+7d) | 2013-05-13 → 2013-05-20 (+7d) |  |  | 144d → 139d |
| 39 | **caArray 2.5.2** | 2013-04-08 → 2013-04-15 (+7d) | 2013-11-19 → 2013-11-26 (+7d) |  |  | 8d → 3d |
| 40 | CSM/UPT upgrade | 2013-04-08 → 2013-04-15 (+7d) | 2013-04-19 → 2013-04-26 (+7d) |  |  | 8d → 3d |
| 41 | FISMA POAM | 2013-04-22 → 2013-04-29 (+7d) | 2013-05-17 → 2013-05-24 (+7d) |  |  | 8d → 3d |
| 42 | Support Gforge Retirement | 2013-05-20 → 2013-05-27 (+7d) | 2013-05-24 → 2013-05-31 (+7d) |  |  | 8d → 3d |
| 43 | Bug Fixes - performance, etc. | 2013-05-27 → 2013-06-03 (+7d) | 2013-06-21 → 2013-06-28 (+7d) |  |  | 8d → 3d |
| 44 | Data Migration to File System | 2013-06-24 → 2013-07-01 (+7d) | 2013-08-02 → 2013-08-09 (+7d) |  |  | 8d → 3d |
| 45 | Any Improvements Requested | 2013-08-05 → 2013-08-12 (+7d) | 2013-08-30 → 2013-09-06 (+7d) |  |  | 8d → 3d |
| 46 | MILESTONE: EPLC REVIEW (as needed) | 2013-09-02 → 2013-09-09 (+7d) | 2013-09-03 → 2013-09-10 (+7d) |  |  | 8d → 3d |
| 47 | Automated Regression Testing on QA tier | 2013-09-04 → 2013-09-11 (+7d) | 2013-09-10 → 2013-09-17 (+7d) |  |  | 8d → 3d |
| 48 | Manual Regression Testing on QA tier | 2013-09-11 → 2013-09-18 (+7d) | 2013-09-16 → 2013-09-23 (+7d) |  |  | 18d → 13d |
| 49 | Installer Testing | 2013-09-17 → 2013-09-24 (+7d) | 2013-09-20 → 2013-09-27 (+7d) |  |  | 18d → 13d |
| 50 | Section 508 testing on QA tier | 2013-09-23 → 2013-09-30 (+7d) | 2013-09-24 → 2013-10-01 (+7d) |  |  | 18d → 13d |
| 51 | Appscan on QA tier | 2013-09-11 → 2013-09-18 (+7d) | 2013-10-08 → 2013-10-15 (+7d) |  |  | 8d → 3d |
| 52 | Test Results Review and Reporting | 2013-10-09 → 2013-10-16 (+7d) | 2013-10-11 → 2013-10-18 (+7d) |  |  | 8d → 3d |
| 53 | Deploy to STAGE | 2013-10-14 → 2013-10-21 (+7d) | 2013-10-14 → 2013-10-21 (+7d) |  |  | 8d → 3d |
| 54 | Appscan on STAGE tier | 2013-10-15 → 2013-10-22 (+7d) | 2013-11-11 → 2013-11-18 (+7d) |  |  | 8d → 3d |
| 55 | Automated Regression Testing on STAGE | 2013-10-15 → 2013-10-22 (+7d) | 2013-10-18 → 2013-10-25 (+7d) |  |  | 22d → 17d |
| 56 | API Testing on STAGE | 2013-10-21 → 2013-10-28 (+7d) | 2013-10-22 → 2013-10-29 (+7d) |  |  | 22d → 17d |
| 57 | Test Results Review and Reporting | 2013-11-12 → 2013-11-19 (+7d) | 2013-11-14 → 2013-11-21 (+7d) |  |  | 8d → 3d |
| 58 | Create release artifacts | 2013-10-15 → 2013-10-22 (+7d) | 2013-10-15 → 2013-10-22 (+7d) |  |  | 33d → 28d |
| 59 | Deploy to PRODUCTION | 2013-11-15 → 2013-11-22 (+7d) | 2013-11-18 → 2013-11-25 (+7d) |  |  | 8d → 3d |
| 60 | Update product landing page | 2013-11-19 → 2013-11-26 (+7d) | 2013-11-19 → 2013-11-26 (+7d) |  |  | 8d → 3d |
| 61 | QA smoke tests PRODUCTION | 2013-11-19 → 2013-11-26 (+7d) | 2013-11-19 → 2013-11-26 (+7d) |  |  | 8d → 3d |
| 62 | MILESTONE: RELEASE 2.5.2 | 2013-11-19 → 2013-11-26 (+7d) | 2013-11-19 → 2013-11-26 (+7d) |  |  | 8d → 3d |

## Version 5 (saved 2013-02-26)

Note of the change: Updated project plan and action items. Meeting minutes from status meeting.

Last finish 2013-11-29 → 2013-12-04 (+5d).

Changed:

| ID | Task | Start | Finish | Duration | Complete | Total float |
| --- | --- | --- | --- | --- | --- | --- |
| 1 | **caArray** |  | 2013-11-29 → 2013-12-04 (+5d) | 260d → 263d | 9% → 11% |  |
| 2 | **caArray 2.5.1** |  | 2013-05-20 → 2013-05-28 (+8d) | 121d → 127d | 34% → 37% | 139d → 136d |
| 18 | Section 508 Compliance Improvements |  | 2013-02-18 → 2013-02-26 (+8d) | 10d → 16d | 50% → 75% | 3d → 1d |
| 19 | OSDI: Work with the Systems team to update and test the Dev AHP build. | 2013-02-19 → 2013-02-27 A (+8d) | 2013-02-22 → 2013-03-04 (+10d) |  | 0% → 25% | 3d → 0d |
| 20 | OSDI: Final test of AHP build on Dev tier | 2013-02-25 → 2013-03-05 (+8d) | 2013-02-25 → 2013-03-05 (+8d) |  |  | 3d → 0d |
| 21 | OSDI: Work with the Systems team to update and test AHP build on other tiers | 2013-02-26 → 2013-03-06 (+8d) | 2013-03-19 → 2013-03-27 (+8d) |  |  | 183d → 180d |
| 22 | Bug Fixes - performance | 2013-02-26 → 2013-03-06 (+8d) | 2013-03-11 → 2013-03-19 (+8d) |  |  | 3d → 0d |
| 23 | Automated Regression Testing on QA tier | 2013-03-12 → 2013-03-20 (+8d) | 2013-03-18 → 2013-03-26 (+8d) |  |  | 8d → 5d |
| 24 | Manual Regression Testing on QA tier | 2013-03-19 → 2013-03-27 (+8d) | 2013-03-22 → 2013-04-01 (+10d) |  |  | 8d → 5d |
| 25 | Installer Testing | 2013-03-25 → 2013-04-02 (+8d) | 2013-03-28 → 2013-04-05 (+8d) |  |  | 8d → 5d |
| 26 | QA reviews Section 508 compliance report | 2013-03-29 → 2013-04-08 (+10d) | 2013-04-01 → 2013-04-09 (+8d) |  |  | 8d → 5d |
| 27 | Appscan on QA tier | 2013-03-12 → 2013-03-20 (+8d) | 2013-04-08 → 2013-04-16 (+8d) |  |  | 3d → 0d |
| 28 | Test Results Review and Reporting | 2013-04-09 → 2013-04-17 (+8d) | 2013-04-11 → 2013-04-19 (+8d) |  |  | 3d → 0d |
| 29 | Deploy to STAGE | 2013-04-12 → 2013-04-22 (+10d) | 2013-04-12 → 2013-04-22 (+10d) |  |  | 3d → 0d |
| 30 | Appscan on STAGE tier | 2013-04-15 → 2013-04-23 (+8d) | 2013-05-10 → 2013-05-20 (+10d) |  |  | 139d → 136d |
| 31 | Automated Regression Testing on STAGE | 2013-04-15 → 2013-04-23 (+8d) | 2013-04-18 → 2013-04-26 (+8d) |  |  | 153d → 150d |
| 32 | API Testing on STAGE | 2013-04-19 → 2013-04-29 (+10d) | 2013-04-22 → 2013-04-30 (+8d) |  |  | 153d → 150d |
| 33 | Test Results Review and Reporting | 2013-05-13 → 2013-05-21 (+8d) | 2013-05-15 → 2013-05-23 (+8d) |  |  | 139d → 136d |
| 34 | Create release artifacts | 2013-04-15 → 2013-04-23 (+8d) | 2013-04-15 → 2013-04-23 (+8d) |  |  | 164d → 161d |
| 35 | Deploy to PRODUCTION | 2013-05-16 → 2013-05-24 (+8d) | 2013-05-17 → 2013-05-27 (+10d) |  |  | 139d → 136d |
| 36 | Update product landing page | 2013-05-20 → 2013-05-28 (+8d) | 2013-05-20 → 2013-05-28 (+8d) |  |  | 139d → 136d |
| 37 | QA smoke tests PRODUCTION | 2013-05-20 → 2013-05-28 (+8d) | 2013-05-20 → 2013-05-28 (+8d) |  |  | 139d → 136d |
| 38 | MILESTONE: RELEASE 2.5.1 | 2013-05-20 → 2013-05-28 (+8d) | 2013-05-20 → 2013-05-28 (+8d) |  |  | 139d → 136d |
| 39 | **caArray 2.5.2** | 2013-04-15 → 2013-04-23 (+8d) | 2013-11-26 → 2013-12-04 (+8d) |  |  | 3d → 0d |
| 40 | CSM/UPT upgrade | 2013-04-15 → 2013-04-23 (+8d) | 2013-04-26 → 2013-05-06 (+10d) |  |  | 3d → 0d |
| 41 | FISMA POAM | 2013-04-29 → 2013-05-07 (+8d) | 2013-05-24 → 2013-06-03 (+10d) |  |  | 3d → 0d |
| 42 | Support Gforge Retirement | 2013-05-27 → 2013-06-04 (+8d) | 2013-05-31 → 2013-06-10 (+10d) |  |  | 3d → 0d |
| 43 | Bug Fixes - performance, etc. | 2013-06-03 → 2013-06-11 (+8d) | 2013-06-28 → 2013-07-08 (+10d) |  |  | 3d → 0d |
| 44 | Data Migration to File System | 2013-07-01 → 2013-07-09 (+8d) | 2013-08-09 → 2013-08-19 (+10d) |  |  | 3d → 0d |
| 45 | Any Improvements Requested | 2013-08-12 → 2013-08-20 (+8d) | 2013-09-06 → 2013-09-16 (+10d) |  |  | 3d → 0d |
| 46 | MILESTONE: EPLC REVIEW (as needed) | 2013-09-09 → 2013-09-17 (+8d) | 2013-09-10 → 2013-09-18 (+8d) |  |  | 3d → 0d |
| 47 | Automated Regression Testing on QA tier | 2013-09-11 → 2013-09-19 (+8d) | 2013-09-17 → 2013-09-25 (+8d) |  |  | 3d → 0d |
| 48 | Manual Regression Testing on QA tier | 2013-09-18 → 2013-09-26 (+8d) | 2013-09-23 → 2013-10-01 (+8d) |  |  | 13d → 10d |
| 49 | Installer Testing | 2013-09-24 → 2013-10-02 (+8d) | 2013-09-27 → 2013-10-07 (+10d) |  |  | 13d → 10d |
| 50 | Section 508 testing on QA tier | 2013-09-30 → 2013-10-08 (+8d) | 2013-10-01 → 2013-10-09 (+8d) |  |  | 13d → 10d |
| 51 | Appscan on QA tier | 2013-09-18 → 2013-09-26 (+8d) | 2013-10-15 → 2013-10-23 (+8d) |  |  | 3d → 0d |
| 52 | Test Results Review and Reporting | 2013-10-16 → 2013-10-24 (+8d) | 2013-10-18 → 2013-10-28 (+10d) |  |  | 3d → 0d |
| 53 | Deploy to STAGE | 2013-10-21 → 2013-10-29 (+8d) | 2013-10-21 → 2013-10-29 (+8d) |  |  | 3d → 0d |
| 54 | Appscan on STAGE tier | 2013-10-22 → 2013-10-30 (+8d) | 2013-11-18 → 2013-11-26 (+8d) |  |  | 3d → 0d |
| 55 | Automated Regression Testing on STAGE | 2013-10-22 → 2013-10-30 (+8d) | 2013-10-25 → 2013-11-04 (+10d) |  |  | 17d → 14d |
| 56 | API Testing on STAGE | 2013-10-28 → 2013-11-05 (+8d) | 2013-10-29 → 2013-11-06 (+8d) |  |  | 17d → 14d |
| 57 | Test Results Review and Reporting | 2013-11-19 → 2013-11-27 (+8d) | 2013-11-21 → 2013-11-29 (+8d) |  |  | 3d → 0d |
| 58 | Create release artifacts | 2013-10-22 → 2013-10-30 (+8d) | 2013-10-22 → 2013-10-30 (+8d) |  |  | 28d → 25d |
| 59 | Deploy to PRODUCTION | 2013-11-22 → 2013-12-02 (+10d) | 2013-11-25 → 2013-12-03 (+8d) |  |  | 3d → 0d |
| 60 | Update product landing page | 2013-11-26 → 2013-12-04 (+8d) | 2013-11-26 → 2013-12-04 (+8d) |  |  | 3d → 0d |
| 61 | QA smoke tests PRODUCTION | 2013-11-26 → 2013-12-04 (+8d) | 2013-11-26 → 2013-12-04 (+8d) |  |  | 3d → 0d |
| 62 | MILESTONE: RELEASE 2.5.2 | 2013-11-26 → 2013-12-04 (+8d) | 2013-11-26 → 2013-12-04 (+8d) |  |  | 3d → 0d |

## Version 6 (saved 2013-03-05)

Note of the change: Meeting minutes from status meeting, and updated project plan.

Last finish 2013-12-04 → 2014-01-01 (+28d). Complete tasks 15 → 17.

Added:

| ID | Task | Duration | Start | Finish | Predecessors |
| --- | --- | --- | --- | --- | --- |
| 29 | Bug Fixes - Critical | 10d | 2013-05-06 | 2013-05-17 | 28 |

Changed:

| ID | Task | Start | Finish | Duration | Complete | Total float | Predecessors | Other |
| --- | --- | --- | --- | --- | --- | --- | --- | --- |
| 1 | **caArray** |  | 2013-12-04 → 2014-01-01 (+28d) | 263d → 283d | 11% → 12% |  |  |  |
| 2 | **caArray 2.5.1** |  | 2013-05-28 → 2013-06-25 (+28d) | 127d → 147d | 37% → 38% |  |  |  |
| 18 | Section 508 Compliance Improvements |  | 2013-02-26 → 2013-03-05 (+7d) | 16d → 21d | 75% → 90% | 1d → 196d |  |  |
| 19 | OSDI: Work with the Systems team to update and test the Dev AHP build. |  | 2013-03-04 A |  | 25% → 100% | 0d → none | 16, 18 → 16 |  |
| 20 | OSDI: Final test of AHP build on Dev tier | 2013-03-05 A | 2013-03-05 A |  | 0% → 100% | 0d → none |  |  |
| 22 | Performance Fixes |  | 2013-03-19 → 2013-04-02 (+14d) | 10d → 20d |  |  |  | was named Bug Fixes - performance |
| 23 | Automated Regression Testing on QA tier | 2013-03-20 → 2013-04-03 (+14d) | 2013-03-26 → 2013-04-09 (+14d) |  |  |  |  |  |
| 24 | Manual Regression Testing on QA tier | 2013-03-27 → 2013-04-10 (+14d) | 2013-04-01 → 2013-04-15 (+14d) |  |  |  |  |  |
| 25 | Installer Testing | 2013-04-02 → 2013-04-16 (+14d) | 2013-04-05 → 2013-04-19 (+14d) |  |  |  |  |  |
| 26 | QA reviews Section 508 compliance report | 2013-04-08 → 2013-04-22 (+14d) | 2013-04-09 → 2013-04-23 (+14d) |  |  |  |  |  |
| 27 | Appscan on QA tier | 2013-03-20 → 2013-04-03 (+14d) | 2013-04-16 → 2013-04-30 (+14d) |  |  |  |  |  |
| 28 | Test Results Review and Reporting | 2013-04-17 → 2013-05-01 (+14d) | 2013-04-19 → 2013-05-03 (+14d) |  |  |  |  |  |
| 30 | Deploy to STAGE | 2013-04-22 → 2013-05-20 (+28d) | 2013-04-22 → 2013-05-20 (+28d) |  |  |  | 28 → 29 |  |
| 31 | Appscan on STAGE tier | 2013-04-23 → 2013-05-21 (+28d) | 2013-05-20 → 2013-06-17 (+28d) |  |  |  |  |  |
| 32 | Automated Regression Testing on STAGE | 2013-04-23 → 2013-05-21 (+28d) | 2013-04-26 → 2013-05-24 (+28d) |  |  |  |  |  |
| 33 | API Testing on STAGE | 2013-04-29 → 2013-05-27 (+28d) | 2013-04-30 → 2013-05-28 (+28d) |  |  |  |  |  |
| 34 | Test Results Review and Reporting | 2013-05-21 → 2013-06-18 (+28d) | 2013-05-23 → 2013-06-20 (+28d) |  |  |  |  |  |
| 35 | Create release artifacts | 2013-04-23 → 2013-05-21 (+28d) | 2013-04-23 → 2013-05-21 (+28d) |  |  |  |  |  |
| 36 | Deploy to PRODUCTION | 2013-05-24 → 2013-06-21 (+28d) | 2013-05-27 → 2013-06-24 (+28d) |  |  |  |  |  |
| 37 | Update product landing page | 2013-05-28 → 2013-06-25 (+28d) | 2013-05-28 → 2013-06-25 (+28d) |  |  |  |  |  |
| 38 | QA smoke tests PRODUCTION | 2013-05-28 → 2013-06-25 (+28d) | 2013-05-28 → 2013-06-25 (+28d) |  |  |  |  |  |
| 39 | MILESTONE: RELEASE 2.5.1 | 2013-05-28 → 2013-06-25 (+28d) | 2013-05-28 → 2013-06-25 (+28d) |  |  |  |  |  |
| 40 | **caArray 2.5.2** | 2013-04-23 → 2013-05-21 (+28d) | 2013-12-04 → 2014-01-01 (+28d) |  |  |  |  |  |
| 41 | CSM/UPT upgrade | 2013-04-23 → 2013-05-21 (+28d) | 2013-05-06 → 2013-06-03 (+28d) |  |  |  |  |  |
| 42 | FISMA POAM | 2013-05-07 → 2013-06-04 (+28d) | 2013-06-03 → 2013-07-01 (+28d) |  |  |  |  |  |
| 43 | Support Gforge Retirement | 2013-06-04 → 2013-07-02 (+28d) | 2013-06-10 → 2013-07-08 (+28d) |  |  |  |  |  |
| 44 | Bug Fixes | 2013-06-11 → 2013-07-09 (+28d) | 2013-07-08 → 2013-08-05 (+28d) |  |  |  |  | was named Bug Fixes - performance, etc. |
| 45 | Data Migration to File System | 2013-07-09 → 2013-08-06 (+28d) | 2013-08-19 → 2013-09-16 (+28d) |  |  |  |  |  |
| 46 | Any Improvements Requested | 2013-08-20 → 2013-09-17 (+28d) | 2013-09-16 → 2013-10-14 (+28d) |  |  |  |  |  |
| 47 | MILESTONE: EPLC REVIEW (as needed) | 2013-09-17 → 2013-10-15 (+28d) | 2013-09-18 → 2013-10-16 (+28d) |  |  |  |  |  |
| 48 | Automated Regression Testing on QA tier | 2013-09-19 → 2013-10-17 (+28d) | 2013-09-25 → 2013-10-23 (+28d) |  |  |  |  |  |
| 49 | Manual Regression Testing on QA tier | 2013-09-26 → 2013-10-24 (+28d) | 2013-10-01 → 2013-10-29 (+28d) |  |  |  |  |  |
| 50 | Installer Testing | 2013-10-02 → 2013-10-30 (+28d) | 2013-10-07 → 2013-11-04 (+28d) |  |  |  |  |  |
| 51 | Section 508 testing on QA tier | 2013-10-08 → 2013-11-05 (+28d) | 2013-10-09 → 2013-11-06 (+28d) |  |  |  |  |  |
| 52 | Appscan on QA tier | 2013-09-26 → 2013-10-24 (+28d) | 2013-10-23 → 2013-11-20 (+28d) |  |  |  |  |  |
| 53 | Test Results Review and Reporting | 2013-10-24 → 2013-11-21 (+28d) | 2013-10-28 → 2013-11-25 (+28d) |  |  |  |  |  |
| 54 | Deploy to STAGE | 2013-10-29 → 2013-11-26 (+28d) | 2013-10-29 → 2013-11-26 (+28d) |  |  |  |  |  |
| 55 | Appscan on STAGE tier | 2013-10-30 → 2013-11-27 (+28d) | 2013-11-26 → 2013-12-24 (+28d) |  |  |  |  |  |
| 56 | Automated Regression Testing on STAGE | 2013-10-30 → 2013-11-27 (+28d) | 2013-11-04 → 2013-12-02 (+28d) |  |  |  |  |  |
| 57 | API Testing on STAGE | 2013-11-05 → 2013-12-03 (+28d) | 2013-11-06 → 2013-12-04 (+28d) |  |  |  |  |  |
| 58 | Test Results Review and Reporting | 2013-11-27 → 2013-12-25 (+28d) | 2013-11-29 → 2013-12-27 (+28d) |  |  |  |  |  |
| 59 | Create release artifacts | 2013-10-30 → 2013-11-27 (+28d) | 2013-10-30 → 2013-11-27 (+28d) |  |  |  |  |  |
| 60 | Deploy to PRODUCTION | 2013-12-02 → 2013-12-30 (+28d) | 2013-12-03 → 2013-12-31 (+28d) |  |  |  |  |  |
| 61 | Update product landing page | 2013-12-04 → 2014-01-01 (+28d) | 2013-12-04 → 2014-01-01 (+28d) |  |  |  |  |  |
| 62 | QA smoke tests PRODUCTION | 2013-12-04 → 2014-01-01 (+28d) | 2013-12-04 → 2014-01-01 (+28d) |  |  |  |  |  |
| 63 | MILESTONE: RELEASE 2.5.2 | 2013-12-04 → 2014-01-01 (+28d) | 2013-12-04 → 2014-01-01 (+28d) |  |  |  |  |  |

## Version 7 (saved 2013-03-12)

Note of the change: Updated project plan.

Last finish stays 2014-01-01. Complete tasks 17 → 18.

Changed:

| ID | Task | Start | Finish | Complete | Total float | Other |
| --- | --- | --- | --- | --- | --- | --- |
| 1 | **caArray** |  |  | 12% → 13% |  |  |
| 2 | **caArray 2.5.1** |  |  | 38% → 42% |  |  |
| 18 | Section 508 Compliance Improvements |  | 2013-03-05 A | 90% → 100% | 196d → none |  |
| 21 | OSDI: Work with the Systems team to update and test AHP build on other tiers | 2013-03-06 A |  | 0% → 20% | 180d → 200d |  |
| 22 | Performance and other Bug Fixes | 2013-03-06 A |  | 0% → 10% |  | was named Performance Fixes; resources Winston → Winston; Rashmi |

## Version 8 (saved 2013-03-26)

Note of the change: Updated project plan.

Last finish 2014-01-01 → 2014-01-07 (+6d).

Added:

| ID | Task | Duration | Start | Finish | Predecessors | Resources |
| --- | --- | --- | --- | --- | --- | --- |
| 23 | OSDI: Work with the Systems team to update/test AHP on PROD,Curation,Training | 15d | 2013-03-27 | 2013-04-16 | 21 | Winston |

Changed:

| ID | Task | Start | Finish | Duration | Complete | Total float | Other |
| --- | --- | --- | --- | --- | --- | --- | --- |
| 1 | **caArray** |  | 2014-01-01 → 2014-01-07 (+6d) | 283d → 287d | 13% → 14% |  |  |
| 2 | **caArray 2.5.1** |  | 2013-06-25 → 2013-07-01 (+6d) | 147d → 151d | 42% → 44% |  |  |
| 21 | OSDI: Work with the Systems team to update/test AHP on QA/STAGE |  | 2013-03-27 → 2013-03-26 (-1d) | 16d → 15d | 20% → 90% | 200d → 190d | was named OSDI: Work with the Systems team to update and test AHP build on other tiers; resources Winston → Winston; Rashmi |
| 22 | Performance and other Bug Fixes | 2013-03-06 A → 2013-03-12 A (+6d) | 2013-04-02 → 2013-04-08 (+6d) |  |  |  | constraint none → start no earlier than 2013-03-12; resources Winston; Rashmi → Winston |
| 24 | Automated Regression Testing on QA tier | 2013-04-03 → 2013-04-09 (+6d) | 2013-04-09 → 2013-04-15 (+6d) |  |  |  |  |
| 25 | Manual Regression Testing on QA tier | 2013-04-10 → 2013-04-16 (+6d) | 2013-04-15 → 2013-04-19 (+4d) |  |  |  |  |
| 26 | Installer Testing | 2013-04-16 → 2013-04-22 (+6d) | 2013-04-19 → 2013-04-25 (+6d) |  |  |  |  |
| 27 | QA reviews Section 508 compliance report | 2013-04-22 → 2013-04-26 (+4d) | 2013-04-23 → 2013-04-29 (+6d) |  |  |  |  |
| 28 | Appscan on QA tier | 2013-04-03 → 2013-04-09 (+6d) | 2013-04-30 → 2013-05-06 (+6d) |  |  |  |  |
| 29 | Test Results Review and Reporting | 2013-05-01 → 2013-05-07 (+6d) | 2013-05-03 → 2013-05-09 (+6d) |  |  |  |  |
| 30 | Bug Fixes - Critical | 2013-05-06 → 2013-05-10 (+4d) | 2013-05-17 → 2013-05-23 (+6d) |  |  |  |  |
| 31 | Deploy to STAGE | 2013-05-20 → 2013-05-24 (+4d) | 2013-05-20 → 2013-05-24 (+4d) |  |  |  |  |
| 32 | Appscan on STAGE tier | 2013-05-21 → 2013-05-27 (+6d) | 2013-06-17 → 2013-06-21 (+4d) |  |  |  |  |
| 33 | Automated Regression Testing on STAGE | 2013-05-21 → 2013-05-27 (+6d) | 2013-05-24 → 2013-05-30 (+6d) |  |  |  |  |
| 34 | API Testing on STAGE | 2013-05-27 → 2013-05-31 (+4d) | 2013-05-28 → 2013-06-03 (+6d) |  |  |  |  |
| 35 | Test Results Review and Reporting | 2013-06-18 → 2013-06-24 (+6d) | 2013-06-20 → 2013-06-26 (+6d) |  |  |  |  |
| 36 | Create release artifacts | 2013-05-21 → 2013-05-27 (+6d) | 2013-05-21 → 2013-05-27 (+6d) |  |  |  |  |
| 37 | Deploy to PRODUCTION | 2013-06-21 → 2013-06-27 (+6d) | 2013-06-24 → 2013-06-28 (+4d) |  |  |  |  |
| 38 | Update product landing page | 2013-06-25 → 2013-07-01 (+6d) | 2013-06-25 → 2013-07-01 (+6d) |  |  |  |  |
| 39 | QA smoke tests PRODUCTION | 2013-06-25 → 2013-07-01 (+6d) | 2013-06-25 → 2013-07-01 (+6d) |  |  |  |  |
| 40 | MILESTONE: RELEASE 2.5.1 | 2013-06-25 → 2013-07-01 (+6d) | 2013-06-25 → 2013-07-01 (+6d) |  |  |  |  |
| 41 | **caArray 2.5.2** | 2013-05-21 → 2013-05-27 (+6d) | 2014-01-01 → 2014-01-07 (+6d) |  |  |  |  |
| 42 | CSM/UPT upgrade | 2013-05-21 → 2013-05-27 (+6d) | 2013-06-03 → 2013-06-07 (+4d) |  |  |  |  |
| 43 | FISMA POAM | 2013-06-04 → 2013-06-10 (+6d) | 2013-07-01 → 2013-07-05 (+4d) |  |  |  |  |
| 44 | Support Gforge Retirement | 2013-07-02 → 2013-07-08 (+6d) | 2013-07-08 → 2013-07-12 (+4d) |  |  |  |  |
| 45 | Bug Fixes | 2013-07-09 → 2013-07-15 (+6d) | 2013-08-05 → 2013-08-09 (+4d) |  |  |  |  |
| 46 | Data Migration to File System | 2013-08-06 → 2013-08-12 (+6d) | 2013-09-16 → 2013-09-20 (+4d) |  |  |  |  |
| 47 | Any Improvements Requested | 2013-09-17 → 2013-09-23 (+6d) | 2013-10-14 → 2013-10-18 (+4d) |  |  |  |  |
| 48 | MILESTONE: EPLC REVIEW (as needed) | 2013-10-15 → 2013-10-21 (+6d) | 2013-10-16 → 2013-10-22 (+6d) |  |  |  |  |
| 49 | Automated Regression Testing on QA tier | 2013-10-17 → 2013-10-23 (+6d) | 2013-10-23 → 2013-10-29 (+6d) |  |  |  |  |
| 50 | Manual Regression Testing on QA tier | 2013-10-24 → 2013-10-30 (+6d) | 2013-10-29 → 2013-11-04 (+6d) |  |  |  |  |
| 51 | Installer Testing | 2013-10-30 → 2013-11-05 (+6d) | 2013-11-04 → 2013-11-08 (+4d) |  |  |  |  |
| 52 | Section 508 testing on QA tier | 2013-11-05 → 2013-11-11 (+6d) | 2013-11-06 → 2013-11-12 (+6d) |  |  |  |  |
| 53 | Appscan on QA tier | 2013-10-24 → 2013-10-30 (+6d) | 2013-11-20 → 2013-11-26 (+6d) |  |  |  |  |
| 54 | Test Results Review and Reporting | 2013-11-21 → 2013-11-27 (+6d) | 2013-11-25 → 2013-11-29 (+4d) |  |  |  |  |
| 55 | Deploy to STAGE | 2013-11-26 → 2013-12-02 (+6d) | 2013-11-26 → 2013-12-02 (+6d) |  |  |  |  |
| 56 | Appscan on STAGE tier | 2013-11-27 → 2013-12-03 (+6d) | 2013-12-24 → 2013-12-30 (+6d) |  |  |  |  |
| 57 | Automated Regression Testing on STAGE | 2013-11-27 → 2013-12-03 (+6d) | 2013-12-02 → 2013-12-06 (+4d) |  |  |  |  |
| 58 | API Testing on STAGE | 2013-12-03 → 2013-12-09 (+6d) | 2013-12-04 → 2013-12-10 (+6d) |  |  |  |  |
| 59 | Test Results Review and Reporting | 2013-12-25 → 2013-12-31 (+6d) | 2013-12-27 → 2014-01-02 (+6d) |  |  |  |  |
| 60 | Create release artifacts | 2013-11-27 → 2013-12-03 (+6d) | 2013-11-27 → 2013-12-03 (+6d) |  |  |  |  |
| 61 | Deploy to PRODUCTION | 2013-12-30 → 2014-01-03 (+4d) | 2013-12-31 → 2014-01-06 (+6d) |  |  |  |  |
| 62 | Update product landing page | 2014-01-01 → 2014-01-07 (+6d) | 2014-01-01 → 2014-01-07 (+6d) |  |  |  |  |
| 63 | QA smoke tests PRODUCTION | 2014-01-01 → 2014-01-07 (+6d) | 2014-01-01 → 2014-01-07 (+6d) |  |  |  |  |
| 64 | MILESTONE: RELEASE 2.5.2 | 2014-01-01 → 2014-01-07 (+6d) | 2014-01-01 → 2014-01-07 (+6d) |  |  |  |  |

## Version 9 (saved 2013-04-02)

Note of the change: Updated project plan.

Last finish stays 2014-01-07. Complete tasks 18 → 19.

Changed:

| ID | Task | Finish | Complete | Total float |
| --- | --- | --- | --- | --- |
| 1 | **caArray** |  | 14% → 15% |  |
| 2 | **caArray 2.5.1** |  | 44% → 47% |  |
| 21 | OSDI: Work with the Systems team to update/test AHP on QA/STAGE | 2013-03-26 A | 90% → 100% | 190d → none |
| 22 | Performance and other Bug Fixes |  | 10% → 30% |  |

## Version 10 (saved 2013-05-14)

Note of the change: Updates after 5/14/13 status call

Last finish 2014-01-07 → 2014-01-24 (+17d). Complete tasks 19 → 24.

Added:

| ID | Task | Duration | Start | Finish | Predecessors | Resources |
| --- | --- | --- | --- | --- | --- | --- |
| 31 | QA critical fixes | 5d | 2013-06-04 | 2013-06-11 | 30 | QA* |
| 32 | Redo Appscan on QA tier | 5d | 2013-06-04 | 2013-06-11 | 30 | Systems* |

Changed:

| ID | Task | Start | Finish | Duration | Complete | Total float | Predecessors | Other |
| --- | --- | --- | --- | --- | --- | --- | --- | --- |
| 1 | **caArray** |  | 2014-01-07 → 2014-01-24 (+17d) | 287d → 299.3d | 15% → 23% |  |  |  |
| 2 | **caArray 2.5.1** |  | 2013-07-01 → 2013-06-28 (-3d) | 151d → 149.3d | 47% → 72% | 136d → 150d |  |  |
| 22 | Performance and other Bug Fixes |  | 2013-04-08 A |  | 30% → 100% | 0d → none |  |  |
| 23 | OSDI: Work with the Systems team to update/test AHP on PROD,Curation,Training | 2013-03-27 A |  |  | 0% → 33% | 190d → 202.3d |  |  |
| 24 | Automated Regression Testing on QA tier | 2013-04-09 A | 2013-04-15 A |  | 0% → 100% | 5d → none |  |  |
| 25 | Manual Regression Testing on QA tier | 2013-04-16 A | 2013-04-19 A |  | 0% → 100% | 5d → none |  |  |
| 26 | Installer Testing | 2013-04-22 A | 2013-04-25 A |  | 0% → 100% | 5d → none |  |  |
| 27 | QA reviews Section 508 compliance report | 2013-04-26 A |  |  | 0% → 75% |  |  |  |
| 28 | Appscan on QA tier | 2013-04-09 A | 2013-05-06 A |  | 0% → 100% | 0d → none |  |  |
| 30 | Bug Fixes - Critical |  | 2013-05-23 → 2013-06-04 (+12d) | 10d → 14d |  |  |  | resources none → Winston |
| 33 | Deploy to STAGE | 2013-05-24 → 2013-06-11 (+18d) | 2013-05-24 → 2013-06-12 (+19d) |  |  |  | 30 → 32 |  |
| 34 | Appscan on STAGE tier | 2013-05-27 → 2013-06-12 (+16d) | 2013-06-21 → 2013-06-19 (-2d) | 20d → 5d |  | 136d → 151d |  |  |
| 35 | Automated Regression Testing on STAGE | 2013-05-27 → 2013-06-12 (+16d) | 2013-05-30 → 2013-06-18 (+19d) |  |  |  |  |  |
| 36 | API Testing on STAGE | 2013-05-31 → 2013-06-18 (+18d) | 2013-06-03 → 2013-06-20 (+17d) |  |  |  |  |  |
| 37 | Test Results Review and Reporting | 2013-06-24 → 2013-06-20 (-4d) | 2013-06-26 → 2013-06-25 (-1d) |  |  | 136d → 150d |  |  |
| 38 | Create release artifacts | 2013-05-27 → 2013-06-12 (+16d) | 2013-05-27 → 2013-06-13 (+17d) |  |  |  |  |  |
| 39 | Deploy to PRODUCTION | 2013-06-27 → 2013-06-25 (-2d) | 2013-06-28 → 2013-06-27 (-1d) |  |  | 136d → 150d |  |  |
| 40 | Update product landing page | 2013-07-01 → 2013-06-27 (-4d) | 2013-07-01 → 2013-06-28 (-3d) |  |  | 136d → 150d |  |  |
| 41 | QA smoke tests PRODUCTION | 2013-07-01 → 2013-06-27 (-4d) | 2013-07-01 → 2013-06-28 (-3d) |  |  | 136d → 150d |  |  |
| 42 | MILESTONE: RELEASE 2.5.1 | 2013-07-01 → 2013-06-28 (-3d) | 2013-07-01 → 2013-06-28 (-3d) |  |  | 136d → 150d |  |  |
| 43 | **caArray 2.5.2** | 2013-05-27 → 2013-06-12 (+16d) | 2014-01-07 → 2014-01-24 (+17d) |  |  |  |  |  |
| 44 | CSM/UPT upgrade | 2013-05-27 → 2013-06-12 (+16d) | 2013-06-07 → 2013-06-26 (+19d) |  |  |  |  |  |
| 45 | FISMA POAM | 2013-06-10 → 2013-06-26 (+16d) | 2013-07-05 → 2013-07-24 (+19d) |  |  |  |  |  |
| 46 | Support Gforge Retirement | 2013-07-08 → 2013-07-24 (+16d) | 2013-07-12 → 2013-07-31 (+19d) |  |  |  |  |  |
| 47 | Bug Fixes | 2013-07-15 → 2013-07-31 (+16d) | 2013-08-09 → 2013-08-28 (+19d) |  |  |  |  |  |
| 48 | Data Migration to File System | 2013-08-12 → 2013-08-28 (+16d) | 2013-09-20 → 2013-10-09 (+19d) |  |  |  |  |  |
| 49 | Any Improvements Requested | 2013-09-23 → 2013-10-09 (+16d) | 2013-10-18 → 2013-11-06 (+19d) |  |  |  |  |  |
| 50 | MILESTONE: EPLC REVIEW (as needed) | 2013-10-21 → 2013-11-06 (+16d) | 2013-10-22 → 2013-11-08 (+17d) |  |  |  |  |  |
| 51 | Automated Regression Testing on QA tier | 2013-10-23 → 2013-11-08 (+16d) | 2013-10-29 → 2013-11-15 (+17d) |  |  |  |  |  |
| 52 | Manual Regression Testing on QA tier | 2013-10-30 → 2013-11-15 (+16d) | 2013-11-04 → 2013-11-21 (+17d) |  |  |  |  |  |
| 53 | Installer Testing | 2013-11-05 → 2013-11-21 (+16d) | 2013-11-08 → 2013-11-27 (+19d) |  |  |  |  |  |
| 54 | Section 508 testing on QA tier | 2013-11-11 → 2013-11-27 (+16d) | 2013-11-12 → 2013-11-29 (+17d) |  |  |  |  |  |
| 55 | Appscan on QA tier | 2013-10-30 → 2013-11-15 (+16d) | 2013-11-26 → 2013-12-13 (+17d) |  |  |  |  |  |
| 56 | Test Results Review and Reporting | 2013-11-27 → 2013-12-13 (+16d) | 2013-11-29 → 2013-12-18 (+19d) |  |  |  |  |  |
| 57 | Deploy to STAGE | 2013-12-02 → 2013-12-18 (+16d) | 2013-12-02 → 2013-12-19 (+17d) |  |  |  |  |  |
| 58 | Appscan on STAGE tier | 2013-12-03 → 2013-12-19 (+16d) | 2013-12-30 → 2014-01-16 (+17d) |  |  |  |  |  |
| 59 | Automated Regression Testing on STAGE | 2013-12-03 → 2013-12-19 (+16d) | 2013-12-06 → 2013-12-25 (+19d) |  |  |  |  |  |
| 60 | API Testing on STAGE | 2013-12-09 → 2013-12-25 (+16d) | 2013-12-10 → 2013-12-27 (+17d) |  |  |  |  |  |
| 61 | Test Results Review and Reporting | 2013-12-31 → 2014-01-16 (+16d) | 2014-01-02 → 2014-01-21 (+19d) |  |  |  |  |  |
| 62 | Create release artifacts | 2013-12-03 → 2013-12-19 (+16d) | 2013-12-03 → 2013-12-20 (+17d) |  |  |  |  |  |
| 63 | Deploy to PRODUCTION | 2014-01-03 → 2014-01-21 (+18d) | 2014-01-06 → 2014-01-23 (+17d) |  |  |  |  |  |
| 64 | Update product landing page | 2014-01-07 → 2014-01-23 (+16d) | 2014-01-07 → 2014-01-24 (+17d) |  |  |  |  |  |
| 65 | QA smoke tests PRODUCTION | 2014-01-07 → 2014-01-23 (+16d) | 2014-01-07 → 2014-01-24 (+17d) |  |  |  |  |  |
| 66 | MILESTONE: RELEASE 2.5.2 | 2014-01-07 → 2014-01-24 (+17d) | 2014-01-07 → 2014-01-24 (+17d) |  |  |  |  |  |

## Version 11 (saved 2013-05-28)

Note of the change: Updates from 5/28/13 status meeting.

Last finish stays 2014-01-24.

Changed:

| ID | Task | Complete |
| --- | --- | --- |
| 1 | **caArray** | 23% → 25% |
| 2 | **caArray 2.5.1** | 72% → 76% |
| 23 | OSDI: Work with the Systems team to update/test AHP on PROD,Curation,Training | 33% → 80% |

## Version 12 (saved 2013-06-05)

Note of the change: Updates from yesteday's status meeting

Last finish stays 2014-01-24. Complete tasks 24 → 26.

Changed:

| ID | Task | Start | Finish | Complete | Total float | Other |
| --- | --- | --- | --- | --- | --- | --- |
| 1 | **caArray** |  |  | 25% → 28% |  |  |
| 2 | **caArray 2.5.1** |  |  | 76% → 85% |  |  |
| 23 | OSDI: Work with the Systems team to update/test AHP on PROD,Curation,Training |  | 2013-04-16 A | 80% → 100% | 202.3d → none |  |
| 29 | Test Results Review and Reporting | 2013-05-07 A |  | 0% → 75% | 0d → 185.3d |  |
| 30 | Bug Fixes - Critical | 2013-05-10 A | 2013-06-04 A | 0% → 100% | 0d → none |  |
| 45 | FISMA POAM |  |  |  |  | resources Winston; Rashmi → Winston; Mike |
| 46 | Support Gforge Retirement |  |  |  |  | resources Winston; Rashmi → Winston; Mike |
| 50 | MILESTONE: EPLC REVIEW (as needed) |  |  |  |  | resources Winston; Rashmi → Winston; Mike |

## Version 13 (saved 2013-06-17)

Note of the change: Prep for status meeting tomorrow

Last finish 2014-01-24 → 2014-01-31 (+7d). Complete tasks 26 → 27.

Changed:

| ID | Task | Start | Finish | Duration | Complete | Total float | Other |
| --- | --- | --- | --- | --- | --- | --- | --- |
| 1 | **caArray** |  | 2014-01-24 → 2014-01-31 (+7d) | 299.3d → 305d | 28% → 29% |  |  |
| 2 | **caArray 2.5.1** |  | 2013-06-28 → 2013-07-05 (+7d) | 149.3d → 155d | 85% → 89% |  |  |
| 31 | QA critical fixes | 2013-06-04 A | 2013-06-11 A |  | 0% → 100% | 163d → none |  |
| 32 | Redo Appscan on QA tier | 2013-06-04 A | 2013-06-11 → 2013-06-18 (+7d) | 5d → 10.7d | 0% → 75% |  | constraint none → finish no earlier than 2013-06-18 |
| 33 | Deploy to STAGE | 2013-06-11 → 2013-06-19 (+8d) | 2013-06-12 → 2013-06-19 (+7d) |  |  |  |  |
| 34 | Appscan on STAGE tier | 2013-06-12 → 2013-06-20 (+8d) | 2013-06-19 → 2013-06-26 (+7d) |  |  |  |  |
| 35 | Automated Regression Testing on STAGE | 2013-06-12 → 2013-06-20 (+8d) | 2013-06-18 → 2013-06-25 (+7d) |  |  |  |  |
| 36 | API Testing on STAGE | 2013-06-18 → 2013-06-26 (+8d) | 2013-06-20 → 2013-06-27 (+7d) |  |  |  |  |
| 37 | Test Results Review and Reporting | 2013-06-20 → 2013-06-28 (+8d) | 2013-06-25 → 2013-07-02 (+7d) |  |  |  |  |
| 38 | Create release artifacts | 2013-06-12 → 2013-06-20 (+8d) | 2013-06-13 → 2013-06-20 (+7d) |  |  |  |  |
| 39 | Deploy to PRODUCTION | 2013-06-25 → 2013-07-03 (+8d) | 2013-06-27 → 2013-07-04 (+7d) |  |  |  |  |
| 40 | Update product landing page | 2013-06-27 → 2013-07-05 (+8d) | 2013-06-28 → 2013-07-05 (+7d) |  |  |  |  |
| 41 | QA smoke tests PRODUCTION | 2013-06-27 → 2013-07-05 (+8d) | 2013-06-28 → 2013-07-05 (+7d) |  |  |  |  |
| 42 | MILESTONE: RELEASE 2.5.1 | 2013-06-28 → 2013-07-05 (+7d) | 2013-06-28 → 2013-07-05 (+7d) |  |  |  |  |
| 43 | **caArray 2.5.2** | 2013-06-12 → 2013-06-20 (+8d) | 2014-01-24 → 2014-01-31 (+7d) |  |  |  |  |
| 44 | CSM/UPT upgrade | 2013-06-12 → 2013-06-20 (+8d) | 2013-06-26 → 2013-07-03 (+7d) |  |  |  |  |
| 45 | FISMA POAM | 2013-06-26 → 2013-07-04 (+8d) | 2013-07-24 → 2013-07-31 (+7d) |  |  |  |  |
| 46 | Support Gforge Retirement | 2013-07-24 → 2013-08-01 (+8d) | 2013-07-31 → 2013-08-07 (+7d) |  |  |  |  |
| 47 | Bug Fixes | 2013-07-31 → 2013-08-08 (+8d) | 2013-08-28 → 2013-09-04 (+7d) |  |  |  |  |
| 48 | Data Migration to File System | 2013-08-28 → 2013-09-05 (+8d) | 2013-10-09 → 2013-10-16 (+7d) |  |  |  |  |
| 49 | Any Improvements Requested | 2013-10-09 → 2013-10-17 (+8d) | 2013-11-06 → 2013-11-13 (+7d) |  |  |  |  |
| 50 | MILESTONE: EPLC REVIEW (as needed) | 2013-11-06 → 2013-11-14 (+8d) | 2013-11-08 → 2013-11-15 (+7d) |  |  |  |  |
| 51 | Automated Regression Testing on QA tier | 2013-11-08 → 2013-11-18 (+10d) | 2013-11-15 → 2013-11-22 (+7d) |  |  |  |  |
| 52 | Manual Regression Testing on QA tier | 2013-11-15 → 2013-11-25 (+10d) | 2013-11-21 → 2013-11-28 (+7d) |  |  |  |  |
| 53 | Installer Testing | 2013-11-21 → 2013-11-29 (+8d) | 2013-11-27 → 2013-12-04 (+7d) |  |  |  |  |
| 54 | Section 508 testing on QA tier | 2013-11-27 → 2013-12-05 (+8d) | 2013-11-29 → 2013-12-06 (+7d) |  |  |  |  |
| 55 | Appscan on QA tier | 2013-11-15 → 2013-11-25 (+10d) | 2013-12-13 → 2013-12-20 (+7d) |  |  |  |  |
| 56 | Test Results Review and Reporting | 2013-12-13 → 2013-12-23 (+10d) | 2013-12-18 → 2013-12-25 (+7d) |  |  |  |  |
| 57 | Deploy to STAGE | 2013-12-18 → 2013-12-26 (+8d) | 2013-12-19 → 2013-12-26 (+7d) |  |  |  |  |
| 58 | Appscan on STAGE tier | 2013-12-19 → 2013-12-27 (+8d) | 2014-01-16 → 2014-01-23 (+7d) |  |  |  |  |
| 59 | Automated Regression Testing on STAGE | 2013-12-19 → 2013-12-27 (+8d) | 2013-12-25 → 2014-01-01 (+7d) |  |  |  |  |
| 60 | API Testing on STAGE | 2013-12-25 → 2014-01-02 (+8d) | 2013-12-27 → 2014-01-03 (+7d) |  |  |  |  |
| 61 | Test Results Review and Reporting | 2014-01-16 → 2014-01-24 (+8d) | 2014-01-21 → 2014-01-28 (+7d) |  |  |  |  |
| 62 | Create release artifacts | 2013-12-19 → 2013-12-27 (+8d) | 2013-12-20 → 2013-12-27 (+7d) |  |  |  |  |
| 63 | Deploy to PRODUCTION | 2014-01-21 → 2014-01-29 (+8d) | 2014-01-23 → 2014-01-30 (+7d) |  |  |  |  |
| 64 | Update product landing page | 2014-01-23 → 2014-01-31 (+8d) | 2014-01-24 → 2014-01-31 (+7d) |  |  |  |  |
| 65 | QA smoke tests PRODUCTION | 2014-01-23 → 2014-01-31 (+8d) | 2014-01-24 → 2014-01-31 (+7d) |  |  |  |  |
| 66 | MILESTONE: RELEASE 2.5.2 | 2014-01-24 → 2014-01-31 (+7d) | 2014-01-24 → 2014-01-31 (+7d) |  |  |  |  |

## Version 14 (saved 2013-06-19)

Note of the change: Updates from the 6/18 status meeting.

Last finish 2014-01-31 → 2014-02-11 (+11d). Complete tasks 27 → 29.

Added:

| ID | Task | Duration | Start | Finish | Predecessors | Resources |
| --- | --- | --- | --- | --- | --- | --- |
| 33 | QA RC3 (OpenSymphony File Reference Change) | 2d | 2013-06-19 | 2013-06-20 | 32 | Marina [12.5%] |
| 34 | Finalize the test report, pass peer review, and obtain QA Director approval | 5d | 2013-06-21 | 2013-06-27 | 33 | Marina [10%]; Winston [10%]; Mike [10%] |

Changed:

| ID | Task | Start | Finish | Duration | Complete | Total float | Predecessors | Other |
| --- | --- | --- | --- | --- | --- | --- | --- | --- |
| 1 | **caArray** |  | 2014-01-31 → 2014-02-11 (+11d) | 305d → 312d |  |  |  |  |
| 2 | **caArray 2.5.1** |  | 2013-07-05 → 2013-07-16 (+11d) | 155d → 162d | 89% → 87% |  |  |  |
| 27 | QA reviews Section 508 compliance report |  | 2013-04-29 A |  | 75% → 100% | 192.55d → none |  |  |
| 32 | Redo Appscan on QA tier |  | 2013-06-18 A |  | 75% → 100% | 0d → none |  |  |
| 35 | Deploy to STAGE | 2013-06-19 → 2013-06-28 (+9d) | 2013-06-19 → 2013-06-28 (+9d) |  |  |  | 32 → 29, 34 |  |
| 36 | Appscan on STAGE tier | 2013-06-20 → 2013-07-01 (+11d) | 2013-06-26 → 2013-07-05 (+9d) |  |  |  |  |  |
| 37 | Automated Regression Testing on STAGE | 2013-06-20 → 2013-07-01 (+11d) | 2013-06-25 → 2013-07-04 (+9d) |  |  |  |  |  |
| 38 | API Testing on STAGE | 2013-06-26 → 2013-07-05 (+9d) | 2013-06-27 → 2013-07-08 (+11d) |  |  |  |  |  |
| 39 | Test Results Review and Reporting | 2013-06-28 → 2013-07-09 (+11d) | 2013-07-02 → 2013-07-11 (+9d) |  |  |  |  |  |
| 40 | Create release artifacts | 2013-06-20 → 2013-07-01 (+11d) | 2013-06-20 → 2013-07-01 (+11d) |  |  |  |  | resources QA*; Winston; Rashmi → QA*; Winston; Mike |
| 41 | Deploy to PRODUCTION | 2013-07-03 → 2013-07-12 (+9d) | 2013-07-04 → 2013-07-15 (+11d) |  |  |  |  |  |
| 42 | Update product landing page | 2013-07-05 → 2013-07-16 (+11d) | 2013-07-05 → 2013-07-16 (+11d) |  |  |  |  | resources Rashmi → Mike; Winston |
| 43 | QA smoke tests PRODUCTION | 2013-07-05 → 2013-07-16 (+11d) | 2013-07-05 → 2013-07-16 (+11d) |  |  |  |  | resources QA*; Rashmi → QA*; Mike |
| 44 | MILESTONE: RELEASE 2.5.1 | 2013-07-05 → 2013-07-16 (+11d) | 2013-07-05 → 2013-07-16 (+11d) |  |  |  |  |  |
| 45 | **caArray 2.5.2** | 2013-06-20 → 2013-07-01 (+11d) | 2014-01-31 → 2014-02-11 (+11d) |  |  |  |  |  |
| 46 | CSM/UPT upgrade | 2013-06-20 → 2013-07-01 (+11d) | 2013-07-03 → 2013-07-12 (+9d) |  |  |  |  |  |
| 47 | FISMA POAM | 2013-07-04 → 2013-07-15 (+11d) | 2013-07-31 → 2013-08-09 (+9d) |  |  |  |  |  |
| 48 | Support Gforge Retirement | 2013-08-01 → 2013-08-12 (+11d) | 2013-08-07 → 2013-08-16 (+9d) |  |  |  |  |  |
| 49 | Bug Fixes | 2013-08-08 → 2013-08-19 (+11d) | 2013-09-04 → 2013-09-13 (+9d) |  |  |  |  |  |
| 50 | Data Migration to File System | 2013-09-05 → 2013-09-16 (+11d) | 2013-10-16 → 2013-10-25 (+9d) |  |  |  |  |  |
| 51 | Any Improvements Requested | 2013-10-17 → 2013-10-28 (+11d) | 2013-11-13 → 2013-11-22 (+9d) |  |  |  |  |  |
| 52 | MILESTONE: EPLC REVIEW (as needed) | 2013-11-14 → 2013-11-25 (+11d) | 2013-11-15 → 2013-11-26 (+11d) |  |  |  |  |  |
| 53 | Automated Regression Testing on QA tier | 2013-11-18 → 2013-11-27 (+9d) | 2013-11-22 → 2013-12-03 (+11d) |  |  |  |  |  |
| 54 | Manual Regression Testing on QA tier | 2013-11-25 → 2013-12-04 (+9d) | 2013-11-28 → 2013-12-09 (+11d) |  |  |  |  |  |
| 55 | Installer Testing | 2013-11-29 → 2013-12-10 (+11d) | 2013-12-04 → 2013-12-13 (+9d) |  |  |  |  |  |
| 56 | Section 508 testing on QA tier | 2013-12-05 → 2013-12-16 (+11d) | 2013-12-06 → 2013-12-17 (+11d) |  |  |  |  |  |
| 57 | Appscan on QA tier | 2013-11-25 → 2013-12-04 (+9d) | 2013-12-20 → 2013-12-31 (+11d) |  |  |  |  |  |
| 58 | Test Results Review and Reporting | 2013-12-23 → 2014-01-01 (+9d) | 2013-12-25 → 2014-01-03 (+9d) |  |  |  |  |  |
| 59 | Deploy to STAGE | 2013-12-26 → 2014-01-06 (+11d) | 2013-12-26 → 2014-01-06 (+11d) |  |  |  |  |  |
| 60 | Appscan on STAGE tier | 2013-12-27 → 2014-01-07 (+11d) | 2014-01-23 → 2014-02-03 (+11d) |  |  |  |  |  |
| 61 | Automated Regression Testing on STAGE | 2013-12-27 → 2014-01-07 (+11d) | 2014-01-01 → 2014-01-10 (+9d) |  |  |  |  |  |
| 62 | API Testing on STAGE | 2014-01-02 → 2014-01-13 (+11d) | 2014-01-03 → 2014-01-14 (+11d) |  |  |  |  |  |
| 63 | Test Results Review and Reporting | 2014-01-24 → 2014-02-04 (+11d) | 2014-01-28 → 2014-02-06 (+9d) |  |  |  |  |  |
| 64 | Create release artifacts | 2013-12-27 → 2014-01-07 (+11d) | 2013-12-27 → 2014-01-07 (+11d) |  |  |  |  |  |
| 65 | Deploy to PRODUCTION | 2014-01-29 → 2014-02-07 (+9d) | 2014-01-30 → 2014-02-10 (+11d) |  |  |  |  |  |
| 66 | Update product landing page | 2014-01-31 → 2014-02-11 (+11d) | 2014-01-31 → 2014-02-11 (+11d) |  |  |  |  |  |
| 67 | QA smoke tests PRODUCTION | 2014-01-31 → 2014-02-11 (+11d) | 2014-01-31 → 2014-02-11 (+11d) |  |  |  |  |  |
| 68 | MILESTONE: RELEASE 2.5.2 | 2014-01-31 → 2014-02-11 (+11d) | 2014-01-31 → 2014-02-11 (+11d) |  |  |  |  |  |

## Version 15 (saved 2013-07-12)

Note of the change: In-progress updates for 2.5.2 release

Last finish 2014-02-11 → 2013-11-29 (-74d). Complete tasks 29 → 31.

Added:

| ID | Task | Duration | Start | Finish | Predecessors | Constraint | Resources |
| --- | --- | --- | --- | --- | --- | --- | --- |
| 47 | Non-development support (documentation, discussion, etc) | 30d | 2013-06-19 | 2013-07-30 |  | start no earlier than 2013-06-19 | Winston [5%]; Mike [5%] |
| 48 | Development | 30d | 2013-07-03 | 2013-08-13 |  | start no earlier than 2013-07-03 | Winston |
| 49 | QA | 30d | 2013-07-17 | 2013-08-27 |  | start no earlier than 2013-07-17 | Marina [25%] |
| 51 | Development | 10d | 2013-08-14 | 2013-08-27 | 48 | start no earlier than 2013-07-03 | Winston [50%] |
| 52 | QA | 10d | 2013-08-28 | 2013-09-10 | 51 | start no earlier than 2013-07-17 | Marina [25%] |
| 53 | **Upgrade CSM/UPT** | 40d | 2013-07-03 | 2013-08-27 |  |  |  |
| 54 | Development | 10d | 2013-07-03 | 2013-07-16 |  | start no earlier than 2013-07-03 | Winston [50%] |
| 55 | QA | 10d | 2013-08-14 | 2013-08-27 | 48 | start no earlier than 2013-07-17 | Marina [25%] |
| 56 | **Fix bugs/address TRANSCEND issues** | 30d | 2013-08-28 | 2013-10-08 |  |  |  |
| 57 | Development | 20d | 2013-08-28 | 2013-09-24 | 51, 54 | start no earlier than 2013-07-03 | Winston |
| 58 | QA | 20d | 2013-09-11 | 2013-10-08 | 52, 55 | start no earlier than 2013-07-17 | Marina [25%] |

Removed: 49 Bug Fixes; 50 Data Migration to File System; 51 Any Improvements Requested

Changed:

| ID | Task | Start | Finish | Duration | Complete | Total float | Predecessors | Other |
| --- | --- | --- | --- | --- | --- | --- | --- | --- |
| 1 | **caArray** |  | 2014-02-11 → 2013-11-29 (-74d) | 312d → 260d |  |  |  |  |
| 2 | **caArray 2.5.1** |  |  |  | 87% → 91% | 150d → 98d |  |  |
| 29 | Test Results Review and Reporting |  | 2013-05-09 A |  | 75% → 100% | 35d → none |  |  |
| 33 | QA RC3 (OpenSymphony File Reference Change) | 2013-06-19 A | 2013-06-20 A |  | 0% → 100% | 0d → none |  |  |
| 34 | Finalize the test report, pass peer review, and obtain QA Director approval | 2013-06-21 A |  |  | 0% → 90% | 0d → 98d |  |  |
| 45 | **caArray 2.5.2** | 2013-07-01 → 2013-06-19 (-12d) | 2014-02-11 → 2013-11-01 (-102d) | 162d → 98d |  | 0d → 20d |  |  |
| 46 | **Address FISMA POAM issues** | 2013-07-01 → 2013-06-19 (-12d) | 2013-07-12 → 2013-08-27 (+46d) | 10d → 50d |  | 0d → 30d | 35 → none | was named CSM/UPT upgrade; resources Winston → none |
| 50 | **Upgrade to Java 1.7** | 2013-07-15 → 2013-08-14 (+30d) | 2013-08-09 → 2013-09-10 (+32d) |  |  | 0d → 20d | 46 → none | was named FISMA POAM; resources Winston; Mike → none |
| 59 | Support Gforge Retirement | 2013-08-12 → 2013-09-11 (+30d) | 2013-08-16 → 2013-09-17 (+32d) |  |  | 0d → 20d | 50 → 52 |  |
| 60 | MILESTONE: EPLC REVIEW (as needed) | 2013-11-25 → 2013-09-18 (-68d) | 2013-11-26 → 2013-09-19 (-68d) |  |  | 0d → 20d | Any Improvements Requested → 59 |  |
| 61 | Automated Regression Testing on QA tier | 2013-11-27 → 2013-09-20 (-68d) | 2013-12-03 → 2013-09-26 (-68d) |  |  | 0d → 20d |  | resources QA* → Marina |
| 62 | Manual Regression Testing on QA tier | 2013-12-04 → 2013-09-27 (-68d) | 2013-12-09 → 2013-10-02 (-68d) |  |  | 10d → 20d |  | resources QA* → Marina |
| 63 | Installer Testing | 2013-12-10 → 2013-10-03 (-68d) | 2013-12-13 → 2013-10-08 (-66d) |  |  | 10d → 20d |  | resources QA* → Marina |
| 64 | Section 508 testing on QA tier | 2013-12-16 → 2013-10-09 (-68d) | 2013-12-17 → 2013-10-10 (-68d) |  |  | 10d → 20d |  | resources QA* → Marina |
| 65 | Appscan on QA tier | 2013-12-04 → 2013-09-27 (-68d) | 2013-12-31 → 2013-10-03 (-89d) | 20d → 5d |  | 0d → 25d |  | resources Systems* → Systems* [20%] |
| 66 | Test Results Review and Reporting | 2014-01-01 → 2013-10-11 (-82d) | 2014-01-03 → 2013-10-15 (-80d) |  |  | 0d → 20d |  | resources QA* → Marina |
| 67 | Deploy to STAGE | 2014-01-06 → 2013-10-16 (-82d) | 2014-01-06 → 2013-10-16 (-82d) |  |  | 0d → 20d |  |  |
| 68 | Appscan on STAGE tier | 2014-01-07 → 2013-10-17 (-82d) | 2014-02-03 → 2013-10-23 (-103d) | 20d → 5d |  | 0d → 21d |  | resources Systems* → Systems* [20%] |
| 69 | Automated Regression Testing on STAGE | 2014-01-07 → 2013-10-17 (-82d) | 2014-01-10 → 2013-10-22 (-80d) |  |  | 14d → 20d |  | resources QA* → Marina |
| 70 | API Testing on STAGE | 2014-01-13 → 2013-10-23 (-82d) | 2014-01-14 → 2013-10-24 (-82d) |  |  | 14d → 20d |  | resources QA* → Marina |
| 71 | Test Results Review and Reporting | 2014-02-04 → 2013-10-25 (-102d) | 2014-02-06 → 2013-10-29 (-100d) |  |  | 0d → 20d |  | resources QA* → Marina |
| 72 | Create release artifacts | 2014-01-07 → 2013-10-17 (-82d) | 2014-01-07 → 2013-10-17 (-82d) |  |  | 25d → 31d |  | resources Rashmi → Mike |
| 73 | Deploy to PRODUCTION | 2014-02-07 → 2013-10-30 (-100d) | 2014-02-10 → 2013-10-31 (-102d) |  |  | 0d → 20d |  |  |
| 74 | Update product landing page | 2014-02-11 → 2013-11-01 (-102d) | 2014-02-11 → 2013-11-01 (-102d) |  |  | 0d → 20d |  | resources Rashmi; Systems* → Systems; Mike |
| 75 | QA smoke tests PRODUCTION | 2014-02-11 → 2013-11-01 (-102d) | 2014-02-11 → 2013-11-01 (-102d) |  |  | 0d → 20d |  | resources QA* → Marina |
| 76 | MILESTONE: RELEASE 2.5.2 | 2014-02-11 → 2013-11-01 (-102d) | 2014-02-11 → 2013-11-01 (-102d) |  |  | 0d → 20d |  |  |

## Version 16 (saved 2013-07-23)

Note of the change: Prep for status meeting.

Last finish stays 2013-11-29. Complete tasks 31 → 33.

Added:

| ID | Task | Duration | Start | Finish | Predecessors | Constraint | Resources |
| --- | --- | --- | --- | --- | --- | --- | --- |
| 24 | **QA Tier** | 90d | 2013-04-09 A | 2013-08-12 |  |  |  |
| 35 | **Struts patch** | 13d | 2013-07-18 A | 2013-08-05 | 34 |  |  |
| 36 | Upgrade to Struts 2.3.15.1 and fix anything that breaks | 2d | 2013-07-18 A | 2013-07-19 A |  | start no earlier than 2013-07-18 | Winston |
| 37 | Obtain permission to deploy to QA Tier | 0d | 2013-07-19 A | 2013-07-19 A | 36 |  | Mike |
| 38 | Deploy to the QA Tier | 1d | 2013-07-22 | 2013-07-22 | 37 |  | Marina |
| 39 | Smoke test | 2d | 2013-07-23 | 2013-07-24 | 38 |  | Marina |
| 40 | Run Section 508 scan and manage issues | 1d | 2013-07-25 | 2013-07-25 | 39 |  | Mike |
| 41 | Run security appscan | 5d | 2013-07-25 | 2013-07-31 | 39 |  | Systems |
| 42 | Regression test | 7d | 2013-07-25 | 2013-08-02 | 39 |  | Marina |
| 43 | Test local install | 3d | 2013-07-23 | 2013-07-25 | 38 |  | Marina |
| 44 | Test local upgrade | 4d | 2013-07-23 | 2013-07-26 | 38 |  | Marina |
| 45 | Update test report | 1d | 2013-08-05 | 2013-08-05 | 39, 40, 41, 42, 43, 44 |  | Marina |
| 46 | Request approval to deploy to STAGE | 0d | 2013-08-05 | 2013-08-05 | 45 |  | Marina |
| 48 | Approval to deploy to STAGE | 0d | 2013-08-08 | 2013-08-08 | 47 |  | QA* |
| 50 | **STAGE Tier** | 23d | 2013-08-08 | 2013-09-10 |  |  |  |
| 51 | Request deployment to STAGE | 0d | 2013-08-08 | 2013-08-08 | 48 |  | Marina; Mike |
| 55 | Request security appscan | 0d | 2013-08-19 | 2013-08-19 | 53 |  | Marina; Mike |
| 56 | Run security appscan | 10d | 2013-08-20 | 2013-09-02 | 55 |  | Systems* |
| 57 | Create QA Test Summary Report | 3d | 2013-09-03 | 2013-09-05 | 56 |  | Marina |
| 58 | Request approval to deploy to PROD | 0d | 2013-09-05 | 2013-09-05 | 57 |  | Marina |
| 59 | Test Results Review and Reporting | 3d | 2013-09-06 | 2013-09-10 | 58 |  | QA* |
| 60 | Approval to deploy to PROD | 0d | 2013-09-10 | 2013-09-10 | 59 |  | GQR |
| 61 | **PRODUCTION** | 5d? | 2013-09-11 | 2013-09-17 |  |  |  |
| 62 | Request deployment to PRODUCTION | 1d? | 2013-09-11 | 2013-09-11 | 60 |  | GQR |

Removed: 34 Finalize the test report, pass peer review, and obtain QA Director approval; 36 Appscan on STAGE tier

Changed:

| ID | Task | Start | Finish | Duration | Complete | Total float | Predecessors | Other |
| --- | --- | --- | --- | --- | --- | --- | --- | --- |
| 1 | **caArray** |  |  | 260d → 260d? | 29% → 27% |  |  |  |
| 2 | **caArray 2.5.1** |  | 2013-07-16 → 2013-09-17 (+63d) | 162d → 207d? | 91% → 77% | 98d → 53d |  |  |
| 47 | Test Results Review and Reporting | 2013-07-09 → 2013-08-06 (+28d) | 2013-07-11 → 2013-08-08 (+28d) |  |  | 142d → 53d | 53, 54, Appscan on STAGE tier → 46 |  |
| 49 | Create release artifacts | 2013-07-01 → 2013-08-09 (+39d) | 2013-07-01 → 2013-08-12 (+42d) | 1d → 2d |  | 153d → 79d | 52 → 48 | resources QA*; Winston; Mike → Mike; Abe |
| 52 | Deploy to STAGE | 2013-06-28 → 2013-08-09 (+42d) | 2013-06-28 → 2013-08-13 (+46d) | 1d → 3d |  | 142d → 53d | 30, Finalize the test report, pass peer review, and obtain QA Director approval → 51 |  |
| 53 | Automated Regression Testing on STAGE | 2013-07-01 → 2013-08-14 (+44d) | 2013-07-04 → 2013-08-19 (+46d) |  |  | 142d → 53d |  |  |
| 54 | API Testing on STAGE | 2013-07-05 → 2013-08-20 (+46d) | 2013-07-08 → 2013-08-21 (+44d) |  |  | 142d → 72d |  |  |
| 63 | Deploy to PRODUCTION | 2013-07-12 → 2013-09-12 (+62d) | 2013-07-15 → 2013-09-16 (+63d) | 2d → 3d |  | 142d → 53d | 47 → 62 |  |
| 64 | Update product landing page | 2013-07-16 → 2013-09-17 (+63d) | 2013-07-16 → 2013-09-17 (+63d) | 1d → 0.5d |  | 142d → 53.5d |  | resources Mike; Winston → none |
| 65 | QA smoke tests PRODUCTION | 2013-07-16 → 2013-09-17 (+63d) | 2013-07-16 → 2013-09-17 (+63d) |  |  | 142d → 53d |  | resources QA*; Mike → QA* |
| 66 | MILESTONE: RELEASE 2.5.1 | 2013-07-16 → 2013-09-17 (+63d) | 2013-07-16 → 2013-09-17 (+63d) |  |  | 98d → 53d | 65 → 61 |  |

## Version 17 (saved 2013-07-25)

Last finish stays 2013-11-29. Complete tasks 33 → 34.

Added:

| ID | Task | Duration | Start | Finish | Predecessors | Resources |
| --- | --- | --- | --- | --- | --- | --- |
| 45 | Request approval to deploy to STAGE and PROD | 0d | 2013-08-01 | 2013-08-01 | 44 | Marina |
| 47 | Approval to deploy to STAGE and PROD | 0d | 2013-08-06 | 2013-08-06 | 46 | QA* |
| 64 | **Development** | 212d | 2012-12-03 | 2013-09-24 |  |  |
| 77 | Cut release candidate | 0d | 2013-08-13 | 2013-08-13 | 67, 70, 73 | Winston |
| 78 | Request approval to deploy to QA | 0d | 2013-08-13 | 2013-08-13 | 77 | Mike |
| 80 | Approval to deploy to QA | 0d | 2013-08-16 | 2013-08-16 | 79 | GQR |
| 81 | **QA Tier** | 15d? | 2013-08-19 | 2013-09-06 |  |  |
| 82 | Deploy to QA tier | 1d? | 2013-08-19 | 2013-08-19 | 80 |  |
| 83 | **Regression Testing on QA tier** | 9d | 2013-08-20 | 2013-08-30 |  | Marina |
| 84 | Automated testing | 5d | 2013-08-20 | 2013-08-26 | 82 | Marina |
| 85 | Manual testing | 4d | 2013-08-27 | 2013-08-30 | 84 | Marina |
| 93 | **STAGE Tier** | 19d | 2013-09-04 | 2013-10-01 |  |  |
| 94 | Request deployment to STAGE | 0d | 2013-09-04 | 2013-09-04 | 91 | Marina; Mike |
| 96 | Automated regression testing | 4d | 2013-09-10 | 2013-09-13 | 95 | Marina |
| 97 | API testing | 2d | 2013-09-10 | 2013-09-11 | 95 |  |
| 98 | Request security appscan | 0d | 2013-09-09 | 2013-09-09 | 95 | Marina; Mike |
| 99 | Run security appscan | 10d | 2013-09-10 | 2013-09-23 | 98 | Systems* |
| 100 | Create QA Test Summary Report | 3d | 2013-09-24 | 2013-09-26 | 99, 96, 97 | Marina |
| 102 | Test Results Review and Reporting | 3d | 2013-09-27 | 2013-10-01 | 101 | QA* |
| 104 | **PRODUCTION** | 5d? | 2013-10-02 | 2013-10-08 |  |  |
| 105 | Request deployment to PRODUCTION | 1d? | 2013-10-02 | 2013-10-02 | 103 | GQR |

Removed: 42 Regression test; 53 Automated Regression Testing on STAGE; 72 Upgrade to Java 1.7; 73 Development; 74 QA; 83 Automated Regression Testing on QA tier; 84 Manual Regression Testing on QA tier; 90 Appscan on STAGE tier; 91 Automated Regression Testing on STAGE; 92 API Testing on STAGE; 102 *QA and Systems are EXTERNAL resources/dependencies

Changed:

| ID | Task | Start | Finish | Duration | Complete | Total float | Predecessors | Other |
| --- | --- | --- | --- | --- | --- | --- | --- | --- |
| 1 | **caArray** |  |  |  | 27% → 28% |  |  |  |
| 2 | **caArray 2.5.1** |  | 2013-09-17 → 2013-08-26 (-22d) | 207d? → 191d? | 77% → 83% | 53d → 69d |  |  |
| 24 | **QA Tier** |  | 2013-08-12 → 2013-08-08 (-4d) | 90d → 88d | 71% → 79% | 79d → 81d |  |  |
| 35 | **Struts patch** |  | 2013-08-05 → 2013-08-01 (-4d) | 13d → 11d | 8% → 21% | 53d → 69d |  |  |
| 38 | Deploy to the QA Tier | 2013-07-22 A | 2013-07-22 A |  | 0% → 100% | 84d → none |  |  |
| 40 | Run Section 508 scan and manage issues | 2013-07-25 A |  |  | 0% → 90% | 90d → 73d |  |  |
| 44 | Update test report | 2013-08-05 → 2013-08-01 (-4d) | 2013-08-05 → 2013-08-01 (-4d) |  |  | 84d → 69d | 39, 40, 41, Regression test, 42, 43 → 39, 40, 41, 42, 43 |  |
| 46 | Test Results Review and Reporting | 2013-08-06 → 2013-08-02 (-4d) | 2013-08-08 → 2013-08-06 (-2d) |  |  | 53d → 69d | 89 → 45 |  |
| 48 | Create release artifacts | 2013-08-09 → 2013-08-07 (-2d) | 2013-08-12 → 2013-08-08 (-4d) |  |  | 79d → 81d | 91 → 47 | resources Mike; Abe → Mike; Winston |
| 49 | **STAGE Tier** | 2013-08-08 → 2013-08-06 (-2d) | 2013-09-10 → 2013-08-26 (-15d) | 23d → 14d |  | 53d → 69d |  |  |
| 50 | Request deployment to STAGE | 2013-08-08 → 2013-08-06 (-2d) | 2013-08-08 → 2013-08-06 (-2d) |  |  | 53d → 69d | 91 → 47 |  |
| 51 | Deploy to STAGE | 2013-08-09 → 2013-08-07 (-2d) | 2013-08-13 → 2013-08-09 (-4d) |  |  | 53d → 69d |  |  |
| 52 | API Testing on STAGE | 2013-08-20 → 2013-08-12 (-8d) | 2013-08-21 → 2013-08-13 (-8d) |  |  | 72d → 78d | Automated Regression Testing on STAGE → 51 |  |
| 53 | Request security appscan | 2013-08-19 → 2013-08-09 (-10d) | 2013-08-19 → 2013-08-09 (-10d) |  |  | 53d → 69d | Automated Regression Testing on STAGE → 51 |  |
| 54 | Run security appscan | 2013-08-20 → 2013-08-12 (-8d) | 2013-09-02 → 2013-08-16 (-17d) | 10d → 5d |  | 53d → 69d |  |  |
| 55 | Create QA Test Summary Report | 2013-09-03 → 2013-08-19 (-15d) | 2013-09-05 → 2013-08-21 (-15d) |  |  | 53d → 69d |  |  |
| 56 | Test Results Review and Reporting | 2013-09-06 → 2013-08-22 (-15d) | 2013-09-10 → 2013-08-26 (-15d) |  |  | 53d → 69d | 101 → 55 |  |
| 57 | **PRODUCTION** | 2013-09-11 → 2013-08-07 (-35d) | 2013-09-17 → 2013-08-13 (-35d) |  |  | 53d → 78d |  |  |
| 58 | Request deployment to PRODUCTION | 2013-09-11 → 2013-08-07 (-35d) | 2013-09-11 → 2013-08-07 (-35d) |  |  | 53d → 78d | 103 → 47 |  |
| 59 | Deploy to PRODUCTION | 2013-09-12 → 2013-08-08 (-35d) | 2013-09-16 → 2013-08-12 (-35d) |  |  | 53d → 78d |  |  |
| 60 | Update product landing page | 2013-09-17 → 2013-08-13 (-35d) | 2013-09-17 → 2013-08-13 (-35d) |  |  | 53.5d → 78.5d |  |  |
| 61 | QA smoke tests PRODUCTION | 2013-09-17 → 2013-08-13 (-35d) | 2013-09-17 → 2013-08-13 (-35d) |  |  | 53d → 78d |  |  |
| 62 | MILESTONE: RELEASE 2.5.1 | 2013-09-17 → 2013-08-13 (-35d) | 2013-09-17 → 2013-08-13 (-35d) |  |  | 53d → 78d |  |  |
| 63 | **caArray 2.5.2** | 2013-06-19 → 2012-12-03 (-198d) | 2013-11-01 → 2013-09-24 (-38d) | 98d → 212d |  | 20d → 48d |  |  |
| 72 | **Fix bugs/address TRANSCEND issues** | 2013-08-28 → 2013-07-17 (-42d) | 2013-10-08 → 2013-09-24 (-14d) | 30d → 50d |  | 38d → 36d |  |  |
| 73 | Development | 2013-08-28 → 2013-07-17 (-42d) | 2013-09-24 → 2013-08-13 (-42d) |  |  | 48d → 78d | Development, 70 → 70 |  |
| 74 | QA | 2013-09-11 → 2013-08-28 (-14d) | 2013-10-08 → 2013-09-24 (-14d) |  |  | 38d → 48d | QA, 71 → 71 |  |
| 75 | Support Gforge Retirement | 2013-09-11 → 2012-12-03 (-282d) | 2013-09-17 → 2012-12-07 (-284d) |  |  | 20d → 253d | QA → none |  |
| 76 | MILESTONE: EPLC REVIEW (as needed) | 2013-09-18 → 2012-12-10 (-282d) | 2013-09-19 → 2012-12-11 (-282d) |  |  | 20d → 253d |  |  |
| 79 | Test Results Review and Reporting | 2013-10-11 → 2013-08-14 (-58d) | 2013-10-15 → 2013-08-16 (-60d) |  |  | 20d → 36d | 88, Automated Regression Testing on QA tier, Manual Regression Testing on QA tier, 86, 87 → 78 | resources Marina → QA* |
| 86 | Installer Testing | 2013-10-03 → 2013-08-20 (-44d) | 2013-10-08 → 2013-08-23 (-46d) |  |  | 20d → 43d | Manual Regression Testing on QA tier → 82 |  |
| 87 | Section 508 testing on QA tier | 2013-10-09 → 2013-08-20 (-50d) | 2013-10-10 → 2013-08-21 (-50d) |  |  | 20d → 72d | 86 → 82 | resources Marina → Mike |
| 88 | Appscan on QA tier | 2013-09-27 → 2013-08-20 (-38d) | 2013-10-03 → 2013-08-26 (-38d) |  |  | 25d → 36d | Automated Regression Testing on QA tier → 82 | resources Systems* [20%] → Systems* |
| 89 | Request approval to deploy to STAGE | 2013-08-05 → 2013-08-30 (+25d) | 2013-08-05 → 2013-08-30 (+25d) |  |  | 53d → 38d | 44 → 88, 83, 86, 87 |  |
| 90 | Test Results Review and Reporting | 2013-10-25 → 2013-09-02 (-53d) | 2013-10-29 → 2013-09-04 (-55d) |  |  | 20d → 38d | Appscan on STAGE tier, Automated Regression Testing on STAGE, API Testing on STAGE → 89 | resources Marina → QA* |
| 91 | Approval to deploy to STAGE | 2013-08-08 → 2013-09-04 (+27d) | 2013-08-08 → 2013-09-04 (+27d) |  |  | 53d → 38d | 46 → 90 |  |
| 92 | Create release artifacts | 2013-10-17 → 2013-09-05 (-42d) | 2013-10-17 → 2013-09-06 (-41d) | 1d → 2d |  | 31d → 60d | 95 → 91 | resources Mike → Mike; Winston |
| 95 | Deploy to STAGE | 2013-10-16 → 2013-09-05 (-41d) | 2013-10-16 → 2013-09-09 (-37d) | 1d → 3d |  | 20d → 38d | 79 → 94 |  |
| 101 | Request approval to deploy to PROD | 2013-09-05 → 2013-09-26 (+21d) | 2013-09-05 → 2013-09-26 (+21d) |  |  | 53d → 38d | 55 → 100 |  |
| 103 | Approval to deploy to PROD | 2013-09-10 → 2013-10-01 (+21d) | 2013-09-10 → 2013-10-01 (+21d) |  |  | 53d → 38d | 56 → 102 |  |
| 106 | Deploy to PRODUCTION | 2013-10-30 → 2013-10-03 (-27d) | 2013-10-31 → 2013-10-07 (-24d) | 2d → 3d |  | 20d → 38d | 90 → 105 |  |
| 107 | Update product landing page | 2013-11-01 → 2013-10-08 (-24d) | 2013-11-01 → 2013-10-08 (-24d) | 1d → 0.5d |  | 20d → 38.5d |  | resources Systems; Mike → none |
| 108 | QA smoke tests PRODUCTION | 2013-11-01 → 2013-10-08 (-24d) | 2013-11-01 → 2013-10-08 (-24d) |  |  | 20d → 38d |  | resources Marina → QA* |
| 109 | MILESTONE: RELEASE 2.5.2 | 2013-11-01 → 2013-10-08 (-24d) | 2013-11-01 → 2013-10-08 (-24d) |  |  | 20d → 38d | 108 → 104 |  |
| 110 | User Support |  |  |  |  |  |  | resources Winston; Rashmi → Winston; Rashmi; Mike |

## Version 18 (saved 2013-07-29)

Note of the change: Status updates

Last finish stays 2013-11-29. Complete tasks 34 → 37.

Changed:

| ID | Task | Start | Finish | Duration | Complete | Total float | Predecessors | Other |
| --- | --- | --- | --- | --- | --- | --- | --- | --- |
| 1 | **caArray** |  |  |  | 28% → 27% |  |  |  |
| 2 | **caArray 2.5.1** |  | 2013-08-26 → 2013-08-27 (+1d) | 191d? → 192d? | 83% → 86% | 69d → 68d |  |  |
| 24 | **QA Tier** |  | 2013-08-08 → 2013-08-09 (+1d) | 88d → 89d | 79% → 87% | 81d → 80d |  |  |
| 35 | **Struts patch** |  | 2013-08-01 → 2013-08-02 (+1d) | 11d → 12d | 21% → 59% | 69d → 68d |  |  |
| 39 | Smoke test | 2013-07-23 A | 2013-07-24 → 2013-07-25 A (+1d) | 2d → 3d | 0% → 100% | 69d → none |  |  |
| 40 | Run Section 508 scan and manage issues |  | 2013-07-25 A |  | 90% → 100% | 73d → none | 39 → 38 |  |
| 41 | Run security appscan | 2013-07-25 → 2013-07-26 (+1d) | 2013-07-31 → 2013-08-01 (+1d) |  |  | 69d → 68d |  |  |
| 42 | Test local install | 2013-07-23 → 2013-07-26 A (+3d) | 2013-07-25 → 2013-07-29 A (+4d) | 3d → 2d | 0% → 100% | 73d → none | 38 → 39 |  |
| 43 | Test local upgrade | 2013-07-23 A | 2013-07-26 → 2013-07-30 (+4d) | 4d → 2d | 0% → 50% | 72d → 70d | 38 → 42 |  |
| 44 | Update test report | 2013-08-01 → 2013-08-02 (+1d) | 2013-08-01 → 2013-08-02 (+1d) |  |  | 69d → 68d |  |  |
| 45 | Request approval to deploy to STAGE and PROD | 2013-08-01 → 2013-08-02 (+1d) | 2013-08-01 → 2013-08-02 (+1d) |  |  | 69d → 68d |  |  |
| 46 | Test Results Review and Reporting | 2013-08-02 → 2013-08-05 (+3d) | 2013-08-06 → 2013-08-07 (+1d) |  |  | 69d → 68d |  |  |
| 47 | Approval to deploy to STAGE and PROD | 2013-08-06 → 2013-08-07 (+1d) | 2013-08-06 → 2013-08-07 (+1d) |  |  | 69d → 68d |  |  |
| 48 | Create release artifacts | 2013-08-07 → 2013-08-08 (+1d) | 2013-08-08 → 2013-08-09 (+1d) |  |  | 81d → 80d |  |  |
| 49 | **STAGE Tier** | 2013-08-06 → 2013-08-07 (+1d) | 2013-08-26 → 2013-08-27 (+1d) |  |  | 69d → 68d |  |  |
| 50 | Request deployment to STAGE | 2013-08-06 → 2013-08-07 (+1d) | 2013-08-06 → 2013-08-07 (+1d) |  |  | 69d → 68d |  |  |
| 51 | Deploy to STAGE | 2013-08-07 → 2013-08-08 (+1d) | 2013-08-09 → 2013-08-12 (+3d) |  |  | 69d → 68d |  |  |
| 52 | API Testing on STAGE | 2013-08-12 → 2013-08-13 (+1d) | 2013-08-13 → 2013-08-14 (+1d) |  |  | 78d → 77d |  | resources QA* → Ye |
| 53 | Request security appscan | 2013-08-09 → 2013-08-12 (+3d) | 2013-08-09 → 2013-08-12 (+3d) |  |  | 69d → 68d |  |  |
| 54 | Run security appscan | 2013-08-12 → 2013-08-13 (+1d) | 2013-08-16 → 2013-08-19 (+3d) |  |  | 69d → 68d |  |  |
| 55 | Create QA Test Summary Report | 2013-08-19 → 2013-08-20 (+1d) | 2013-08-21 → 2013-08-22 (+1d) |  |  | 69d → 68d |  |  |
| 56 | Test Results Review and Reporting | 2013-08-22 → 2013-08-23 (+1d) | 2013-08-26 → 2013-08-27 (+1d) |  |  | 69d → 68d |  |  |
| 57 | **PRODUCTION** | 2013-08-07 → 2013-08-08 (+1d) | 2013-08-13 → 2013-08-14 (+1d) |  |  | 78d → 77d |  |  |
| 58 | Request deployment to PRODUCTION | 2013-08-07 → 2013-08-08 (+1d) | 2013-08-07 → 2013-08-08 (+1d) |  |  | 78d → 77d |  |  |
| 59 | Deploy to PRODUCTION | 2013-08-08 → 2013-08-09 (+1d) | 2013-08-12 → 2013-08-13 (+1d) |  |  | 78d → 77d |  |  |
| 60 | Update product landing page | 2013-08-13 → 2013-08-14 (+1d) | 2013-08-13 → 2013-08-14 (+1d) |  |  | 78.5d → 77.5d |  |  |
| 61 | QA smoke tests PRODUCTION | 2013-08-13 → 2013-08-14 (+1d) | 2013-08-13 → 2013-08-14 (+1d) |  |  | 78d → 77d |  |  |
| 62 | MILESTONE: RELEASE 2.5.1 | 2013-08-13 → 2013-08-14 (+1d) | 2013-08-13 → 2013-08-14 (+1d) |  |  | 78d → 77d |  |  |
| 63 | **caArray 2.5.2** |  | 2013-09-24 → 2013-10-22 (+28d) | 212d → 232d |  | 48d → 28d |  |  |
| 64 | **Development** |  | 2013-09-24 → 2013-10-22 (+28d) | 212d → 232d |  | 48d → 28d |  |  |
| 65 | **Address FISMA POAM issues** |  | 2013-08-27 → 2013-09-24 (+28d) | 50d → 70d |  | 46d → 26d |  |  |
| 66 | Non-development support (documentation, discussion, etc) |  | 2013-07-30 → 2013-08-27 (+28d) | 30d → 50d |  | 88d → 68d |  |  |
| 67 | Development |  | 2013-08-13 → 2013-09-10 (+28d) | 30d → 50d |  | 36d → 16d |  |  |
| 68 | QA |  | 2013-08-27 → 2013-09-24 (+28d) | 30d → 50d |  | 68d → 48d |  |  |
| 69 | **Upgrade CSM/UPT** |  | 2013-08-27 → 2013-09-24 (+28d) | 40d → 60d |  | 36d → 28d |  |  |
| 71 | QA | 2013-08-14 → 2013-09-11 (+28d) | 2013-08-27 → 2013-09-24 (+28d) |  |  | 48d → 28d |  |  |
| 72 | **Fix bugs/address TRANSCEND issues** |  | 2013-09-24 → 2013-10-22 (+28d) | 50d → 70d |  | 36d → 28d |  |  |
| 74 | QA | 2013-08-28 → 2013-09-25 (+28d) | 2013-09-24 → 2013-10-22 (+28d) |  |  | 48d → 28d |  |  |
| 77 | Cut release candidate | 2013-08-13 → 2013-09-10 (+28d) | 2013-08-13 → 2013-09-10 (+28d) |  |  | 36d → 16d |  |  |
| 78 | Request approval to deploy to QA | 2013-08-13 → 2013-09-10 (+28d) | 2013-08-13 → 2013-09-10 (+28d) |  |  | 36d → 16d |  |  |
| 79 | Test Results Review and Reporting | 2013-08-14 → 2013-09-11 (+28d) | 2013-08-16 → 2013-09-13 (+28d) |  |  | 36d → 16d |  |  |
| 80 | Approval to deploy to QA | 2013-08-16 → 2013-09-13 (+28d) | 2013-08-16 → 2013-09-13 (+28d) |  |  | 36d → 16d |  |  |
| 81 | **QA Tier** | 2013-08-19 → 2013-09-16 (+28d) | 2013-09-06 → 2013-10-04 (+28d) |  |  | 38d → 18d |  |  |
| 82 | Deploy to QA tier | 2013-08-19 → 2013-09-16 (+28d) | 2013-08-19 → 2013-09-16 (+28d) |  |  | 36d → 16d |  |  |
| 83 | **Regression Testing on QA tier** | 2013-08-20 → 2013-09-17 (+28d) | 2013-08-30 → 2013-09-27 (+28d) |  |  | 38d → 18d |  |  |
| 84 | Automated testing | 2013-08-20 → 2013-09-17 (+28d) | 2013-08-26 → 2013-09-23 (+28d) |  |  | 65d → 45d |  |  |
| 85 | Manual testing | 2013-08-27 → 2013-09-24 (+28d) | 2013-08-30 → 2013-09-27 (+28d) |  |  | 65d → 45d |  |  |
| 86 | Installer Testing | 2013-08-20 → 2013-09-17 (+28d) | 2013-08-23 → 2013-09-20 (+28d) |  |  | 43d → 23d |  |  |
| 87 | Section 508 testing on QA tier | 2013-08-20 → 2013-09-17 (+28d) | 2013-08-21 → 2013-09-18 (+28d) |  |  | 72d → 52d |  |  |
| 88 | Appscan on QA tier | 2013-08-20 → 2013-09-17 (+28d) | 2013-08-26 → 2013-09-23 (+28d) |  |  | 36d → 16d |  |  |
| 89 | Request approval to deploy to STAGE | 2013-08-30 → 2013-09-27 (+28d) | 2013-08-30 → 2013-09-27 (+28d) |  |  | 38d → 18d |  |  |
| 90 | Test Results Review and Reporting | 2013-09-02 → 2013-09-30 (+28d) | 2013-09-04 → 2013-10-02 (+28d) |  |  | 38d → 18d |  |  |
| 91 | Approval to deploy to STAGE | 2013-09-04 → 2013-10-02 (+28d) | 2013-09-04 → 2013-10-02 (+28d) |  |  | 38d → 18d |  |  |
| 92 | Create release artifacts | 2013-09-05 → 2013-10-03 (+28d) | 2013-09-06 → 2013-10-04 (+28d) |  |  | 60d → 40d |  |  |
| 93 | **STAGE Tier** | 2013-09-04 → 2013-10-02 (+28d) | 2013-10-01 → 2013-10-29 (+28d) |  |  | 38d → 18d |  |  |
| 94 | Request deployment to STAGE | 2013-09-04 → 2013-10-02 (+28d) | 2013-09-04 → 2013-10-02 (+28d) |  |  | 38d → 18d |  |  |
| 95 | Deploy to STAGE | 2013-09-05 → 2013-10-03 (+28d) | 2013-09-09 → 2013-10-07 (+28d) |  |  | 38d → 18d |  |  |
| 96 | Automated regression testing | 2013-09-10 → 2013-10-08 (+28d) | 2013-09-13 → 2013-10-11 (+28d) |  |  | 44d → 24d |  |  |
| 97 | API testing | 2013-09-10 → 2013-10-08 (+28d) | 2013-09-11 → 2013-10-09 (+28d) |  |  | 46d → 26d |  |  |
| 98 | Request security appscan | 2013-09-09 → 2013-10-07 (+28d) | 2013-09-09 → 2013-10-07 (+28d) |  |  | 38d → 18d |  |  |
| 99 | Run security appscan | 2013-09-10 → 2013-10-08 (+28d) | 2013-09-23 → 2013-10-21 (+28d) |  |  | 38d → 18d |  |  |
| 100 | Create QA Test Summary Report | 2013-09-24 → 2013-10-22 (+28d) | 2013-09-26 → 2013-10-24 (+28d) |  |  | 38d → 18d |  |  |
| 101 | Request approval to deploy to PROD | 2013-09-26 → 2013-10-24 (+28d) | 2013-09-26 → 2013-10-24 (+28d) |  |  | 38d → 18d |  |  |
| 102 | Test Results Review and Reporting | 2013-09-27 → 2013-10-25 (+28d) | 2013-10-01 → 2013-10-29 (+28d) |  |  | 38d → 18d |  |  |
| 103 | Approval to deploy to PROD | 2013-10-01 → 2013-10-29 (+28d) | 2013-10-01 → 2013-10-29 (+28d) |  |  | 38d → 18d |  |  |
| 104 | **PRODUCTION** | 2013-10-02 → 2013-10-30 (+28d) | 2013-10-08 → 2013-11-05 (+28d) |  |  | 38d → 18d |  |  |
| 105 | Request deployment to PRODUCTION | 2013-10-02 → 2013-10-30 (+28d) | 2013-10-02 → 2013-10-30 (+28d) |  |  | 38d → 18d |  |  |
| 106 | Deploy to PRODUCTION | 2013-10-03 → 2013-10-31 (+28d) | 2013-10-07 → 2013-11-04 (+28d) |  |  | 38d → 18d |  |  |
| 107 | Update product landing page | 2013-10-08 → 2013-11-05 (+28d) | 2013-10-08 → 2013-11-05 (+28d) |  |  | 38.5d → 18.5d |  |  |
| 108 | QA smoke tests PRODUCTION | 2013-10-08 → 2013-11-05 (+28d) | 2013-10-08 → 2013-11-05 (+28d) |  |  | 38d → 18d |  |  |

| ID | Task | Start | Finish | Total float |
| --- | --- | --- | --- | --- |
| 109 | MILESTONE: RELEASE 2.5.2 | 2013-10-08 → 2013-11-05 (+28d) | 2013-10-08 → 2013-11-05 (+28d) | 38d → 18d |

## Version 19 (saved 2013-07-30)

Note of the change: Updates from the status meeting and sprint planning

Last finish stays 2013-11-29.

Added:

| ID | Task | Duration | Start | Finish | Predecessors | Constraint | Resources |
| --- | --- | --- | --- | --- | --- | --- | --- |
| 43 | **Resolve issues idenfied by QA** | 17d? | 2013-07-30 | 2013-08-21 |  |  |  |
| 44 | Fix issues 2680, 2681, 2682, 2684 | 15d | 2013-07-30 | 2013-08-19 |  | start no earlier than 2013-07-30 | Winston |
| 45 | Retest issues | 2d | 2013-08-20 | 2013-08-21 | 44 |  | Marina |
| 46 | Re-run Section 508 scan | 1d? | 2013-08-20 | 2013-08-20 | 44 |  | Mike |

Changed:

| ID | Task | Start | Finish | Duration | Complete | Total float | Predecessors |
| --- | --- | --- | --- | --- | --- | --- | --- |
| 1 | **caArray** |  |  |  | 27% → 26% |  |  |
| 2 | **caArray 2.5.1** |  | 2013-08-27 → 2013-09-23 (+27d) | 192d? → 211d? | 86% → 80% | 68d → 49d |  |
| 24 | **QA Tier** |  | 2013-08-09 → 2013-09-05 (+27d) | 89d → 108d? | 87% → 73% | 80d → 61d |  |
| 35 | **Struts patch** |  | 2013-08-02 → 2013-08-29 (+27d) | 12d → 31d? | 59% → 29% | 68d → 66d |  |
| 47 | Run security appscan | 2013-07-26 → 2013-08-22 (+27d) | 2013-08-01 → 2013-08-28 (+27d) |  |  | 68d → 49d | 39 → 45 |
| 48 | Update test report | 2013-08-02 → 2013-08-29 (+27d) | 2013-08-02 → 2013-08-29 (+27d) |  |  | 68d → 49d |  |
| 49 | Request approval to deploy to STAGE and PROD | 2013-08-02 → 2013-08-29 (+27d) | 2013-08-02 → 2013-08-29 (+27d) |  |  | 68d → 49d |  |
| 50 | Test Results Review and Reporting | 2013-08-05 → 2013-08-30 (+25d) | 2013-08-07 → 2013-09-03 (+27d) |  |  | 68d → 49d |  |
| 51 | Approval to deploy to STAGE and PROD | 2013-08-07 → 2013-09-03 (+27d) | 2013-08-07 → 2013-09-03 (+27d) |  |  | 68d → 49d |  |
| 52 | Create release artifacts | 2013-08-08 → 2013-09-04 (+27d) | 2013-08-09 → 2013-09-05 (+27d) |  |  | 80d → 61d |  |
| 53 | **STAGE Tier** | 2013-08-07 → 2013-09-03 (+27d) | 2013-08-27 → 2013-09-23 (+27d) |  |  | 68d → 49d |  |
| 54 | Request deployment to STAGE | 2013-08-07 → 2013-09-03 (+27d) | 2013-08-07 → 2013-09-03 (+27d) |  |  | 68d → 49d |  |
| 55 | Deploy to STAGE | 2013-08-08 → 2013-09-04 (+27d) | 2013-08-12 → 2013-09-06 (+25d) |  |  | 68d → 49d |  |
| 56 | API Testing on STAGE | 2013-08-13 → 2013-09-09 (+27d) | 2013-08-14 → 2013-09-10 (+27d) |  |  | 77d → 58d |  |
| 57 | Request security appscan | 2013-08-12 → 2013-09-06 (+25d) | 2013-08-12 → 2013-09-06 (+25d) |  |  | 68d → 49d |  |
| 58 | Run security appscan | 2013-08-13 → 2013-09-09 (+27d) | 2013-08-19 → 2013-09-13 (+25d) |  |  | 68d → 49d |  |
| 59 | Create QA Test Summary Report | 2013-08-20 → 2013-09-16 (+27d) | 2013-08-22 → 2013-09-18 (+27d) |  |  | 68d → 49d |  |
| 60 | Test Results Review and Reporting | 2013-08-23 → 2013-09-19 (+27d) | 2013-08-27 → 2013-09-23 (+27d) |  |  | 68d → 49d |  |
| 61 | **PRODUCTION** | 2013-08-08 → 2013-09-04 (+27d) | 2013-08-14 → 2013-09-10 (+27d) |  |  | 77d → 58d |  |
| 62 | Request deployment to PRODUCTION | 2013-08-08 → 2013-09-04 (+27d) | 2013-08-08 → 2013-09-04 (+27d) |  |  | 77d → 58d |  |
| 63 | Deploy to PRODUCTION | 2013-08-09 → 2013-09-05 (+27d) | 2013-08-13 → 2013-09-09 (+27d) |  |  | 77d → 58d |  |
| 64 | Update product landing page | 2013-08-14 → 2013-09-10 (+27d) | 2013-08-14 → 2013-09-10 (+27d) |  |  | 77.5d → 58.5d |  |
| 65 | QA smoke tests PRODUCTION | 2013-08-14 → 2013-09-10 (+27d) | 2013-08-14 → 2013-09-10 (+27d) |  |  | 77d → 58d |  |
| 66 | MILESTONE: RELEASE 2.5.1 | 2013-08-14 → 2013-09-10 (+27d) | 2013-08-14 → 2013-09-10 (+27d) |  |  | 77d → 58d |  |

## Version 20 (saved 2013-08-15)

Note of the change: Updates after 8/14 sprint planning

Last finish stays 2013-11-29.

Changed:

| ID | Task | Start | Finish | Duration | Complete | Total float |
| --- | --- | --- | --- | --- | --- | --- |
| 1 | **caArray** |  |  |  | 26% → 27% |  |
| 2 | **caArray 2.5.1** |  | 2013-09-23 → 2013-09-30 (+7d) | 211d? → 216d? |  | 49d → 44d |
| 24 | **QA Tier** |  | 2013-09-05 → 2013-09-12 (+7d) | 108d? → 113d? | 73% → 74% | 61d → 56d |
| 35 | **Struts patch** |  | 2013-08-29 → 2013-09-05 (+7d) | 31d? → 36d? | 29% → 38% | 66d → 61d |
| 43 | **Resolve issues idenfied by QA** | 2013-07-30 A | 2013-08-21 → 2013-08-28 (+7d) | 17d? → 22d? | 0% → 22% | 49d → 67d |
| 44 | Fix issues 2680, 2681, 2682, 2684 | 2013-07-30 A | 2013-08-19 → 2013-08-26 (+7d) | 15d → 20d | 0% → 25% | 49d → 44d |
| 45 | Retest issues | 2013-08-20 → 2013-08-27 (+7d) | 2013-08-21 → 2013-08-28 (+7d) |  |  | 49d → 44d |
| 46 | Re-run Section 508 scan | 2013-08-20 → 2013-08-27 (+7d) | 2013-08-20 → 2013-08-27 (+7d) |  |  | 73d → 68d |
| 47 | Run security appscan | 2013-08-22 → 2013-08-29 (+7d) | 2013-08-28 → 2013-09-04 (+7d) |  |  | 49d → 44d |
| 48 | Update test report | 2013-08-29 → 2013-09-05 (+7d) | 2013-08-29 → 2013-09-05 (+7d) |  |  | 49d → 44d |
| 49 | Request approval to deploy to STAGE and PROD | 2013-08-29 → 2013-09-05 (+7d) | 2013-08-29 → 2013-09-05 (+7d) |  |  | 49d → 44d |
| 50 | Test Results Review and Reporting | 2013-08-30 → 2013-09-06 (+7d) | 2013-09-03 → 2013-09-10 (+7d) |  |  | 49d → 44d |
| 51 | Approval to deploy to STAGE and PROD | 2013-09-03 → 2013-09-10 (+7d) | 2013-09-03 → 2013-09-10 (+7d) |  |  | 49d → 44d |
| 52 | Create release artifacts | 2013-09-04 → 2013-09-11 (+7d) | 2013-09-05 → 2013-09-12 (+7d) |  |  | 61d → 56d |
| 53 | **STAGE Tier** | 2013-09-03 → 2013-09-10 (+7d) | 2013-09-23 → 2013-09-30 (+7d) |  |  | 49d → 44d |
| 54 | Request deployment to STAGE | 2013-09-03 → 2013-09-10 (+7d) | 2013-09-03 → 2013-09-10 (+7d) |  |  | 49d → 44d |
| 55 | Deploy to STAGE | 2013-09-04 → 2013-09-11 (+7d) | 2013-09-06 → 2013-09-13 (+7d) |  |  | 49d → 44d |
| 56 | API Testing on STAGE | 2013-09-09 → 2013-09-16 (+7d) | 2013-09-10 → 2013-09-17 (+7d) |  |  | 58d → 53d |
| 57 | Request security appscan | 2013-09-06 → 2013-09-13 (+7d) | 2013-09-06 → 2013-09-13 (+7d) |  |  | 49d → 44d |
| 58 | Run security appscan | 2013-09-09 → 2013-09-16 (+7d) | 2013-09-13 → 2013-09-20 (+7d) |  |  | 49d → 44d |
| 59 | Create QA Test Summary Report | 2013-09-16 → 2013-09-23 (+7d) | 2013-09-18 → 2013-09-25 (+7d) |  |  | 49d → 44d |
| 60 | Test Results Review and Reporting | 2013-09-19 → 2013-09-26 (+7d) | 2013-09-23 → 2013-09-30 (+7d) |  |  | 49d → 44d |
| 61 | **PRODUCTION** | 2013-09-04 → 2013-09-11 (+7d) | 2013-09-10 → 2013-09-17 (+7d) |  |  | 58d → 53d |
| 62 | Request deployment to PRODUCTION | 2013-09-04 → 2013-09-11 (+7d) | 2013-09-04 → 2013-09-11 (+7d) |  |  | 58d → 53d |
| 63 | Deploy to PRODUCTION | 2013-09-05 → 2013-09-12 (+7d) | 2013-09-09 → 2013-09-16 (+7d) |  |  | 58d → 53d |
| 64 | Update product landing page | 2013-09-10 → 2013-09-17 (+7d) | 2013-09-10 → 2013-09-17 (+7d) |  |  | 58.5d → 53.5d |
| 65 | QA smoke tests PRODUCTION | 2013-09-10 → 2013-09-17 (+7d) | 2013-09-10 → 2013-09-17 (+7d) |  |  | 58d → 53d |
| 66 | MILESTONE: RELEASE 2.5.1 | 2013-09-10 → 2013-09-17 (+7d) | 2013-09-10 → 2013-09-17 (+7d) |  |  | 58d → 53d |

## Version 21 (saved 2013-08-22)

Last finish stays 2013-11-29.

Changed:

| ID | Task | Complete | Other |
| --- | --- | --- | --- |
| 2 | **caArray 2.5.1** | 80% → 82% |  |
| 24 | **QA Tier** | 74% → 78% |  |
| 35 | **Struts patch** | 38% → 50% |  |
| 43 | **Resolve issues idenfied by QA** | 22% → 43% |  |
| 44 | Fix issue 2684 | 25% → 50% | was named Fix issues 2680, 2681, 2682, 2684 |
| 45 | Retest issue |  | was named Retest issues |

## Version 22 (saved 2013-09-05)

Last finish stays 2013-11-29. Complete tasks 37 → 39.

Changed:

| ID | Task | Start | Finish | Duration | Complete | Total float | Other |
| --- | --- | --- | --- | --- | --- | --- | --- |
| 1 | **caArray** |  |  |  | 27% → 29% |  |  |
| 2 | **caArray 2.5.1** |  | 2013-09-30 → 2013-10-10 (+10d) | 216d? → 224d? | 82% → 87% | 44d → 36d |  |
| 24 | **QA Tier** |  | 2013-09-12 → 2013-09-24 (+12d) | 113d? → 121d? | 78% → 88% | 56d → 48d |  |
| 35 | **Struts patch** |  | 2013-09-05 → 2013-09-17 (+12d) | 36d? → 44d? | 50% → 77% | 61d → 53d |  |
| 42 | Test local upgrade |  | 2013-07-30 A |  | 50% → 100% | 70d → none |  |
| 43 | **Resolve issues idenfied by QA** |  | 2013-08-28 → 2013-09-05 (+8d) | 22d? → 28d? | 43% → 90% | 67d → 61d |  |
| 44 | Fix issues 2681, 2684 |  | 2013-08-26 → 2013-09-03 A (+8d) | 20d → 26d | 50% → 100% | 44d → none | was named Fix issue 2684 |
| 45 | Retest issues | 2013-08-27 → 2013-09-04 (+8d) | 2013-08-28 → 2013-09-05 (+8d) |  |  | 44d → 38d | was named Retest issue |
| 46 | Re-run Section 508 scan | 2013-08-27 → 2013-09-04 (+8d) | 2013-08-27 → 2013-09-04 (+8d) |  |  | 68d → 62d |  |
| 47 | Run security appscan | 2013-08-29 → 2013-09-06 (+8d) | 2013-09-04 → 2013-09-12 (+8d) |  |  | 44d → 38d |  |
| 48 | Create test plan and update test report | 2013-09-05 → 2013-09-13 (+8d) | 2013-09-05 → 2013-09-17 (+12d) | 1d → 3d |  | 44d → 36d | was named Update test report |
| 49 | Request approval to deploy to STAGE and PROD | 2013-09-05 → 2013-09-17 (+12d) | 2013-09-05 → 2013-09-17 (+12d) |  |  | 44d → 36d |  |
| 50 | Test Results Review and Reporting | 2013-09-06 → 2013-09-18 (+12d) | 2013-09-10 → 2013-09-20 (+10d) |  |  | 44d → 36d |  |
| 51 | Approval to deploy to STAGE and PROD | 2013-09-10 → 2013-09-20 (+10d) | 2013-09-10 → 2013-09-20 (+10d) |  |  | 44d → 36d |  |
| 52 | Create release artifacts | 2013-09-11 → 2013-09-23 A (+12d) | 2013-09-12 → 2013-09-24 (+12d) |  | 0% → 50% | 56d → 48d |  |
| 53 | **STAGE Tier** | 2013-09-10 → 2013-09-20 (+10d) | 2013-09-30 → 2013-10-10 (+10d) |  |  | 44d → 36d |  |
| 54 | Request deployment to STAGE | 2013-09-10 → 2013-09-20 (+10d) | 2013-09-10 → 2013-09-20 (+10d) |  |  | 44d → 36d |  |
| 55 | Deploy to STAGE | 2013-09-11 → 2013-09-23 (+12d) | 2013-09-13 → 2013-09-25 (+12d) |  |  | 44d → 36d |  |
| 56 | API Testing on STAGE | 2013-09-16 → 2013-09-26 (+10d) | 2013-09-17 → 2013-09-27 (+10d) |  |  | 53d → 45d |  |
| 57 | Request security appscan | 2013-09-13 → 2013-09-25 (+12d) | 2013-09-13 → 2013-09-25 (+12d) |  |  | 44d → 36d |  |
| 58 | Run security appscan | 2013-09-16 → 2013-09-26 (+10d) | 2013-09-20 → 2013-10-02 (+12d) |  |  | 44d → 36d |  |
| 59 | Create QA Test Summary Report | 2013-09-23 → 2013-10-03 (+10d) | 2013-09-25 → 2013-10-07 (+12d) |  |  | 44d → 36d |  |
| 60 | Test Results Review and Reporting | 2013-09-26 → 2013-10-08 (+12d) | 2013-09-30 → 2013-10-10 (+10d) |  |  | 44d → 36d |  |
| 61 | **PRODUCTION** | 2013-09-11 → 2013-09-23 (+12d) | 2013-09-17 → 2013-09-27 (+10d) |  |  | 53d → 45d |  |
| 62 | Request deployment to PRODUCTION | 2013-09-11 → 2013-09-23 (+12d) | 2013-09-11 → 2013-09-23 (+12d) |  |  | 53d → 45d |  |
| 63 | Deploy to PRODUCTION | 2013-09-12 → 2013-09-24 (+12d) | 2013-09-16 → 2013-09-26 (+10d) |  |  | 53d → 45d |  |
| 64 | Update product landing page | 2013-09-17 → 2013-09-27 (+10d) | 2013-09-17 → 2013-09-27 (+10d) |  |  | 53.5d → 45.5d |  |
| 65 | QA smoke tests PRODUCTION | 2013-09-17 → 2013-09-27 (+10d) | 2013-09-17 → 2013-09-27 (+10d) |  |  | 53d → 45d |  |
| 66 | MILESTONE: RELEASE 2.5.1 | 2013-09-17 → 2013-09-27 (+10d) | 2013-09-17 → 2013-09-27 (+10d) |  |  | 53d → 45d |  |

## Version 23 (saved 2013-09-17)

Note of the change: Status updates

Last finish stays 2013-11-29. Complete tasks 39 → 43.

Added:

| ID | Task | Duration | Start | Finish | Predecessors | Resources |
| --- | --- | --- | --- | --- | --- | --- |
| 56 | Test run of restoring caArray from tape backup | 1d? | 2013-09-20 | 2013-09-20 | 55 | Systems; Marina |

Changed:

| ID | Task | Start | Finish | Duration | Complete | Total float | Predecessors | Other |
| --- | --- | --- | --- | --- | --- | --- | --- | --- |
| 1 | **caArray** |  |  |  | 29% → 31% |  |  |  |
| 2 | **caArray 2.5.1** |  | 2013-10-10 → 2013-09-27 (-13d) | 224d? → 215d? | 87% → 95% | 36d → 45d |  |  |
| 24 | **QA Tier** |  | 2013-09-24 → 2013-09-23 (-1d) | 121d? → 120d? | 88% → 99% | 48d → 42d |  |  |
| 35 | **Struts patch** |  |  |  | 77% → 99% | 53d → 45d |  |  |
| 43 | **Resolve issues idenfied by QA** |  | 2013-09-05 A |  | 90% → 100% | 61d → none |  |  |
| 45 | Retest issues | 2013-09-04 A | 2013-09-05 A |  | 0% → 100% | 38d → none |  |  |
| 46 | Re-run Section 508 scan | 2013-09-04 A | 2013-09-04 A |  | 0% → 100% | 62d → none |  |  |
| 47 | Run security appscan | 2013-09-06 A | 2013-09-12 A |  | 0% → 100% | 38d → none |  |  |
| 48 | Update test report | 2013-09-13 A |  |  | 0% → 80% | 36d → 45d |  | was named Create test plan and update test report |
| 50 | Test Results Review and Reporting |  | 2013-09-20 → 2013-09-18 (-2d) | 3d → 1d |  | 36d → 45d |  |  |
| 51 | Approval to deploy to STAGE and PROD | 2013-09-20 → 2013-09-18 (-2d) | 2013-09-20 → 2013-09-18 (-2d) |  |  | 36d → 45d |  |  |
| 52 | Create release artifacts |  | 2013-09-24 → 2013-09-23 A (-1d) | 2d → 1d | 50% → 100% | 48d → none |  |  |
| 53 | **STAGE Tier** | 2013-09-20 → 2013-09-18 A (-2d) | 2013-10-10 → 2013-09-27 (-13d) | 14d → 7d? | 0% → 3% | 36d → 45d |  |  |
| 54 | Request deployment to STAGE | 2013-09-20 → 2013-09-18 (-2d) | 2013-09-20 → 2013-09-18 (-2d) |  |  | 36d → 45d |  | resources Marina; Mike → Sichen |
| 55 | Deploy to STAGE | 2013-09-23 → 2013-09-19 (-4d) | 2013-09-25 → 2013-09-19 (-6d) | 3d → 1d |  | 36d → 45d |  |  |
| 57 | API Testing | 2013-09-26 A |  |  | 0% → 10% |  |  | was named API Testing on STAGE |
| 58 | Smoke Testing | 2013-09-25 → 2013-09-19 (-6d) | 2013-09-25 → 2013-09-19 (-6d) |  |  | 36d → 51d |  | was named Request security appscan; resources Marina; Mike → Marina |
| 59 | Notify Columbia that caArray 2.5.1 is on STAGE | 2013-09-26 → 2013-09-19 (-7d) | 2013-10-02 → 2013-09-19 (-13d) | 5d → 0d |  | 36d → 45d | 58 → 55, 58 | was named Run security appscan; resources Systems* → Mike; Juli |
| 60 | Create QA Test Summary Report | 2013-10-03 → 2013-09-20 (-13d) | 2013-10-07 → 2013-09-23 (-14d) | 3d → 2d |  | 36d → 45d |  |  |
| 61 | Test Results Review and Reporting | 2013-10-08 → 2013-09-24 (-14d) | 2013-10-10 → 2013-09-24 (-16d) | 3d → 1d |  | 36d → 45d |  |  |
| 62 | **PRODUCTION** | 2013-09-23 → 2013-09-24 (+1d) |  | 5d? → 3d |  |  |  |  |
| 63 | Request deployment to PRODUCTION | 2013-09-23 → 2013-09-24 (+1d) | 2013-09-23 → 2013-09-24 (+1d) | 1d? → 0d |  |  | 51 → 61, 51 |  |
| 64 | Deploy to PRODUCTION | 2013-09-24 → 2013-09-25 (+1d) | 2013-09-26 → 2013-09-25 (-1d) | 3d → 1d |  |  |  |  |
| 65 | Update product landing page | 2013-09-27 → 2013-09-26 (-1d) | 2013-09-27 → 2013-09-26 (-1d) |  |  | 45.5d → 46.5d |  |  |
| 66 | QA smoke tests PRODUCTION | 2013-09-27 → 2013-09-26 (-1d) |  | 1d → 2d |  |  |  |  |

## Version 24 (saved 2013-09-24)

Note of the change: Updates for the weekly status meeting

Last finish stays 2013-11-29. Complete tasks 43 → 51.

Changed:

| ID | Task | Start | Finish | Complete | Total float |
| --- | --- | --- | --- | --- | --- |
| 1 | **caArray** |  |  | 31% → 32% |  |
| 2 | **caArray 2.5.1** |  |  | 95% → 97% |  |
| 24 | **QA Tier** |  | 2013-09-23 A | 99% → 100% | 42d → none |
| 35 | **Struts patch** |  | 2013-09-17 A | 99% → 100% | 45d → none |
| 48 | Update test report |  | 2013-09-17 A | 80% → 100% | 45d → none |
| 49 | Request approval to deploy to STAGE and PROD | 2013-09-17 A | 2013-09-17 A | 0% → 100% | 45d → none |
| 50 | Test Results Review and Reporting | 2013-09-18 A | 2013-09-18 A | 0% → 100% | 45d → none |
| 51 | Approval to deploy to STAGE and PROD | 2013-09-18 A | 2013-09-18 A | 0% → 100% | 45d → none |
| 53 | **STAGE Tier** |  |  | 3% → 43% |  |
| 54 | Request deployment to STAGE | 2013-09-18 A | 2013-09-18 A | 0% → 100% | 45d → none |
| 55 | Deploy to STAGE | 2013-09-19 A | 2013-09-19 A | 0% → 100% | 45d → none |
| 57 | API Testing |  | 2013-09-27 A | 10% → 100% | 45d → none |
| 58 | Smoke Testing | 2013-09-19 A |  | 0% → 33% |  |
| 59 | Notify Columbia that caArray 2.5.1 is on STAGE | 2013-09-19 A | 2013-09-19 A | 0% → 100% | 45d → none |

## Version 25 (saved 2013-10-23)

Note of the change: Updated plan for 2.5.2

Last finish 2013-11-29 → 2014-01-03 (+35d). Complete tasks 51 → 86.

Added:

| ID | Task | Duration | Start | Finish | Predecessors | Constraint | Resources |
| --- | --- | --- | --- | --- | --- | --- | --- |
| 70 | **Iteration 83** | 10d | 2013-04-09 A | 2013-04-22 A |  |  |  |
| 71 | ARRAY-2645: Error Adding GenePix Array Design | 10d | 2013-04-09 A | 2013-04-22 A |  | start no earlier than 2013-04-09 | Winston |
| 72 | ARRAY-2610: Memory Usage High While Importing on the Curation Tier | 10d | 2013-04-09 A | 2013-04-22 A |  | start no earlier than 2013-04-09 | Winston |
| 73 | **Iteration 84** | 10d | 2013-04-23 A | 2013-05-06 A | 70 |  |  |
| 74 | ARRAY-2650: When install locally (2.5.1_M13 (RC1)) under Linux command line, - jBoss didn't start automatically | 10d | 2013-04-23 A | 2013-05-06 A |  |  | Winston |
| 75 | **Iteration 87** | 10d | 2013-06-04 A | 2013-06-17 A |  |  |  |
| 76 | ARRAY-2660: Assess the FISMA POAM tasks | 10d | 2013-06-04 A | 2013-06-17 A |  | start no earlier than 2013-06-04 | Winston |
| 77 | ARRAY-2657: Investigate CSM/UPT upgrade | 10d | 2013-06-04 A | 2013-06-17 A |  | start no earlier than 2013-06-04 | Winston |
| 78 | ARRAY-2622: Upgrade from 2.5.0 to 2.5.0.1 produces subtasks failed to find matches error | 10d | 2013-06-04 A | 2013-06-17 A |  | start no earlier than 2013-06-04 | Winston |
| 79 | ARRAY-2624: Broken link - Manage users | 10d | 2013-06-04 A | 2013-06-17 A |  | start no earlier than 2013-06-04 | Winston |
| 80 | **Iteration 88** | 10d | 2013-06-18 A | 2013-07-01 A | 75 |  |  |
| 81 | ARRAY-2579: Installation Guide: Add note on MySQL upgrade | 10d | 2013-06-18 A | 2013-07-01 A |  |  | Winston |
| 82 | ARRAY-2663: Review full POAM and get the dialog started with Craig | 10d | 2013-06-18 A | 2013-07-01 A |  |  | Mike |
| 83 | ARRAY-2661: opensymphony.com no longer available, causes forms to break | 10d | 2013-06-18 A | 2013-07-01 A |  |  | Winston |
| 84 | ARRAY-2619: Move the caArray Release Notes to the Confluence Wiki | 10d | 2013-06-18 A | 2013-07-01 A |  |  | Winston; Mike |
| 85 | **Iteration 89** | 10d | 2013-07-02 A | 2013-07-15 A | 80 |  |  |
| 86 | ARRAY-2009: Contents of audit records need to aligned with NIH policy | 10d | 2013-07-02 A | 2013-07-15 A |  |  | Winston |
| 87 | ARRAY-2014: POAM: Confirm caArray application does not use anything in the following directory | 10d | 2013-07-02 A | 2013-07-15 A |  |  | Winston |
| 88 | ARRAY-2666: Audit changes to experiment metadata and description | 10d | 2013-07-02 A | 2013-07-15 A |  |  | Winston |
| 89 | ARRAY-2669: Audit changes to experiment biomaterials | 10d | 2013-07-02 A | 2013-07-15 A |  |  | Winston |
| 90 | ARRAY-2667: Confirm that the audit functionality includes all of the required fields | 10d | 2013-07-02 A | 2013-07-15 A |  |  | Winston |
| 91 | ARRAY-2665: Review/confirm 2648, 2652, and 2659 | 10d | 2013-07-02 A | 2013-07-15 A |  |  | Winston |
| 92 | **Iteration 90** | 10d | 2013-07-16 A | 2013-07-29 A | 85 |  |  |
| 93 | ARRAY-2678: Upgrade Struts to 2.3.15.1 | 10d | 2013-07-16 A | 2013-07-29 A |  |  | Winston |
| 94 | ARRAY-2670: Changing only an experiment's assay type or array design does not get audited | 10d | 2013-07-16 A | 2013-07-29 A |  |  | Winston |
| 95 | ARRAY-2674: Make it easy for NCI to do a monthly review of audit log entries | 10d | 2013-07-16 A | 2013-07-29 A |  |  | Winston |
| 96 | ARRAY-2679: ActionContextCleanUp deprecated | 10d | 2013-07-16 A | 2013-07-29 A |  |  | Winston |
| 97 | ARRAY-2675: Add time to the audit log details in the interface | 10d | 2013-07-16 A | 2013-07-29 A |  |  | Winston |
| 98 | **Iteration 94** | 10d | 2013-09-11 A | 2013-09-24 A |  |  |  |
| 99 | ARRAY-2683: Customizable monthly Audit Log SQL query | 10d | 2013-09-11 A | 2013-09-24 A |  | start no earlier than 2013-08-14 | Winston |
| 100 | **Iteration 95** | 13d | 2013-09-25 A | 2013-10-11 A | 98 |  |  |
| 101 | ARRAY-2010: Experiment creation and deletion need to be an audited event | 13d | 2013-09-25 A | 2013-10-11 A |  |  | Winston |
| 102 | ARRAY-2668: Audit changes to experiment files | 13d | 2013-09-25 A | 2013-10-11 A |  |  | Winston |
| 103 | ARRAY-2671: Audit changes to array designs | 13d | 2013-09-25 A | 2013-10-11 A |  |  | Winston |
| 104 | ARRAY-2672: Audit changes to terms | 13d | 2013-09-25 A | 2013-10-11 A |  |  | Winston |
| 105 | **Iteration 96** | 14d | 2013-10-14 A | 2013-10-31 | 100 |  |  |
| 106 | ARRAY-2008: Add a warning banner to caArray | 14d | 2013-10-14 | 2013-10-31 |  |  | Winston |
| 107 | ARRAY-2018: Add warning to experiment owner when an experiment is made public | 14d | 2013-10-14 A | 2013-10-31 |  |  | Winston |
| 108 | ARRAY-2673: Audit account logon events | 14d | 2013-10-14 | 2013-10-31 |  |  | Winston |
| 109 | ARRAY-2688: Update page footer | 14d | 2013-10-14 | 2013-10-31 |  |  | Winston |
| 110 | ARRAY-2689: Fix Audit Log junit tests | 14d | 2013-10-14 | 2013-10-31 |  |  | Winston |
| 112 | Create test plan | 3d | 2013-11-01 | 2013-11-05 | 111 |  | Marina |
| 124 | Create QA Test Summary Report | 3d | 2013-11-25 | 2013-11-27 | 118, 121, 122 |  | Marina |

Removed: 70 Address FISMA POAM issues; 71 Non-development support (documentation, discussion, etc); 72 Development; 73 QA; 74 Upgrade CSM/UPT; 75 Development; 76 QA; 77 Fix bugs/address TRANSCEND issues; 78 Development; 79 QA; 80 Support Gforge Retirement; 81 MILESTONE: EPLC REVIEW (as needed)

Changed:

| ID | Task | Start | Finish | Duration | Complete | Total float | Predecessors | Other |
| --- | --- | --- | --- | --- | --- | --- | --- | --- |
| 1 | **caArray** |  | 2013-11-29 → 2014-01-03 (+35d) | 260d? → 285d? | 32% → 58% |  |  |  |
| 2 | **caArray 2.5.1** |  | 2013-09-27 → 2013-09-30 (+3d) | 215d? → 216d? | 97% → 99% | 45d → 69d |  |  |
| 53 | **STAGE Tier** |  |  |  | 43% → 86% | 45d → 70d |  |  |
| 58 | Smoke Testing |  | 2013-09-19 A |  | 33% → 100% | 51d → none |  |  |
| 59 | Notify Columbia that caArray 2.5.1 is on STAGE |  |  |  |  |  | 55, 58 → 55 |  |
| 60 | Create QA Test Summary Report | 2013-09-20 A | 2013-09-23 A |  | 0% → 100% | 45d → none |  |  |
| 61 | Test Results Review and Reporting | 2013-09-24 A | 2013-09-24 A |  | 0% → 100% | 45d → none |  |  |
| 62 | **PRODUCTION** | 2013-09-24 A | 2013-09-27 → 2013-09-30 A (+3d) | 3d → 4d | 0% → 100% | 45d → none |  |  |
| 63 | Request deployment to PRODUCTION | 2013-09-24 A | 2013-09-24 A |  | 0% → 100% | 45d → none |  |  |
| 64 | Deploy to PRODUCTION | 2013-09-25 A | 2013-09-25 → 2013-09-26 A (+1d) | 1d → 2d | 0% → 100% | 45d → none |  |  |
| 65 | Update product landing page | 2013-09-26 → 2013-09-27 A (+1d) | 2013-09-26 → 2013-09-27 A (+1d) |  | 0% → 100% | 46.5d → none |  |  |
| 66 | QA smoke tests PRODUCTION | 2013-09-26 → 2013-09-27 A (+1d) | 2013-09-27 → 2013-09-30 A (+3d) |  | 0% → 100% | 45d → none |  |  |
| 67 | MILESTONE: RELEASE 2.5.1 | 2013-09-27 → 2013-09-30 A (+3d) | 2013-09-27 → 2013-09-30 A (+3d) |  | 0% → 100% | 45d → none |  | constraint start no earlier than 2012-01-09 → finish no earlier than 2013-09-30 |
| 68 | **caArray 2.5.2** | 2012-12-03 → 2013-04-09 A (+127d) | 2013-10-22 → 2013-11-08 (+17d) | 232d → 154d | 0% → 80% | 28d → 0d |  |  |
| 69 | **Development** | 2012-12-03 → 2013-04-09 A (+127d) | 2013-10-22 → 2013-10-31 (+9d) | 232d → 148d | 0% → 81% | 28d → 0d |  |  |
| 111 | Cut release candidate | 2013-09-10 → 2013-10-31 (+51d) | 2013-09-10 → 2013-10-31 (+51d) |  |  | 18d → 0d | Development, Development, Development → 105 |  |
| 113 | Request approval to deploy to QA | 2013-09-10 → 2013-11-05 (+56d) | 2013-09-10 → 2013-11-05 (+56d) |  |  | 18d → 0d | 111 → 112, 111 |  |
| 114 | DEV test results and QA Test Plan review | 2013-09-11 → 2013-11-06 (+56d) | 2013-09-13 → 2013-11-08 (+56d) |  |  | 18d → 0d |  | was named Test Results Review and Reporting |
| 115 | Approval to deploy to QA | 2013-09-13 → 2013-11-08 (+56d) | 2013-09-13 → 2013-11-08 (+56d) |  |  | 18d → 0d |  |  |
| 116 | **QA Tier** | 2013-09-16 → 2013-11-11 (+56d) | 2013-10-04 → 2013-12-04 (+61d) | 15d? → 18d? |  | 18d → 0d |  |  |
| 117 | Deploy to QA tier | 2013-09-16 → 2013-11-11 (+56d) | 2013-09-16 → 2013-11-11 (+56d) |  |  | 18d → 0d |  | resources none → Systems* |
| 118 | **Regression Testing on QA tier** | 2013-09-17 → 2013-11-12 (+56d) | 2013-09-27 → 2013-11-22 (+56d) |  |  | 18d → 0d |  |  |
| 119 | Automated testing | 2013-09-17 → 2013-11-12 (+56d) | 2013-09-23 → 2013-11-18 (+56d) |  |  | 18d → 0d |  |  |
| 120 | Manual testing | 2013-09-24 → 2013-11-19 (+56d) | 2013-09-27 → 2013-11-22 (+56d) |  |  | 18d → 0d |  |  |
| 121 | Installer Testing | 2013-09-17 → 2013-11-12 (+56d) | 2013-09-20 → 2013-11-15 (+56d) |  |  | 23d → 5d |  |  |
| 122 | Section 508 testing on QA tier | 2013-09-17 → 2013-11-12 (+56d) | 2013-09-18 → 2013-11-13 (+56d) |  |  | 25d → 7d |  | resources Mike → Marina |
| 123 | Appscan on QA tier | 2013-09-17 → 2013-11-12 (+56d) | 2013-09-23 → 2013-11-18 (+56d) |  |  | 22d → 34d |  |  |
| 125 | Request approval to deploy to STAGE | 2013-09-27 → 2013-11-27 (+61d) | 2013-09-27 → 2013-11-27 (+61d) |  |  | 18d → 0d | 123, 118, 121, 122 → 124, 123, 118, 121, 122 |  |
| 126 | QA Test Results Review | 2013-09-30 → 2013-11-28 (+59d) | 2013-10-02 → 2013-12-02 (+61d) |  |  | 18d → 0d |  | was named Test Results Review and Reporting |
| 127 | Approval to deploy to STAGE | 2013-10-02 → 2013-12-02 (+61d) | 2013-10-02 → 2013-12-02 (+61d) |  |  | 18d → 0d |  |  |
| 128 | Create release artifacts | 2013-10-03 → 2013-12-03 (+61d) | 2013-10-04 → 2013-12-04 (+61d) |  |  | 40d → 22d |  | resources Mike; Winston → Winston |
| 129 | **STAGE Tier** | 2013-10-02 → 2013-12-02 (+61d) | 2013-10-29 → 2013-12-27 (+59d) |  |  | 18d → 0d |  |  |
| 130 | Request deployment to STAGE | 2013-10-02 → 2013-12-02 (+61d) | 2013-10-02 → 2013-12-02 (+61d) |  |  | 18d → 0d |  | resources Marina; Mike → JJ |
| 131 | Deploy to STAGE | 2013-10-03 → 2013-12-03 (+61d) | 2013-10-07 → 2013-12-05 (+59d) |  |  | 18d → 0d |  |  |
| 132 | Automated regression testing | 2013-10-08 → 2013-12-06 (+59d) | 2013-10-11 → 2013-12-11 (+61d) |  |  | 24d → 6d |  |  |
| 133 | API testing | 2013-10-08 → 2013-12-06 (+59d) | 2013-10-09 → 2013-12-09 (+61d) |  |  | 26d → 8d |  |  |
| 134 | Request security appscan | 2013-10-07 → 2013-12-05 (+59d) | 2013-10-07 → 2013-12-05 (+59d) |  |  | 18d → 0d |  | resources Marina; Mike → Marina |
| 135 | Run security appscan | 2013-10-08 → 2013-12-06 (+59d) | 2013-10-21 → 2013-12-19 (+59d) |  |  | 18d → 0d |  |  |
| 136 | Create QA Test Summary Report | 2013-10-22 → 2013-12-20 (+59d) | 2013-10-24 → 2013-12-24 (+61d) |  |  | 18d → 0d |  |  |
| 137 | Request approval to deploy to PROD | 2013-10-24 → 2013-12-24 (+61d) | 2013-10-24 → 2013-12-24 (+61d) |  |  | 18d → 0d |  |  |
| 138 | Test Results Review and Reporting | 2013-10-25 → 2013-12-25 (+61d) | 2013-10-29 → 2013-12-27 (+59d) |  |  | 18d → 0d |  |  |
| 139 | Approval to deploy to PROD | 2013-10-29 → 2013-12-27 (+59d) | 2013-10-29 → 2013-12-27 (+59d) |  |  | 18d → 0d |  |  |
| 140 | **PRODUCTION** | 2013-10-30 → 2013-12-30 (+61d) | 2013-11-05 → 2014-01-03 (+59d) |  |  | 18d → 0d |  |  |
| 141 | Request deployment to PRODUCTION | 2013-10-30 → 2013-12-30 (+61d) | 2013-10-30 → 2013-12-30 (+61d) |  |  | 18d → 0d |  |  |
| 142 | Deploy to PRODUCTION | 2013-10-31 → 2013-12-31 (+61d) | 2013-11-04 → 2014-01-02 (+59d) |  |  | 18d → 0d |  |  |
| 143 | Update product landing page | 2013-11-05 → 2014-01-03 (+59d) | 2013-11-05 → 2014-01-03 (+59d) |  |  | 18.5d → 0.5d |  |  |
| 144 | QA smoke tests PRODUCTION | 2013-11-05 → 2014-01-03 (+59d) | 2013-11-05 → 2014-01-03 (+59d) |  |  | 18d → 0d |  |  |
| 145 | MILESTONE: RELEASE 2.5.2 | 2013-11-05 → 2014-01-03 (+59d) | 2013-11-05 → 2014-01-03 (+59d) |  |  | 18d → 0d |  |  |

## Version 26 (saved 2013-10-29)

Note of the change: Updates for the status meeting

Last finish stays 2014-01-03. Complete tasks 86 → 87.

Changed:

| ID | Task | Start | Finish | Complete | Total float |
| --- | --- | --- | --- | --- | --- |
| 1 | **caArray** |  |  | 58% → 62% |  |
| 68 | **caArray 2.5.2** |  |  | 80% → 89% |  |
| 69 | **Development** |  |  | 81% → 90% |  |
| 105 | **Iteration 96** |  |  | 5% → 50% |  |
| 106 | ARRAY-2008: Add a warning banner to caArray | 2013-10-14 A | 2013-10-31 A | 0% → 100% | 0d → none |
| 107 | ARRAY-2018: Add warning to experiment owner when an experiment is made public |  |  | 25% → 50% |  |
| 108 | ARRAY-2673: Audit account logon events | 2013-10-14 A |  | 0% → 50% |  |
| 110 | ARRAY-2689: Fix Audit Log junit tests | 2013-10-14 A |  | 0% → 50% |  |

## Version 27 (saved 2013-10-31)

Note of the change: Added holidays

Last finish 2014-01-03 → 2014-01-10 (+7d). Complete tasks 87 → 88.

Changed:

| ID | Task | Start | Finish | Duration | Complete | Total float |
| --- | --- | --- | --- | --- | --- | --- |
| 1 | **caArray** |  | 2014-01-03 → 2014-01-10 (+7d) | 285d? → 286d? |  |  |
| 68 | **caArray 2.5.2** |  | 2013-11-08 → 2013-11-11 (+3d) | 154d → 155d | 89% → 90% |  |
| 69 | **Development** |  | 2013-10-31 → 2013-11-01 (+1d) | 148d → 149d | 90% → 92% |  |
| 105 | **Iteration 96** |  | 2013-10-31 → 2013-11-01 (+1d) | 14d → 15d | 50% → 59% |  |
| 109 | ARRAY-2688: Update page footer |  | 2013-10-31 → 2013-11-01 (+1d) | 14d → 15d |  |  |
| 110 | ARRAY-2689: Fix Audit Log junit tests |  | 2013-10-31 A |  | 50% → 100% | 0d → none |
| 111 | Cut release candidate | 2013-10-31 → 2013-11-01 (+1d) | 2013-10-31 → 2013-11-01 (+1d) |  |  |  |
| 112 | Create test plan | 2013-11-01 → 2013-11-04 (+3d) | 2013-11-05 → 2013-11-06 (+1d) |  |  |  |
| 113 | Request approval to deploy to QA | 2013-11-05 → 2013-11-06 (+1d) | 2013-11-05 → 2013-11-06 (+1d) |  |  |  |
| 114 | DEV test results and QA Test Plan review | 2013-11-06 → 2013-11-07 (+1d) | 2013-11-08 → 2013-11-11 (+3d) |  |  |  |
| 115 | Approval to deploy to QA | 2013-11-08 → 2013-11-11 (+3d) | 2013-11-08 → 2013-11-11 (+3d) |  |  |  |
| 116 | **QA Tier** | 2013-11-11 → 2013-11-12 (+1d) | 2013-12-04 → 2013-12-09 (+5d) |  |  |  |
| 117 | Deploy to QA tier | 2013-11-11 → 2013-11-12 (+1d) | 2013-11-11 → 2013-11-12 (+1d) |  |  |  |
| 118 | **Regression Testing on QA tier** | 2013-11-12 → 2013-11-13 (+1d) | 2013-11-22 → 2013-11-25 (+3d) |  |  |  |
| 119 | Automated testing | 2013-11-12 → 2013-11-13 (+1d) | 2013-11-18 → 2013-11-19 (+1d) |  |  |  |
| 120 | Manual testing | 2013-11-19 → 2013-11-20 (+1d) | 2013-11-22 → 2013-11-25 (+3d) |  |  |  |
| 121 | Installer Testing | 2013-11-12 → 2013-11-13 (+1d) | 2013-11-15 → 2013-11-18 (+3d) |  |  |  |
| 122 | Section 508 testing on QA tier | 2013-11-12 → 2013-11-13 (+1d) | 2013-11-13 → 2013-11-14 (+1d) |  |  |  |
| 123 | Appscan on QA tier | 2013-11-12 → 2013-11-13 (+1d) | 2013-11-18 → 2013-11-19 (+1d) |  |  |  |
| 124 | Create QA Test Summary Report | 2013-11-25 → 2013-11-26 (+1d) | 2013-11-27 → 2013-12-02 (+5d) |  |  |  |
| 125 | Request approval to deploy to STAGE | 2013-11-27 → 2013-12-02 (+5d) | 2013-11-27 → 2013-12-02 (+5d) |  |  |  |
| 126 | QA Test Results Review | 2013-11-28 → 2013-12-03 (+5d) | 2013-12-02 → 2013-12-05 (+3d) |  |  |  |
| 127 | Approval to deploy to STAGE | 2013-12-02 → 2013-12-05 (+3d) | 2013-12-02 → 2013-12-05 (+3d) |  |  |  |
| 128 | Create release artifacts | 2013-12-03 → 2013-12-06 (+3d) | 2013-12-04 → 2013-12-09 (+5d) |  |  |  |
| 129 | **STAGE Tier** | 2013-12-02 → 2013-12-05 (+3d) | 2013-12-27 → 2014-01-03 (+7d) |  |  |  |
| 130 | Request deployment to STAGE | 2013-12-02 → 2013-12-05 (+3d) | 2013-12-02 → 2013-12-05 (+3d) |  |  |  |
| 131 | Deploy to STAGE | 2013-12-03 → 2013-12-06 (+3d) | 2013-12-05 → 2013-12-10 (+5d) |  |  |  |
| 132 | Automated regression testing | 2013-12-06 → 2013-12-11 (+5d) | 2013-12-11 → 2013-12-16 (+5d) |  |  |  |
| 133 | API testing | 2013-12-06 → 2013-12-11 (+5d) | 2013-12-09 → 2013-12-12 (+3d) |  |  |  |
| 134 | Request security appscan | 2013-12-05 → 2013-12-10 (+5d) | 2013-12-05 → 2013-12-10 (+5d) |  |  |  |
| 135 | Run security appscan | 2013-12-06 → 2013-12-11 (+5d) | 2013-12-19 → 2013-12-24 (+5d) |  |  |  |
| 136 | Create QA Test Summary Report | 2013-12-20 → 2013-12-26 (+6d) | 2013-12-24 → 2013-12-30 (+6d) |  |  |  |
| 137 | Request approval to deploy to PROD | 2013-12-24 → 2013-12-30 (+6d) | 2013-12-24 → 2013-12-30 (+6d) |  |  |  |
| 138 | Test Results Review and Reporting | 2013-12-25 → 2013-12-31 (+6d) | 2013-12-27 → 2014-01-03 (+7d) |  |  |  |
| 139 | Approval to deploy to PROD | 2013-12-27 → 2014-01-03 (+7d) | 2013-12-27 → 2014-01-03 (+7d) |  |  |  |
| 140 | **PRODUCTION** | 2013-12-30 → 2014-01-06 (+7d) | 2014-01-03 → 2014-01-10 (+7d) |  |  |  |
| 141 | Request deployment to PRODUCTION | 2013-12-30 → 2014-01-06 (+7d) | 2013-12-30 → 2014-01-06 (+7d) |  |  |  |
| 142 | Deploy to PRODUCTION | 2013-12-31 → 2014-01-07 (+7d) | 2014-01-02 → 2014-01-09 (+7d) |  |  |  |
| 143 | Update product landing page | 2014-01-03 → 2014-01-10 (+7d) | 2014-01-03 → 2014-01-10 (+7d) |  |  |  |
| 144 | QA smoke tests PRODUCTION | 2014-01-03 → 2014-01-10 (+7d) | 2014-01-03 → 2014-01-10 (+7d) |  |  |  |
| 145 | MILESTONE: RELEASE 2.5.2 | 2014-01-03 → 2014-01-10 (+7d) | 2014-01-03 → 2014-01-10 (+7d) |  |  |  |
| 146 | User Support |  | 2013-11-29 → 2013-12-03 (+4d) |  |  | 25d → 26d |

## Version 28 (saved 2013-12-11)

Note of the change: updated the project plan to include testing starting on 12/11/13

Last finish 2014-01-10 → 2014-01-31 (+21d). Complete tasks 88 → 97.

Changed:

| ID | Task | Start | Finish | Duration | Complete | Total float | Other |
| --- | --- | --- | --- | --- | --- | --- | --- |
| 1 | **caArray** |  | 2014-01-10 → 2014-01-31 (+21d) | 286d? → 301d? | 62% → 66% |  |  |
| 68 | **caArray 2.5.2** |  | 2013-11-11 → 2013-12-04 A (+23d) | 155d → 169d | 90% → 100% | 0d → none |  |
| 69 | **Development** |  | 2013-11-01 A |  | 92% → 100% | 0d → none |  |
| 105 | **Iteration 96** |  | 2013-11-01 A |  | 59% → 100% | 0d → none |  |
| 107 | ARRAY-2018: Add warning to experiment owner when an experiment is made public |  | 2013-10-31 A |  | 50% → 100% | 1d → none |  |
| 108 | ARRAY-2673: Audit account logon events |  | 2013-10-31 A |  | 50% → 100% | 1d → none |  |
| 109 | ARRAY-2688: Update page footer | 2013-10-14 A | 2013-11-01 A |  | 0% → 100% | 0d → none |  |
| 111 | Cut release candidate | 2013-11-01 A | 2013-11-01 A |  | 0% → 100% | 0d → none |  |
| 112 | Create test plan | 2013-11-04 A | 2013-11-06 A |  | 0% → 100% | 0d → none |  |
| 113 | Request approval to deploy to QA | 2013-11-06 A | 2013-11-06 A |  | 0% → 100% | 0d → none |  |
| 114 | DEV test results and QA Test Plan review | 2013-11-07 A | 2013-11-11 A |  | 0% → 100% | 0d → none |  |
| 115 | Approval to deploy to QA | 2013-11-11 → 2013-12-04 A (+23d) | 2013-11-11 → 2013-12-04 A (+23d) |  | 0% → 100% | 0d → none | constraint none → start no earlier than 2013-12-04 |
| 116 | **QA Tier** | 2013-11-12 → 2013-12-04 A (+22d) | 2013-12-09 → 2013-12-31 (+22d) | 18d? → 19d? | 0% → 3% | 0d → 22d |  |
| 117 | Deploy to QA tier | 2013-11-12 → 2013-12-04 A (+22d) | 2013-11-12 → 2013-12-04 A (+22d) |  | 0% → 100% | 0d → none |  |
| 118 | **Regression Testing on QA tier** | 2013-11-13 → 2013-12-05 (+22d) | 2013-11-25 → 2013-12-17 (+22d) |  |  | 0d → 1d |  |
| 119 | Automated testing | 2013-11-13 → 2013-12-05 (+22d) | 2013-11-19 → 2013-12-11 (+22d) |  |  | 0d → 1d |  |
| 120 | Manual testing | 2013-11-20 → 2013-12-12 (+22d) | 2013-11-25 → 2013-12-17 (+22d) |  |  | 0d → 1d |  |
| 121 | Installer Testing | 2013-11-13 → 2013-12-05 (+22d) | 2013-11-18 → 2013-12-10 (+22d) |  |  |  |  |
| 122 | Section 508 testing on QA tier | 2013-11-13 → 2013-12-17 (+34d) | 2013-11-14 → 2013-12-18 (+34d) |  |  | 7d → 0d | constraint none → start no earlier than 2013-12-17 |
| 123 | Appscan on QA tier | 2013-11-13 → 2013-12-05 (+22d) | 2013-11-19 → 2013-12-11 (+22d) |  |  |  |  |
| 124 | Create QA Test Summary Report | 2013-11-26 → 2013-12-19 (+23d) | 2013-12-02 → 2013-12-23 (+21d) |  |  |  |  |
| 125 | Request approval to deploy to STAGE | 2013-12-02 → 2013-12-23 (+21d) | 2013-12-02 → 2013-12-23 (+21d) |  |  |  |  |
| 126 | QA Test Results Review | 2013-12-03 → 2013-12-24 (+21d) | 2013-12-05 → 2013-12-27 (+22d) |  |  |  |  |
| 127 | Approval to deploy to STAGE | 2013-12-05 → 2013-12-27 (+22d) | 2013-12-05 → 2013-12-27 (+22d) |  |  |  |  |
| 128 | Create release artifacts | 2013-12-06 → 2013-12-30 (+24d) | 2013-12-09 → 2013-12-31 (+22d) |  |  |  |  |
| 129 | **STAGE Tier** | 2013-12-05 → 2013-12-27 (+22d) | 2014-01-03 → 2014-01-24 (+21d) |  |  |  |  |
| 130 | Request deployment to STAGE | 2013-12-05 → 2013-12-27 (+22d) | 2013-12-05 → 2013-12-27 (+22d) |  |  |  |  |
| 131 | Deploy to STAGE | 2013-12-06 → 2013-12-30 (+24d) | 2013-12-10 → 2014-01-02 (+23d) |  |  |  |  |
| 132 | Automated regression testing | 2013-12-11 → 2014-01-03 (+23d) | 2013-12-16 → 2014-01-08 (+23d) |  |  |  |  |
| 133 | API testing | 2013-12-11 → 2014-01-03 (+23d) | 2013-12-12 → 2014-01-06 (+25d) |  |  |  |  |
| 134 | Request security appscan | 2013-12-10 → 2014-01-02 (+23d) | 2013-12-10 → 2014-01-02 (+23d) |  |  |  |  |
| 135 | Run security appscan | 2013-12-11 → 2014-01-03 (+23d) | 2013-12-24 → 2014-01-16 (+23d) |  |  |  |  |
| 136 | Create QA Test Summary Report | 2013-12-26 → 2014-01-17 (+22d) | 2013-12-30 → 2014-01-21 (+22d) |  |  |  |  |
| 137 | Request approval to deploy to PROD | 2013-12-30 → 2014-01-21 (+22d) | 2013-12-30 → 2014-01-21 (+22d) |  |  |  |  |
| 138 | Test Results Review and Reporting | 2013-12-31 → 2014-01-22 (+22d) | 2014-01-03 → 2014-01-24 (+21d) |  |  |  |  |
| 139 | Approval to deploy to PROD | 2014-01-03 → 2014-01-24 (+21d) | 2014-01-03 → 2014-01-24 (+21d) |  |  |  |  |
| 140 | **PRODUCTION** | 2014-01-06 → 2014-01-27 (+21d) | 2014-01-10 → 2014-01-31 (+21d) |  |  |  |  |
| 141 | Request deployment to PRODUCTION | 2014-01-06 → 2014-01-27 (+21d) | 2014-01-06 → 2014-01-27 (+21d) |  |  |  |  |
| 142 | Deploy to PRODUCTION | 2014-01-07 → 2014-01-28 (+21d) | 2014-01-09 → 2014-01-30 (+21d) |  |  |  |  |
| 143 | Update product landing page | 2014-01-10 → 2014-01-31 (+21d) | 2014-01-10 → 2014-01-31 (+21d) |  |  |  |  |
| 144 | QA smoke tests PRODUCTION | 2014-01-10 → 2014-01-31 (+21d) | 2014-01-10 → 2014-01-31 (+21d) |  |  |  |  |
| 145 | MILESTONE: RELEASE 2.5.2 | 2014-01-10 → 2014-01-31 (+21d) | 2014-01-10 → 2014-01-31 (+21d) |  |  |  |  |

## Version 29 (saved 2013-12-17)

Note of the change: updated plan with latest data

Last finish 2014-01-31 → 2014-02-05 (+5d).

Changed:

| ID | Task | Start | Finish | Duration | Complete | Total float | Predecessors |
| --- | --- | --- | --- | --- | --- | --- | --- |
| 1 | **caArray** |  | 2014-01-31 → 2014-02-05 (+5d) | 301d? → 304d? |  |  |  |
| 68 | **caArray 2.5.2** |  | 2013-12-04 A → 2013-12-11 A (+7d) | 169d → 174d |  |  |  |
| 115 | Approval to deploy to QA | 2013-12-04 A → 2013-12-11 A (+7d) | 2013-12-04 A → 2013-12-11 A (+7d) |  |  |  |  |
| 116 | **QA Tier** | 2013-12-04 A → 2013-12-11 A (+7d) | 2013-12-31 → 2014-01-06 (+6d) | 19d? → 17d? | 3% → 4% |  |  |
| 117 | Deploy to QA tier | 2013-12-04 A → 2013-12-11 A (+7d) | 2013-12-04 A → 2013-12-11 A (+7d) |  |  |  |  |
| 118 | **Regression Testing on QA tier** | 2013-12-05 → 2013-12-12 (+7d) | 2013-12-17 → 2013-12-23 (+6d) | 9d → 8d |  | 1d → 0d |  |
| 119 | Automated testing | 2013-12-05 → 2013-12-12 (+7d) | 2013-12-11 → 2013-12-17 (+6d) | 5d → 4d |  | 1d → 0d |  |
| 120 | Manual testing | 2013-12-12 → 2013-12-18 (+6d) | 2013-12-17 → 2013-12-23 (+6d) |  |  | 1d → 0d |  |
| 121 | Installer Testing | 2013-12-05 → 2013-12-12 (+7d) | 2013-12-10 → 2013-12-17 (+7d) |  |  | 5d → 4d |  |
| 123 | Appscan on QA tier | 2013-12-05 → 2013-12-24 (+19d) | 2013-12-11 → 2013-12-31 (+20d) |  |  | 34d → 25d | 117 → 120, 117 |
| 124 | Create QA Test Summary Report | 2013-12-19 → 2013-12-24 (+5d) | 2013-12-23 → 2013-12-27 (+4d) |  |  |  |  |
| 125 | Request approval to deploy to STAGE | 2013-12-23 → 2013-12-27 (+4d) | 2013-12-23 → 2013-12-27 (+4d) |  |  |  |  |
| 126 | QA Test Results Review | 2013-12-24 → 2013-12-30 (+6d) | 2013-12-27 → 2014-01-02 (+6d) |  |  |  |  |
| 127 | Approval to deploy to STAGE | 2013-12-27 → 2014-01-02 (+6d) | 2013-12-27 → 2014-01-02 (+6d) |  |  |  |  |
| 128 | Create release artifacts | 2013-12-30 → 2014-01-03 (+4d) | 2013-12-31 → 2014-01-06 (+6d) |  |  |  |  |
| 129 | **STAGE Tier** | 2013-12-27 → 2014-01-02 (+6d) | 2014-01-24 → 2014-01-29 (+5d) |  |  |  |  |
| 130 | Request deployment to STAGE | 2013-12-27 → 2014-01-02 (+6d) | 2013-12-27 → 2014-01-02 (+6d) |  |  |  |  |
| 131 | Deploy to STAGE | 2013-12-30 → 2014-01-03 (+4d) | 2014-01-02 → 2014-01-07 (+5d) |  |  |  |  |
| 132 | Automated regression testing | 2014-01-03 → 2014-01-08 (+5d) | 2014-01-08 → 2014-01-13 (+5d) |  |  |  |  |
| 133 | API testing | 2014-01-03 → 2014-01-08 (+5d) | 2014-01-06 → 2014-01-09 (+3d) |  |  |  |  |
| 134 | Request security appscan | 2014-01-02 → 2014-01-07 (+5d) | 2014-01-02 → 2014-01-07 (+5d) |  |  |  |  |
| 135 | Run security appscan | 2014-01-03 → 2014-01-08 (+5d) | 2014-01-16 → 2014-01-21 (+5d) |  |  |  |  |
| 136 | Create QA Test Summary Report | 2014-01-17 → 2014-01-22 (+5d) | 2014-01-21 → 2014-01-24 (+3d) |  |  |  |  |
| 137 | Request approval to deploy to PROD | 2014-01-21 → 2014-01-24 (+3d) | 2014-01-21 → 2014-01-24 (+3d) |  |  |  |  |
| 138 | Test Results Review and Reporting | 2014-01-22 → 2014-01-27 (+5d) | 2014-01-24 → 2014-01-29 (+5d) |  |  |  |  |
| 139 | Approval to deploy to PROD | 2014-01-24 → 2014-01-29 (+5d) | 2014-01-24 → 2014-01-29 (+5d) |  |  |  |  |
| 140 | **PRODUCTION** | 2014-01-27 → 2014-01-30 (+3d) | 2014-01-31 → 2014-02-05 (+5d) |  |  |  |  |
| 141 | Request deployment to PRODUCTION | 2014-01-27 → 2014-01-30 (+3d) | 2014-01-27 → 2014-01-30 (+3d) |  |  |  |  |
| 142 | Deploy to PRODUCTION | 2014-01-28 → 2014-01-31 (+3d) | 2014-01-30 → 2014-02-04 (+5d) |  |  |  |  |
| 143 | Update product landing page | 2014-01-31 → 2014-02-05 (+5d) | 2014-01-31 → 2014-02-05 (+5d) |  |  |  |  |
| 144 | QA smoke tests PRODUCTION | 2014-01-31 → 2014-02-05 (+5d) | 2014-01-31 → 2014-02-05 (+5d) |  |  |  |  |
| 145 | MILESTONE: RELEASE 2.5.2 | 2014-01-31 → 2014-02-05 (+5d) | 2014-01-31 → 2014-02-05 (+5d) |  |  |  |  |

## Version 30 (saved 2013-12-24)

Note of the change: updated plan

Last finish stays 2014-02-05. Complete tasks 97 → 100.

Changed:

| ID | Task | Start | Finish | Complete | Total float |
| --- | --- | --- | --- | --- | --- |
| 1 | **caArray** |  |  | 66% → 68% |  |
| 116 | **QA Tier** |  |  | 4% → 52% |  |
| 118 | **Regression Testing on QA tier** | 2013-12-12 A | 2013-12-23 A | 0% → 100% | 0d → none |
| 119 | Automated testing | 2013-12-12 A | 2013-12-17 A | 0% → 100% | 0d → none |
| 120 | Manual testing | 2013-12-18 A | 2013-12-23 A | 0% → 100% | 0d → none |
| 121 | Installer Testing | 2013-12-12 A |  | 0% → 90% |  |
| 122 | Section 508 testing on QA tier | 2013-12-17 A | 2013-12-18 A | 0% → 100% | 3d → none |

## Version 31 (saved 2014-01-21)

Note of the change: updated project plan

Last finish 2014-02-05 → 2014-01-29 (-7d). Complete tasks 100 → 110.

Added:

| ID | Task | Duration | Start | Finish | Predecessors | Constraint | Resources |
| --- | --- | --- | --- | --- | --- | --- | --- |
| 121 | API testing | 8d | 2013-12-24 A | 2014-01-06 A | 120 | start no earlier than 2013-12-24 | Ye; Winston |
| 133 | Smoke Testing | 1d | 2014-01-21 | 2014-01-21 | 132 |  | Marina |

Removed: 132 Automated regression testing

Changed:

| ID | Task | Start | Finish | Duration | Complete | Total float | Predecessors | Other |
| --- | --- | --- | --- | --- | --- | --- | --- | --- |
| 1 | **caArray** |  | 2014-02-05 → 2014-01-29 (-7d) | 304d? → 299d? | 68% → 71% |  |  |  |
| 116 | **QA Tier** |  | 2014-01-06 → 2014-01-16 A (+10d) | 17d? → 25d? | 52% → 100% | 22d → none |  |  |
| 118 | **Regression Testing on QA tier** |  | 2013-12-23 A → 2014-01-06 A (+14d) | 8d → 16d |  |  |  |  |
| 122 | Installer Testing |  | 2013-12-17 A |  | 90% → 100% | 4d → none |  |  |
| 124 | Appscan on QA tier | 2013-12-24 → 2014-01-07 A (+14d) | 2013-12-31 → 2014-01-13 A (+13d) |  | 0% → 100% | 25d → none | 120, 117 → 121, 117 |  |
| 125 | Create QA Test Summary Report | 2013-12-24 → 2014-01-07 A (+14d) | 2013-12-27 → 2014-01-09 A (+13d) |  | 0% → 100% | 0d → none | 118, 122, 123 → 121, 124, 118, 122, 123 |  |
| 126 | Request approval to deploy to STAGE | 2013-12-27 → 2014-01-09 A (+13d) | 2013-12-27 → 2014-01-09 A (+13d) |  | 0% → 100% | 0d → none |  |  |
| 127 | QA Test Results Review | 2013-12-30 → 2014-01-10 A (+11d) | 2014-01-02 → 2014-01-14 A (+12d) |  | 0% → 100% | 0d → none |  |  |
| 128 | Approval to deploy to STAGE | 2014-01-02 → 2014-01-14 A (+12d) | 2014-01-02 → 2014-01-14 A (+12d) |  | 0% → 100% | 0d → none |  |  |
| 129 | Create release artifacts | 2014-01-03 → 2014-01-15 A (+12d) | 2014-01-06 → 2014-01-16 A (+10d) |  | 0% → 100% | 22d → none |  |  |
| 130 | **STAGE Tier** | 2014-01-02 → 2014-01-14 A (+12d) | 2014-01-29 → 2014-01-23 (-6d) | 19d → 7d |  | 0d → 4d |  |  |
| 131 | Request deployment to STAGE | 2014-01-02 → 2014-01-14 A (+12d) | 2014-01-02 → 2014-01-14 A (+12d) |  | 0% → 100% | 0d → none |  |  |
| 132 | Deploy to STAGE | 2014-01-03 → 2014-01-21 A (+18d) | 2014-01-07 → 2014-01-21 A (+14d) | 3d → 0d | 0% → 100% | 0d → none |  | constraint none → start no earlier than 2014-01-21 |
| 134 | API testing | 2014-01-08 → 2014-01-21 (+13d) | 2014-01-09 → 2014-01-21 (+12d) | 2d → 1d |  | 8d → 0d |  | resources none → Marina |
| 135 | Request security appscan | 2014-01-07 → 2014-01-21 (+14d) | 2014-01-07 → 2014-01-21 (+14d) |  |  |  |  |  |
| 136 | Appscan on STAGE tier | 2014-01-08 → 2014-01-21 (+13d) |  | 10d → 1d |  |  |  | was named Run security appscan |
| 137 | Create QA Test Summary Report |  | 2014-01-24 → 2014-01-22 (-2d) | 3d → 1d |  |  | 136, Automated regression testing, 134 → 136, 134 |  |
| 138 | Request approval to deploy to PROD | 2014-01-24 → 2014-01-22 (-2d) | 2014-01-24 → 2014-01-22 (-2d) |  |  |  |  |  |
| 139 | Test Results Review and Reporting | 2014-01-27 → 2014-01-23 (-4d) | 2014-01-29 → 2014-01-23 (-6d) | 3d → 1d |  |  |  |  |
| 140 | Approval to deploy to PROD | 2014-01-29 → 2014-01-23 (-6d) | 2014-01-29 → 2014-01-23 (-6d) |  |  |  |  |  |
| 141 | **PRODUCTION** | 2014-01-30 → 2014-01-23 (-7d) | 2014-02-05 → 2014-01-29 (-7d) | 5d? → 4d |  |  |  |  |
| 142 | Request deployment to PRODUCTION | 2014-01-30 → 2014-01-23 (-7d) | 2014-01-30 → 2014-01-23 (-7d) | 1d? → 0d |  |  |  |  |
| 143 | Deploy to PRODUCTION | 2014-01-31 → 2014-01-24 (-7d) | 2014-02-04 → 2014-01-28 (-7d) |  |  |  |  |  |
| 144 | Update product landing page | 2014-02-05 → 2014-01-29 (-7d) | 2014-02-05 → 2014-01-29 (-7d) |  |  |  |  |  |
| 145 | QA smoke tests PRODUCTION | 2014-02-05 → 2014-01-29 (-7d) | 2014-02-05 → 2014-01-29 (-7d) |  |  |  |  |  |
| 146 | MILESTONE: RELEASE 2.5.2 | 2014-02-05 → 2014-01-29 (-7d) | 2014-02-05 → 2014-01-29 (-7d) |  |  |  |  |  |
| 147 | User Support |  |  |  |  | 26d → 39d |  | resources Winston; Rashmi; Mike → none |
