# CTRP2-ProjectSchedule

How a schedule from MS Project changed from version to version. A marks actual dates.

## Version 1 (saved 2011-08-03)

Note of the change: caArray Project Plan.

| ID | WBS | Task | Duration | Start | Finish | Predecessors | Total float | Constraint |
| --- | --- | --- | --- | --- | --- | --- | --- | --- |
| 1 | 1 | **CAARRAY 2.x** | 146d? | 2011-08-03 | 2012-02-22 |  | 0d | start no earlier than 2011-08-03 |
| 2 | 1.1 | **2.4.0.3 PATCH (Large Data Set Import)** | 16d | 2011-08-03 | 2011-08-24 |  | 11d |  |
| 3 |  | Dev Testing of caArray Importer | 1d | 2011-08-03 | 2011-08-03 |  | 11d |  |
| 4 |  | Regression Testing on QA | 5d | 2011-08-04 | 2011-08-10 | 3 | 403d |  |
| 5 |  | Regression Testing on STAGE | 5d | 2011-08-11 | 2011-08-17 | 4 | 408d |  |
| 6 |  | Curator Testing on STAGE | 5d | 2011-08-11 | 2011-08-17 | 4 | 408d |  |
| 7 |  | App Scan on STAGE | 5d | 2011-08-11 | 2011-08-17 | 4 | 403d |  |
| 8 |  | Deployment to PROD | 5d | 2011-08-18 | 2011-08-24 | 7 | 403d |  |
| 9 |  | RELEASE 2.4.0.3 Patch | 0d | 2011-08-24 | 2011-08-24 | 8 | 11d |  |
| 10 | 1.2 | **2.4.1** | 22d | 2011-08-10 | 2011-09-08 |  | 0d | start no earlier than 2011-08-10 |
| 11 | 1.2.1 | **2.4.1 RC6** | 10d | 2011-08-10 | 2011-08-23 |  | 0d |  |
| 12 |  | Bug fixes for ARRAY-2053 and ARRAY-2055 | 10d | 2011-08-10 | 2011-08-23 |  | 0d |  |
| 13 |  | Test bug fixes on QA | 10d | 2011-08-10 | 2011-08-23 |  | 0d |  |
| 14 | 1.2.2 | **2.4.1 Deployment** | 12d | 2011-08-24 | 2011-09-08 | 11 | 123d |  |
| 15 |  | Test bug fixes on STAGE | 2d | 2011-08-24 | 2011-08-25 |  | 123d |  |
| 16 |  | Regression testing on STAGE | 3d | 2011-08-26 | 2011-08-30 | 15 | 7d |  |
| 17 |  | API Partner Testing on STAGE | 5d | 2011-08-26 | 2011-09-01 | 15 | 5d |  |
| 18 |  | Upload Release Artifacts | 5d | 2011-08-26 | 2011-09-01 | 15 | 5d |  |
| 19 |  | App Scan on STAGE | 5d | 2011-08-26 | 2011-09-01 | 15 | 123d |  |
| 20 |  | Deploy to PRODUCTION | 5d | 2011-09-02 | 2011-09-08 | 19 | 123d |  |
| 21 |  | RELEASE 2.4.1 | 0d | 2011-09-08 | 2011-09-08 | 20 | 123d |  |
| 22 | 1.4 | **2.5.0 (LOEs unknown)** | 130d | 2011-08-24 | 2012-02-21 | 11 | 0d |  |
| 23 |  | Jboss 5.1 / Java 6 upgrade | 5d | 2011-08-24 | 2011-08-30 |  | 0d |  |
| 24 |  | File system storage of raw files | 15d | 2011-08-31 | 2011-09-20 | 23 | 0d |  |
| 25 |  | Plug-in architecture | 10d | 2011-09-21 | 2011-10-04 | 24 | 0d |  |
| 26 |  | Fix CI test suite | 5d | 2011-10-05 | 2011-10-11 | 25 | 0d |  |
| 27 |  | Upgrade to Anthill Pro 3 | 5d | 2011-10-12 | 2011-10-18 | 26 | 0d |  |
| 28 |  | Resumable uploads/downloads | 20d | 2011-10-19 | 2011-11-15 | 27 | 0d |  |
| 29 |  | Store parsed data on file system | 20d | 2011-11-16 | 2011-12-13 | 28 | 0d |  |
| 30 |  | Split imports into multiple transactions | 20d | 2011-12-14 | 2012-01-10 | 29 | 0d |  |
| 31 |  | Optimize parsers | 20d | 2012-01-11 | 2012-02-07 | 30 | 0d |  |
| 32 |  | Get Section 508 compliance to 90% | 10d | 2012-02-08 | 2012-02-21 | 31 | 0d |  |
| 33 | 1.5 | **PRODUCT BACKLOG** | 1d? | 2012-02-22 | 2012-02-22 | 22 | 0d |  |
| 34 | 1.5.1 | **Maintenance and Bug Fixes** | 1d? | 2012-02-22 | 2012-02-22 |  | 0d |  |
| 35 |  | Collaborator Group Defect | 1d? | 2012-02-22 | 2012-02-22 |  | 0d |  |
| 36 |  | Expand unparsed file types | 1d? | 2012-02-22 | 2012-02-22 |  | 0d |  |
| 37 |  | MAGE-TAB v1.1 support | 1d? | 2012-02-22 | 2012-02-22 |  | 0d |  |
| 38 |  | Clean up duplicate terms | 1d? | 2012-02-22 | 2012-02-22 |  | 0d |  |
| 39 |  | Import verification to prevent unintentional biomaterial/term creation | 1d? | 2012-02-22 | 2012-02-22 |  | 0d |  |
| 40 |  | Prevent multiple hybs to 1 file association | 1d? | 2012-02-22 | 2012-02-22 |  | 0d |  |
| 41 |  | IE 8 UI bugs | 1d? | 2012-02-22 | 2012-02-22 |  | 0d |  |
| 42 |  | Fix SDRF export of multiple derived data file columns | 1d? | 2012-02-22 | 2012-02-22 |  | 0d |  |
| 43 |  | Fix LSIDs for unparsed array designs | 1d? | 2012-02-22 | 2012-02-22 |  | 0d |  |
| 44 | 1.5.2 | **Grid Security** | 1d? | 2012-02-22 | 2012-02-22 |  | 0d |  |
| 45 |  | ARRAY-1463 | 1d? | 2012-02-22 | 2012-02-22 |  | 0d |  |
| 46 |  | ARRAY-1928 | 1d? | 2012-02-22 | 2012-02-22 |  | 0d |  |
| 47 |  | ARRAY-1353 | 1d? | 2012-02-22 | 2012-02-22 |  | 0d |  |
| 48 |  | ARRAY-1462 | 1d? | 2012-02-22 | 2012-02-22 |  | 0d |  |
| 49 |  | ARRAY-1929 | 1d? | 2012-02-22 | 2012-02-22 |  | 0d |  |
| 50 |  | ARRAY-1472 | 1d? | 2012-02-22 | 2012-02-22 |  | 0d |  |
| 51 | 1.5.3 | **Single Sign-on** | 1d? | 2012-02-22 | 2012-02-22 |  | 0d |  |
| 52 |  | ARRAY-1930 | 1d? | 2012-02-22 | 2012-02-22 |  | 0d |  |
| 53 | 1.5.4 | **Audit Trail** | 1d? | 2012-02-22 | 2012-02-22 |  | 0d |  |
| 54 |  | ARRAY-1931 | 1d? | 2012-02-22 | 2012-02-22 |  | 0d |  |
| 55 |  | ARRAY-1933 | 1d? | 2012-02-22 | 2012-02-22 |  | 0d |  |
| 56 |  | ARRAY-1932 | 1d? | 2012-02-22 | 2012-02-22 |  | 0d |  |
| 57 | 1.5.5 | **File-level permissions for role-based security** | 1d? | 2012-02-22 | 2012-02-22 |  | 0d |  |
| 58 |  | ARRAY-1938 | 1d? | 2012-02-22 | 2012-02-22 |  | 0d |  |

## Version 2 (saved 2011-08-04)

Note of the change: Revised Patch estimates.

Last finish stays 2012-02-22.

Added:

| ID | Task | Duration | Start | Finish | Predecessors |
| --- | --- | --- | --- | --- | --- |
| 4 | QA testing on local tier | 5d | 2011-08-04 | 2011-08-10 | 3 |

Changed:

| ID | Task | Start | Finish | Duration | Total float | Predecessors |
| --- | --- | --- | --- | --- | --- | --- |
| 2 | **2.4.0.3 PATCH (Large Data Set Import)** |  | 2011-08-24 → 2011-08-31 (+7d) | 16d → 21d | 11d → 125d |  |
| 5 | Regression Testing on QA | 2011-08-04 → 2011-08-11 (+7d) | 2011-08-10 → 2011-08-17 (+7d) |  | 403d → 125d | 3 → 4 |
| 6 | Regression Testing on STAGE | 2011-08-11 → 2011-08-18 (+7d) | 2011-08-17 → 2011-08-24 (+7d) |  | 408d → 130d |  |
| 7 | Curator Testing on STAGE | 2011-08-11 → 2011-08-18 (+7d) | 2011-08-17 → 2011-08-24 (+7d) |  | 408d → 130d |  |
| 8 | App Scan on STAGE | 2011-08-11 → 2011-08-18 (+7d) | 2011-08-17 → 2011-08-24 (+7d) |  | 403d → 125d |  |
| 9 | Deployment to PROD | 2011-08-18 → 2011-08-25 (+7d) | 2011-08-24 → 2011-08-31 (+7d) |  | 403d → 125d |  |
| 10 | RELEASE 2.4.0.3 Patch | 2011-08-24 → 2011-08-31 (+7d) | 2011-08-24 → 2011-08-31 (+7d) |  | 11d → 125d |  |

## Version 3 (saved 2011-08-12)

Note of the change: Latest 2.4.1 status.

Last finish stays 2012-02-22. Complete tasks 0 → 2.

Added:

| ID | Task | Duration | Start | Finish |
| --- | --- | --- | --- | --- |
| 4 | caArray Importer: Regression test on local tier | 10d | 2011-08-10 A | 2011-08-23 A |
| 5 | caArray Importer: Test import on local tier | 10d | 2011-08-10 A | 2011-08-23 |
| 6 | Section 508 compliance: Run scan and issue-manage. | 10d | 2011-08-10 A | 2011-08-23 A |
| 7 | Section 508 compliance: Fix ARRAY-1911 to get 90% score | 10d | 2011-08-10 | 2011-08-23 |

Removed: 2 2.4.0.3 PATCH (Large Data Set Import); 3 Dev Testing of caArray Importer; 4 QA testing on local tier; 5 Regression Testing on QA; 6 Regression Testing on STAGE; 7 Curator Testing on STAGE; 8 App Scan on STAGE; 9 Deployment to PROD; 10 RELEASE 2.4.0.3 Patch

Changed:

| ID | Task | Start | Finish | Duration | Complete | Total float | Predecessors | Other |
| --- | --- | --- | --- | --- | --- | --- | --- | --- |
| 1 | **CAARRAY 2.x** | 2011-08-03 → 2011-08-10 A (+7d) |  | 146d? → 141d? | 0% → 11% |  |  |  |
| 2 | **2.4.1** | 2011-08-10 A | 2011-09-08 → 2011-09-06 (-2d) | 22d → 20d | 0% → 29% | 0d → 121d |  |  |
| 3 | **2.4.1 RC6** | 2011-08-10 A |  |  | 0% → 43% |  |  | resources none → Andrew; Quy; Rashmi |
| 8 | Bug fixes for ARRAY-2053 and ARRAY-2055 | 2011-08-10 A |  |  | 0% → 10% |  |  |  |
| 9 | Test bug fixes on QA tier |  |  |  |  |  |  | was named Test bug fixes on QA |
| 10 | **2.4.1 Deployment** |  | 2011-09-08 → 2011-09-06 (-2d) | 12d → 10d |  | 119d → 121d |  | resources none → Quy [50%]; Rashmi [50%] |
| 11 | Test bug fixes on STAGE |  | 2011-08-25 → 2011-08-30 (+5d) | 2d → 5d |  | 119d → 126d |  |  |
| 12 | Regression testing on STAGE | 2011-08-26 → 2011-08-24 (-2d) |  | 3d → 5d |  |  | 11 → none |  |
| 13 | API Partner Testing on STAGE | 2011-08-26 → 2011-08-24 (-2d) | 2011-09-01 → 2011-08-30 (-2d) |  |  | 124d → 126d | 11 → none |  |
| 14 | Upload Release Artifacts | 2011-08-26 → 2011-08-24 (-2d) | 2011-09-01 → 2011-08-30 (-2d) |  |  | 124d → 126d | 11 → none |  |
| 15 | App Scan on STAGE | 2011-08-26 → 2011-08-24 (-2d) | 2011-09-01 → 2011-08-30 (-2d) |  |  | 119d → 121d | 11 → none |  |
| 16 | Deploy to PRODUCTION | 2011-09-02 → 2011-08-31 (-2d) | 2011-09-08 → 2011-09-06 (-2d) |  |  | 119d → 121d |  |  |
| 17 | RELEASE 2.4.1 | 2011-09-08 → 2011-09-06 (-2d) | 2011-09-08 → 2011-09-06 (-2d) |  |  | 119d → 121d |  |  |

## Version 4 (saved 2011-08-20)

Note of the change: Added new items to RC6 and moved old bugs to RC7.

Last finish stays 2012-02-22. Complete tasks 2 → 5.

Added:

| ID | Task | Duration | Start | Finish | Predecessors | Resources |
| --- | --- | --- | --- | --- | --- | --- |
| 8 | Write Grid client to get expt and hyb counts for Ken Buetow | 10d | 2011-08-10 A | 2011-08-23 A |  |  |
| 9 | Write and test QTP automated script to load TCGA data | 10d | 2011-08-10 A | 2011-08-23 |  |  |
| 10 | Bug fix for ARRAY-2059 that is a blocker for the TCGA data load | 10d | 2011-08-10 A | 2011-08-23 |  |  |
| 13 | **2.4.1 RC7** | 10d | 2011-08-24 A | 2011-09-06 | 3 | Andrew; Quy; Rashmi |
| 15 | Test bug fixes on QA tier | 10d | 2011-08-24 | 2011-09-06 |  |  |

Changed:

| ID | Task | Start | Finish | Duration | Complete | Total float | Predecessors | Other |
| --- | --- | --- | --- | --- | --- | --- | --- | --- |
| 1 | **CAARRAY 2.x** |  |  |  | 11% → 22% |  |  |  |
| 2 | **2.4.1** |  | 2011-09-06 → 2011-09-20 (+14d) | 20d → 30d | 29% → 46% | 121d → 111d |  |  |
| 3 | **2.4.1 RC6** |  |  |  | 43% → 69% |  |  |  |
| 5 | caArray Importer: Test import on local tier |  | 2011-08-23 A |  | 50% → 100% | 0d → none |  |  |
| 6 | API Partner Testing on STAGE | 2011-08-24 → 2011-08-10 A (-14d) | 2011-08-30 → 2011-08-23 A (-7d) | 5d → 10d | 0% → 100% | 126d → none |  |  |
| 14 | Bug fixes for ARRAY-2053 and ARRAY-2055 | 2011-08-10 A → 2011-08-24 (+14d) | 2011-08-23 → 2011-09-06 (+14d) |  | 10% → 0% | 0d → 111d |  |  |
| 16 | **2.4.1 Deployment** | 2011-08-24 → 2011-09-07 (+14d) | 2011-09-06 → 2011-09-20 (+14d) |  |  | 121d → 111d | 3 → 13 | resources Quy [50%]; Rashmi [50%] → Rashmi; Andrew; Quy |
| 17 | Test bug fixes on STAGE | 2011-08-24 → 2011-09-07 (+14d) | 2011-08-30 → 2011-09-13 (+14d) |  |  | 126d → 116d |  |  |
| 18 | Regression testing on STAGE | 2011-08-24 → 2011-09-07 (+14d) | 2011-08-30 → 2011-09-13 (+14d) |  |  | 126d → 116d |  |  |
| 19 | Upload Release Artifacts | 2011-08-24 → 2011-09-07 (+14d) | 2011-08-30 → 2011-09-13 (+14d) |  |  | 126d → 116d |  |  |
| 20 | App Scan on STAGE | 2011-08-24 → 2011-09-07 (+14d) | 2011-08-30 → 2011-09-13 (+14d) |  |  | 121d → 111d |  |  |
| 21 | Deploy to PRODUCTION | 2011-08-31 → 2011-09-14 (+14d) | 2011-09-06 → 2011-09-20 (+14d) |  |  | 121d → 111d |  |  |
| 22 | RELEASE 2.4.1 | 2011-09-06 → 2011-09-20 (+14d) | 2011-09-06 → 2011-09-20 (+14d) |  |  | 121d → 111d |  |  |

## Version 5 (saved 2011-08-24)

Note of the change: Minor fix to 2.4.1.

Last finish 2012-02-22 → 2012-09-11 (+202d). Complete tasks 5 → 6.

Added:

| ID | Task | Duration | Start | Finish | Predecessors |
| --- | --- | --- | --- | --- | --- |
| 12 | Decide on solution to TCGA data load issue | 20d | 2011-08-10 A | 2011-09-06 |  |
| 30 | Bug fixes | 30d | 2011-12-21 | 2012-01-31 | 29 |
| 31 | Deployment overhead | 10d | 2012-02-01 | 2012-02-14 | 30 |
| 58 | **Release Overhead** | 40d | 2012-07-18 | 2012-09-11 | 48 |
| 59 | Bug fixes | 30d | 2012-07-18 | 2012-08-28 |  |
| 60 | Deployment overhead | 10d | 2012-08-29 | 2012-09-11 | 59 |

Removed: 13 2.4.1 RC7; 15 Test bug fixes on QA tier; 30 Store parsed data on file system; 32 Optimize parsers; 33 Get Section 508 compliance to 90%

Changed:

| ID | Task | Start | Finish | Duration | Complete | Total float | Predecessors | Other |
| --- | --- | --- | --- | --- | --- | --- | --- | --- |
| 1 | **CAARRAY 2.x** |  | 2012-02-22 → 2012-09-11 (+202d) | 141d? → 285d | 22% → 29% |  |  |  |
| 2 | **2.4.1** |  |  |  | 46% → 60% | 111d → 255d |  |  |
| 3 | **2.4.1 RC6** |  | 2011-08-23 → 2011-09-06 (+14d) | 10d → 20d | 69% → 67% |  |  |  |
| 4 | caArray Importer: Regression test on local tier |  | 2011-08-23 A → 2011-09-06 A (+14d) | 10d → 20d |  |  |  |  |
| 5 | caArray Importer: Test import on local tier |  | 2011-08-23 A → 2011-09-06 A (+14d) | 10d → 20d |  |  |  |  |
| 6 | API Partner Testing on STAGE |  | 2011-08-23 A → 2011-09-06 A (+14d) | 10d → 20d |  |  |  |  |
| 7 | Section 508 compliance: Run scan and issue-manage. |  | 2011-08-23 A → 2011-09-06 A (+14d) | 10d → 20d |  |  |  |  |
| 8 | Write Grid client to get expt and hyb counts for Ken Buetow |  | 2011-08-23 A → 2011-09-06 A (+14d) | 10d → 20d |  |  |  |  |
| 9 | Write and test QTP automated script to load TCGA data |  | 2011-08-23 → 2011-09-06 A (+14d) | 10d → 20d | 75% → 100% | 0d → none |  |  |
| 10 | Bug fix for ARRAY-2059 that is a blocker for the TCGA data load |  | 2011-08-23 → 2011-09-06 (+14d) | 10d → 20d |  |  |  |  |
| 11 | Section 508 compliance: Fix ARRAY-1911 to get 90% score | 2011-08-10 A | 2011-08-23 → 2011-09-06 (+14d) | 10d → 20d | 0% → 75% |  |  |  |
| 13 | Bug fixes for ARRAY-2053 and ARRAY-2055 | 2011-08-24 → 2011-08-10 (-14d) |  | 10d → 20d |  | 111d → 0d |  |  |
| 14 | Test bug fixes on QA tier |  | 2011-08-23 → 2011-09-06 (+14d) | 10d → 20d |  |  |  |  |
| 15 | **2.4.1 Deployment** |  |  |  |  | 111d → 255d | 2.4.1 RC7 → 3 |  |
| 22 | **2.5.0 (rough LOEs)** | 2011-08-24 → 2011-09-07 (+14d) | 2012-02-21 → 2012-02-14 (-7d) | 130d → 115d |  |  |  | was named 2.5.0 (LOEs unknown); resources none → Andrew; Quy; Rashmi |
| 23 | Jboss 5.1 / Java 6 upgrade | 2011-08-24 → 2011-09-07 (+14d) | 2011-08-30 → 2011-09-13 (+14d) |  |  |  |  |  |
| 24 | File system storage of raw files | 2011-08-31 → 2011-09-14 (+14d) |  | 15d → 5d |  |  |  |  |
| 25 | Plug-in architecture |  | 2011-10-04 → 2011-09-27 (-7d) | 10d → 5d |  |  |  |  |
| 26 | Fix CI test suite | 2011-10-05 → 2011-09-28 (-7d) | 2011-10-11 → 2011-10-04 (-7d) |  |  |  |  |  |
| 27 | Upgrade to Anthill Pro 3 | 2011-10-12 → 2011-10-05 (-7d) | 2011-10-18 → 2011-10-11 (-7d) |  |  |  |  |  |
| 28 | Resumable uploads/downloads | 2011-10-19 → 2011-10-12 (-7d) | 2011-11-15 → 2011-11-08 (-7d) |  |  |  |  |  |
| 29 | Split imports into multiple transactions | 2011-12-14 → 2011-11-09 (-35d) | 2012-01-10 → 2011-12-20 (-21d) | 20d → 30d |  |  | Store parsed data on file system → 28 |  |
| 32 | **PRODUCT BACKLOG (rough LOEs)** | 2012-02-22 → 2012-02-15 (-7d) | 2012-02-22 → 2012-09-11 (+202d) | 1d? → 150d |  |  |  | was named PRODUCT BACKLOG; resources none → Andrew; Quy; Rashmi |
| 33 | **Grid Security** | 2012-02-22 → 2012-02-15 (-7d) | 2012-02-22 → 2012-04-10 (+48d) | 1d? → 40d |  |  |  |  |
| 34 | ARRAY-1463 - Login with caGrid account | 2012-02-22 → 2012-02-15 (-7d) | 2012-02-22 → 2012-02-28 (+6d) | 1d? → 10d |  |  |  | was named ARRAY-1463 |
| 35 | ARRAY-1928 - Migrate CSM to Grid accounts | 2012-02-22 → 2012-02-29 (+7d) | 2012-02-22 → 2012-03-06 (+13d) | 1d? → 5d |  |  | none → 34 | was named ARRAY-1928 |
| 36 | ARRAY-1353 - Grid authentication in remote Java API | 2012-02-22 → 2012-03-07 (+14d) | 2012-02-22 → 2012-03-20 (+27d) | 1d? → 10d |  |  | none → 35 | was named ARRAY-1353 |
| 37 | ARRAY-1462 - Installer/build infrastructure for secure Grid | 2012-02-22 → 2012-03-21 (+28d) | 2012-02-22 → 2012-04-10 (+48d) | 1d? → 15d |  |  | none → 36 | was named ARRAY-1462 |
| 38 | ARRAY-1929 - Grid Grouper | 2012-02-22 → 2012-04-10 (+48d) | 2012-02-22 → 2012-04-10 (+48d) | 1d? → 0d |  |  | none → 37 | was named ARRAY-1929 |
| 39 | ARRAY-1472 - Bulk migration of LDAP to Grid | 2012-02-22 → 2012-04-10 (+48d) | 2012-02-22 → 2012-04-10 (+48d) | 1d? → 0d |  |  | none → 38 | was named ARRAY-1472 |
| 40 | **Single Sign-on** | 2012-02-22 → 2012-04-11 (+49d) | 2012-02-22 → 2012-05-08 (+76d) | 1d? → 20d |  |  | none → 33 |  |
| 41 | ARRAY-1930 | 2012-02-22 → 2012-04-11 (+49d) | 2012-02-22 → 2012-05-08 (+76d) | 1d? → 20d |  |  |  |  |
| 42 | **Audit Trail** | 2012-02-22 → 2012-05-09 (+77d) | 2012-02-22 → 2012-06-05 (+104d) | 1d? → 20d |  |  | none → 40 |  |
| 43 | ARRAY-1931 - Sample deletions and data imports | 2012-02-22 → 2012-05-09 (+77d) | 2012-02-22 → 2012-05-22 (+90d) | 1d? → 10d |  |  |  | was named ARRAY-1931 |
| 44 | ARRAY-1933 - Log visibility to Data Owner | 2012-02-22 → 2012-05-23 (+91d) | 2012-02-22 → 2012-05-29 (+97d) | 1d? → 5d |  |  | none → 43 | was named ARRAY-1933 |
| 45 | ARRAY-1932 - Publish log | 2012-02-22 → 2012-05-30 (+98d) | 2012-02-22 → 2012-06-05 (+104d) | 1d? → 5d |  |  | none → 44 | was named ARRAY-1932 |
| 46 | **File-level permissions for role-based security** | 2012-02-22 → 2012-06-06 (+105d) | 2012-02-22 → 2012-07-03 (+132d) | 1d? → 20d |  |  | none → 42 |  |
| 47 | ARRAY-1938 | 2012-02-22 → 2012-06-06 (+105d) | 2012-02-22 → 2012-07-03 (+132d) | 1d? → 20d |  |  |  |  |
| 48 | **Maintenance and Bug Fixes** | 2012-02-22 → 2012-07-04 (+133d) | 2012-02-22 → 2012-07-17 (+146d) | 1d? → 10d |  |  | none → 46 |  |
| 49 | Collaborator Group Defect | 2012-02-22 → 2012-07-04 (+133d) | 2012-02-22 → 2012-07-17 (+146d) | 1d? → 10d |  |  |  |  |
| 50 | Expand unparsed file types | 2012-02-22 → 2012-07-17 (+146d) | 2012-02-22 → 2012-07-17 (+146d) | 1d? → 0d |  |  | none → 49 |  |
| 51 | IE 8 UI bugs | 2012-02-22 → 2012-07-17 (+146d) | 2012-02-22 → 2012-07-17 (+146d) | 1d? → 0d |  |  | none → 50 |  |
| 52 | MAGE-TAB v1.1 support | 2012-02-22 → 2012-07-17 (+146d) | 2012-02-22 → 2012-07-17 (+146d) | 1d? → 0d |  |  | none → 51 |  |
| 53 | Clean up duplicate terms | 2012-02-22 → 2012-07-17 (+146d) | 2012-02-22 → 2012-07-17 (+146d) | 1d? → 0d |  |  | none → 52 |  |
| 54 | Import verification to prevent unintentional biomaterial/term creation | 2012-02-22 → 2012-07-17 (+146d) | 2012-02-22 → 2012-07-17 (+146d) | 1d? → 0d |  |  | none → 53 |  |
| 55 | Prevent multiple hybs to 1 file association | 2012-02-22 → 2012-07-17 (+146d) | 2012-02-22 → 2012-07-17 (+146d) | 1d? → 0d |  |  | none → 54 |  |
| 56 | Fix SDRF export of multiple derived data file columns | 2012-02-22 → 2012-07-17 (+146d) | 2012-02-22 → 2012-07-17 (+146d) | 1d? → 0d |  |  | none → 55 |  |
| 57 | Fix LSIDs for unparsed array designs | 2012-02-22 → 2012-07-17 (+146d) | 2012-02-22 → 2012-07-17 (+146d) | 1d? → 0d |  |  | none → 56 |  |

## Version 6 (saved 2011-08-30)

Note of the change: Marked TRANSCEND items.

Last finish stays 2012-09-11. Complete tasks 6 → 7.

Changed:

| ID | Task | Finish | Complete | Total float | Other |
| --- | --- | --- | --- | --- | --- |
| 1 | **CAARRAY 2.x** |  | 29% → 32% |  |  |
| 2 | **2.4.1** |  | 60% → 66% |  |  |
| 3 | **2.4.1 RC6** |  | 67% → 73% |  |  |
| 10 | Bug fix for ARRAY-2059 that is a blocker for the TCGA data load |  | 50% → 80% |  |  |
| 11 | Section 508 compliance: Fix ARRAY-1911 to get 90% score | 2011-09-06 A | 75% → 100% | 0d → none |  |
| 12 | Decide on solution to TCGA data load issue |  | 10% → 25% |  |  |
| 33 | **Grid Security (TRANSCEND)** |  |  |  | was named Grid Security |
| 40 | **Single Sign-on (TRANSCEND)** |  |  |  | was named Single Sign-on |
| 42 | **Audit Trail (TRANSCEND)** |  |  |  | was named Audit Trail |
| 46 | **File-level permissions for role-based security (TRANSCEND)** |  |  |  | was named File-level permissions for role-based security |

## Version 7 (saved 2011-09-06)

Note of the change: Latest 2.4.1 updates.

Last finish stays 2012-09-11. Complete tasks 7 → 9.

Changed:

| ID | Task | Start | Finish | Complete | Total float |
| --- | --- | --- | --- | --- | --- |
| 1 | **CAARRAY 2.x** |  |  | 32% → 38% |  |
| 2 | **2.4.1** |  |  | 66% → 80% |  |
| 3 | **2.4.1 RC6** |  |  | 73% → 89% |  |
| 10 | Bug fix for ARRAY-2059 that is a blocker for the TCGA data load |  | 2011-09-06 A | 80% → 100% | 0d → none |
| 12 | Decide on solution to TCGA data load issue |  | 2011-09-06 A | 25% → 100% | 0d → none |
| 13 | Bug fixes for ARRAY-2053 and ARRAY-2055 | 2011-08-10 A |  | 0% → 25% |  |
| 14 | Test bug fixes on QA tier | 2011-08-10 A |  | 0% → 50% |  |
| 15 | **2.4.1 Deployment** | 2011-09-07 A |  | 0% → 2% |  |
| 18 | Upload Release Artifacts | 2011-09-07 A |  | 0% → 10% |  |

## Version 8 (saved 2011-09-13)

Note of the change: Updated 2.4.1 timeline and 2.5.0 tasks.

Last finish stays 2012-09-11. Complete tasks 9 → 10.

Added:

| ID | Task | Duration | Start | Finish | Predecessors |
| --- | --- | --- | --- | --- | --- |
| 13 | Bug fix for ARRAY-2055 | 20d | 2011-08-10 A | 2011-09-06 A |  |
| 24 | Merge in plug-in arch, file system storage, Jboss5 and get local CI build working | 5d | 2011-09-14 | 2011-09-20 |  |
| 25 | Get Hudson/Jenkins CI build working | 5d | 2011-09-14 | 2011-09-20 |  |
| 27 | Jboss 5.1 / Java 6 upgrade - NCI tiers | 5d | 2011-09-21 | 2011-09-27 | 25 |
| 28 | Jboss 5.1 Java 6 upgrade - Test local installer | 5d | 2011-09-21 | 2011-09-27 | 25 |
| 31 | Merge in 2.4.1 fixes into 2.5.0 | 5d | 2011-09-28 | 2011-10-04 | 29, 30 |
| 32 | Allow user to point to files rather than uploading/transferring | 5d | 2011-09-28 | 2011-10-04 | 29, 31 |
| 35 | Backup and replication for file system - NCI tiers and local installer documentation | 5d | 2011-12-14 | 2011-12-20 | 34 |
| 36 | API (CQL) changes to account for file system storage | 5d | 2011-12-21 | 2011-12-27 | 35 |

Removed: 25 Plug-in architecture; 26 Fix CI test suite

Changed:

| ID | Task | Start | Finish | Duration | Complete | Total float | Predecessors | Other |
| --- | --- | --- | --- | --- | --- | --- | --- | --- |
| 1 | **CAARRAY 2.x** |  |  |  | 38% → 40% |  |  |  |
| 2 | **2.4.1** |  | 2011-09-20 → 2011-09-27 (+7d) | 30d → 35d | 80% → 83% | 255d → 252d |  |  |
| 3 | **2.4.1 RC6** |  | 2011-09-06 → 2011-09-13 (+7d) | 20d → 25d | 89% → 91% |  |  |  |
| 14 | Bug fix for ARRAY-2053 |  | 2011-09-06 → 2011-09-13 (+7d) | 20d → 25d | 25% → 60% |  |  | was named Bug fixes for ARRAY-2053 and ARRAY-2055 |
| 15 | Test bug fixes on QA tier |  | 2011-09-06 → 2011-09-13 (+7d) | 20d → 25d |  |  |  |  |
| 16 | **2.4.1 Deployment** | 2011-09-07 A → 2011-09-14 A (+7d) | 2011-09-20 → 2011-09-27 (+7d) |  | 2% → 0% | 255d → 252d |  |  |
| 17 | Test bug fixes on STAGE | 2011-09-07 → 2011-09-14 (+7d) | 2011-09-13 → 2011-09-20 (+7d) |  |  | 260d → 257d |  |  |
| 18 | Regression testing on STAGE | 2011-09-07 → 2011-09-14 (+7d) | 2011-09-13 → 2011-09-20 (+7d) |  |  | 260d → 257d |  |  |
| 19 | Upload Release Artifacts | 2011-09-07 A → 2011-09-14 (+7d) | 2011-09-13 → 2011-09-20 (+7d) |  | 10% → 0% | 260d → 257d |  |  |
| 20 | App Scan on STAGE | 2011-09-07 → 2011-09-14 (+7d) | 2011-09-13 → 2011-09-20 (+7d) |  |  | 255d → 252d |  |  |
| 21 | Deploy to PRODUCTION | 2011-09-14 → 2011-09-21 (+7d) | 2011-09-20 → 2011-09-27 (+7d) |  |  | 255d → 252d |  |  |
| 22 | RELEASE 2.4.1 | 2011-09-20 → 2011-09-27 (+7d) | 2011-09-20 → 2011-09-27 (+7d) |  |  | 255d → 252d |  |  |
| 23 | **2.5.0 (rough LOEs)** | 2011-09-07 → 2011-09-14 (+7d) |  | 115d → 110d |  |  |  |  |
| 26 | Upgrade to Anthill Pro 3 | 2011-10-05 → 2011-09-21 (-14d) | 2011-10-11 → 2011-09-27 (-14d) |  |  | 0d → 100d | Fix CI test suite → 25 |  |
| 29 | Jboss 5.1 / Java 6 upgrade - Upgrade Installer | 2011-09-07 → 2011-09-21 (+14d) | 2011-09-13 → 2011-09-27 (+14d) |  |  |  | none → 25 | was named Jboss 5.1 / Java 6 upgrade |
| 30 | File system storage of raw files (transaction spanning DB and filesystem) | 2011-09-14 → 2011-09-28 (+14d) | 2011-09-20 → 2011-10-04 (+14d) |  |  | 0d → 95d |  | was named File system storage of raw files |
| 33 | Split imports into multiple transactions | 2011-11-09 → 2011-10-05 (-35d) | 2011-12-20 → 2011-11-15 (-35d) |  |  |  | 34 → 32 |  |
| 34 | Resumable uploads/downloads | 2011-10-12 → 2011-11-16 (+35d) | 2011-11-08 → 2011-12-13 (+35d) |  |  |  | 26 → 33 |  |
| 37 | Bug fixes | 2011-12-21 → 2011-12-28 (+7d) |  | 30d → 25d |  |  | 33 → 36 |  |

## Version 9 (saved 2011-09-20)

Note of the change: Latest updates.

Last finish stays 2012-09-11. Complete tasks 10 → 12.

Added:

| ID | Task | Duration | Start | Finish |
| --- | --- | --- | --- | --- |
| 17 | Regression testing on QA tier | 5d | 2011-09-14 A | 2011-09-20 |

Changed:

| ID | Task | Start | Finish | Duration | Complete | Total float | Predecessors | Other |
| --- | --- | --- | --- | --- | --- | --- | --- | --- |
| 1 | **CAARRAY 2.x** |  |  |  | 40% → 45% |  |  |  |
| 2 | **2.4.1** |  | 2011-09-27 → 2011-09-30 (+3d) | 35d → 38d | 83% → 92% | 252d → 247d |  |  |
| 3 | **2.4.1 RC6** |  |  |  | 91% → 99% |  |  |  |
| 14 | Temporary bug fix for ARRAY-2053 |  | 2011-09-13 A |  | 60% → 100% | 0d → none |  | was named Bug fix for ARRAY-2053 |
| 15 | Test bug fixes on QA tier |  | 2011-09-13 A |  | 50% → 100% | 0d → none |  |  |
| 16 | **2.4.1 Deployment** |  | 2011-09-27 → 2011-09-30 (+3d) | 10d → 13d | 0% → 11% | 252d → 247d |  |  |
| 19 | Regression testing on STAGE | 2011-09-14 → 2011-09-21 (+7d) | 2011-09-20 → 2011-09-23 (+3d) | 5d → 3d |  | 257d → 252d | none → 17 |  |
| 20 | Upload Release Artifacts | 2011-09-14 → 2011-09-21 (+7d) | 2011-09-20 → 2011-09-22 (+2d) | 5d → 2d |  | 257d → 253d | none → 17 |  |
| 21 | App Scan on STAGE | 2011-09-14 → 2011-09-21 (+7d) | 2011-09-20 → 2011-09-23 (+3d) | 5d → 3d |  | 252d → 247d | none → 17 |  |
| 22 | Deploy to PRODUCTION | 2011-09-21 → 2011-09-26 (+5d) | 2011-09-27 → 2011-09-30 (+3d) |  |  | 252d → 247d |  |  |
| 23 | RELEASE 2.4.1 | 2011-09-27 → 2011-09-30 (+3d) | 2011-09-27 → 2011-09-30 (+3d) |  |  | 252d → 247d |  |  |
| 24 | **2.5.0 (rough LOEs)** | 2011-09-14 A |  |  | 0% → 2% |  |  |  |
| 25 | Merge in plug-in arch, file system storage, Jboss5 and get local CI build working | 2011-09-14 A |  |  | 0% → 50% |  |  |  |

## Version 10 (saved 2011-09-27)

Note of the change: Updated with BDA-Lite, AHP 3, Nexus and UPT requirements.

Last finish 2012-09-11 → 2012-09-24 (+13d). Complete tasks 12 → 14.

Added:

| ID | Task | Duration | Start | Finish | Predecessors |
| --- | --- | --- | --- | --- | --- |
| 22 | Add README_caArray_and_UPT.txt | 1d | 2011-09-26 | 2011-09-26 | 21 |
| 26 | Migrate from Ivy to Nexus | 5d | 2011-09-14 A | 2011-09-20 |  |
| 28 | Artifact configuration at build time for BDA-Lite and PTE form | 7d | 2011-09-28 | 2011-10-06 | 27 |
| 29 | Migrate to AntHill Pro 3 | 2d | 2011-10-07 | 2011-10-10 | 26, 28 |

Removed: 27 Upgrade to Anthill Pro 3

Changed:

| ID | Task | Start | Finish | Duration | Complete | Total float | Predecessors |
| --- | --- | --- | --- | --- | --- | --- | --- |
| 1 | **CAARRAY 2.x** |  | 2012-09-11 → 2012-09-24 (+13d) | 285d → 294d | 45% → 47% |  |  |
| 2 | **2.4.1** |  |  |  | 92% → 96% | 247d → 256d |  |
| 16 | **2.4.1 Deployment** |  |  |  | 11% → 62% | 247d → 256d |  |
| 17 | Regression testing on QA tier |  | 2011-09-20 A |  | 50% → 100% | 247d → none |  |
| 18 | Test bug fixes on STAGE | 2011-09-14 A |  |  | 0% → 80% | 255d → 264d |  |
| 19 | Regression testing on STAGE | 2011-09-21 A | 2011-09-23 → 2011-09-27 (+4d) | 3d → 5d | 0% → 80% | 252d → 259d |  |
| 20 | Upload Release Artifacts | 2011-09-21 A | 2011-09-22 A |  | 0% → 100% | 253d → none |  |
| 23 | Deploy to PRODUCTION | 2011-09-26 A |  |  | 0% → 20% | 247d → 256d | 21 → 22 |
| 25 | **2.5.0 (rough LOEs)** |  | 2012-02-14 → 2012-02-27 (+13d) | 110d → 119d | 2% → 3% |  |  |
| 27 | Merge in plug-in arch, file system storage, Jboss5 and get local CI build working |  | 2011-09-20 → 2011-09-27 (+7d) | 5d → 10d | 50% → 25% | 105d → 0d |  |
| 30 | Merge in 2.4.1 fixes into 2.5.0 |  |  |  |  | 95d → 104d | 34, 35 → 27 |
| 31 | Get Hudson/Jenkins CI build working | 2011-09-14 → 2011-09-28 (+14d) | 2011-09-20 → 2011-10-04 (+14d) |  |  | 0d → 104d | none → 27 |
| 32 | Jboss 5.1 / Java 6 upgrade - NCI tiers | 2011-09-21 → 2011-10-11 (+20d) | 2011-09-27 → 2011-10-17 (+20d) |  |  | 100d → 95d | 31 → 29 |
| 33 | Jboss 5.1 Java 6 upgrade - Test local installer | 2011-09-21 → 2011-10-11 (+20d) | 2011-09-27 → 2011-10-17 (+20d) |  |  | 100d → 95d | 31 → 29 |
| 34 | Jboss 5.1 / Java 6 upgrade - Upgrade Installer | 2011-09-21 → 2011-10-11 (+20d) | 2011-09-27 → 2011-10-17 (+20d) |  |  |  | 31 → 29 |
| 35 | File system storage of raw files (transaction spanning DB and filesystem) | 2011-09-28 → 2011-10-18 (+20d) | 2011-10-04 → 2011-10-24 (+20d) |  |  | 95d → 90d |  |
| 36 | Allow user to point to files rather than uploading/transferring | 2011-09-28 → 2011-10-18 (+20d) | 2011-10-04 → 2011-10-24 (+20d) |  |  |  | 34, 30 → 34 |
| 37 | Split imports into multiple transactions | 2011-10-05 → 2011-10-25 (+20d) | 2011-11-15 → 2011-12-05 (+20d) |  |  |  |  |
| 38 | Resumable uploads/downloads | 2011-11-16 → 2011-12-06 (+20d) | 2011-12-13 → 2012-01-02 (+20d) |  |  |  |  |
| 39 | Backup and replication for file system - NCI tiers and local installer documentation | 2011-12-14 → 2012-01-03 (+20d) | 2011-12-20 → 2012-01-09 (+20d) |  |  | 0d → 35d |  |
| 40 | API (CQL) changes to account for file system storage | 2011-12-21 → 2012-01-03 (+13d) | 2011-12-27 → 2012-01-09 (+13d) |  |  |  | 39 → 38 |
| 41 | Bug fixes | 2011-12-28 → 2012-01-10 (+13d) | 2012-01-31 → 2012-02-13 (+13d) |  |  |  |  |
| 42 | Deployment overhead | 2012-02-01 → 2012-02-14 (+13d) | 2012-02-14 → 2012-02-27 (+13d) |  |  |  |  |
| 43 | **PRODUCT BACKLOG (rough LOEs)** | 2012-02-15 → 2012-02-28 (+13d) | 2012-09-11 → 2012-09-24 (+13d) |  |  |  |  |
| 44 | **Grid Security (TRANSCEND)** | 2012-02-15 → 2012-02-28 (+13d) | 2012-04-10 → 2012-04-23 (+13d) |  |  |  |  |
| 45 | ARRAY-1463 - Login with caGrid account | 2012-02-15 → 2012-02-28 (+13d) | 2012-02-28 → 2012-03-12 (+13d) |  |  |  |  |
| 46 | ARRAY-1928 - Migrate CSM to Grid accounts | 2012-02-29 → 2012-03-13 (+13d) | 2012-03-06 → 2012-03-19 (+13d) |  |  |  |  |
| 47 | ARRAY-1353 - Grid authentication in remote Java API | 2012-03-07 → 2012-03-20 (+13d) | 2012-03-20 → 2012-04-02 (+13d) |  |  |  |  |
| 48 | ARRAY-1462 - Installer/build infrastructure for secure Grid | 2012-03-21 → 2012-04-03 (+13d) | 2012-04-10 → 2012-04-23 (+13d) |  |  |  |  |
| 49 | ARRAY-1929 - Grid Grouper | 2012-04-10 → 2012-04-23 (+13d) | 2012-04-10 → 2012-04-23 (+13d) |  |  |  |  |
| 50 | ARRAY-1472 - Bulk migration of LDAP to Grid | 2012-04-10 → 2012-04-23 (+13d) | 2012-04-10 → 2012-04-23 (+13d) |  |  |  |  |
| 51 | **Single Sign-on (TRANSCEND)** | 2012-04-11 → 2012-04-24 (+13d) | 2012-05-08 → 2012-05-21 (+13d) |  |  |  |  |
| 52 | ARRAY-1930 | 2012-04-11 → 2012-04-24 (+13d) | 2012-05-08 → 2012-05-21 (+13d) |  |  |  |  |
| 53 | **Audit Trail (TRANSCEND)** | 2012-05-09 → 2012-05-22 (+13d) | 2012-06-05 → 2012-06-18 (+13d) |  |  |  |  |
| 54 | ARRAY-1931 - Sample deletions and data imports | 2012-05-09 → 2012-05-22 (+13d) | 2012-05-22 → 2012-06-04 (+13d) |  |  |  |  |
| 55 | ARRAY-1933 - Log visibility to Data Owner | 2012-05-23 → 2012-06-05 (+13d) | 2012-05-29 → 2012-06-11 (+13d) |  |  |  |  |
| 56 | ARRAY-1932 - Publish log | 2012-05-30 → 2012-06-12 (+13d) | 2012-06-05 → 2012-06-18 (+13d) |  |  |  |  |
| 57 | **File-level permissions for role-based security (TRANSCEND)** | 2012-06-06 → 2012-06-19 (+13d) | 2012-07-03 → 2012-07-16 (+13d) |  |  |  |  |
| 58 | ARRAY-1938 | 2012-06-06 → 2012-06-19 (+13d) | 2012-07-03 → 2012-07-16 (+13d) |  |  |  |  |
| 59 | **Maintenance and Bug Fixes** | 2012-07-04 → 2012-07-17 (+13d) | 2012-07-17 → 2012-07-30 (+13d) |  |  |  |  |
| 60 | Collaborator Group Defect | 2012-07-04 → 2012-07-17 (+13d) | 2012-07-17 → 2012-07-30 (+13d) |  |  |  |  |
| 61 | Expand unparsed file types | 2012-07-17 → 2012-07-30 (+13d) | 2012-07-17 → 2012-07-30 (+13d) |  |  |  |  |
| 62 | IE 8 UI bugs | 2012-07-17 → 2012-07-30 (+13d) | 2012-07-17 → 2012-07-30 (+13d) |  |  |  |  |
| 63 | MAGE-TAB v1.1 support | 2012-07-17 → 2012-07-30 (+13d) | 2012-07-17 → 2012-07-30 (+13d) |  |  |  |  |
| 64 | Clean up duplicate terms | 2012-07-17 → 2012-07-30 (+13d) | 2012-07-17 → 2012-07-30 (+13d) |  |  |  |  |
| 65 | Import verification to prevent unintentional biomaterial/term creation | 2012-07-17 → 2012-07-30 (+13d) | 2012-07-17 → 2012-07-30 (+13d) |  |  |  |  |
| 66 | Prevent multiple hybs to 1 file association | 2012-07-17 → 2012-07-30 (+13d) | 2012-07-17 → 2012-07-30 (+13d) |  |  |  |  |
| 67 | Fix SDRF export of multiple derived data file columns | 2012-07-17 → 2012-07-30 (+13d) | 2012-07-17 → 2012-07-30 (+13d) |  |  |  |  |
| 68 | Fix LSIDs for unparsed array designs | 2012-07-17 → 2012-07-30 (+13d) | 2012-07-17 → 2012-07-30 (+13d) |  |  |  |  |
| 69 | **Release Overhead** | 2012-07-18 → 2012-07-31 (+13d) | 2012-09-11 → 2012-09-24 (+13d) |  |  |  |  |
| 70 | Bug fixes | 2012-07-18 → 2012-07-31 (+13d) | 2012-08-28 → 2012-09-10 (+13d) |  |  |  |  |
| 71 | Deployment overhead | 2012-08-29 → 2012-09-11 (+13d) | 2012-09-11 → 2012-09-24 (+13d) |  |  |  |  |

## Version 11 (saved 2011-10-05)

Note of the change: Added Nexus and BDA-Lite issues mandated by the Systems team.

Last finish 2012-09-24 → 2012-10-11 (+17d). Complete tasks 14 → 21.

Added:

| ID | Task | Duration | Start | Finish | Predecessors |
| --- | --- | --- | --- | --- | --- |
| 29 | Migrate BDA build from Ivy to Nexus | 10d | 2011-10-07 | 2011-10-20 | 27 |

Changed:

| ID | Task | Start | Finish | Duration | Complete | Total float | Predecessors | Other |
| --- | --- | --- | --- | --- | --- | --- | --- | --- |
| 1 | **CAARRAY 2.x** |  | 2012-09-24 → 2012-10-11 (+17d) | 294d → 307d | 47% → 50% |  |  |  |
| 2 | **2.4.1** |  |  |  | 96% → 99% | 256d → 0d |  |  |
| 16 | **2.4.1 Deployment** |  |  |  | 62% → 99% | 256d → 0d |  |  |
| 18 | Test bug fixes on STAGE |  | 2011-09-20 A |  | 80% → 100% | 264d → none |  |  |
| 19 | Regression testing on STAGE |  | 2011-09-27 A |  | 80% → 100% | 259d → none |  |  |
| 21 | App Scan on STAGE | 2011-09-21 A | 2011-09-23 A |  | 0% → 100% | 247d → none |  |  |
| 22 | Add README_caArray_and_UPT.txt | 2011-09-26 A | 2011-09-26 A |  | 0% → 100% | 256d → none |  |  |
| 23 | Deploy to PRODUCTION |  | 2011-09-30 A |  | 20% → 100% | 256d → none |  |  |
| 24 | RELEASE 2.4.1 | 2011-09-30 A | 2011-09-30 A |  | 0% → 100% | 256d → none |  |  |
| 25 | **2.5.0 (rough LOEs)** |  | 2012-02-27 → 2012-03-15 (+17d) | 119d → 132d | 3% → 13% |  |  |  |
| 26 | Merge in plug-in arch, file system storage, Jboss5 and get local CI build working |  | 2011-09-27 A |  | 25% → 100% | 0d → none |  |  |
| 27 | Migrate caArray build from Ivy to Nexus | 2011-09-14 A → 2011-09-28 A (+14d) | 2011-09-20 → 2011-10-06 (+16d) | 5d → 7d | 50% → 80% | 12d → 0d | none → 26 | was named Migrate from Ivy to Nexus |
| 28 | Artifact configuration at build time for BDA-Lite and PTE form | 2011-09-28 A |  |  | 0% → 80% | 0d → 113d |  |  |
| 31 | Merge in 2.4.1 fixes into 2.5.0 | 2011-09-28 → 2011-10-21 (+23d) | 2011-10-04 → 2011-10-27 (+23d) |  |  | 104d → 87d | 26 → 29 |  |
| 32 | Get CI build tested and working | 2011-09-28 → 2011-10-21 (+23d) | 2011-10-04 → 2011-10-27 (+23d) |  |  | 104d → 0d | 26 → 29 | was named Get Hudson/Jenkins CI build working |
| 33 | Jboss 5.1 / Java 6 upgrade - NCI tiers | 2011-10-11 → 2011-10-28 (+17d) | 2011-10-17 → 2011-11-03 (+17d) |  |  |  | 30 → 32 |  |
| 34 | Jboss 5.1 Java 6 upgrade - Installer | 2011-10-11 → 2011-10-28 (+17d) | 2011-10-17 → 2011-11-03 (+17d) |  |  | 95d → 0d | 30 → 32 | was named Jboss 5.1 Java 6 upgrade - Test local installer |
| 35 | Jboss 5.1 / Java 6 upgrade - Test Installer | 2011-10-11 → 2011-11-04 (+24d) | 2011-10-17 → 2011-11-10 (+24d) |  |  | 0d → 90d | 30 → 34 | was named Jboss 5.1 / Java 6 upgrade - Upgrade Installer |
| 36 | File system storage of raw files (transaction spanning DB and filesystem) | 2011-10-18 → 2011-11-04 (+17d) | 2011-10-24 → 2011-11-10 (+17d) |  |  |  | 35 → 34 |  |
| 37 | Allow user to point to files rather than uploading/transferring | 2011-10-18 → 2011-11-04 (+17d) | 2011-10-24 → 2011-11-10 (+17d) |  |  |  | 35 → 34 |  |
| 38 | Split imports into multiple transactions | 2011-10-25 → 2011-11-11 (+17d) | 2011-12-05 → 2011-12-22 (+17d) |  |  |  |  |  |
| 39 | Resumable uploads/downloads | 2011-12-06 → 2011-12-23 (+17d) | 2012-01-02 → 2012-01-19 (+17d) |  |  |  |  |  |
| 40 | Backup and replication for file system - NCI tiers and local installer documentation | 2012-01-03 → 2012-01-20 (+17d) | 2012-01-09 → 2012-01-26 (+17d) |  |  |  |  |  |
| 41 | API (CQL) changes to account for file system storage | 2012-01-03 → 2012-01-20 (+17d) | 2012-01-09 → 2012-01-26 (+17d) |  |  |  |  |  |
| 42 | Bug fixes | 2012-01-10 → 2012-01-27 (+17d) | 2012-02-13 → 2012-03-01 (+17d) |  |  |  |  |  |
| 43 | Deployment overhead | 2012-02-14 → 2012-03-02 (+17d) | 2012-02-27 → 2012-03-15 (+17d) |  |  |  |  |  |
| 44 | **PRODUCT BACKLOG (rough LOEs)** | 2012-02-28 → 2012-03-16 (+17d) | 2012-09-24 → 2012-10-11 (+17d) |  |  |  |  |  |
| 45 | **Grid Security (TRANSCEND)** | 2012-02-28 → 2012-03-16 (+17d) | 2012-04-23 → 2012-05-10 (+17d) |  |  |  |  |  |
| 46 | ARRAY-1463 - Login with caGrid account | 2012-02-28 → 2012-03-16 (+17d) | 2012-03-12 → 2012-03-29 (+17d) |  |  |  |  |  |
| 47 | ARRAY-1928 - Migrate CSM to Grid accounts | 2012-03-13 → 2012-03-30 (+17d) | 2012-03-19 → 2012-04-05 (+17d) |  |  |  |  |  |
| 48 | ARRAY-1353 - Grid authentication in remote Java API | 2012-03-20 → 2012-04-06 (+17d) | 2012-04-02 → 2012-04-19 (+17d) |  |  |  |  |  |
| 49 | ARRAY-1462 - Installer/build infrastructure for secure Grid | 2012-04-03 → 2012-04-20 (+17d) | 2012-04-23 → 2012-05-10 (+17d) |  |  |  |  |  |
| 50 | ARRAY-1929 - Grid Grouper (NICE TO HAVE) | 2012-04-23 → 2012-05-10 (+17d) | 2012-04-23 → 2012-05-10 (+17d) |  |  |  |  | was named ARRAY-1929 - Grid Grouper |
| 51 | ARRAY-1472 - Bulk migration of LDAP to Grid (NICE TO HAVE) | 2012-04-23 → 2012-05-10 (+17d) | 2012-04-23 → 2012-05-10 (+17d) |  |  |  |  | was named ARRAY-1472 - Bulk migration of LDAP to Grid |
| 52 | **Single Sign-on (TRANSCEND)** | 2012-04-24 → 2012-05-11 (+17d) | 2012-05-21 → 2012-06-07 (+17d) |  |  |  |  |  |
| 53 | ARRAY-1930 | 2012-04-24 → 2012-05-11 (+17d) | 2012-05-21 → 2012-06-07 (+17d) |  |  |  |  |  |
| 54 | **Audit Trail (TRANSCEND)** | 2012-05-22 → 2012-06-08 (+17d) | 2012-06-18 → 2012-07-05 (+17d) |  |  |  |  |  |
| 55 | ARRAY-1931 - Sample deletions and data imports | 2012-05-22 → 2012-06-08 (+17d) | 2012-06-04 → 2012-06-21 (+17d) |  |  |  |  |  |
| 56 | ARRAY-1933 - Log visibility to Data Owner | 2012-06-05 → 2012-06-22 (+17d) | 2012-06-11 → 2012-06-28 (+17d) |  |  |  |  |  |
| 57 | ARRAY-1932 - Publish log | 2012-06-12 → 2012-06-29 (+17d) | 2012-06-18 → 2012-07-05 (+17d) |  |  |  |  |  |
| 58 | **File-level permissions for role-based security (TRANSCEND)** | 2012-06-19 → 2012-07-06 (+17d) | 2012-07-16 → 2012-08-02 (+17d) |  |  |  |  |  |
| 59 | ARRAY-1938 | 2012-06-19 → 2012-07-06 (+17d) | 2012-07-16 → 2012-08-02 (+17d) |  |  |  |  |  |
| 60 | **Maintenance and Bug Fixes** | 2012-07-17 → 2012-08-03 (+17d) | 2012-07-30 → 2012-08-16 (+17d) |  |  |  |  |  |
| 61 | Collaborator Group Defect | 2012-07-17 → 2012-08-03 (+17d) | 2012-07-30 → 2012-08-16 (+17d) |  |  |  |  |  |
| 62 | Expand unparsed file types (NICE TO HAVE) | 2012-07-30 → 2012-08-16 (+17d) | 2012-07-30 → 2012-08-16 (+17d) |  |  |  |  | was named Expand unparsed file types |
| 63 | IE 8 UI bugs (NICE TO HAVE) | 2012-07-30 → 2012-08-16 (+17d) | 2012-07-30 → 2012-08-16 (+17d) |  |  |  |  | was named IE 8 UI bugs |
| 64 | MAGE-TAB v1.1 support (NICE TO HAVE) | 2012-07-30 → 2012-08-16 (+17d) | 2012-07-30 → 2012-08-16 (+17d) |  |  |  |  | was named MAGE-TAB v1.1 support |
| 65 | Clean up duplicate terms (NICE TO HAVE) | 2012-07-30 → 2012-08-16 (+17d) | 2012-07-30 → 2012-08-16 (+17d) |  |  |  |  | was named Clean up duplicate terms |
| 66 | Import verification to prevent unintentional biomaterial/term creation (NICE TO HAVE) | 2012-07-30 → 2012-08-16 (+17d) | 2012-07-30 → 2012-08-16 (+17d) |  |  |  |  | was named Import verification to prevent unintentional biomaterial/term creation |
| 67 | Prevent multiple hybs to 1 file association (NICE TO HAVE) | 2012-07-30 → 2012-08-16 (+17d) | 2012-07-30 → 2012-08-16 (+17d) |  |  |  |  | was named Prevent multiple hybs to 1 file association |
| 68 | Fix SDRF export of multiple derived data file columns (NICE TO HAVE) | 2012-07-30 → 2012-08-16 (+17d) | 2012-07-30 → 2012-08-16 (+17d) |  |  |  |  | was named Fix SDRF export of multiple derived data file columns |
| 69 | Fix LSIDs for unparsed array designs (NICE TO HAVE) | 2012-07-30 → 2012-08-16 (+17d) | 2012-07-30 → 2012-08-16 (+17d) |  |  |  |  | was named Fix LSIDs for unparsed array designs |
| 70 | **Release Overhead for TRANSCEND release** | 2012-07-31 → 2012-08-17 (+17d) | 2012-09-24 → 2012-10-11 (+17d) |  |  |  |  | was named Release Overhead |
| 71 | Bug fixes | 2012-07-31 → 2012-08-17 (+17d) | 2012-09-10 → 2012-09-27 (+17d) |  |  |  |  |  |
| 72 | Deployment overhead | 2012-09-11 → 2012-09-28 (+17d) | 2012-09-24 → 2012-10-11 (+17d) |  |  |  |  |  |

## Version 12 (saved 2011-10-11)

Note of the change: Updates to 2.5.0 status.

Last finish stays 2012-10-11. Complete tasks 21 → 23.

Changed:

| ID | Task | Start | Finish | Complete | Total float | Other |
| --- | --- | --- | --- | --- | --- | --- |
| 1 | **CAARRAY 2.x** |  |  | 50% → 52% |  |  |
| 25 | **2.5.0 (rough LOEs)** |  |  | 13% → 17% |  |  |
| 27 | Migrate caArray build from Ivy to Nexus |  | 2011-10-06 A | 80% → 100% | 0d → none |  |
| 28 | Artifact configuration at build time for BDA-Lite and PTE form |  | 2011-10-06 A | 80% → 100% | 113d → none |  |
| 31 | Merge in 2.4.1 fixes into 2.5.0 | 2011-10-21 A |  | 0% → 50% | 87d → 100d |  |
| 34 | Jboss 5.1 / Java 6 upgrade - Installer | 2011-10-28 A |  | 0% → 50% |  | was named Jboss 5.1 Java 6 upgrade - Installer |
| 35 | Jboss 5.1 / Java 6 upgrade - Test 2.4.x to 2.5.0 migration path |  |  |  |  | was named Jboss 5.1 / Java 6 upgrade - Test Installer |

## Version 13 (saved 2011-10-18)

Note of the change: Added AHP 3 dependency on BDA Nexus upgrade.

Last finish stays 2012-10-11.

Changed:

| ID | Task | Start | Finish | Complete | Total float | Predecessors |
| --- | --- | --- | --- | --- | --- | --- |
| 25 | **2.5.0 (rough LOEs)** |  |  | 17% → 18% |  |  |
| 29 | Migrate BDA build from Ivy to Nexus | 2011-10-07 A |  | 0% → 33% | 1.25d → 0d |  |
| 30 | Migrate to AntHill Pro 3 | 2011-10-07 A | 2011-10-10 → 2011-10-24 (+14d) | 0% → 20% | 113d → 103.4d | 28, 27 → 28, 27, 29 |
| 34 | Jboss 5.1 / Java 6 upgrade - Installer | 2011-10-28 A → 2011-10-28 |  | 50% → 0% |  |  |

## Version 14 (saved 2011-10-27)

Note of the change: Latest updates.

Last finish stays 2012-10-11.

Added:

| ID | Task | Duration | Start | Finish | Predecessors |
| --- | --- | --- | --- | --- | --- |
| 31 | Curation Tier Upgrade to 2.4.1 | 3d | 2011-09-14 A | 2011-10-25 | 29 |

Changed:

| ID | Task | Start | Finish | Duration | Complete | Total float |
| --- | --- | --- | --- | --- | --- | --- |
| 25 | **2.5.0 (rough LOEs)** |  |  |  | 18% → 21% |  |
| 29 | Migrate BDA build from Ivy to Nexus |  |  |  | 33% → 50% | 0d → 2.5d |
| 30 | Migrate to AntHill Pro 3 |  | 2011-10-24 → 2011-10-26 (+2d) | 2d → 4d |  | 103.4d → 101.4d |
| 33 | Get CI build tested and working | 2011-10-21 A |  |  | 0% → 50% |  |

## Version 15 (saved 2011-10-31)

Note of the change: Latest updates to project plan.

Last finish 2012-10-11 → 2012-10-25 (+14d).

Changed:

| ID | Task | Start | Finish | Duration | Complete | Total float | Predecessors |
| --- | --- | --- | --- | --- | --- | --- | --- |
| 1 | **CAARRAY 2.x** |  | 2012-10-11 → 2012-10-25 (+14d) | 307d → 317d | 52% → 53% |  |  |
| 25 | **2.5.0 (rough LOEs)** |  | 2012-03-15 → 2012-03-29 (+14d) | 132d → 142d | 21% → 24% |  |  |
| 29 | Migrate BDA build from Ivy to Nexus |  | 2011-10-20 → 2011-10-27 (+7d) | 10d → 15d | 50% → 80% |  |  |
| 30 | Migrate to AntHill Pro 3 |  | 2011-10-26 → 2011-10-31 (+5d) |  | 20% → 50% | 101.4d → 108d |  |
| 31 | Curation Tier Upgrade to 2.4.1 |  | 2011-10-25 → 2011-10-31 (+6d) |  | 17% → 50% | 102.5d → 108.5d |  |
| 32 | Merge in 2.4.1 fixes into 2.5.0 | 2011-10-21 A → 2011-10-28 A (+7d) | 2011-10-27 → 2011-11-03 (+7d) |  |  | 100d → 0d |  |
| 33 | Get CI build tested and working | 2011-10-21 A → 2011-11-04 (+14d) | 2011-10-27 → 2011-11-10 (+14d) |  | 50% → 0% |  | 29 → 32 |
| 34 | Jboss 5.1 / Java 6 upgrade - NCI tiers | 2011-10-28 → 2011-11-11 (+14d) | 2011-11-03 → 2011-11-17 (+14d) |  |  |  |  |
| 35 | Jboss 5.1 / Java 6 upgrade - Installer | 2011-10-28 → 2011-11-11 (+14d) | 2011-11-03 → 2011-11-17 (+14d) |  |  |  |  |
| 36 | Jboss 5.1 / Java 6 upgrade - Test 2.4.x to 2.5.0 migration path | 2011-11-04 → 2011-11-18 (+14d) | 2011-11-10 → 2011-11-24 (+14d) |  |  |  |  |
| 37 | File system storage of raw files (transaction spanning DB and filesystem) | 2011-11-04 → 2011-11-18 (+14d) | 2011-11-10 → 2011-11-24 (+14d) |  |  |  |  |
| 38 | Allow user to point to files rather than uploading/transferring | 2011-11-04 → 2011-11-18 (+14d) | 2011-11-10 → 2011-11-24 (+14d) |  |  |  |  |
| 39 | Split imports into multiple transactions | 2011-11-11 → 2011-11-25 (+14d) | 2011-12-22 → 2012-01-05 (+14d) |  |  |  |  |
| 40 | Resumable uploads/downloads | 2011-12-23 → 2012-01-06 (+14d) | 2012-01-19 → 2012-02-02 (+14d) |  |  |  |  |
| 41 | Backup and replication for file system - NCI tiers and local installer documentation | 2012-01-20 → 2012-02-03 (+14d) | 2012-01-26 → 2012-02-09 (+14d) |  |  |  |  |
| 42 | API (CQL) changes to account for file system storage | 2012-01-20 → 2012-02-03 (+14d) | 2012-01-26 → 2012-02-09 (+14d) |  |  |  |  |
| 43 | Bug fixes | 2012-01-27 → 2012-02-10 (+14d) | 2012-03-01 → 2012-03-15 (+14d) |  |  |  |  |
| 44 | Deployment overhead | 2012-03-02 → 2012-03-16 (+14d) | 2012-03-15 → 2012-03-29 (+14d) |  |  |  |  |
| 45 | **PRODUCT BACKLOG (rough LOEs)** | 2012-03-16 → 2012-03-30 (+14d) | 2012-10-11 → 2012-10-25 (+14d) |  |  |  |  |
| 46 | **Grid Security (TRANSCEND)** | 2012-03-16 → 2012-03-30 (+14d) | 2012-05-10 → 2012-05-24 (+14d) |  |  |  |  |
| 47 | ARRAY-1463 - Login with caGrid account | 2012-03-16 → 2012-03-30 (+14d) | 2012-03-29 → 2012-04-12 (+14d) |  |  |  |  |
| 48 | ARRAY-1928 - Migrate CSM to Grid accounts | 2012-03-30 → 2012-04-13 (+14d) | 2012-04-05 → 2012-04-19 (+14d) |  |  |  |  |
| 49 | ARRAY-1353 - Grid authentication in remote Java API | 2012-04-06 → 2012-04-20 (+14d) | 2012-04-19 → 2012-05-03 (+14d) |  |  |  |  |
| 50 | ARRAY-1462 - Installer/build infrastructure for secure Grid | 2012-04-20 → 2012-05-04 (+14d) | 2012-05-10 → 2012-05-24 (+14d) |  |  |  |  |
| 51 | ARRAY-1929 - Grid Grouper (NICE TO HAVE) | 2012-05-10 → 2012-05-24 (+14d) | 2012-05-10 → 2012-05-24 (+14d) |  |  |  |  |
| 52 | ARRAY-1472 - Bulk migration of LDAP to Grid (NICE TO HAVE) | 2012-05-10 → 2012-05-24 (+14d) | 2012-05-10 → 2012-05-24 (+14d) |  |  |  |  |
| 53 | **Single Sign-on (TRANSCEND)** | 2012-05-11 → 2012-05-25 (+14d) | 2012-06-07 → 2012-06-21 (+14d) |  |  |  |  |
| 54 | ARRAY-1930 | 2012-05-11 → 2012-05-25 (+14d) | 2012-06-07 → 2012-06-21 (+14d) |  |  |  |  |
| 55 | **Audit Trail (TRANSCEND)** | 2012-06-08 → 2012-06-22 (+14d) | 2012-07-05 → 2012-07-19 (+14d) |  |  |  |  |
| 56 | ARRAY-1931 - Sample deletions and data imports | 2012-06-08 → 2012-06-22 (+14d) | 2012-06-21 → 2012-07-05 (+14d) |  |  |  |  |
| 57 | ARRAY-1933 - Log visibility to Data Owner | 2012-06-22 → 2012-07-06 (+14d) | 2012-06-28 → 2012-07-12 (+14d) |  |  |  |  |
| 58 | ARRAY-1932 - Publish log | 2012-06-29 → 2012-07-13 (+14d) | 2012-07-05 → 2012-07-19 (+14d) |  |  |  |  |
| 59 | **File-level permissions for role-based security (TRANSCEND)** | 2012-07-06 → 2012-07-20 (+14d) | 2012-08-02 → 2012-08-16 (+14d) |  |  |  |  |
| 60 | ARRAY-1938 | 2012-07-06 → 2012-07-20 (+14d) | 2012-08-02 → 2012-08-16 (+14d) |  |  |  |  |
| 61 | **Maintenance and Bug Fixes** | 2012-08-03 → 2012-08-17 (+14d) | 2012-08-16 → 2012-08-30 (+14d) |  |  |  |  |
| 62 | Collaborator Group Defect | 2012-08-03 → 2012-08-17 (+14d) | 2012-08-16 → 2012-08-30 (+14d) |  |  |  |  |
| 63 | Expand unparsed file types (NICE TO HAVE) | 2012-08-16 → 2012-08-30 (+14d) | 2012-08-16 → 2012-08-30 (+14d) |  |  |  |  |
| 64 | IE 8 UI bugs (NICE TO HAVE) | 2012-08-16 → 2012-08-30 (+14d) | 2012-08-16 → 2012-08-30 (+14d) |  |  |  |  |
| 65 | MAGE-TAB v1.1 support (NICE TO HAVE) | 2012-08-16 → 2012-08-30 (+14d) | 2012-08-16 → 2012-08-30 (+14d) |  |  |  |  |
| 66 | Clean up duplicate terms (NICE TO HAVE) | 2012-08-16 → 2012-08-30 (+14d) | 2012-08-16 → 2012-08-30 (+14d) |  |  |  |  |
| 67 | Import verification to prevent unintentional biomaterial/term creation (NICE TO HAVE) | 2012-08-16 → 2012-08-30 (+14d) | 2012-08-16 → 2012-08-30 (+14d) |  |  |  |  |
| 68 | Prevent multiple hybs to 1 file association (NICE TO HAVE) | 2012-08-16 → 2012-08-30 (+14d) | 2012-08-16 → 2012-08-30 (+14d) |  |  |  |  |
| 69 | Fix SDRF export of multiple derived data file columns (NICE TO HAVE) | 2012-08-16 → 2012-08-30 (+14d) | 2012-08-16 → 2012-08-30 (+14d) |  |  |  |  |
| 70 | Fix LSIDs for unparsed array designs (NICE TO HAVE) | 2012-08-16 → 2012-08-30 (+14d) | 2012-08-16 → 2012-08-30 (+14d) |  |  |  |  |
| 71 | **Release Overhead for TRANSCEND release** | 2012-08-17 → 2012-08-31 (+14d) | 2012-10-11 → 2012-10-25 (+14d) |  |  |  |  |
| 72 | Bug fixes | 2012-08-17 → 2012-08-31 (+14d) | 2012-09-27 → 2012-10-11 (+14d) |  |  |  |  |
| 73 | Deployment overhead | 2012-09-28 → 2012-10-12 (+14d) | 2012-10-11 → 2012-10-25 (+14d) |  |  |  |  |

## Version 16 (saved 2011-11-04)

Note of the change: Latest updates.

Last finish stays 2012-10-25. Complete tasks 23 → 26.

Added:

| ID | Task | Duration | Start | Finish | Predecessors |
| --- | --- | --- | --- | --- | --- |
| 30 | BDALite: Migrate to AntHill Pro 3 - Phase 1 (ARRAY-2103, ARRAY-2121) | 15d | 2011-10-07 A | 2011-10-27 A | 28 |
| 31 | Curation Tier upgrade to 2.4.1 | 3d | 2011-10-28 A | 2011-11-01 A | 29 |

Removed: 30 Migrate to AntHill Pro 3; 31 Curation Tier Upgrade to 2.4.1

Changed:

| ID | Task | Finish | Complete | Total float | Other |
| --- | --- | --- | --- | --- | --- |
| 1 | **CAARRAY 2.x** |  | 53% → 55% |  |  |
| 25 | **2.5.0 (rough LOEs)** |  | 24% → 33% |  |  |
| 27 | BDALite: Migrate caArray build from Ivy to Nexus (ARRAY-2073) |  |  |  | was named Migrate caArray build from Ivy to Nexus |
| 28 | BDALite: Artifact configuration at build time and PTE form (ARRAY-2067, ARRAY-1967) |  |  |  | was named Artifact configuration at build time for BDA-Lite and PTE form |
| 29 | BDALite: Migrate BDA build from Ivy to Nexus (ARRAY-2085) | 2011-10-27 A | 80% → 100% | 2.5d → none | was named Migrate BDA build from Ivy to Nexus |
| 32 | Merge in 2.4.1 fixes into 2.5.0 |  | 50% → 80% |  |  |
| 35 | Jboss 5.1 / Java 6 upgrade - Fix Installer |  |  |  | was named Jboss 5.1 / Java 6 upgrade - Installer |

## Version 17 (saved 2011-11-08)

Note of the change: Latest updates.

Last finish stays 2012-10-25. Complete tasks 26 → 27.

Added:

| ID | Task | Duration | Start | Finish | Predecessors |
| --- | --- | --- | --- | --- | --- |
| 34 | External Dependency: AntHill Pro 3 Tracks set up by Systems team (ARRAY-1968) | 0d | 2011-10-27 | 2011-10-27 | 30 |

Changed:

| ID | Task | Start | Finish | Complete | Total float | Predecessors | Other |
| --- | --- | --- | --- | --- | --- | --- | --- |
| 1 | **CAARRAY 2.x** |  |  | 55% → 56% |  |  |  |
| 25 | **2.5.0 (rough LOEs)** |  |  | 33% → 34% |  |  |  |
| 26 | Merge in plug-in arch, file system storage, Jboss5 and get local CI build working (ARRAY-1804, ARRAY-1595, ARRAY-1896) |  |  |  |  |  | was named Merge in plug-in arch, file system storage, Jboss5 and get local CI build working |
| 30 | BDALite: Migrate to AntHill Pro 3 - Prerequisites (ARRAY-2103, ARRAY-2121) |  |  |  |  |  | was named BDALite: Migrate to AntHill Pro 3 - Phase 1 (ARRAY-2103, ARRAY-2121) |
| 32 | Merge in 2.4.1 fixes into 2.5.0 (ARRAY-2069) |  | 2011-11-03 A | 80% → 100% | 0d → none |  | was named Merge in 2.4.1 fixes into 2.5.0 |
| 33 | Get CI build tested and working (ARRAY-2064) | 2011-11-04 A |  | 0% → 50% |  |  | was named Get CI build tested and working |
| 35 | Jboss 5.1 / Java 6 upgrade - Test 2.5.0 on NCI tiers (ARRAY-1809) | 2011-11-11 → 2011-10-28 (-14d) | 2011-11-17 → 2011-11-03 (-14d) |  | 95d → 105d | 33 → 34 | was named Jboss 5.1 / Java 6 upgrade - NCI tiers |
| 36 | Jboss 5.1 / Java 6 upgrade - Fix Installer (ARRAY-1567, ARRAY-2124) |  |  |  |  |  | was named Jboss 5.1 / Java 6 upgrade - Fix Installer |
| 37 | Jboss 5.1 / Java 6 upgrade - Test 2.4.x to 2.5.0 migration path (ARRAY-2126, ARRAY-2127) |  |  |  |  |  | was named Jboss 5.1 / Java 6 upgrade - Test 2.4.x to 2.5.0 migration path |
| 38 | File system storage of raw files (transaction spanning DB and filesystem) (ARRAY-1752) |  |  |  |  |  | was named File system storage of raw files (transaction spanning DB and filesystem) |
| 39 | Allow user to point to files rather than uploading/transferring (ARRAY-2005) |  |  |  |  |  | was named Allow user to point to files rather than uploading/transferring |
| 40 | Split imports into multiple transactions (ARRAY-1403) |  |  |  |  |  | was named Split imports into multiple transactions |
| 41 | Resumable uploads (ARRAY-1899, ARRAY-1627) |  |  |  |  |  | was named Resumable uploads/downloads |
| 42 | Backup and replication for file system - NCI tiers and local installer documentation (ARRAY-1809) |  |  |  |  |  | was named Backup and replication for file system - NCI tiers and local installer documentation |
| 43 | API (CQL) changes to account for file system storage (ARRAY-1806, ARRAY-1391) |  |  |  |  |  | was named API (CQL) changes to account for file system storage |

## Version 18 (saved 2011-11-15)

Note of the change: Latest updates.

Last finish stays 2012-10-25. Complete tasks 27 → 28.

Changed:

| ID | Task | Start | Finish | Duration | Complete | Total float | Other |
| --- | --- | --- | --- | --- | --- | --- | --- |
| 25 | **2.5.0 (rough LOEs)** |  |  |  | 34% → 38% |  |  |
| 33 | Get CI build tested and working (ARRAY-2021, 2120, 2122, 2123, 2064) |  | 2011-11-10 → 2011-11-17 (+7d) | 5d → 10d |  | 0d → 95d | was named Get CI build tested and working (ARRAY-2064) |
| 36 | Jboss 5.1 / Java 6 upgrade - Fix Installer (ARRAY-1567, 2124, 2125, 2144, 2145, 2141, 2142, 2147, 2148) | 2011-11-11 A | 2011-11-17 A |  | 0% → 100% | 0d → none | was named Jboss 5.1 / Java 6 upgrade - Fix Installer (ARRAY-1567, ARRAY-2124) |

## Version 19 (saved 2011-11-22)

Note of the change: Latest status updates.

Last finish 2012-10-25 → 2012-11-01 (+7d). Complete tasks 28 → 31.

Added:

| ID | Task | Duration | Start | Finish | Predecessors |
| --- | --- | --- | --- | --- | --- |
| 36 | Xenoline: Data analysis and meetings | 2d | 2011-11-18 A | 2011-11-21 A | 34 |
| 37 | TRANSCEND: Requirements meetings and test data set-up | 4d | 2011-11-18 A | 2011-11-23 | 34 |
| 39 | Fix bugs discovered during regression testing (ARRAY-2165,2166,2167,2168,2169) | 5d | 2011-11-25 | 2011-12-01 | 38 |
| 40 | BDALite: AHP 3 prerequisite: Standalone liquibase upgrades (ARRAY-2105) | 5d | 2011-11-25 | 2011-12-01 | 35 |

Changed:

| ID | Task | Start | Finish | Duration | Complete | Total float | Predecessors | Other |
| --- | --- | --- | --- | --- | --- | --- | --- | --- |
| 1 | **CAARRAY 2.x** |  | 2012-10-25 → 2012-11-01 (+7d) | 317d → 322d | 56% → 57% |  |  |  |
| 25 | **2.5.0 (rough LOEs)** |  | 2012-03-29 → 2012-04-05 (+7d) | 142d → 147d | 38% → 41% |  |  |  |
| 33 | Get CI build tested and working (ARRAY-2021, 2120, 2122, 2123, 2064, 2122, 1960, 2152) |  | 2011-11-17 A |  | 50% → 100% | 95d → none |  | was named Get CI build tested and working (ARRAY-2021, 2120, 2122, 2123, 2064) |
| 35 | File system storage of raw files (transaction spanning DB and filesystem) (ARRAY-1752) | 2011-11-18 A | 2011-11-24 A |  | 0% → 100% | 90d → none |  |  |
| 41 | External Dependency: AntHill Pro 3 Tracks set up by Systems team (ARRAY-1968) | 2011-10-27 → 2011-12-01 (+35d) | 2011-10-27 → 2011-12-01 (+35d) |  |  | 105d → 85d | 30 → 30, 40 |  |
| 42 | Jboss 5.1 / Java 6 upgrade - Test 2.5.0 on NCI tiers (ARRAY-1809) | 2011-10-28 → 2011-12-02 (+35d) | 2011-11-03 → 2011-12-08 (+35d) |  |  | 105d → 85d |  |  |
| 43 | Allow user to point to files rather than uploading/transferring (ARRAY-2005) | 2011-11-18 → 2011-12-02 (+14d) | 2011-11-24 → 2011-12-08 (+14d) |  |  | 0d → 85d | 34 → 40 |  |
| 44 | Split imports into multiple transactions (ARRAY-1403) | 2011-11-25 → 2011-12-02 (+7d) | 2012-01-05 → 2012-01-12 (+7d) |  |  |  | 43 → 40 |  |
| 45 | Resumable uploads (ARRAY-1899, ARRAY-1627) | 2012-01-06 → 2012-01-13 (+7d) | 2012-02-02 → 2012-02-09 (+7d) |  |  |  |  |  |
| 46 | Backup and replication for file system - NCI tiers and local installer documentation (ARRAY-1809) | 2012-02-03 → 2012-02-10 (+7d) | 2012-02-09 → 2012-02-16 (+7d) |  |  |  |  |  |
| 47 | API (CQL) changes to account for file system storage (ARRAY-1806, ARRAY-1391) | 2012-02-03 → 2012-02-10 (+7d) | 2012-02-09 → 2012-02-16 (+7d) |  |  |  |  |  |
| 48 | Bug fixes | 2012-02-10 → 2012-02-17 (+7d) | 2012-03-15 → 2012-03-22 (+7d) |  |  |  |  |  |
| 49 | Deployment overhead | 2012-03-16 → 2012-03-23 (+7d) | 2012-03-29 → 2012-04-05 (+7d) |  |  |  |  |  |
| 50 | **PRODUCT BACKLOG (rough LOEs)** | 2012-03-30 → 2012-04-06 (+7d) | 2012-10-25 → 2012-11-01 (+7d) |  |  |  |  |  |
| 51 | **Grid Security (TRANSCEND)** | 2012-03-30 → 2012-04-06 (+7d) | 2012-05-24 → 2012-05-31 (+7d) |  |  |  |  |  |
| 52 | ARRAY-1463 - Login with caGrid account | 2012-03-30 → 2012-04-06 (+7d) | 2012-04-12 → 2012-04-19 (+7d) |  |  |  |  |  |
| 53 | ARRAY-1928 - Migrate CSM to Grid accounts | 2012-04-13 → 2012-04-20 (+7d) | 2012-04-19 → 2012-04-26 (+7d) |  |  |  |  |  |
| 54 | ARRAY-1353 - Grid authentication in remote Java API | 2012-04-20 → 2012-04-27 (+7d) | 2012-05-03 → 2012-05-10 (+7d) |  |  |  |  |  |
| 55 | ARRAY-1462 - Installer/build infrastructure for secure Grid | 2012-05-04 → 2012-05-11 (+7d) | 2012-05-24 → 2012-05-31 (+7d) |  |  |  |  |  |
| 56 | ARRAY-1929 - Grid Grouper (NICE TO HAVE) | 2012-05-24 → 2012-05-31 (+7d) | 2012-05-24 → 2012-05-31 (+7d) |  |  |  |  |  |
| 57 | ARRAY-1472 - Bulk migration of LDAP to Grid (NICE TO HAVE) | 2012-05-24 → 2012-05-31 (+7d) | 2012-05-24 → 2012-05-31 (+7d) |  |  |  |  |  |
| 58 | **Single Sign-on (TRANSCEND)** | 2012-05-25 → 2012-06-01 (+7d) | 2012-06-21 → 2012-06-28 (+7d) |  |  |  |  |  |
| 59 | ARRAY-1930 | 2012-05-25 → 2012-06-01 (+7d) | 2012-06-21 → 2012-06-28 (+7d) |  |  |  |  |  |
| 60 | **Audit Trail (TRANSCEND)** | 2012-06-22 → 2012-06-29 (+7d) | 2012-07-19 → 2012-07-26 (+7d) |  |  |  |  |  |
| 61 | ARRAY-1931 - Sample deletions and data imports | 2012-06-22 → 2012-06-29 (+7d) | 2012-07-05 → 2012-07-12 (+7d) |  |  |  |  |  |
| 62 | ARRAY-1933 - Log visibility to Data Owner | 2012-07-06 → 2012-07-13 (+7d) | 2012-07-12 → 2012-07-19 (+7d) |  |  |  |  |  |
| 63 | ARRAY-1932 - Publish log | 2012-07-13 → 2012-07-20 (+7d) | 2012-07-19 → 2012-07-26 (+7d) |  |  |  |  |  |
| 64 | **File-level permissions for role-based security (TRANSCEND)** | 2012-07-20 → 2012-07-27 (+7d) | 2012-08-16 → 2012-08-23 (+7d) |  |  |  |  |  |
| 65 | ARRAY-1938 | 2012-07-20 → 2012-07-27 (+7d) | 2012-08-16 → 2012-08-23 (+7d) |  |  |  |  |  |
| 66 | **Maintenance and Bug Fixes** | 2012-08-17 → 2012-08-24 (+7d) | 2012-08-30 → 2012-09-06 (+7d) |  |  |  |  |  |
| 67 | Collaborator Group Defect | 2012-08-17 → 2012-08-24 (+7d) | 2012-08-30 → 2012-09-06 (+7d) |  |  |  |  |  |
| 68 | Expand unparsed file types (NICE TO HAVE) | 2012-08-30 → 2012-09-06 (+7d) | 2012-08-30 → 2012-09-06 (+7d) |  |  |  |  |  |
| 69 | IE 8 UI bugs (NICE TO HAVE) | 2012-08-30 → 2012-09-06 (+7d) | 2012-08-30 → 2012-09-06 (+7d) |  |  |  |  |  |
| 70 | MAGE-TAB v1.1 support (NICE TO HAVE) | 2012-08-30 → 2012-09-06 (+7d) | 2012-08-30 → 2012-09-06 (+7d) |  |  |  |  |  |
| 71 | Clean up duplicate terms (NICE TO HAVE) | 2012-08-30 → 2012-09-06 (+7d) | 2012-08-30 → 2012-09-06 (+7d) |  |  |  |  |  |
| 72 | Import verification to prevent unintentional biomaterial/term creation (NICE TO HAVE) | 2012-08-30 → 2012-09-06 (+7d) | 2012-08-30 → 2012-09-06 (+7d) |  |  |  |  |  |
| 73 | Prevent multiple hybs to 1 file association (NICE TO HAVE) | 2012-08-30 → 2012-09-06 (+7d) | 2012-08-30 → 2012-09-06 (+7d) |  |  |  |  |  |
| 74 | Fix SDRF export of multiple derived data file columns (NICE TO HAVE) | 2012-08-30 → 2012-09-06 (+7d) | 2012-08-30 → 2012-09-06 (+7d) |  |  |  |  |  |
| 75 | Fix LSIDs for unparsed array designs (NICE TO HAVE) | 2012-08-30 → 2012-09-06 (+7d) | 2012-08-30 → 2012-09-06 (+7d) |  |  |  |  |  |
| 76 | **Release Overhead for TRANSCEND release** | 2012-08-31 → 2012-09-07 (+7d) | 2012-10-25 → 2012-11-01 (+7d) |  |  |  |  |  |
| 77 | Bug fixes | 2012-08-31 → 2012-09-07 (+7d) | 2012-10-11 → 2012-10-18 (+7d) |  |  |  |  |  |
| 78 | Deployment overhead | 2012-10-12 → 2012-10-19 (+7d) | 2012-10-25 → 2012-11-01 (+7d) |  |  |  |  |  |

## Version 20 (saved 2011-12-06)

Note of the change: Fixed Jira issue number for 2156.

Last finish 2012-11-01 → 2012-11-06 (+5d). Complete tasks 31 → 37.

Added:

| ID | Task | Duration | Start | Finish | Predecessors | Constraint | Resources |
| --- | --- | --- | --- | --- | --- | --- | --- |
| 39 | **Iteration M18** | 13d | 2011-11-25 A | 2011-12-13 | 38 |  |  |
| 42 | Orphaned experiments: Blocking issue for user (ARRAY-2183) | 5d | 2011-11-25 A | 2011-12-01 A |  |  | Rashmi |
| 43 | Design for large import splitting into multiple transactions (ARRAY-2146) | 5d | 2011-11-25 A | 2011-12-01 A |  |  | Todd; Rashmi |
| 44 | Bug fixes (ARRAY-2167,2149) | 5d | 2011-12-07 | 2011-12-13 | 41 |  | KK |
| 45 | Design for remote file locations (ARRAY-2156) | 2d | 2011-12-12 | 2011-12-13 |  | start no earlier than 2011-12-12 | Todd |
| 46 | **Iteration M19** | 10d | 2011-12-13 | 2011-12-27 | 39 |  |  |
| 49 | Splitting imports: Utility classes to generate child file sets | 2d | 2011-12-14 | 2011-12-15 |  |  |  |
| 50 | Splitting imports: MAGE-TAB Transaction Set data model and DAO | 3d | 2011-12-14 | 2011-12-16 |  |  |  |
| 51 | Splitting imports: State model and new states like "Partially Imported." | 2d | 2011-12-21 | 2011-12-22 | 48, 49, 50 |  |  |
| 52 | Splitting imports: Transaction handling of Validate and Import steps. | 3d | 2011-12-21 | 2011-12-23 | 48, 49, 50 |  |  |
| 53 | Splitting imports: Modify the import service to perform the splitting | 5d | 2011-12-21 | 2011-12-27 | 48, 49, 50 |  |  |
| 54 | **Iteration M20** | 10d | 2011-12-28 | 2012-01-10 | 46 |  |  |
| 55 | Design for Resumable Uploads | 5d | 2011-12-28 | 2012-01-03 |  |  |  |
| 56 | Splitting imports: Support multiple rows referencing the same data file | 3d | 2011-12-28 | 2011-12-30 |  |  |  |
| 57 | Splitting imports: Cancel parent import job even if a child has started. | 2d | 2011-12-28 | 2011-12-29 |  |  |  |
| 58 | Splitting imports: Resume manually cancelled import job | 3d | 2011-12-30 | 2012-01-03 | 57 |  |  |
| 59 | Splitting imports: Resume failed import with bad data files | 5d | 2012-01-04 | 2012-01-10 | 57, 58 |  |  |
| 60 | Splitting imports: Resume failed import with bad SDRF | 5d | 2012-01-04 | 2012-01-10 | 57, 58 |  |  |

Removed: 44 Split imports into multiple transactions (ARRAY-1403)

Changed:

| ID | Task | Start | Finish | Duration | Complete | Total float | Predecessors | Other |
| --- | --- | --- | --- | --- | --- | --- | --- | --- |
| 1 | **CAARRAY 2.x** |  | 2012-11-01 → 2012-11-06 (+5d) | 322d → 325d | 57% → 59% |  |  |  |
| 25 | **2.5.0 (rough LOEs)** |  | 2012-04-05 → 2012-04-10 (+5d) | 147d → 150d | 41% → 49% |  |  |  |
| 37 | TRANSCEND: Requirements meetings and test data set-up |  | 2011-11-23 → 2011-11-24 A (+1d) | 4d → 5d | 50% → 100% | 96d → none |  |  |
| 38 | Jboss 5.1 / Java 6 upgrade - Test 2.4.x to 2.5.0 migration path (ARRAY-2126, ARRAY-2127) | 2011-11-18 A | 2011-11-24 A |  | 0% → 100% | 90d → none |  |  |
| 40 | Bug fixes (ARRAY-2165,2166) | 2011-11-25 A | 2011-12-01 → 2011-11-29 A (-2d) | 5d → 3d | 0% → 100% | 90d → none | 38 → none | was named Fix bugs discovered during regression testing (ARRAY-2165,2166,2167,2168,2169); resources none → KK |
| 41 | BDALite: AHP 3 prerequisite: Standalone liquibase upgrades (ARRAY-2105) | 2011-11-25 → 2011-11-30 A (+5d) | 2011-12-01 → 2011-12-06 A (+5d) |  | 0% → 100% | 0d → none | 35 → 40 | resources none → KK |
| 47 | External Dependency: AntHill Pro 3 Tracks set up by Systems team (ARRAY-1968) | 2011-12-01 → 2011-12-13 (+12d) | 2011-12-01 → 2011-12-13 (+12d) |  |  | 85d → 0d |  |  |
| 48 | Jboss 5.1 / Java 6 upgrade - Test 2.5.0 on NCI tiers (ARRAY-1809) | 2011-12-02 → 2011-12-14 (+12d) | 2011-12-08 → 2011-12-20 (+12d) |  |  | 85d → 0d |  |  |
| 61 | Resumable uploads (ARRAY-1899, ARRAY-1627) | 2012-01-13 → 2012-01-11 (-2d) | 2012-02-09 → 2012-02-07 (-2d) |  |  |  | Split imports into multiple transactions (ARRAY-1403) → 54 |  |
| 62 | Allow user to point to files rather than uploading/transferring (ARRAY-2005) | 2011-12-02 → 2012-02-08 (+68d) | 2011-12-08 → 2012-02-14 (+68d) |  |  | 85d → 0d | 41 → 61 |  |
| 63 | Backup and replication for file system - NCI tiers and local installer documentation (ARRAY-1809) | 2012-02-10 → 2012-02-15 (+5d) | 2012-02-16 → 2012-02-21 (+5d) |  |  | 35d → 0d | 61 → 62 |  |
| 64 | API (CQL) changes to account for file system storage (ARRAY-1806, ARRAY-1391) | 2012-02-10 → 2012-02-22 (+12d) | 2012-02-16 → 2012-02-28 (+12d) |  |  |  | 61 → 63 |  |
| 65 | Bug fixes | 2012-02-17 → 2012-02-29 (+12d) | 2012-03-22 → 2012-03-27 (+5d) | 25d → 20d |  |  |  |  |
| 66 | Deployment overhead | 2012-03-23 → 2012-03-28 (+5d) | 2012-04-05 → 2012-04-10 (+5d) |  |  |  |  |  |
| 67 | **PRODUCT BACKLOG (rough LOEs)** | 2012-04-06 → 2012-04-11 (+5d) | 2012-11-01 → 2012-11-06 (+5d) |  |  |  |  | resources Andrew; Quy; Rashmi → none |
| 68 | **Grid Security (TRANSCEND)** | 2012-04-06 → 2012-04-11 (+5d) | 2012-05-31 → 2012-06-05 (+5d) |  |  |  |  |  |
| 69 | ARRAY-1463 - Login with caGrid account | 2012-04-06 → 2012-04-11 (+5d) | 2012-04-19 → 2012-04-24 (+5d) |  |  |  |  |  |
| 70 | ARRAY-1928 - Migrate CSM to Grid accounts | 2012-04-20 → 2012-04-25 (+5d) | 2012-04-26 → 2012-05-01 (+5d) |  |  |  |  |  |
| 71 | ARRAY-1353 - Grid authentication in remote Java API | 2012-04-27 → 2012-05-02 (+5d) | 2012-05-10 → 2012-05-15 (+5d) |  |  |  |  |  |
| 72 | ARRAY-1462 - Installer/build infrastructure for secure Grid | 2012-05-11 → 2012-05-16 (+5d) | 2012-05-31 → 2012-06-05 (+5d) |  |  |  |  |  |
| 73 | ARRAY-1929 - Grid Grouper (NICE TO HAVE) | 2012-05-31 → 2012-06-05 (+5d) | 2012-05-31 → 2012-06-05 (+5d) |  |  |  |  |  |
| 74 | ARRAY-1472 - Bulk migration of LDAP to Grid (NICE TO HAVE) | 2012-05-31 → 2012-06-05 (+5d) | 2012-05-31 → 2012-06-05 (+5d) |  |  |  |  |  |
| 75 | **Single Sign-on (TRANSCEND)** | 2012-06-01 → 2012-06-06 (+5d) | 2012-06-28 → 2012-07-03 (+5d) |  |  |  |  |  |
| 76 | ARRAY-1930 | 2012-06-01 → 2012-06-06 (+5d) | 2012-06-28 → 2012-07-03 (+5d) |  |  |  |  |  |
| 77 | **Audit Trail (TRANSCEND)** | 2012-06-29 → 2012-07-04 (+5d) | 2012-07-26 → 2012-07-31 (+5d) |  |  |  |  |  |
| 78 | ARRAY-1931 - Sample deletions and data imports | 2012-06-29 → 2012-07-04 (+5d) | 2012-07-12 → 2012-07-17 (+5d) |  |  |  |  |  |
| 79 | ARRAY-1933 - Log visibility to Data Owner | 2012-07-13 → 2012-07-18 (+5d) | 2012-07-19 → 2012-07-24 (+5d) |  |  |  |  |  |
| 80 | ARRAY-1932 - Publish log | 2012-07-20 → 2012-07-25 (+5d) | 2012-07-26 → 2012-07-31 (+5d) |  |  |  |  |  |
| 81 | **File-level permissions for role-based security (TRANSCEND)** | 2012-07-27 → 2012-08-01 (+5d) | 2012-08-23 → 2012-08-28 (+5d) |  |  |  |  |  |
| 82 | ARRAY-1938 | 2012-07-27 → 2012-08-01 (+5d) | 2012-08-23 → 2012-08-28 (+5d) |  |  |  |  |  |
| 83 | **Maintenance and Bug Fixes** | 2012-08-24 → 2012-08-29 (+5d) | 2012-09-06 → 2012-09-11 (+5d) |  |  |  |  |  |
| 84 | Collaborator Group Defect | 2012-08-24 → 2012-08-29 (+5d) | 2012-09-06 → 2012-09-11 (+5d) |  |  |  |  |  |
| 85 | Expand unparsed file types (NICE TO HAVE) | 2012-09-06 → 2012-09-11 (+5d) | 2012-09-06 → 2012-09-11 (+5d) |  |  |  |  |  |
| 86 | IE 8 UI bugs (NICE TO HAVE) | 2012-09-06 → 2012-09-11 (+5d) | 2012-09-06 → 2012-09-11 (+5d) |  |  |  |  |  |
| 87 | MAGE-TAB v1.1 support (NICE TO HAVE) | 2012-09-06 → 2012-09-11 (+5d) | 2012-09-06 → 2012-09-11 (+5d) |  |  |  |  |  |
| 88 | Clean up duplicate terms (NICE TO HAVE) | 2012-09-06 → 2012-09-11 (+5d) | 2012-09-06 → 2012-09-11 (+5d) |  |  |  |  |  |
| 89 | Import verification to prevent unintentional biomaterial/term creation (NICE TO HAVE) | 2012-09-06 → 2012-09-11 (+5d) | 2012-09-06 → 2012-09-11 (+5d) |  |  |  |  |  |
| 90 | Prevent multiple hybs to 1 file association (NICE TO HAVE) | 2012-09-06 → 2012-09-11 (+5d) | 2012-09-06 → 2012-09-11 (+5d) |  |  |  |  |  |
| 91 | Fix SDRF export of multiple derived data file columns (NICE TO HAVE) | 2012-09-06 → 2012-09-11 (+5d) | 2012-09-06 → 2012-09-11 (+5d) |  |  |  |  |  |
| 92 | Fix LSIDs for unparsed array designs (NICE TO HAVE) | 2012-09-06 → 2012-09-11 (+5d) | 2012-09-06 → 2012-09-11 (+5d) |  |  |  |  |  |
| 93 | **Release Overhead for TRANSCEND release** | 2012-09-07 → 2012-09-12 (+5d) | 2012-11-01 → 2012-11-06 (+5d) |  |  |  |  |  |
| 94 | Bug fixes | 2012-09-07 → 2012-09-12 (+5d) | 2012-10-18 → 2012-10-23 (+5d) |  |  |  |  |  |
| 95 | Deployment overhead | 2012-10-19 → 2012-10-24 (+5d) | 2012-11-01 → 2012-11-06 (+5d) |  |  |  |  |  |

## Version 21 (saved 2011-12-13)

Note of the change: Latest updates.

Last finish stays 2012-11-06. Complete tasks 37 → 38.

Added:

| ID | Task | Duration | Start | Finish | Predecessors |
| --- | --- | --- | --- | --- | --- |
| 61 | QA Test Suite updates for 2.5.0 | 8d | 2011-12-28 | 2012-01-06 |  |
| 62 | QA Test Plan Review | 2d | 2012-01-09 | 2012-01-10 | 61 |

Changed:

| ID | Task | Start | Finish | Complete | Total float | Other |
| --- | --- | --- | --- | --- | --- | --- |
| 25 | **2.5.0** |  |  | 49% → 50% |  | was named 2.5.0 (rough LOEs) |
| 39 | **Iteration M18** |  |  | 72% → 96% |  |  |
| 44 | Bug fixes (ARRAY-2167,2149) | 2011-12-07 A |  | 0% → 80% |  |  |
| 45 | Design for remote file locations (ARRAY-2156) | 2011-12-12 A | 2011-12-13 A | 0% → 100% | 0d → none |  |

## Version 22 (saved 2011-12-15)

Note of the change: New BDALite item and latest status.

Last finish stays 2012-11-06. Complete tasks 38 → 40.

Added:

| ID | Task | Duration | Start | Finish | Predecessors |
| --- | --- | --- | --- | --- | --- |
| 46 | BDALite: AHP 3: Database properties at build time (ARRAY-2197) | 1d | 2011-12-07 A | 2011-12-07 A | 41 |

Removed: 76 ARRAY-1472 - Bulk migration of LDAP to Grid (NICE TO HAVE)

Changed:

| ID | Task | Finish | Complete | Total float |
| --- | --- | --- | --- | --- |
| 1 | **CAARRAY 2.x** |  | 59% → 60% |  |
| 39 | **Iteration M18** | 2011-12-13 A | 96% → 100% | 0d → none |
| 44 | Bug fixes (ARRAY-2167,2149) | 2011-12-13 A | 80% → 100% | 0d → none |

## Version 23 (saved 2011-12-20)

Note of the change: Latest updates.

Last finish 2012-11-06 → 2012-11-02 (-4d). Complete tasks 40 → 41.

Added:

| ID | Task | Duration | Start | Finish | Predecessors |
| --- | --- | --- | --- | --- | --- |
| 50 | Bug fix for new Agilent import problem (ARRAY-2198) | 2d | 2011-12-14 A | 2011-12-15 A |  |
| 55 | Splitting imports: Hide split files from users | 5d | 2011-12-14 | 2011-12-20 |  |
| 56 | Meet ESSRT re: Data Authorization approach for TRANSCEND | 1d | 2011-12-21 | 2011-12-21 | 49, 51, 52 |

Changed:

| ID | Task | Start | Finish | Duration | Complete | Total float | Predecessors |
| --- | --- | --- | --- | --- | --- | --- | --- |
| 1 | **CAARRAY 2.x** |  | 2012-11-06 → 2012-11-02 (-4d) | 325d → 323d | 60% → 59% |  |  |
| 25 | **2.5.0** |  | 2012-04-10 → 2012-04-06 (-4d) | 150d → 148d |  |  |  |
| 47 | **Iteration M19** | 2011-12-13 A | 2011-12-27 → 2011-12-23 (-4d) | 10d → 8d | 0% → 16% |  |  |
| 51 | Splitting imports: Utility classes to generate child file sets | 2011-12-14 A |  |  | 0% → 50% |  |  |
| 52 | Splitting imports: MAGE-TAB Transaction Set data model and DAO | 2011-12-14 A |  |  | 0% → 25% |  |  |
| 57 | **Iteration M20** | 2011-12-28 → 2011-12-26 (-2d) | 2012-01-10 → 2012-01-06 (-4d) |  |  |  |  |
| 58 | Design for Resumable Uploads | 2011-12-28 → 2011-12-26 (-2d) | 2012-01-03 → 2011-12-30 (-4d) |  |  |  |  |
| 59 | Splitting imports: Modify the import service to perform the splitting | 2011-12-21 → 2011-12-26 (+5d) | 2011-12-27 → 2011-12-30 (+3d) |  |  | 0d → 5d | 49, 51, 52 → none |
| 60 | Splitting imports: Support multiple rows referencing the same data file | 2011-12-28 → 2011-12-26 (-2d) | 2011-12-30 → 2011-12-28 (-2d) |  |  |  |  |
| 61 | Splitting imports: Cancel parent import job even if a child has started. | 2011-12-28 → 2011-12-26 (-2d) | 2011-12-29 → 2011-12-27 (-2d) |  |  |  |  |
| 62 | Splitting imports: Resume manually cancelled import job | 2011-12-30 → 2011-12-28 (-2d) | 2012-01-03 → 2011-12-30 (-4d) |  |  |  |  |
| 63 | Splitting imports: Resume failed import with bad data files | 2012-01-04 → 2012-01-02 (-2d) | 2012-01-10 → 2012-01-06 (-4d) |  |  |  |  |
| 64 | Splitting imports: Resume failed import with bad SDRF | 2012-01-04 → 2012-01-02 (-2d) | 2012-01-10 → 2012-01-06 (-4d) |  |  |  |  |
| 65 | QA Test Suite updates for 2.5.0 | 2011-12-28 → 2011-12-26 (-2d) | 2012-01-06 → 2012-01-04 (-2d) |  |  |  |  |
| 66 | QA Test Plan Review | 2012-01-09 → 2012-01-05 (-4d) | 2012-01-10 → 2012-01-06 (-4d) |  |  |  |  |
| 67 | Resumable uploads (ARRAY-1899, ARRAY-1627) | 2012-01-11 → 2012-01-09 (-2d) | 2012-02-07 → 2012-02-03 (-4d) |  |  |  |  |
| 68 | Allow user to point to files rather than uploading/transferring (ARRAY-2005) | 2012-02-08 → 2012-02-06 (-2d) | 2012-02-14 → 2012-02-10 (-4d) |  |  |  |  |
| 69 | Backup and replication for file system - NCI tiers and local installer documentation (ARRAY-1809) | 2012-02-15 → 2012-02-13 (-2d) | 2012-02-21 → 2012-02-17 (-4d) |  |  |  |  |
| 70 | API (CQL) changes to account for file system storage (ARRAY-1806, ARRAY-1391) | 2012-02-22 → 2012-02-20 (-2d) | 2012-02-28 → 2012-02-24 (-4d) |  |  |  |  |
| 71 | Bug fixes | 2012-02-29 → 2012-02-27 (-2d) | 2012-03-27 → 2012-03-23 (-4d) |  |  |  |  |
| 72 | Deployment overhead | 2012-03-28 → 2012-03-26 (-2d) | 2012-04-10 → 2012-04-06 (-4d) |  |  |  |  |
| 73 | **PRODUCT BACKLOG (rough LOEs)** | 2012-04-11 → 2012-04-09 (-2d) | 2012-11-06 → 2012-11-02 (-4d) |  |  |  |  |
| 74 | **Grid Security (TRANSCEND)** | 2012-04-11 → 2012-04-09 (-2d) | 2012-06-05 → 2012-06-01 (-4d) |  |  |  |  |
| 75 | ARRAY-1463 - Login with caGrid account | 2012-04-11 → 2012-04-09 (-2d) | 2012-04-24 → 2012-04-20 (-4d) |  |  |  |  |
| 76 | ARRAY-1928 - Migrate CSM to Grid accounts | 2012-04-25 → 2012-04-23 (-2d) | 2012-05-01 → 2012-04-27 (-4d) |  |  |  |  |
| 77 | ARRAY-1353 - Grid authentication in remote Java API | 2012-05-02 → 2012-04-30 (-2d) | 2012-05-15 → 2012-05-11 (-4d) |  |  |  |  |
| 78 | ARRAY-1462 - Installer/build infrastructure for secure Grid | 2012-05-16 → 2012-05-14 (-2d) | 2012-06-05 → 2012-06-01 (-4d) |  |  |  |  |
| 79 | ARRAY-1929 - Grid Grouper (NICE TO HAVE) | 2012-06-05 → 2012-06-01 (-4d) | 2012-06-05 → 2012-06-01 (-4d) |  |  |  |  |
| 80 | **Single Sign-on (TRANSCEND)** | 2012-06-06 → 2012-06-04 (-2d) | 2012-07-03 → 2012-06-29 (-4d) |  |  |  |  |
| 81 | ARRAY-1930 | 2012-06-06 → 2012-06-04 (-2d) | 2012-07-03 → 2012-06-29 (-4d) |  |  |  |  |
| 82 | **Audit Trail (TRANSCEND)** | 2012-07-04 → 2012-07-02 (-2d) | 2012-07-31 → 2012-07-27 (-4d) |  |  |  |  |
| 83 | ARRAY-1931 - Sample deletions and data imports | 2012-07-04 → 2012-07-02 (-2d) | 2012-07-17 → 2012-07-13 (-4d) |  |  |  |  |
| 84 | ARRAY-1933 - Log visibility to Data Owner | 2012-07-18 → 2012-07-16 (-2d) | 2012-07-24 → 2012-07-20 (-4d) |  |  |  |  |
| 85 | ARRAY-1932 - Publish log | 2012-07-25 → 2012-07-23 (-2d) | 2012-07-31 → 2012-07-27 (-4d) |  |  |  |  |
| 86 | **File-level permissions for role-based security (TRANSCEND)** | 2012-08-01 → 2012-07-30 (-2d) | 2012-08-28 → 2012-08-24 (-4d) |  |  |  |  |
| 87 | ARRAY-1938 | 2012-08-01 → 2012-07-30 (-2d) | 2012-08-28 → 2012-08-24 (-4d) |  |  |  |  |
| 88 | **Maintenance and Bug Fixes** | 2012-08-29 → 2012-08-27 (-2d) | 2012-09-11 → 2012-09-07 (-4d) |  |  |  |  |
| 89 | Collaborator Group Defect | 2012-08-29 → 2012-08-27 (-2d) | 2012-09-11 → 2012-09-07 (-4d) |  |  |  |  |
| 90 | Expand unparsed file types (NICE TO HAVE) | 2012-09-11 → 2012-09-07 (-4d) | 2012-09-11 → 2012-09-07 (-4d) |  |  |  |  |
| 91 | IE 8 UI bugs (NICE TO HAVE) | 2012-09-11 → 2012-09-07 (-4d) | 2012-09-11 → 2012-09-07 (-4d) |  |  |  |  |
| 92 | MAGE-TAB v1.1 support (NICE TO HAVE) | 2012-09-11 → 2012-09-07 (-4d) | 2012-09-11 → 2012-09-07 (-4d) |  |  |  |  |
| 93 | Clean up duplicate terms (NICE TO HAVE) | 2012-09-11 → 2012-09-07 (-4d) | 2012-09-11 → 2012-09-07 (-4d) |  |  |  |  |
| 94 | Import verification to prevent unintentional biomaterial/term creation (NICE TO HAVE) | 2012-09-11 → 2012-09-07 (-4d) | 2012-09-11 → 2012-09-07 (-4d) |  |  |  |  |
| 95 | Prevent multiple hybs to 1 file association (NICE TO HAVE) | 2012-09-11 → 2012-09-07 (-4d) | 2012-09-11 → 2012-09-07 (-4d) |  |  |  |  |
| 96 | Fix SDRF export of multiple derived data file columns (NICE TO HAVE) | 2012-09-11 → 2012-09-07 (-4d) | 2012-09-11 → 2012-09-07 (-4d) |  |  |  |  |
| 97 | Fix LSIDs for unparsed array designs (NICE TO HAVE) | 2012-09-11 → 2012-09-07 (-4d) | 2012-09-11 → 2012-09-07 (-4d) |  |  |  |  |
| 98 | **Release Overhead for TRANSCEND release** | 2012-09-12 → 2012-09-10 (-2d) | 2012-11-06 → 2012-11-02 (-4d) |  |  |  |  |
| 99 | Bug fixes | 2012-09-12 → 2012-09-10 (-2d) | 2012-10-23 → 2012-10-19 (-4d) |  |  |  |  |
| 100 | Deployment overhead | 2012-10-24 → 2012-10-22 (-2d) | 2012-11-06 → 2012-11-02 (-4d) |  |  |  |  |

## Version 24 (saved 2012-01-01)

Note of the change: updated project plan

Last finish stays 2012-11-02. Complete tasks 41 → 45.

Added:

| ID | Task | Duration | Start | Finish | Predecessors | Resources |
| --- | --- | --- | --- | --- | --- | --- |
| 51 | AHP caArray troubleshooting (ARRAY-2205) | 1d | 2011-12-27 A | 2011-12-27 A | 50 |  |
| 55 | Work with Systems Team to get AHP 3 Build tracks set up (ARRAY-1968) | 0.5d | 2011-12-29 | 2011-12-29 |  | KK |
| 57 | Splitting imports: State model and new states like "Partially Imported." (ARRAY-2188) | 2d | 2011-12-29 | 2011-12-30 |  |  |
| 58 | Splitting imports: Transaction handling of Validate and Import steps. (ARRAY-2189) | 3d | 2012-01-03 | 2012-01-05 | 57 |  |
| 61 | Bug fixes | 1.5d | 2011-12-29 | 2011-12-30 |  | KK; Todd |
| 62 | QA Test Suite updates for 2.5.0: Splitting Imports (ARRAY-2206) | 1.5d | 2011-12-29 | 2011-12-30 |  | Quy |
| 63 | **Iteration M21** | 10d | 2012-01-11 | 2012-01-25 | 53 |  |
| 64 | Splitting imports: Hide split files from users (ARRAY-2199) | 5d | 2012-01-11 | 2012-01-18 |  |  |
| 70 | QA Test Suite updates for 2.5.0: Move Test Cases to Quality Center | 5d | 2012-01-11 | 2012-01-18 |  |  |

Removed: 53 Splitting imports: State model and new states like "Partially Imported."; 54 Splitting imports: Transaction handling of Validate and Import steps.; 55 Splitting imports: Hide split files from users; 65 QA Test Suite updates for 2.5.0

Changed:

| ID | Task | Start | Finish | Duration | Complete | Total float | Predecessors | Other |
| --- | --- | --- | --- | --- | --- | --- | --- | --- |
| 1 | **CAARRAY 2.x** |  |  | 323d → 320d | 59% → 62% |  |  |  |
| 25 | **2.5.0** |  |  | 148d → 145d | 50% → 56% |  |  |  |
| 47 | **Iteration M19** | 2011-12-13 A → 2011-12-14 A (+1d) | 2011-12-23 → 2011-12-28 A (+5d) | 8d → 10d | 16% → 100% | 0d → none |  |  |
| 49 | Splitting imports: Utility classes to generate child file sets | 2011-12-14 A → 2011-12-16 A (+2d) | 2011-12-15 → 2011-12-19 A (+4d) |  | 50% → 100% | 3d → none | none → 48 |  |
| 50 | Splitting imports: MAGE-TAB Transaction Set data model and DAO | 2011-12-14 A → 2011-12-20 A (+6d) | 2011-12-16 → 2011-12-23 A (+7d) | 3d → 4d | 25% → 100% | 2d → none | none → 49 |  |
| 52 | Meet ESSRT re: Data Authorization approach for TRANSCEND | 2011-12-21 → 2011-12-28 A (+7d) | 2011-12-21 → 2011-12-28 A (+7d) |  | 0% → 100% | 2d → none | 56, 49, 50 → 51 |  |
| 53 | **Iteration M20** | 2011-12-26 → 2011-12-28 (+2d) | 2012-01-06 → 2012-01-10 (+4d) | 10d → 8d |  |  |  |  |
| 54 | External Dependency: AntHill Pro 3 Tracks set up by Systems team (ARRAY-1968) | 2011-12-13 → 2011-12-28 (+15d) | 2011-12-13 → 2011-12-28 (+15d) |  |  | 0d → 8d | 30, 41 → none | resources none → Jacob |
| 56 | Jboss 5.1 / Java 6 upgrade - Test 2.5.0 on NCI tiers (ARRAY-1809) | 2011-12-14 → 2011-12-29 (+15d) | 2011-12-20 → 2012-01-06 (+17d) |  |  | 0d → 2.5d | 54 → 55 |  |
| 59 | Design for Resumable Uploads | 2011-12-26 → 2012-01-06 (+11d) | 2011-12-30 → 2012-01-10 (+11d) | 5d → 3d |  | 5d → 0d | none → 58 |  |
| 60 | Splitting imports: Modify the import service to perform the splitting (ARRAY-2190) | 2011-12-26 → 2011-12-29 (+3d) | 2011-12-30 → 2012-01-05 (+6d) |  |  | 5d → 3d |  | was named Splitting imports: Modify the import service to perform the splitting |
| 65 | Splitting imports: Support multiple rows referencing the same data file | 2011-12-26 → 2012-01-11 (+16d) | 2011-12-28 → 2012-01-13 (+16d) |  |  | 7d → 62d |  |  |
| 66 | Splitting imports: Cancel parent import job even if a child has started. | 2011-12-26 → 2012-01-11 (+16d) | 2011-12-27 → 2012-01-12 (+16d) |  |  |  |  |  |
| 67 | Splitting imports: Resume manually cancelled import job | 2011-12-28 → 2012-01-13 (+16d) | 2011-12-30 → 2012-01-18 (+19d) |  |  |  |  |  |
| 68 | Splitting imports: Resume failed import with bad data files | 2012-01-02 → 2012-01-19 (+17d) | 2012-01-06 → 2012-01-25 (+19d) |  |  |  |  |  |
| 69 | Splitting imports: Resume failed import with bad SDRF | 2012-01-02 → 2012-01-19 (+17d) | 2012-01-06 → 2012-01-25 (+19d) |  |  |  |  |  |
| 71 | QA Test Plan Review | 2012-01-05 → 2012-01-19 (+14d) | 2012-01-06 → 2012-01-20 (+14d) |  |  | 0d → 3d | QA Test Suite updates for 2.5.0 → 70 |  |
| 72 | Resumable uploads (ARRAY-1899, ARRAY-1627) | 2012-01-09 → 2012-01-26 (+17d) | 2012-02-03 → 2012-02-08 (+5d) | 20d → 10d |  |  | 53 → 63 |  |
| 73 | Allow user to point to files rather than uploading/transferring (ARRAY-2005) | 2012-02-06 → 2012-02-09 (+3d) | 2012-02-10 → 2012-02-15 (+5d) |  |  |  |  |  |
| 74 | Backup and replication for file system - NCI tiers and local installer documentation (ARRAY-1809) | 2012-02-13 → 2012-02-16 (+3d) | 2012-02-17 → 2012-02-22 (+5d) |  |  |  |  |  |
| 75 | API (CQL) changes to account for file system storage (ARRAY-1806, ARRAY-1391) | 2012-02-20 → 2012-02-23 (+3d) | 2012-02-24 → 2012-02-29 (+5d) |  |  |  |  |  |
| 76 | Bug fixes | 2012-02-27 → 2012-03-01 (+3d) |  | 20d → 17d |  |  |  |  |

## Version 25 (saved 2012-01-11)

Note of the change: updated project plan to m20

Last finish 2012-11-02 → 2012-10-31 (-2d). Complete tasks 45 → 50.

Changed:

| ID | Task | Start | Finish | Duration | Complete | Total float | Predecessors |
| --- | --- | --- | --- | --- | --- | --- | --- |
| 1 | **CAARRAY 2.x** |  | 2012-11-02 → 2012-10-31 (-2d) | 320d → 317.5d | 62% → 63% |  |  |
| 25 | **2.5.0** |  | 2012-04-06 → 2012-04-04 (-2d) | 145d → 142.5d | 56% → 60% |  |  |
| 53 | **Iteration M20** | 2011-12-28 A | 2012-01-10 → 2012-01-06 (-4d) | 8d → 5.5d | 0% → 55% |  |  |
| 54 | External Dependency: AntHill Pro 3 Tracks set up by Systems team (ARRAY-1968) | 2011-12-28 A | 2011-12-28 A |  | 0% → 100% | 8d → none |  |
| 55 | Work with Systems Team to get AHP 3 Build tracks set up (ARRAY-1968) | 2011-12-29 A | 2011-12-29 A |  | 0% → 100% | 2.5d → none |  |
| 56 | Jboss 5.1 / Java 6 upgrade - Test 2.5.0 on NCI tiers (ARRAY-1809) | 2011-12-29 A |  |  | 0% → 50% | 2.5d → 0d |  |
| 57 | Splitting imports: State model and new states like "Partially Imported." (ARRAY-2188) | 2011-12-29 A | 2011-12-30 A |  | 0% → 100% | 0d → none |  |
| 58 | Splitting imports: Transaction handling of Validate and Import steps. (ARRAY-2189) | 2012-01-03 A | 2012-01-05 A |  | 0% → 100% | 0d → none |  |
| 60 | Bug fixes | 2011-12-29 A | 2011-12-30 A |  | 0% → 100% | 6.5d → none |  |
| 61 | QA Test Suite updates for 2.5.0: Splitting Imports (ARRAY-2206) | 2011-12-29 A |  |  | 0% → 50% | 6.5d → 4d |  |
| 62 | **Iteration M21** | 2012-01-11 → 2012-01-06 (-5d) | 2012-01-25 → 2012-01-23 (-2d) |  |  |  |  |
| 63 | Splitting imports: Hide split files from users (ARRAY-2199) | 2012-01-11 → 2012-01-06 (-5d) | 2012-01-18 → 2012-01-13 (-5d) |  |  |  |  |
| 64 | Splitting imports: Support multiple rows referencing the same data file | 2012-01-11 → 2012-01-06 (-5d) | 2012-01-13 → 2012-01-11 (-2d) |  |  | 62d → 7d |  |
| 65 | Splitting imports: Cancel parent import job even if a child has started. | 2012-01-11 → 2012-01-06 (-5d) | 2012-01-12 → 2012-01-10 (-2d) |  |  |  |  |
| 66 | Splitting imports: Resume manually cancelled import job | 2012-01-13 → 2012-01-10 (-3d) | 2012-01-18 → 2012-01-13 (-5d) |  |  |  |  |
| 67 | Splitting imports: Resume failed import with bad data files | 2012-01-19 → 2012-01-13 (-6d) | 2012-01-25 → 2012-01-23 (-2d) |  |  |  |  |
| 68 | Splitting imports: Resume failed import with bad SDRF | 2012-01-19 → 2012-01-13 (-6d) | 2012-01-25 → 2012-01-23 (-2d) |  |  |  |  |
| 69 | Design for Resumable Uploads |  | 2012-01-10 → 2012-01-11 (+1d) |  |  | 0d → 7d | 58 → none |
| 70 | QA Test Suite updates for 2.5.0: Move Test Cases to Quality Center | 2012-01-11 → 2012-01-06 (-5d) | 2012-01-18 → 2012-01-13 (-5d) |  |  |  |  |
| 71 | QA Test Plan Review | 2012-01-19 → 2012-01-13 (-6d) | 2012-01-20 → 2012-01-18 (-2d) |  |  |  |  |
| 72 | Resumable uploads (ARRAY-1899, ARRAY-1627) | 2012-01-26 → 2012-01-23 (-3d) | 2012-02-08 → 2012-02-06 (-2d) |  |  |  |  |
| 73 | Allow user to point to files rather than uploading/transferring (ARRAY-2005) | 2012-02-09 → 2012-02-06 (-3d) | 2012-02-15 → 2012-02-13 (-2d) |  |  |  |  |
| 74 | Backup and replication for file system - NCI tiers and local installer documentation (ARRAY-1809) | 2012-02-16 → 2012-02-13 (-3d) | 2012-02-22 → 2012-02-20 (-2d) |  |  |  |  |
| 75 | API (CQL) changes to account for file system storage (ARRAY-1806, ARRAY-1391) | 2012-02-23 → 2012-02-20 (-3d) | 2012-02-29 → 2012-02-27 (-2d) |  |  |  |  |
| 76 | Bug fixes | 2012-03-01 → 2012-02-27 (-3d) | 2012-03-23 → 2012-03-21 (-2d) |  |  |  |  |
| 77 | Deployment overhead | 2012-03-26 → 2012-03-21 (-5d) | 2012-04-06 → 2012-04-04 (-2d) |  |  |  |  |
| 78 | **PRODUCT BACKLOG (rough LOEs)** | 2012-04-09 → 2012-04-04 (-5d) | 2012-11-02 → 2012-10-31 (-2d) |  |  |  |  |
| 79 | **Grid Security (TRANSCEND)** | 2012-04-09 → 2012-04-04 (-5d) | 2012-06-01 → 2012-05-30 (-2d) |  |  |  |  |
| 80 | ARRAY-1463 - Login with caGrid account | 2012-04-09 → 2012-04-04 (-5d) | 2012-04-20 → 2012-04-18 (-2d) |  |  |  |  |
| 81 | ARRAY-1928 - Migrate CSM to Grid accounts | 2012-04-23 → 2012-04-18 (-5d) | 2012-04-27 → 2012-04-25 (-2d) |  |  |  |  |
| 82 | ARRAY-1353 - Grid authentication in remote Java API | 2012-04-30 → 2012-04-25 (-5d) | 2012-05-11 → 2012-05-09 (-2d) |  |  |  |  |
| 83 | ARRAY-1462 - Installer/build infrastructure for secure Grid | 2012-05-14 → 2012-05-09 (-5d) | 2012-06-01 → 2012-05-30 (-2d) |  |  |  |  |
| 84 | ARRAY-1929 - Grid Grouper (NICE TO HAVE) | 2012-06-01 → 2012-05-30 (-2d) | 2012-06-01 → 2012-05-30 (-2d) |  |  |  |  |
| 85 | **Single Sign-on (TRANSCEND)** | 2012-06-04 → 2012-05-30 (-5d) | 2012-06-29 → 2012-06-27 (-2d) |  |  |  |  |
| 86 | ARRAY-1930 | 2012-06-04 → 2012-05-30 (-5d) | 2012-06-29 → 2012-06-27 (-2d) |  |  |  |  |
| 87 | **Audit Trail (TRANSCEND)** | 2012-07-02 → 2012-06-27 (-5d) | 2012-07-27 → 2012-07-25 (-2d) |  |  |  |  |
| 88 | ARRAY-1931 - Sample deletions and data imports | 2012-07-02 → 2012-06-27 (-5d) | 2012-07-13 → 2012-07-11 (-2d) |  |  |  |  |
| 89 | ARRAY-1933 - Log visibility to Data Owner | 2012-07-16 → 2012-07-11 (-5d) | 2012-07-20 → 2012-07-18 (-2d) |  |  |  |  |
| 90 | ARRAY-1932 - Publish log | 2012-07-23 → 2012-07-18 (-5d) | 2012-07-27 → 2012-07-25 (-2d) |  |  |  |  |
| 91 | **File-level permissions for role-based security (TRANSCEND)** | 2012-07-30 → 2012-07-25 (-5d) | 2012-08-24 → 2012-08-22 (-2d) |  |  |  |  |
| 92 | ARRAY-1938 | 2012-07-30 → 2012-07-25 (-5d) | 2012-08-24 → 2012-08-22 (-2d) |  |  |  |  |
| 93 | **Maintenance and Bug Fixes** | 2012-08-27 → 2012-08-22 (-5d) | 2012-09-07 → 2012-09-05 (-2d) |  |  |  |  |
| 94 | Collaborator Group Defect | 2012-08-27 → 2012-08-22 (-5d) | 2012-09-07 → 2012-09-05 (-2d) |  |  |  |  |
| 95 | Expand unparsed file types (NICE TO HAVE) | 2012-09-07 → 2012-09-05 (-2d) | 2012-09-07 → 2012-09-05 (-2d) |  |  |  |  |
| 96 | IE 8 UI bugs (NICE TO HAVE) | 2012-09-07 → 2012-09-05 (-2d) | 2012-09-07 → 2012-09-05 (-2d) |  |  |  |  |
| 97 | MAGE-TAB v1.1 support (NICE TO HAVE) | 2012-09-07 → 2012-09-05 (-2d) | 2012-09-07 → 2012-09-05 (-2d) |  |  |  |  |
| 98 | Clean up duplicate terms (NICE TO HAVE) | 2012-09-07 → 2012-09-05 (-2d) | 2012-09-07 → 2012-09-05 (-2d) |  |  |  |  |
| 99 | Import verification to prevent unintentional biomaterial/term creation (NICE TO HAVE) | 2012-09-07 → 2012-09-05 (-2d) | 2012-09-07 → 2012-09-05 (-2d) |  |  |  |  |
| 100 | Prevent multiple hybs to 1 file association (NICE TO HAVE) | 2012-09-07 → 2012-09-05 (-2d) | 2012-09-07 → 2012-09-05 (-2d) |  |  |  |  |
| 101 | Fix SDRF export of multiple derived data file columns (NICE TO HAVE) | 2012-09-07 → 2012-09-05 (-2d) | 2012-09-07 → 2012-09-05 (-2d) |  |  |  |  |
| 102 | Fix LSIDs for unparsed array designs (NICE TO HAVE) | 2012-09-07 → 2012-09-05 (-2d) | 2012-09-07 → 2012-09-05 (-2d) |  |  |  |  |
| 103 | **Release Overhead for TRANSCEND release** | 2012-09-10 → 2012-09-05 (-5d) | 2012-11-02 → 2012-10-31 (-2d) |  |  |  |  |
| 104 | Bug fixes | 2012-09-10 → 2012-09-05 (-5d) | 2012-10-19 → 2012-10-17 (-2d) |  |  |  |  |
| 105 | Deployment overhead | 2012-10-22 → 2012-10-17 (-5d) | 2012-11-02 → 2012-10-31 (-2d) |  |  |  |  |

## Version 26 (saved 2012-01-17)

Note of the change: updated project plan for this iteration

Last finish 2012-10-31 → 2012-11-01 (+1d). Complete tasks 50 → 48.

Added:

| ID | Task | Duration | Start | Finish | Resources |
| --- | --- | --- | --- | --- | --- |
| 66 | QA Test Suite updates for 2.5.0: Splitting Imports (ARRAY-2206) | 1.5d | 2012-01-12 A | 2012-01-13 | Quy |
| 67 | Jboss 5.1 / Java 6 upgrade - Test 2.5.0 on NCI tiers (ARRAY-1809) | 7d | 2012-01-12 A | 2012-01-23 | Systems; KK; Quy |
| 71 | Support KC | 1d | 2012-01-12 | 2012-01-13 | KK |

Removed: 66 Splitting imports: Resume manually cancelled import job; 67 Splitting imports: Resume failed import with bad data files; 68 Splitting imports: Resume failed import with bad SDRF

Changed:

| ID | Task | Start | Finish | Duration | Complete | Total float | Predecessors | Other |
| --- | --- | --- | --- | --- | --- | --- | --- | --- |
| 1 | **CAARRAY 2.x** |  | 2012-10-31 → 2012-11-01 (+1d) | 317.5d → 318.5d | 63% → 62% |  |  |  |
| 25 | **2.5.0** |  | 2012-04-04 → 2012-04-05 (+1d) | 142.5d → 143.5d | 60% → 57% |  |  |  |
| 53 | **Iteration M20** |  | 2012-01-06 → 2012-01-12 (+6d) | 5.5d → 9.5d | 55% → 14% | 0d → 0.48d |  |  |
| 57 | Bug fixes |  | 2011-12-30 A → 2012-01-11 (+12d) | 1.5d → 9d | 100% → 17% | none → 0.98d |  |  |
| 58 | QA Test Suite updates for 2.5.0: Splitting Imports (ARRAY-2206) | 2011-12-29 A → 2011-12-29 | 2011-12-30 → 2012-01-11 (+12d) | 1.5d → 9d | 50% → 0% | 4d → 0.5d |  | constraint none → start no earlier than 2011-12-29 |
| 59 | Jboss 5.1 / Java 6 upgrade - Test 2.5.0 on NCI tiers (ARRAY-1809) | 2011-12-29 A → 2011-12-29 | 2012-01-06 → 2012-01-12 (+6d) | 5d → 9d | 50% → 0% | 0d → 0.48d | 55 → none | constraint none → start no earlier than 2011-12-29; resources none → Systems; KK; Quy |
| 60 | **Iteration M21** | 2012-01-06 → 2012-01-12 A (+6d) | 2012-01-23 → 2012-01-24 (+1d) | 10d → 7.5d | 0% → 16% |  |  |  |
| 61 | Splitting imports: Hide split files from users (ARRAY-2199) | 2012-01-06 → 2012-01-12 (+6d) | 2012-01-13 → 2012-01-18 (+5d) | 5d → 3d |  | 5d → 4d |  |  |
| 62 | Splitting imports: Support multiple rows referencing the same data file (ARRAY-2191) | 2012-01-06 → 2012-01-12 (+6d) | 2012-01-11 → 2012-01-13 (+2d) | 3d → 1d |  | 7d → 6d |  | was named Splitting imports: Support multiple rows referencing the same data file |
| 63 | Splitting imports: Cancel parent import job even if a child has started. | 2012-01-06 → 2012-01-12 (+6d) | 2012-01-10 → 2012-01-17 (+7d) |  |  | 0d → 5d |  |  |
| 64 | Splitting imports: Modify the import service to perform the splitting (ARRAY-2190) | 2011-12-29 → 2012-01-12 (+14d) | 2012-01-05 → 2012-01-20 (+15d) |  |  | 0.5d → 2d |  |  |
| 65 | Splitting imports: Transaction handling of Validate and Import steps. (ARRAY-2189) | 2012-01-03 A → 2012-01-12 (+9d) | 2012-01-05 A → 2012-01-18 (+13d) |  | 100% → 0% | none → 4d | 56 → none | resources none → KK; Todd |
| 68 | Investigate Technology for Improved Upload (ARRAY-1899) | 2012-01-06 → 2012-01-12 A (+6d) | 2012-01-11 → 2012-01-17 (+6d) |  | 0% → 60% | 7d → 4.5d |  | was named Design for Resumable Uploads |
| 69 | QA Test Suite updates for 2.5.0: Move Test Cases to Quality Center | 2012-01-06 → 2012-01-12 (+6d) | 2012-01-13 → 2012-01-20 (+7d) |  |  | 3d → 0d |  |  |
| 70 | QA Test Plan Review | 2012-01-13 → 2012-01-20 (+7d) | 2012-01-18 → 2012-01-24 (+6d) |  |  | 3d → 0d |  |  |
| 72 | Resumable uploads (ARRAY-1899, ARRAY-1627) | 2012-01-23 → 2012-01-24 (+1d) | 2012-02-06 → 2012-02-07 (+1d) |  |  |  |  |  |
| 73 | Allow user to point to files rather than uploading/transferring (ARRAY-2005) | 2012-02-06 → 2012-02-07 (+1d) | 2012-02-13 → 2012-02-14 (+1d) |  |  |  |  |  |
| 74 | Backup and replication for file system - NCI tiers and local installer documentation (ARRAY-1809) | 2012-02-13 → 2012-02-14 (+1d) | 2012-02-20 → 2012-02-21 (+1d) |  |  |  |  |  |
| 75 | API (CQL) changes to account for file system storage (ARRAY-1806, ARRAY-1391) | 2012-02-20 → 2012-02-21 (+1d) | 2012-02-27 → 2012-02-28 (+1d) |  |  |  |  |  |
| 76 | Bug fixes | 2012-02-27 → 2012-02-28 (+1d) | 2012-03-21 → 2012-03-22 (+1d) |  |  |  |  |  |
| 77 | Deployment overhead | 2012-03-21 → 2012-03-22 (+1d) | 2012-04-04 → 2012-04-05 (+1d) |  |  |  |  |  |
| 78 | **PRODUCT BACKLOG (rough LOEs)** | 2012-04-04 → 2012-04-05 (+1d) | 2012-10-31 → 2012-11-01 (+1d) |  |  |  |  |  |
| 79 | **Grid Security (TRANSCEND)** | 2012-04-04 → 2012-04-05 (+1d) | 2012-05-30 → 2012-05-31 (+1d) |  |  |  |  |  |
| 80 | ARRAY-1463 - Login with caGrid account | 2012-04-04 → 2012-04-05 (+1d) | 2012-04-18 → 2012-04-19 (+1d) |  |  |  |  |  |
| 81 | ARRAY-1928 - Migrate CSM to Grid accounts | 2012-04-18 → 2012-04-19 (+1d) | 2012-04-25 → 2012-04-26 (+1d) |  |  |  |  |  |
| 82 | ARRAY-1353 - Grid authentication in remote Java API | 2012-04-25 → 2012-04-26 (+1d) | 2012-05-09 → 2012-05-10 (+1d) |  |  |  |  |  |
| 83 | ARRAY-1462 - Installer/build infrastructure for secure Grid | 2012-05-09 → 2012-05-10 (+1d) | 2012-05-30 → 2012-05-31 (+1d) |  |  |  |  |  |
| 84 | ARRAY-1929 - Grid Grouper (NICE TO HAVE) | 2012-05-30 → 2012-05-31 (+1d) | 2012-05-30 → 2012-05-31 (+1d) |  |  |  |  |  |
| 85 | **Single Sign-on (TRANSCEND)** | 2012-05-30 → 2012-05-31 (+1d) | 2012-06-27 → 2012-06-28 (+1d) |  |  |  |  |  |
| 86 | ARRAY-1930 | 2012-05-30 → 2012-05-31 (+1d) | 2012-06-27 → 2012-06-28 (+1d) |  |  |  |  |  |
| 87 | **Audit Trail (TRANSCEND)** | 2012-06-27 → 2012-06-28 (+1d) | 2012-07-25 → 2012-07-26 (+1d) |  |  |  |  |  |
| 88 | ARRAY-1931 - Sample deletions and data imports | 2012-06-27 → 2012-06-28 (+1d) | 2012-07-11 → 2012-07-12 (+1d) |  |  |  |  |  |
| 89 | ARRAY-1933 - Log visibility to Data Owner | 2012-07-11 → 2012-07-12 (+1d) | 2012-07-18 → 2012-07-19 (+1d) |  |  |  |  |  |
| 90 | ARRAY-1932 - Publish log | 2012-07-18 → 2012-07-19 (+1d) | 2012-07-25 → 2012-07-26 (+1d) |  |  |  |  |  |
| 91 | **File-level permissions for role-based security (TRANSCEND)** | 2012-07-25 → 2012-07-26 (+1d) | 2012-08-22 → 2012-08-23 (+1d) |  |  |  |  |  |
| 92 | ARRAY-1938 | 2012-07-25 → 2012-07-26 (+1d) | 2012-08-22 → 2012-08-23 (+1d) |  |  |  |  |  |
| 93 | **Maintenance and Bug Fixes** | 2012-08-22 → 2012-08-23 (+1d) | 2012-09-05 → 2012-09-06 (+1d) |  |  |  |  |  |
| 94 | Collaborator Group Defect | 2012-08-22 → 2012-08-23 (+1d) | 2012-09-05 → 2012-09-06 (+1d) |  |  |  |  |  |
| 95 | Expand unparsed file types (NICE TO HAVE) | 2012-09-05 → 2012-09-06 (+1d) | 2012-09-05 → 2012-09-06 (+1d) |  |  |  |  |  |
| 96 | IE 8 UI bugs (NICE TO HAVE) | 2012-09-05 → 2012-09-06 (+1d) | 2012-09-05 → 2012-09-06 (+1d) |  |  |  |  |  |
| 97 | MAGE-TAB v1.1 support (NICE TO HAVE) | 2012-09-05 → 2012-09-06 (+1d) | 2012-09-05 → 2012-09-06 (+1d) |  |  |  |  |  |
| 98 | Clean up duplicate terms (NICE TO HAVE) | 2012-09-05 → 2012-09-06 (+1d) | 2012-09-05 → 2012-09-06 (+1d) |  |  |  |  |  |
| 99 | Import verification to prevent unintentional biomaterial/term creation (NICE TO HAVE) | 2012-09-05 → 2012-09-06 (+1d) | 2012-09-05 → 2012-09-06 (+1d) |  |  |  |  |  |
| 100 | Prevent multiple hybs to 1 file association (NICE TO HAVE) | 2012-09-05 → 2012-09-06 (+1d) | 2012-09-05 → 2012-09-06 (+1d) |  |  |  |  |  |
| 101 | Fix SDRF export of multiple derived data file columns (NICE TO HAVE) | 2012-09-05 → 2012-09-06 (+1d) | 2012-09-05 → 2012-09-06 (+1d) |  |  |  |  |  |
| 102 | Fix LSIDs for unparsed array designs (NICE TO HAVE) | 2012-09-05 → 2012-09-06 (+1d) | 2012-09-05 → 2012-09-06 (+1d) |  |  |  |  |  |
| 103 | **Release Overhead for TRANSCEND release** | 2012-09-05 → 2012-09-06 (+1d) | 2012-10-31 → 2012-11-01 (+1d) |  |  |  |  |  |
| 104 | Bug fixes | 2012-09-05 → 2012-09-06 (+1d) | 2012-10-17 → 2012-10-18 (+1d) |  |  |  |  |  |
| 105 | Deployment overhead | 2012-10-17 → 2012-10-18 (+1d) | 2012-10-31 → 2012-11-01 (+1d) |  |  |  |  |  |

## Version 27 (saved 2012-01-20)

Note of the change: Minor update.

Last finish 2012-11-01 → 2012-09-28 (-34d). Complete tasks 48 → 54.

Added:

| ID | Task | Duration | Start | Finish | Predecessors | Resources |
| --- | --- | --- | --- | --- | --- | --- |
| 26 | **Iterations M15-M17** | 52d | 2011-09-14 A | 2011-11-24 |  | Andrew; KK; Quy; Rashmi |
| 47 | QA testing | 10d | 2011-11-25 A | 2011-12-08 A |  | Quy |
| 54 | QA testing | 5d | 2011-12-14 A | 2011-12-20 A |  | Quy |
| 57 | ARRAY-2217 - BDALite: Update bda-lite:database:update:prepare target to include the "environment" property (New) | 2d | 2011-12-28 A | 2011-12-29 A |  | KK; Systems |
| 61 | ARRAY-2208 - Improvement: Reduce CI build time for import tests | 2d | 2012-01-09 A | 2012-01-10 A | 58 | KK; Todd |
| 63 | ARRAY-2219 - Onboard new software engineers | 5d | 2011-12-28 A | 2012-01-04 A |  | Paul; Winston; KK; Todd |
| 65 | ARRAY-2189 - Splitting Imports: Validate and Import transactions | 3d | 2012-01-11 | 2012-01-13 |  | KK; Todd; Paul; Winston |
| 66 | ARRAY-2190 - Splitting Imports: Modify import service to perform the split | 5d | 2012-01-11 | 2012-01-18 |  | KK; Todd; Paul; Winston |
| 67 | ARRAY-2199 - Splitting Imports: Hide split files from user | 4d | 2012-01-19 | 2012-01-24 | 66 | KK; Todd; Paul; Winston |
| 68 | ARRAY-2191 - Splitting Imports: Support SDRF where multiple rows reference the same data file | 1d | 2012-01-19 | 2012-01-19 | 66 | KK; Todd; Paul; Winston |
| 69 | ARRAY-2232 - Splitting Imports: Make Job Queue child-aware (New) | 3d | 2012-01-19 | 2012-01-23 | 66 | KK; Todd; Paul; Winston |
| 71 | ARRAY-2005 - Allow remote locations for native files (Won't Fix) | 1d | 2012-01-11 | 2012-01-11 |  | Rashmi |
| 72 | ARRAY-2214 - Bug: Experiments disappear after PROD-to-STAGE database copy. (New) | 2d | 2012-01-11 | 2012-01-12 |  | Systems; KK; Quy |
| 80 | ARRAY-2261 - BDALite: Cannot build from trunk via AHP3 on QA-VM (New) | 2d | 2012-01-11 | 2012-01-12 |  | Systems; KK; Quy |
| 82 | Coordinate release dates for caArray and caIntegrator | 1d | 2012-01-11 | 2012-01-11 |  | Rashmi |
| 83 | **Iteration M22** | 10d | 2012-01-25 | 2012-02-07 | 64 |  |
| 84 | Clarify TRANSCEND security architecture with ESSRT. | 2d | 2012-01-25 | 2012-01-26 |  | Rashmi |
| 85 | Document any restrictions/assumptions for large data upload/import/download/export. | 2d | 2012-01-25 | 2012-01-26 |  | Rashmi |
| 86 | Document performance requirements for large data upload/import/download/export | 2d | 2012-01-25 | 2012-01-26 |  | Rashmi |
| 87 | ARRAY-2253 - Bug: caIntegrator cannot retrieve parsed data from caArray with Jboss 5 (New) | 2d | 2012-01-25 | 2012-01-26 |  | KK; Todd; Paul; Quy |
| 88 | ARRAY-2231 - Bug: Experiment inconsistencies between Curation and PROD (New) | 1d | 2012-01-25 | 2012-01-25 |  | KK; Todd; Paul; Quy |
| 89 | ARRAY-2192 - Splitting Imports: Stop parent import job from Job Queue | 5d | 2012-01-25 | 2012-01-31 |  | KK; Todd; Paul; Quy |
| 90 | ARRAY-2193 - Splitting Imports: Resume of cancelled import job | 5d | 2012-02-01 | 2012-02-07 | 89 | KK; Todd; Paul; Quy |
| 91 | ARRAY-2194 - Splitting Imports: Resume of failed import job with problematic data files | 2d | 2012-01-25 | 2012-01-26 |  | KK; Todd; Paul; Quy |
| 92 | ARRAY-2195 - Splitting Imports: Resume of failed import job with problematic SDRF | 2d | 2012-01-25 | 2012-01-26 |  | KK; Todd; Paul; Quy |
| 93 | ARRAY-2233 - Splitting Imports: Support 2-colour designs | 1d | 2012-01-25 | 2012-01-25 |  | KK; Todd; Paul; Quy |
| 94 | ARRAY-2235 - Splitting Imports: Child files need to be cleaned up (New) | 1d | 2012-01-25 | 2012-01-25 |  | KK; Todd; Paul; Quy |
| 95 | ARRAY-1809: Regression Test 2.5.0 on QA tiers | 5d | 2012-01-25 | 2012-01-31 | 77, 78, 79, 80 | Quy; Systems |
| 96 | **Iteration M23** | 10d | 2012-02-08 | 2012-02-21 | 83 |  |
| 97 | Demo large imports | 1d | 2012-02-08 | 2012-02-08 |  | Rashmi |
| 98 | UAT of large imports by curators (New) | 4d | 2012-02-08 | 2012-02-13 |  | Curators; Rashmi |
| 99 | ARRAY-1627 - Support resumable uploads of large file sets | 10d | 2012-02-08 | 2012-02-21 |  | KK; Todd; Paul; Quy |
| 100 | ARRAY-1806 - Ensure API works with storage engine SPI | 5d | 2012-02-08 | 2012-02-14 |  | KK; Todd; Paul; Quy |
| 101 | ARRAY-1391 - Support API access by Java 1.6 clients | 5d | 2012-02-08 | 2012-02-14 |  | KK; Todd; Paul; Quy |
| 103 | ARRAY-2258 - Test new UPT configurability to disallow caArray user group creation within UPT (New) | 4d | 2012-02-08 | 2012-02-13 |  | UPT Team; Quy; KK |
| 104 | Bug triage | 3d | 2012-02-08 | 2012-02-10 |  |  |
| 107 | Demo resumable uploads | 1d | 2012-02-22 | 2012-02-22 |  | Rashmi |
| 108 | UAT of resumable uploads by curators (New) | 3d | 2012-02-22 | 2012-02-24 |  | Curators; Rashmi |
| 109 | ARRAY-2259 - Update installer to configure UPT to disallow user group creation for caArray within UPT (New) | 3d | 2012-02-22 | 2012-02-24 |  | KK; Todd; Paul; Quy |
| 111 | Bug Fixes | 10d | 2012-02-22 | 2012-03-06 |  |  |
| 112 | Deployment: Deploy Beta 1 to STAGE. | 1d | 2012-02-22 | 2012-02-22 |  | Systems |
| 113 | Requirements for next release | 5d | 2012-02-22 | 2012-02-28 |  | Rashmi |
| 115 | Deployment: Run security app scan on Beta 1. | 3d | 2012-03-07 | 2012-03-09 |  | Systems |
| 116 | STAGE Regression testing of Beta 1. | 5d | 2012-03-07 | 2012-03-13 |  | Quy |
| 117 | Installer testing of Beta 1. | 3d | 2012-03-07 | 2012-03-09 |  | Quy |
| 118 | Support Beta 1 testing by API partners. | 5d | 2012-03-07 | 2012-03-13 |  | Rashmi |
| 119 | Documentation: Send User's Guide changes to Jill. | 2d | 2012-03-07 | 2012-03-08 |  | Rashmi |
| 120 | ARRAY-2092 - Documentation: Send Installation Guide changes to Jill. | 4d | 2012-03-07 | 2012-03-12 |  | KK |
| 121 | Bug Fixes | 8d | 2012-03-07 | 2012-03-16 |  | KK; Todd; Paul; Quy |
| 122 | Deployment: Deploy RC1 to STAGE. | 2d | 2012-03-07 | 2012-03-08 |  | Systems |
| 123 | Requirements for next release | 5d | 2012-03-07 | 2012-03-13 |  | Rashmi |
| 124 | **Iteration RC2** | 8d | 2012-03-19 | 2012-03-28 | 114 |  |
| 125 | Deployment: Run security app scan on RC1. | 3d | 2012-03-19 | 2012-03-21 |  | Systems |
| 126 | STAGE testing of RC1. | 3d | 2012-03-19 | 2012-03-21 |  | Quy |
| 127 | Support RC1 testing by API partners. | 3d | 2012-03-19 | 2012-03-21 |  | Rashmi |
| 128 | Deployment: Create skeleton Gforge release package and release notes | 2d | 2012-03-19 | 2012-03-20 |  | Rashmi |
| 129 | Deployment: Point application to draft release notes | 4d | 2012-03-19 | 2012-03-22 |  | KK |
| 130 | Bug Fixes - only Blocker and Critical | 8d | 2012-03-19 | 2012-03-28 |  | KK; Todd; Paul; Quy |
| 131 | Documentation: Finish Draft User's Guide. | 4d | 2012-03-19 | 2012-03-22 |  | Jill |
| 132 | Documentation: Review Draft User's Guide. | 2d | 2012-03-19 | 2012-03-20 |  | Rashmi |
| 133 | Documentation: Finish Draft Installation Guide. | 4d | 2012-03-19 | 2012-03-22 |  | Jill |
| 134 | Documentation: Review Draft Installation Guide. | 2d | 2012-03-19 | 2012-03-20 |  | KK; Quy |
| 135 | Deployment: Deploy RC2 to STAGE. | 2d | 2012-03-19 | 2012-03-20 |  | Systems |
| 136 | Requirements for next release | 5d | 2012-03-19 | 2012-03-23 |  | Rashmi |
| 137 | Design for next release | 2d | 2012-03-19 | 2012-03-20 |  |  |
| 138 | **Iteration RC3** | 7d | 2012-03-29 | 2012-04-06 | 124 |  |
| 139 | STAGE testing of RC2 | 2d | 2012-03-29 | 2012-03-30 |  | Quy |
| 140 | Documentation: Finish final User's Guide. | 2d | 2012-03-29 | 2012-03-30 |  | Jill |
| 141 | Documentation: Review final User's Guide. | 1d | 2012-03-29 | 2012-03-29 |  | Rashmi |
| 142 | Documentation: Finish final Installation Guide. | 2d | 2012-03-29 | 2012-03-30 |  | Jill |
| 143 | Documentation: Review final Installation Guide. | 1d | 2012-03-29 | 2012-03-29 |  | KK; Quy |
| 144 | Bug Fixes - only Blockers | 4d | 2012-03-29 | 2012-04-03 |  | KK; Todd; Paul; Quy |
| 145 | Deployment: Deploy RC3 (GA) to STAGE. | 1d | 2012-04-04 | 2012-04-04 | 144 | Systems |
| 146 | Deployment: Run security app scan on RC3 (GA) | 2d | 2012-03-29 | 2012-03-30 |  | Systems |
| 147 | STAGE testing of RC3 (GA) | 2d | 2012-04-05 | 2012-04-06 | 144, 145 | Quy |
| 148 | Deployment: Create GA release artifacts and upload to Gforge. | 1d | 2012-03-29 | 2012-03-29 |  | Rashmi |
| 149 | Deployment: Support GA testing by API partners. | 2d | 2012-03-29 | 2012-03-30 |  | Rashmi |
| 150 | **Deployment** | 3d | 2012-04-09 | 2012-04-11 | 138 |  |
| 152 | Deployment: Update product landing page | 1d | 2012-04-09 | 2012-04-09 |  | Rashmi |
| 153 | Deployment: Send Draft release notes to Juli | 1d | 2012-04-09 | 2012-04-09 |  | Rashmi |
| 154 | Deployment: Juli announces the release to the community | 1d | 2012-04-11 | 2012-04-11 | 151 | Juli |
| 155 | RELEASE 2.5.0 | 0d | 2012-04-10 | 2012-04-10 | 151 |  |
| 157 | **Permissions Model (TRANSCEND)** | 5d | 2012-04-09 | 2012-04-13 |  |  |
| 158 | Allow sample search by arbitrary characteristics on Permissions page | 5d | 2012-04-09 | 2012-04-13 |  |  |
| 176 | RC2 | 8d | 2012-09-03 | 2012-09-12 | 175 |  |
| 177 | RC3 | 8d | 2012-09-13 | 2012-09-24 | 176 |  |
| 178 | Deployment | 4d | 2012-09-25 | 2012-09-28 | 177 |  |
| 180 | NOTE: New items identified during the course of the contract are highlighted in yellow | 0d | 2011-08-03 | 2011-08-03 |  |  |
| 181 | NOTE: External dependencies are in Red in the Resource Names column | 0d | 2011-08-03 | 2011-08-03 |  |  |
| 182 | NOTE: Architecture for TRANSCEND requirements is undecided as yet, and can change some of the LOEs for release 2.6 | 1d? | 2011-08-03 | 2011-08-03 |  |  |

Removed: 54 External Dependency: AntHill Pro 3 Tracks set up by Systems team (ARRAY-1968); 59 Jboss 5.1 / Java 6 upgrade - Test 2.5.0 on NCI tiers (ARRAY-1809); 71 Support KC; 72 Resumable uploads (ARRAY-1899, ARRAY-1627); 91 File-level permissions for role-based security (TRANSCEND); 92 ARRAY-1938; 95 Expand unparsed file types (NICE TO HAVE); 96 IE 8 UI bugs (NICE TO HAVE); 97 MAGE-TAB v1.1 support (NICE TO HAVE); 98 Clean up duplicate terms (NICE TO HAVE); 99 Import verification to prevent unintentional biomaterial/term creation (NICE TO HAVE); 100 Prevent multiple hybs to 1 file association (NICE TO HAVE); 101 Fix SDRF export of multiple derived data file columns (NICE TO HAVE); 102 Fix LSIDs for unparsed array designs (NICE TO HAVE)

Changed:

| ID | Task | Start | Finish | Duration | Complete | Total float | Predecessors | Other |
| --- | --- | --- | --- | --- | --- | --- | --- | --- |
| 1 | **CAARRAY 2.x** | 2011-08-10 A → 2011-08-03 A (-7d) | 2012-11-01 → 2012-09-28 (-34d) | 318.5d → 300d? | 62% → 55% |  |  |  |
| 2 | **2.4.1** |  | 2011-09-30 → 2011-10-03 (+3d) | 38d → 39d |  |  |  |  |
| 4 | caArray Importer: Regression test on local tier (New) |  |  |  |  |  |  | was named caArray Importer: Regression test on local tier |
| 5 | caArray Importer: Test import on local tier (New) |  |  |  |  |  |  | was named caArray Importer: Test import on local tier |
| 8 | Write Grid client to get expt and hyb counts for Ken Buetow (New) |  |  |  |  |  |  | was named Write Grid client to get expt and hyb counts for Ken Buetow |
| 9 | Write and test QTP automated script to load TCGA data (New) |  |  |  |  |  |  | was named Write and test QTP automated script to load TCGA data |
| 12 | Decide on solution to TCGA data load issue (New) |  |  |  |  |  |  | was named Decide on solution to TCGA data load issue |
| 16 | **2.4.1 Deployment** |  | 2011-09-30 → 2011-10-03 (+3d) | 13d → 14d |  |  |  |  |
| 21 | App Scan on STAGE |  |  |  |  |  |  | resources none → Systems |
| 23 | Deploy to PRODUCTION | 2011-09-26 A → 2011-09-27 A (+1d) | 2011-09-30 A → 2011-10-03 A (+3d) |  |  |  |  | resources none → Systems |
| 25 | **2.5.0** |  | 2012-04-05 → 2012-04-11 (+6d) | 143.5d → 148d | 57% → 42% | 0d → 127d |  | resources Andrew; Quy; Rashmi → none |
| 28 | BDALite: Migrate caArray build from Ivy to Nexus (ARRAY-2073) (New) |  |  |  |  |  |  | was named BDALite: Migrate caArray build from Ivy to Nexus (ARRAY-2073); resources none → Systems; KK |
| 30 | BDALite: Migrate BDA build from Ivy to Nexus (ARRAY-2085) (New) |  |  |  |  |  |  | was named BDALite: Migrate BDA build from Ivy to Nexus (ARRAY-2085); resources none → Systems; KK |
| 37 | Xenoline: Data analysis and meetings (New) |  |  |  |  |  |  | was named Xenoline: Data analysis and meetings |
| 42 | BDALite: AHP 3 prerequisite: Standalone liquibase upgrades (ARRAY-2105) (New) |  |  |  |  |  |  | was named BDALite: AHP 3 prerequisite: Standalone liquibase upgrades (ARRAY-2105); resources KK → KK; Systems |
| 43 | Orphaned experiments: Blocking issue for user (ARRAY-2183) (New) |  |  |  |  |  |  | was named Orphaned experiments: Blocking issue for user (ARRAY-2183) |
| 48 | BDALite: AHP 3: Database properties at build time (ARRAY-2197) (New) |  |  |  |  |  |  | was named BDALite: AHP 3: Database properties at build time (ARRAY-2197); resources none → Systems; KK |
| 49 | **Iteration M19** |  | 2011-12-28 A → 2011-12-27 A (-1d) | 10d → 9d |  |  |  |  |
| 50 | Bug fixes for new Agilent import problems (ARRAY-2198, ARRAY-2203) (New) |  | 2011-12-15 A → 2011-12-20 A (+5d) | 2d → 5d |  |  |  | was named Bug fix for new Agilent import problem (ARRAY-2198); resources none → KK; Todd |
| 51 | ARRAY-2159 - Splitting Imports: Utility classes to break up a MAGE-TAB set | 2011-12-16 A → 2011-12-14 A (-2d) | 2011-12-19 A → 2011-12-20 A (+1d) | 2d → 5d |  |  | 50 → none | was named Splitting imports: Utility classes to generate child file sets; resources none → KK; Todd |
| 52 | ARRAY-2187 - Splitting Imports: MAGE-TAB Transaction Set model and DAO | 2011-12-20 A → 2011-12-21 A (+1d) | 2011-12-23 A → 2011-12-27 A (+4d) |  |  |  |  | was named Splitting imports: MAGE-TAB Transaction Set data model and DAO; resources none → KK; Todd |
| 53 | ARRAY-2205 - BDALite: AHP3 troubleshooting (New) | 2011-12-27 A → 2011-12-14 A (-13d) | 2011-12-27 A → 2011-12-14 A (-13d) |  |  |  | 52 → none | was named AHP caArray troubleshooting (ARRAY-2205); resources none → KK; Systems |
| 55 | Discuss TRANSCEND Data Authorization approach with ESSRT | 2011-12-28 A → 2011-12-14 A (-14d) | 2011-12-28 A → 2011-12-14 A (-14d) |  |  |  | 53 → none | was named Meet ESSRT re: Data Authorization approach for TRANSCEND; resources none → Rashmi |
| 56 | **Iteration M20** |  | 2012-01-12 → 2012-01-10 A (-2d) | 9.5d → 9d | 14% → 100% | 0.48d → none |  |  |
| 58 | ARRAY-1968 - BDALite: AHP 3 build track troubleshooting (New) | 2011-12-29 A → 2011-12-30 A (+1d) | 2011-12-29 A → 2012-01-06 A (+8d) | 0.5d → 5d |  |  | none → 57 | was named Work with Systems Team to get AHP 3 Build tracks set up (ARRAY-1968); resources KK → KK; Systems |
| 59 | ARRAY-2188 - Splitting Imports: New state model | 2011-12-29 A → 2011-12-28 A (-1d) | 2011-12-30 A → 2012-01-03 A (+4d) | 2d → 4d |  |  |  | was named Splitting imports: State model and new states like "Partially Imported." (ARRAY-2188); resources none → KK; Todd |
| 60 | Bug fixes for Illumina BGX, MageTabExporter and AssayType display (ARRAY-2202, 2181, 2204) (New) | 2011-12-29 A → 2011-12-28 A (-1d) | 2012-01-11 → 2012-01-05 A (-6d) | 9d → 6d | 17% → 100% | 0.98d → none |  | was named Bug fixes |
| 62 | QA Test Suite updates for 2.5.0: Splitting Imports (ARRAY-2206) | 2011-12-29 → 2011-12-28 A (-1d) | 2012-01-11 → 2012-01-04 A (-7d) | 9d → 5d | 0% → 100% | 0.5d → none |  | constraint start no earlier than 2011-12-29 → none |
| 64 | **Iteration M21** | 2012-01-12 A → 2012-01-11 (-1d) |  | 7.5d → 9d | 16% → 0% |  |  |  |
| 70 | Investigate Technology for Improved Upload (ARRAY-1899) | 2012-01-12 A → 2012-01-11 (-1d) | 2012-01-17 → 2012-01-13 (-4d) |  | 60% → 0% | 4.5d → 6d |  | resources none → Paul |
| 73 | ARRAY-2252 - Bug: AgilentFileImportIntegrationTest fails on trunk (New) | 2012-01-12 → 2012-01-11 (-1d) | 2012-01-18 → 2012-01-13 (-5d) |  |  | 4d → 6d |  | was named Splitting imports: Hide split files from users (ARRAY-2199); resources none → KK; Todd; Paul; Winston |
| 74 | ARRAY-2236,2237,2240 - Improvement: Reduce build time for Illumina and Affy validation/service tests | 2012-01-12 → 2012-01-11 (-1d) | 2012-01-13 → 2012-01-11 (-2d) |  |  | 6d → 8d |  | was named Splitting imports: Support multiple rows referencing the same data file (ARRAY-2191); resources none → KK; Todd; Paul; Winston |
| 75 | ARRAY-2170 - Support: Build documentation/README out of date | 2012-01-12 → 2012-01-11 (-1d) | 2012-01-17 → 2012-01-12 (-5d) |  |  | 5d → 7d |  | was named Splitting imports: Cancel parent import job even if a child has started.; resources none → Winston |
| 76 | ARRAY-2230 - Support: Initial investigation into building from 2.4.0 source (New) | 2012-01-12 → 2012-01-11 (-1d) | 2012-01-20 → 2012-01-12 (-8d) | 5d → 2d |  | 2d → 7d |  | was named Splitting imports: Modify the import service to perform the splitting (ARRAY-2190); resources none → KK |
| 77 | ARRAY-2250 - BDALite: AHP3 build of QA-VM failed due to missing Gforge library (New) | 2012-01-12 → 2012-01-11 (-1d) | 2012-01-18 → 2012-01-11 (-7d) | 3d → 1d |  | 4d → 8d |  | was named Splitting imports: Transaction handling of Validate and Import steps. (ARRAY-2189) |
| 78 | ARRAY-2227 - BDALite: Move caArray-QA to AHP3 build/deploy track (New) | 2012-01-12 A → 2012-01-11 (-1d) | 2012-01-13 → 2012-01-11 (-2d) | 1.5d → 1d | 75% → 0% | 6d → 8d |  | was named QA Test Suite updates for 2.5.0: Splitting Imports (ARRAY-2206); resources Quy → Quy; Systems; KK |
| 79 | ARRAY-2260 - BDALite: AHP3 database upgrade fails on QA-VM (New) | 2012-01-12 A → 2012-01-11 (-1d) | 2012-01-23 → 2012-01-12 (-11d) | 7d → 2d | 36% → 0% | 0.5d → 7d |  | was named Jboss 5.1 / Java 6 upgrade - Test 2.5.0 on NCI tiers (ARRAY-1809) |
| 81 | QA Test Plan Review | 2012-01-20 → 2012-01-11 (-9d) | 2012-01-24 → 2012-01-12 (-12d) |  |  | 0d → 7d | 105 → none | resources none → Quy |
| 102 | API (CQL) changes to account for file system storage (ARRAY-1806, ARRAY-1391) | 2012-02-21 → 2012-02-08 (-13d) | 2012-02-28 → 2012-02-14 (-14d) |  |  | 0d → 5d | 110 → none |  |
| 105 | QA Test Suite updates for 2.5.0: Move Test Cases to Quality Center | 2012-01-12 → 2012-02-08 (+27d) | 2012-01-20 → 2012-02-14 (+25d) |  |  | 0d → 5d |  |  |
| 106 | **Iteration Beta1** | 2012-02-07 → 2012-02-22 (+15d) | 2012-02-14 → 2012-03-06 (+21d) | 5d → 10d |  |  | Resumable uploads (ARRAY-1899, ARRAY-1627) → 96 | was named Allow user to point to files rather than uploading/transferring (ARRAY-2005) |
| 110 | Backup and replication for file system - NCI tiers and local installer documentation (ARRAY-1809) | 2012-02-14 → 2012-02-22 (+8d) | 2012-02-21 → 2012-03-06 (+14d) | 5d → 10d |  |  | 106 → none | resources none → KK; Systems |
| 114 | **Iteration RC1** | 2012-02-28 → 2012-03-07 (+8d) | 2012-03-22 → 2012-03-16 (-6d) | 17d → 8d |  |  | 102 → 106 | was named Bug fixes |
| 151 | Deployment: Deploy GA to PRODUCTION | 2012-03-22 → 2012-04-09 (+18d) | 2012-04-05 → 2012-04-10 (+5d) | 10d → 2d |  | 0d → 127d | 114 → 115 | was named Deployment overhead; resources none → Systems |
| 156 | **2.6.0** | 2012-04-05 → 2012-04-09 (+4d) | 2012-11-01 → 2012-09-28 (-34d) | 150d → 125d |  |  | 25 → 138 | was named PRODUCT BACKLOG (rough LOEs) |
| 159 | **Grid Security (TRANSCEND)** | 2012-04-05 → 2012-04-16 (+11d) | 2012-05-31 → 2012-06-08 (+8d) |  |  |  | none → 157 |  |
| 160 | ARRAY-1463 - Login with caGrid account | 2012-04-05 → 2012-04-16 (+11d) | 2012-04-19 → 2012-04-27 (+8d) |  |  |  |  |  |
| 161 | ARRAY-1928 - Migrate CSM to Grid accounts | 2012-04-19 → 2012-04-30 (+11d) | 2012-04-26 → 2012-05-04 (+8d) |  |  |  |  |  |
| 162 | ARRAY-1353 - Grid authentication in remote Java API | 2012-04-26 → 2012-05-07 (+11d) | 2012-05-10 → 2012-05-18 (+8d) |  |  |  |  |  |
| 163 | ARRAY-1462 - Installer/build infrastructure for secure Grid | 2012-05-10 → 2012-05-21 (+11d) | 2012-05-31 → 2012-06-08 (+8d) |  |  |  |  |  |
| 164 | ARRAY-1929 - Grid Grouper (NICE TO HAVE) | 2012-05-31 → 2012-06-08 (+8d) | 2012-05-31 → 2012-06-08 (+8d) |  |  |  |  |  |
| 165 | **Single Sign-on (TRANSCEND)** | 2012-05-31 → 2012-06-11 (+11d) | 2012-06-28 → 2012-06-29 (+1d) | 20d → 15d |  |  |  |  |
| 166 | ARRAY-1930 - Single sign-on between caArray and caIntegrator | 2012-05-31 → 2012-06-11 (+11d) | 2012-06-28 → 2012-06-29 (+1d) | 20d → 15d |  |  |  | was named ARRAY-1930 |
| 167 | **Audit Trail (TRANSCEND)** | 2012-06-28 → 2012-07-02 (+4d) | 2012-07-26 → 2012-07-20 (-6d) | 20d → 15d |  |  |  |  |
| 168 | ARRAY-1931 - Sample deletions and data imports | 2012-06-28 → 2012-07-02 (+4d) | 2012-07-12 → 2012-07-06 (-6d) | 10d → 5d |  |  |  |  |
| 169 | ARRAY-1933 - Log visibility to Data Owner | 2012-07-12 → 2012-07-09 (-3d) | 2012-07-19 → 2012-07-13 (-6d) |  |  |  |  |  |
| 170 | ARRAY-1932 - Publish log | 2012-07-19 → 2012-07-16 (-3d) | 2012-07-26 → 2012-07-20 (-6d) |  |  |  |  |  |
| 171 | **Maintenance and Bug Fixes** | 2012-08-23 → 2012-07-23 (-31d) | 2012-09-06 → 2012-08-03 (-34d) |  |  |  | File-level permissions for role-based security (TRANSCEND) → 167 |  |
| 172 | Collaborator Group Defect | 2012-08-23 → 2012-07-23 (-31d) | 2012-09-06 → 2012-08-03 (-34d) |  |  |  |  |  |
| 173 | **Release Overhead for TRANSCEND release** | 2012-09-06 → 2012-08-06 (-31d) | 2012-11-01 → 2012-09-28 (-34d) |  |  |  |  |  |
| 174 | Beta 1 | 2012-09-06 → 2012-08-06 (-31d) | 2012-10-18 → 2012-08-17 (-62d) | 30d → 10d |  |  |  | was named Bug fixes |
| 175 | RC1 | 2012-10-18 → 2012-08-20 (-59d) | 2012-11-01 → 2012-08-31 (-62d) |  |  |  |  | was named Deployment overhead |

## Version 28 (saved 2012-01-23)

Note of the change: Added Automatic Refresh requirement to support caIntegrator.

Last finish stays 2012-09-28.

Added:

| ID | Task | Duration | Start | Finish | Predecessors | Resources |
| --- | --- | --- | --- | --- | --- | --- |
| 157 | **Support for caIntegrator Automatic Refresh (TRANSCEND)** | 10d | 2012-03-29 | 2012-04-11 | 124 |  |
| 158 | Implement API to return whether experiment was changed in time period | 5d | 2012-03-29 | 2012-04-04 |  |  |
| 159 | Integration testing of Automatic Refresh with caIntegrator | 5d | 2012-04-05 | 2012-04-11 | 158 | caIntegrator Team |

Changed:

| ID | Task | Start | Duration | Complete | Predecessors | Other |
| --- | --- | --- | --- | --- | --- | --- |
| 1 | **CAARRAY 2.x** |  |  | 55% → 54% |  |  |
| 87 | ARRAY-2253 - Bug: caIntegrator cannot retrieve parsed data from caArray with Jboss 5 (New) |  |  |  |  | resources KK; Todd; Paul; Quy → KK; Todd; Paul; Quy; caIntegrator Team |
| 156 | **2.6.0** | 2012-04-09 → 2012-03-29 (-11d) | 125d → 132d |  | 138 → none |  |
| 160 | **Permissions Model (TRANSCEND)** |  |  |  | none → 138 |  |
| 162 | **Grid Security for Single Sign-on (TRANSCEND)** |  |  |  |  | was named Grid Security (TRANSCEND) |

## Version 29 (saved 2012-01-24)

Note of the change: Updated Resource Names.

Last finish stays 2012-09-28. Complete tasks 54 → 68.

Added:

| ID | Task | Duration | Start | Finish | Predecessors | Constraint | Resources |
| --- | --- | --- | --- | --- | --- | --- | --- |
| 81 | ARRAY-2262 - BDALite: Could not login to QA-VM after AHP3 build | 3d | 2012-01-19 A | 2012-01-23 A | 80 |  | Systems; KK; Quy |
| 97 | QA Test Plan Review (NCI) | 1d | 2012-02-07 | 2012-02-07 |  | start no earlier than 2012-02-07 | Quy; Juli; JJ; Deb; Larry |

Changed:

| ID | Task | Start | Finish | Duration | Complete | Total float | Predecessors | Other |
| --- | --- | --- | --- | --- | --- | --- | --- | --- |
| 1 | **CAARRAY 2.x** |  |  |  | 54% → 58% |  |  |  |
| 25 | **2.5.0** |  |  |  | 42% → 50% |  |  |  |
| 64 | **Iteration M21** | 2012-01-11 A |  |  | 0% → 91% |  |  |  |
| 65 | ARRAY-2189 - Splitting Imports: Validate and Import transactions | 2012-01-11 A |  |  | 0% → 80% |  |  |  |
| 66 | ARRAY-2190 - Splitting Imports: Modify import service to perform the split | 2012-01-11 A | 2012-01-18 A |  | 0% → 100% | 0d → none |  |  |
| 67 | ARRAY-2199 - Splitting Imports: Hide split files from user | 2012-01-19 A | 2012-01-24 A |  | 0% → 100% | 0d → none |  |  |
| 69 | ARRAY-2232 - Splitting Imports: Make Job Queue child-aware (New) | 2012-01-19 A |  |  | 0% → 80% |  |  |  |
| 70 | Investigate Technology for Improved Upload (ARRAY-1899) | 2012-01-11 A |  |  | 0% → 80% |  |  |  |
| 71 | ARRAY-2005 - Allow remote locations for native files (Won't Fix) | 2012-01-11 A | 2012-01-11 A |  | 0% → 100% | 8d → none |  |  |
| 72 | ARRAY-2214 - Bug: Experiments disappear after PROD-to-STAGE database copy. (New) | 2012-01-11 A |  |  | 0% → 50% |  |  |  |
| 73 | ARRAY-2252 - Bug: AgilentFileImportIntegrationTest fails on trunk (New) | 2012-01-11 A | 2012-01-13 A |  | 0% → 100% | 6d → none |  |  |
| 74 | ARRAY-2236,2237,2240 - Improvement: Reduce build time for Illumina and Affy validation/service tests | 2012-01-11 A | 2012-01-11 A |  | 0% → 100% | 8d → none |  |  |
| 75 | ARRAY-2170 - Support: Build documentation/README out of date | 2012-01-11 A | 2012-01-12 A |  | 0% → 100% | 7d → none |  |  |
| 76 | ARRAY-2230 - Support: Initial investigation into building from 2.4.0 source (New) | 2012-01-11 A | 2012-01-12 A |  | 0% → 100% | 7d → none |  |  |
| 77 | ARRAY-2250 - BDALite: AHP3 build of QA-VM failed due to missing Gforge library (New) | 2012-01-11 A | 2012-01-11 A |  | 0% → 100% | 8d → none |  |  |
| 78 | ARRAY-2227 - BDALite: Move caArray-QA to AHP3 build/deploy track (New) | 2012-01-11 → 2012-01-24 A (+13d) | 2012-01-11 → 2012-01-24 A (+13d) |  | 0% → 100% | 8d → none | none → 81 |  |
| 79 | ARRAY-2260 - BDALite: AHP3 database upgrade fails on QA-VM (New) | 2012-01-11 → 2012-01-12 A (+1d) | 2012-01-12 → 2012-01-13 A (+1d) |  | 0% → 100% | 7d → none | none → 77 |  |
| 80 | ARRAY-2261 - BDALite: Cannot build from trunk via AHP3 on QA-VM (New) | 2012-01-11 → 2012-01-17 A (+6d) | 2012-01-12 → 2012-01-18 A (+6d) |  | 0% → 100% | 7d → none | none → 79 |  |
| 82 | QA Test Plan Review (internal) | 2012-01-11 A | 2012-01-12 A |  | 0% → 100% | 7d → none |  | was named QA Test Plan Review |
| 83 | Coordinate release dates for caArray and caIntegrator | 2012-01-11 A | 2012-01-11 A |  | 0% → 100% | 8d → none |  |  |
| 85 | Clarify TRANSCEND security architecture with ESSRT. |  | 2012-01-26 → 2012-01-25 (-1d) | 2d → 1d |  | 8d → 9d |  | resources Rashmi → Rashmi; Santosh |
| 104 | API (CQL) changes to account for file system storage (ARRAY-1806, ARRAY-1391) |  |  |  |  |  |  | resources none → KK; Todd; Paul; Quy |
| 106 | Bug triage |  |  |  |  |  |  | resources none → Juli; JJ; Quy; Rashmi; Paul |
| 107 | QA Test Suite updates for 2.5.0: Move Test Cases to Quality Center |  |  |  |  |  |  | resources none → Quy |
| 113 | Bug Fixes |  |  |  |  |  |  | resources none → KK; Todd; Paul; Quy |
| 115 | Document Requirements for next release |  |  |  |  |  |  | was named Requirements for next release |
| 148 | Deployment: Run security app scan on RC3 (GA) | 2012-03-29 → 2012-04-05 (+7d) | 2012-03-30 → 2012-04-06 (+7d) |  |  | 5d → 0d | none → 147 |  |

## Version 30 (saved 2012-01-25)

Note of the change: Latest updates.

Last finish stays 2012-09-28. Complete tasks 68 → 72.

Changed:

| ID | Task | Start | Finish | Complete | Total float | Other |
| --- | --- | --- | --- | --- | --- | --- |
| 1 | **CAARRAY 2.x** |  |  | 58% → 59% |  |  |
| 25 | **2.5.0** |  |  | 50% → 51% |  |  |
| 64 | **Iteration M21** |  |  | 91% → 99% |  |  |
| 65 | ARRAY-2189 - Splitting Imports: Validate and Import transactions |  | 2012-01-13 A | 80% → 100% | 6d → none |  |
| 68 | ARRAY-2191 - Splitting Imports: Support SDRF where multiple rows reference the same data file | 2012-01-19 A | 2012-01-19 A | 0% → 100% | 3d → none |  |
| 69 | ARRAY-2232 - Splitting Imports: Make Job Queue child-aware (New) |  | 2012-01-23 A | 80% → 100% | 1d → none |  |
| 70 | Investigate Technology for Improved Upload (ARRAY-1899) - Pros and cons |  |  |  |  | was named Investigate Technology for Improved Upload (ARRAY-1899) |
| 72 | ARRAY-2214 - Bug: Experiments disappear after PROD-to-STAGE database copy. (New) |  | 2012-01-12 A | 50% → 100% | 7d → none |  |
| 85 | ARRAY-2270 - Clarify TRANSCEND security architecture with ESSRT. |  |  |  |  | was named Clarify TRANSCEND security architecture with ESSRT. |
| 86 | ARRAY-2267 - Document any restrictions/assumptions for large data upload/import/download/export. |  |  |  |  | was named Document any restrictions/assumptions for large data upload/import/download/export. |
| 87 | ARRAY-2269 - Document performance requirements for large data upload/import/download/export |  |  |  |  | was named Document performance requirements for large data upload/import/download/export |
| 96 | ARRAY-2266: Regression Test 2.5.0 on QA tiers |  |  |  |  | was named ARRAY-1809: Regression Test 2.5.0 on QA tiers |
| 97 | ARRAY-2271 - QA Test Plan Review (NCI) |  |  |  |  | was named QA Test Plan Review (NCI) |
| 104 | API (CQL) changes to account for file system storage (ARRAY-1729) |  |  |  |  | was named API (CQL) changes to account for file system storage (ARRAY-1806, ARRAY-1391) |

## Version 31 (saved 2012-01-31)

Note of the change: Latest updates.

Last finish stays 2012-09-28.

Added:

| ID | Task | Duration | Start | Finish | Predecessors | Resources |
| --- | --- | --- | --- | --- | --- | --- |
| 86 | Prototype IE browser fallback for Improved Upload | 3d | 2012-01-25 | 2012-01-27 |  | Paul |
| 97 | ARRAY-1692 - Security vulnerability fix by upgrading struts (New) | 3d | 2012-01-25 | 2012-01-27 |  | KK; Todd; Paul; Quy |
| 98 | Meeting with Architecture Review Board re: Improved Uploads | 1d | 2012-01-30 | 2012-01-30 | 86 | Rashmi; Paul; ARB |
| 102 | Re-run Section 508 compliance scan | 1d | 2012-02-08 | 2012-02-08 |  | Rashmi |
| 142 | Deployment: Send Draft release notes to Juli to send to Communications Office | 1d | 2012-03-19 | 2012-03-19 |  | Rashmi |

Removed: 155 Deployment: Send Draft release notes to Juli

Changed:

| ID | Task | Start | Finish | Complete | Total float | Other |
| --- | --- | --- | --- | --- | --- | --- |
| 70 | Investigate Technology for Improved Upload (ARRAY-1899) - Pros and cons |  | 2012-01-13 A | 80% → 100% | 6d → none |  |
| 83 | Coordinate release dates for caArray and caIntegrator | 2012-01-11 A → 2012-01-24 A (+13d) | 2012-01-11 A → 2012-01-24 (+13d) | 100% → 80% | none → 0d | resources Rashmi → Rashmi; caIntegrator Team; Juli; Mervi; JJ; Deb; Larry |
| 84 | **Iteration M22** | 2012-01-25 A |  | 0% → 14% |  |  |
| 88 | ARRAY-2253 - Bug: caIntegrator cannot retrieve parsed data from caArray with Jboss 5 (New) | 2012-01-25 A |  | 0% → 50% |  |  |
| 89 | ARRAY-2231 - Bug: Experiment inconsistencies between Curation and PROD (New) | 2012-01-25 A |  | 0% → 50% |  |  |
| 90 | ARRAY-2192 - Splitting Imports: Stop parent import job from Job Queue | 2012-01-25 A |  | 0% → 50% |  |  |
| 96 | ARRAY-2266: Regression Test 2.5.0 on QA tiers | 2012-01-25 A |  | 0% → 20% |  |  |
| 104 | ARRAY-2269 - Document performance requirements for large data upload/import/download/export | 2012-01-25 → 2012-02-08 (+14d) | 2012-01-26 → 2012-02-09 (+14d) |  |  |  |

## Version 32 (saved 2012-02-06)

Note of the change: Single release with TRANSCEND features.

Last finish 2012-09-28 → 2012-07-16 (-74d). Complete tasks 72 → 77.

Added:

| ID | Task | Duration | Start | Finish | Predecessors | Resources |
| --- | --- | --- | --- | --- | --- | --- |
| 100 | ARRAY-2272 - BDALite: Unified target (New) | 2d | 2012-02-08 | 2012-02-09 |  | Systems; KK; Quy |
| 101 | ARRAY-2104 - BDALite: osgi plugin location (New) | 2d | 2012-02-10 | 2012-02-13 | 100 | Systems; KK; Quy |
| 102 | ARRAY-2283 - BDALite: Sizing requirements for all tiers (New) | 1d | 2012-02-08 | 2012-02-08 |  | Rashmi; Quy; Systems; Xiaopeng; Juli |
| 103 | ARRAY-1627 - Support resumable uploads of large file sets - Part 1 | 10d | 2012-02-08 | 2012-02-21 |  | Todd; Paul; Quy |
| 110 | **Improved Upload** | 10d | 2012-02-22 | 2012-03-06 | 99 |  |
| 111 | ARRAY-1627 - Finish implementing resumable uploads of large file sets | 8d | 2012-02-22 | 2012-03-02 |  | Todd; Paul; Quy |
| 114 | **Maintenance** | 10d | 2012-02-22 | 2012-03-06 | 99 |  |
| 119 | **UPT Configurability** | 5d | 2012-03-07 | 2012-03-13 | 114, 110 |  |
| 123 | ARRAY-2273/1932 - Implement API to return whether experiment was changed in time period | 5d | 2012-03-07 | 2012-03-13 |  | Paul; Todd; Ye |
| 126 | ARRAY-1938 - Allow sample search by arbitrary characteristics on Permissions page | 5d | 2012-03-14 | 2012-03-20 |  | KK; Todd; Quy |
| 129 | Integration testing of Single sign-on | 5d | 2012-04-11 | 2012-04-17 | 128 | caIntegrator Team; Paul; KK; Todd; Quy; Systems |
| 133 | **Maintenance** | 5d | 2012-04-25 | 2012-05-01 | 130 |  |
| 134 | ARRAY-2295 - Patch 2.4.1 source code to point to ncisvn | 2d | 2012-04-25 | 2012-04-26 |  | KK; Quy; Systems |
| 135 | ARRAY-1803 - Fix liquibase scripts to eliminate two-step installation process | 3d | 2012-04-27 | 2012-05-01 | 134 | KK; Quy; Systems |
| 136 | Bug Fixes | 10d | 2012-05-02 | 2012-05-15 | 133 | Paul; Quy; KK; Todd |

Removed: 105 ARRAY-1627 - Support resumable uploads of large file sets; 119 Document Requirements for next release; 129 Requirements for next release; 143 Requirements for next release; 144 Design for next release; 162 2.6.0; 164 Implement API to return whether experiment was changed in time period; 167 Allow sample search by arbitrary characteristics on Permissions page; 168 Grid Security for Single Sign-on (TRANSCEND); 169 ARRAY-1463 - Login with caGrid account; 170 ARRAY-1928 - Migrate CSM to Grid accounts; 171 ARRAY-1353 - Grid authentication in remote Java API; 172 ARRAY-1462 - Installer/build infrastructure for secure Grid; 173 ARRAY-1929 - Grid Grouper (NICE TO HAVE); 179 ARRAY-1932 - Publish log; 180 Maintenance and Bug Fixes; 181 Collaborator Group Defect; 182 Release Overhead for TRANSCEND release; 183 Beta 1; 184 RC1; 185 RC2; 186 RC3; 187 Deployment

Changed:

| ID | Task | Start | Finish | Duration | Complete | Total float | Predecessors | Other |
| --- | --- | --- | --- | --- | --- | --- | --- | --- |
| 1 | **CAARRAY 2.x** |  | 2012-09-28 → 2012-07-16 (-74d) | 300d? → 246d? | 59% → 67% |  |  |  |
| 25 | **2.5.0** |  | 2012-04-11 → 2012-07-16 (+96d) | 148d → 216d | 51% → 49% | 122d → 0d |  |  |
| 84 | **Iteration M22** |  |  |  | 14% → 53% |  |  |  |
| 85 | ARRAY-2270 - Clarify TRANSCEND security architecture with ESSRT. | 2012-01-25 A | 2012-01-25 A |  | 0% → 100% | 9d → none |  |  |
| 86 | Prototype IE browser fallback for Improved Upload | 2012-01-25 A |  |  | 0% → 50% | 6d → 7d |  |  |
| 88 | ARRAY-2253 - Bug: caIntegrator cannot retrieve parsed data from caArray with Jboss 5 (New) |  | 2012-01-26 A |  | 50% → 100% | 8d → none |  |  |
| 89 | ARRAY-2231 - Bug: Experiment inconsistencies between Curation and PROD (New) |  | 2012-01-25 A |  | 50% → 100% | 9d → none |  |  |
| 90 | ARRAY-2192 - Splitting Imports: Stop parent import job from Job Queue |  | 2012-01-31 A |  | 50% → 100% | 0d → none |  |  |
| 91 | ARRAY-2193 - Splitting Imports: Resume of cancelled import job | 2012-02-01 A |  |  | 0% → 50% |  |  |  |
| 95 | ARRAY-2235 - Splitting Imports: Child files need to be cleaned up (New) | 2012-01-25 A | 2012-01-25 A |  | 0% → 100% | 9d → none |  |  |
| 96 | ARRAY-2266: Regression Test 2.5.0 on QA tiers |  |  |  | 20% → 50% |  |  |  |
| 97 | ARRAY-1692 - Security vulnerability fix by upgrading struts (New) | 2012-01-25 A |  |  | 0% → 50% |  |  |  |
| 105 | Meeting with Architecture Review Board re: Improved Uploads | 2012-01-30 → 2012-02-08 (+9d) | 2012-01-30 → 2012-02-08 (+9d) |  |  | 6d → 9d |  |  |
| 112 | Demo resumable uploads | 2012-02-22 → 2012-03-05 (+12d) | 2012-02-22 → 2012-03-05 (+12d) |  |  | 9d → 1d | none → 111 |  |
| 113 | UAT of resumable uploads by curators (New) | 2012-02-22 → 2012-03-05 (+12d) | 2012-02-24 → 2012-03-06 (+11d) | 3d → 2d |  | 7d → 0d | none → 111 |  |
| 115 | ARRAY-1806 - Ensure API works with storage engine SPI | 2012-02-08 → 2012-02-22 (+14d) | 2012-02-14 → 2012-02-28 (+14d) |  |  | 5d → 0d |  | resources KK; Todd; Paul; Quy → KK; Todd; Quy |
| 116 | ARRAY-1391 - Support API access by Java 1.6 clients | 2012-02-08 → 2012-02-29 (+21d) | 2012-02-14 → 2012-03-02 (+17d) | 5d → 3d |  | 5d → 0d | none → 115 | resources KK; Todd; Paul; Quy → KK; Todd; Ye |
| 117 | API (CQL) changes to account for file system storage (ARRAY-1729) | 2012-02-08 → 2012-03-05 (+26d) | 2012-02-14 → 2012-03-06 (+21d) | 5d → 2d |  | 5d → 0d | none → 116 | resources KK; Todd; Paul; Quy → KK; Todd; Quy |
| 118 | QA Test Suite updates for 2.5.0: Move Test Cases to Quality Center | 2012-02-08 → 2012-02-22 (+14d) | 2012-02-14 → 2012-02-28 (+14d) |  |  |  |  |  |
| 120 | ARRAY-2258 - Test new UPT configurability to disallow caArray user group creation within UPT (New) | 2012-02-08 → 2012-03-07 (+28d) | 2012-02-13 → 2012-03-08 (+24d) | 4d → 2d |  | 6d → 0d |  |  |
| 121 | ARRAY-2259 - Update installer to configure UPT to disallow user group creation for caArray within UPT (New) | 2012-02-22 → 2012-03-09 (+16d) | 2012-02-24 → 2012-03-13 (+18d) |  |  | 7d → 0d | none → 120 | resources KK; Todd; Paul; Quy → KK; Todd; Quy |
| 122 | **Support for caIntegrator Automatic Refresh (TRANSCEND)** | 2012-03-29 → 2012-03-07 (-22d) | 2012-04-11 → 2012-03-20 (-22d) |  |  | 122d → 0d | 150 → 110, 114 |  |
| 124 | Integration testing of Automatic Refresh with caIntegrator | 2012-04-05 → 2012-03-14 (-22d) | 2012-04-11 → 2012-03-20 (-22d) |  |  | 122d → 0d | Implement API to return whether experiment was changed in time period → 123 |  |
| 125 | **Permissions Model (TRANSCEND)** | 2012-04-09 → 2012-03-14 (-26d) | 2012-04-13 → 2012-03-20 (-24d) |  |  |  | 163 → 110, 114, 119 |  |
| 127 | **Single Sign-on (TRANSCEND)** | 2012-06-11 → 2012-03-21 (-82d) | 2012-06-29 → 2012-04-17 (-73d) | 15d → 20d |  |  | Grid Security for Single Sign-on (TRANSCEND) → 125, 122 |  |
| 128 | ARRAY-1930 - Single sign-on between caArray and caIntegrator | 2012-06-11 → 2012-03-21 (-82d) | 2012-06-29 → 2012-04-10 (-80d) |  |  |  |  | resources none → Paul; KK; Todd; Quy |
| 130 | **Audit Trail (TRANSCEND)** | 2012-07-02 → 2012-04-18 (-75d) | 2012-07-20 → 2012-04-24 (-87d) | 15d → 5d |  |  |  |  |
| 131 | ARRAY-1931 - Sample deletions and data imports | 2012-07-02 → 2012-04-18 (-75d) | 2012-07-06 → 2012-04-20 (-77d) | 5d → 3d |  |  |  | resources none → Paul; KK; Todd; Quy |
| 132 | ARRAY-1933 - Log visibility to Data Owner | 2012-07-09 → 2012-04-23 (-77d) | 2012-07-13 → 2012-04-24 (-80d) | 5d → 2d |  |  |  | resources none → Paul; KK; Todd; Quy |
| 137 | **Beta 1** | 2012-02-22 → 2012-05-16 (+84d) | 2012-03-06 → 2012-05-29 (+84d) |  |  |  | 99 → 136 | was named Iteration Beta1 |
| 138 | Backup and replication for file system - NCI tiers and local installer documentation (ARRAY-1809) | 2012-02-22 → 2012-05-16 (+84d) | 2012-03-06 → 2012-05-28 (+83d) | 10d → 9d |  | 0d → 1d |  |  |
| 139 | Bug Fixes | 2012-02-22 → 2012-05-16 (+84d) | 2012-03-06 → 2012-05-28 (+83d) | 10d → 9d |  |  |  |  |
| 140 | Deployment: Deploy Beta 1 to STAGE. | 2012-02-22 → 2012-05-29 (+97d) | 2012-02-22 → 2012-05-29 (+97d) |  |  | 9d → 0d | none → 139 |  |
| 141 | **Release Candidate 1** | 2012-03-07 → 2012-05-30 (+84d) | 2012-03-16 → 2012-06-12 (+88d) | 8d → 10d |  |  |  | was named Iteration RC1 |
| 142 | Deployment: Run security app scan on Beta 1. | 2012-03-07 → 2012-05-30 (+84d) | 2012-03-09 → 2012-06-01 (+84d) |  |  | 5d → 7d |  |  |
| 143 | STAGE Regression testing of Beta 1. | 2012-03-07 → 2012-05-30 (+84d) | 2012-03-13 → 2012-06-05 (+84d) |  |  | 3d → 2d |  |  |
| 144 | Installer testing of Beta 1. | 2012-03-07 → 2012-06-06 (+91d) | 2012-03-09 → 2012-06-08 (+91d) |  |  | 5d → 2d | none → 143 |  |
| 145 | Support Beta 1 testing by API partners. | 2012-03-07 → 2012-05-30 (+84d) | 2012-03-13 → 2012-06-05 (+84d) |  |  | 3d → 5d |  |  |
| 146 | Documentation: Send User's Guide changes to Jill. | 2012-03-07 → 2012-05-30 (+84d) | 2012-03-08 → 2012-05-31 (+84d) |  |  | 6d → 8d |  |  |
| 147 | ARRAY-2092 - Documentation: Send Installation Guide changes to Jill. | 2012-03-07 → 2012-05-30 (+84d) | 2012-03-12 → 2012-06-04 (+84d) |  |  | 4d → 6d |  |  |
| 148 | Bug Fixes | 2012-03-07 → 2012-05-30 (+84d) | 2012-03-16 → 2012-06-11 (+87d) | 8d → 9d |  |  |  |  |
| 149 | Deployment: Deploy RC1 to STAGE. | 2012-03-07 → 2012-06-12 (+97d) | 2012-03-08 → 2012-06-12 (+96d) | 2d → 1d |  | 6d → 0d | none → 148 |  |
| 150 | **Release Candidate 2** | 2012-03-19 → 2012-06-13 (+86d) | 2012-03-28 → 2012-06-26 (+90d) | 8d → 10d |  |  |  | was named Iteration RC2 |
| 151 | Deployment: Run security app scan on RC1. | 2012-03-19 → 2012-06-13 (+86d) | 2012-03-21 → 2012-06-15 (+86d) |  |  | 5d → 7d |  |  |
| 152 | STAGE testing of RC1. | 2012-03-19 → 2012-06-13 (+86d) | 2012-03-21 → 2012-06-15 (+86d) |  |  | 5d → 7d |  |  |
| 153 | Support RC1 testing by API partners. | 2012-03-19 → 2012-06-13 (+86d) | 2012-03-21 → 2012-06-15 (+86d) |  |  | 5d → 7d |  |  |
| 154 | Deployment: Create skeleton Gforge release package and release notes | 2012-03-19 → 2012-06-13 (+86d) | 2012-03-20 → 2012-06-14 (+86d) |  |  | 6d → 8d |  |  |
| 155 | Deployment: Point application to draft release notes | 2012-03-19 → 2012-06-13 (+86d) | 2012-03-22 → 2012-06-18 (+88d) |  |  | 4d → 6d |  |  |
| 156 | Bug Fixes - only Blocker and Critical | 2012-03-19 → 2012-06-13 (+86d) | 2012-03-28 → 2012-06-22 (+86d) |  |  |  |  |  |
| 157 | Documentation: Finish Draft User's Guide. | 2012-03-19 → 2012-06-13 (+86d) | 2012-03-22 → 2012-06-18 (+88d) |  |  |  |  |  |
| 158 | Documentation: Review Draft User's Guide. | 2012-03-19 → 2012-06-19 (+92d) | 2012-03-20 → 2012-06-20 (+92d) |  |  | 6d → 4d | none → 157 |  |
| 159 | Documentation: Finish Draft Installation Guide. | 2012-03-19 → 2012-06-13 (+86d) | 2012-03-22 → 2012-06-18 (+88d) |  |  |  |  |  |
| 160 | Documentation: Review Draft Installation Guide. | 2012-03-19 → 2012-06-19 (+92d) | 2012-03-20 → 2012-06-20 (+92d) |  |  | 6d → 4d | none → 159 |  |
| 161 | Deployment: Deploy RC2 to STAGE. | 2012-03-19 → 2012-06-25 (+98d) | 2012-03-20 → 2012-06-26 (+98d) |  |  | 6d → 0d | none → 156 |  |
| 162 | Deployment: Send Draft release notes to Juli to send to Communications Office | 2012-03-19 → 2012-06-13 (+86d) | 2012-03-19 → 2012-06-13 (+86d) |  |  | 7d → 9d |  |  |
| 163 | **Release Candidate 3** | 2012-03-29 → 2012-06-27 (+90d) | 2012-04-06 → 2012-07-10 (+95d) | 7d → 10d |  |  |  | was named Iteration RC3 |
| 164 | STAGE testing of RC2 | 2012-03-29 → 2012-06-27 (+90d) | 2012-03-30 → 2012-06-28 (+90d) |  |  | 5d → 8d |  |  |
| 165 | Documentation: Finish final User's Guide. | 2012-03-29 → 2012-06-27 (+90d) | 2012-03-30 → 2012-06-28 (+90d) |  |  | 5d → 7d |  |  |
| 166 | Documentation: Review final User's Guide. | 2012-03-29 → 2012-06-29 (+92d) | 2012-03-29 → 2012-06-29 (+92d) |  |  | 6d → 7d | none → 165 |  |
| 167 | Documentation: Finish final Installation Guide. | 2012-03-29 → 2012-06-27 (+90d) | 2012-03-30 → 2012-06-28 (+90d) |  |  | 5d → 7d |  |  |
| 168 | Documentation: Review final Installation Guide. | 2012-03-29 → 2012-06-29 (+92d) | 2012-03-29 → 2012-06-29 (+92d) |  |  | 6d → 7d | none → 167 |  |
| 169 | Bug Fixes - only Blockers | 2012-03-29 → 2012-06-27 (+90d) | 2012-04-03 → 2012-07-03 (+91d) | 4d → 5d |  |  |  |  |
| 170 | Deployment: Deploy RC3 (GA) to STAGE. | 2012-04-04 → 2012-07-04 (+91d) | 2012-04-04 → 2012-07-05 (+92d) | 1d → 2d |  |  |  |  |
| 171 | Deployment: Run security app scan on RC3 (GA) | 2012-04-05 → 2012-07-06 (+92d) | 2012-04-06 → 2012-07-09 (+94d) |  |  | 0d → 1d |  |  |
| 172 | STAGE testing of RC3 (GA) | 2012-04-05 → 2012-07-06 (+92d) | 2012-04-06 → 2012-07-10 (+95d) | 2d → 3d |  |  | 169, 170 → 170 |  |
| 173 | Deployment: Create GA release artifacts and upload to Gforge. | 2012-03-29 → 2012-06-27 (+90d) | 2012-03-29 → 2012-06-27 (+90d) |  |  | 6d → 9d |  |  |
| 174 | Deployment: Support GA testing by API partners. | 2012-03-29 → 2012-06-27 (+90d) | 2012-03-30 → 2012-06-28 (+90d) |  |  | 5d → 8d |  |  |
| 175 | **Deployment** | 2012-04-09 → 2012-07-11 (+93d) | 2012-04-11 → 2012-07-16 (+96d) | 3d → 4d |  | 122d → 0d |  |  |
| 176 | Deployment: Deploy GA to PRODUCTION | 2012-04-09 → 2012-07-11 (+93d) | 2012-04-10 → 2012-07-13 (+94d) | 2d → 3d |  | 122d → 0d |  |  |
| 177 | Deployment: Update product landing page | 2012-04-09 → 2012-07-11 (+93d) | 2012-04-09 → 2012-07-11 (+93d) |  |  | 124d → 3d |  |  |

| ID | Task | Start | Finish | Total float | Predecessors |
| --- | --- | --- | --- | --- | --- |
| 178 | Deployment: Juli announces the release to the community | 2012-04-11 → 2012-07-16 (+96d) | 2012-04-11 → 2012-07-16 (+96d) | 122d → 0d |  |
| 179 | RELEASE 2.5.0 | 2012-04-10 → 2012-07-16 (+97d) | 2012-04-10 → 2012-07-16 (+97d) | 123d → 0d | 176 → 175 |

## Version 33 (saved 2012-02-08)

Note of the change: Changes to project plan requested by client.

Last finish 2012-07-16 → 2012-07-17 (+1d). Complete tasks 77 → 82.

Added:

| ID | Task | Duration | Start | Finish | Predecessors | Resources |
| --- | --- | --- | --- | --- | --- | --- |
| 119 | ARRAY-2313 - Support testing by API partners. | 5d | 2012-02-22 | 2012-02-28 |  | Rashmi |
| 127 | Demo of Automatic Refresh to UCSF/TRANSCEND team | 3d | 2012-03-21 | 2012-03-23 | 126 | caIntegrator Team |
| 130 | Demo of Permissions Model to UCSF/TRANSCEND team | 3d | 2012-03-14 | 2012-03-16 |  | Rashmi |
| 134 | Demo of Single Sign-on to UCSF/TRANSCEND team | 3d | 2012-03-26 | 2012-03-28 |  | caIntegrator Team; Rashmi |
| 138 | Demo of Audit Trail to UCSF/TRANSCEND team | 3d | 2012-04-23 | 2012-04-25 |  | Rashmi |

Changed:

| ID | Task | Start | Finish | Duration | Complete | Total float | Predecessors | Other |
| --- | --- | --- | --- | --- | --- | --- | --- | --- |
| 1 | **CAARRAY 2.x** |  | 2012-07-16 → 2012-07-17 (+1d) | 246d? → 247d? |  |  |  |  |
| 25 | **2.5.0** |  | 2012-07-16 → 2012-07-17 (+1d) | 216d → 217d |  |  |  |  |
| 84 | **Iteration M22** |  |  |  | 53% → 77% |  |  |  |
| 91 | ARRAY-2194 - Splitting Imports: Resume of failed import job with problematic data files | 2012-01-25 A | 2012-01-26 A |  | 0% → 100% | 8d → none |  |  |
| 92 | ARRAY-2195 - Splitting Imports: Resume of failed import job with problematic SDRF | 2012-01-25 A | 2012-01-26 A |  | 0% → 100% | 8d → none |  |  |
| 96 | ARRAY-1692 - Security vulnerability fix by upgrading struts (New) |  | 2012-01-27 A |  | 50% → 100% | 7d → none |  |  |
| 97 | ARRAY-2283 - BDALite: Sizing requirements for all tiers (New) | 2012-02-08 → 2012-01-25 A (-14d) | 2012-02-08 → 2012-01-25 A (-14d) |  | 0% → 100% | 9d → none |  |  |
| 98 | ARRAY-2271 - QA Test Plan Review (NCI) | 2012-02-07 A | 2012-02-07 A |  | 0% → 100% | 0d → none |  |  |
| 103 | ARRAY-2308 - Demo large imports |  |  |  |  |  |  | was named Demo large imports |
| 104 | ARRAY-2310 - Meeting with Architecture Review Board re: Improved Uploads |  |  |  |  |  |  | was named Meeting with Architecture Review Board re: Improved Uploads |
| 105 | ARRAY-2311 - Re-run Section 508 compliance scan |  |  |  |  |  |  | was named Re-run Section 508 compliance scan |
| 106 | ARRAY-2309 - UAT of large imports by curators (New) |  |  |  |  |  |  | was named UAT of large imports by curators (New) |
| 107 | ARRAY-2267 - Document any restrictions/assumptions for large data upload/import/download/export. | 2012-01-25 → 2012-02-08 (+14d) | 2012-01-26 → 2012-02-09 (+14d) |  |  |  |  |  |
| 109 | ARRAY-2312 - Bug triage |  |  |  |  |  |  | was named Bug triage |
| 115 | ARRAY-2295 - Patch 2.4.1 source code to point to ncisvn | 2012-04-25 → 2012-02-22 (-63d) | 2012-04-26 → 2012-02-23 (-63d) |  |  | 0d → 8d |  |  |
| 124 | **Support for caIntegrator Automatic Refresh (TRANSCEND)** |  | 2012-03-20 → 2012-03-23 (+3d) | 10d → 13d |  |  |  |  |
| 131 | **Single Sign-on (TRANSCEND)** | 2012-03-21 → 2012-03-26 (+5d) | 2012-04-17 → 2012-04-20 (+3d) |  |  |  |  |  |
| 132 | ARRAY-1930 - Single sign-on between caArray and caIntegrator | 2012-03-21 → 2012-03-26 (+5d) | 2012-04-10 → 2012-04-13 (+3d) |  |  |  |  |  |
| 133 | Integration testing of Single sign-on | 2012-04-11 → 2012-04-16 (+5d) | 2012-04-17 → 2012-04-20 (+3d) |  |  |  |  |  |
| 135 | **Audit Trail (TRANSCEND)** | 2012-04-18 → 2012-04-23 (+5d) | 2012-04-24 → 2012-04-27 (+3d) |  |  |  |  |  |
| 136 | ARRAY-1931 - Sample deletions and data imports | 2012-04-18 → 2012-04-23 (+5d) | 2012-04-20 → 2012-04-25 (+5d) |  |  |  |  |  |
| 137 | ARRAY-1933 - Log visibility to Data Owner | 2012-04-23 → 2012-04-26 (+3d) | 2012-04-24 → 2012-04-27 (+3d) |  |  |  |  |  |
| 139 | **Maintenance** | 2012-04-25 → 2012-04-30 (+5d) | 2012-05-01 → 2012-05-02 (+1d) | 5d → 3d |  |  |  |  |
| 140 | ARRAY-1803 - Fix liquibase scripts to eliminate two-step installation process | 2012-04-27 → 2012-04-30 (+3d) | 2012-05-01 → 2012-05-02 (+1d) |  |  |  | 115 → none |  |
| 141 | Bug Fixes | 2012-05-02 → 2012-05-03 (+1d) | 2012-05-15 → 2012-05-16 (+1d) |  |  |  |  |  |
| 142 | **Beta 1** | 2012-05-16 → 2012-05-17 (+1d) | 2012-05-29 → 2012-05-30 (+1d) |  |  |  |  |  |
| 143 | Backup and replication for file system - NCI tiers and local installer documentation (ARRAY-1809) | 2012-05-16 → 2012-05-17 (+1d) | 2012-05-28 → 2012-05-29 (+1d) |  |  |  |  |  |
| 144 | Bug Fixes | 2012-05-16 → 2012-05-17 (+1d) | 2012-05-28 → 2012-05-29 (+1d) |  |  |  |  |  |
| 145 | Deployment: Deploy Beta 1 to STAGE. | 2012-05-29 → 2012-05-30 (+1d) | 2012-05-29 → 2012-05-30 (+1d) |  |  |  |  |  |
| 146 | **Release Candidate 1** | 2012-05-30 → 2012-05-31 (+1d) | 2012-06-12 → 2012-06-13 (+1d) |  |  |  |  |  |
| 147 | Deployment: Run security app scan on Beta 1. | 2012-05-30 → 2012-05-31 (+1d) | 2012-06-01 → 2012-06-04 (+3d) |  |  |  |  |  |
| 148 | STAGE Regression testing of Beta 1. | 2012-05-30 → 2012-05-31 (+1d) | 2012-06-05 → 2012-06-06 (+1d) |  |  |  |  |  |
| 149 | Installer testing of Beta 1. | 2012-06-06 → 2012-06-07 (+1d) | 2012-06-08 → 2012-06-11 (+3d) |  |  |  |  |  |
| 150 | Support Beta 1 testing by API partners. | 2012-05-30 → 2012-05-31 (+1d) | 2012-06-05 → 2012-06-06 (+1d) |  |  |  |  |  |
| 151 | Documentation: Send User's Guide changes to Jill. | 2012-05-30 → 2012-05-31 (+1d) | 2012-05-31 → 2012-06-01 (+1d) |  |  |  |  |  |
| 152 | ARRAY-2092 - Documentation: Send Installation Guide changes to Jill. | 2012-05-30 → 2012-05-31 (+1d) | 2012-06-04 → 2012-06-05 (+1d) |  |  |  |  |  |
| 153 | Bug Fixes | 2012-05-30 → 2012-05-31 (+1d) | 2012-06-11 → 2012-06-12 (+1d) |  |  |  |  |  |
| 154 | Deployment: Deploy RC1 to STAGE. | 2012-06-12 → 2012-06-13 (+1d) | 2012-06-12 → 2012-06-13 (+1d) |  |  |  |  |  |
| 155 | **Release Candidate 2** | 2012-06-13 → 2012-06-14 (+1d) | 2012-06-26 → 2012-06-27 (+1d) |  |  |  |  |  |
| 156 | Deployment: Run security app scan on RC1. | 2012-06-13 → 2012-06-14 (+1d) | 2012-06-15 → 2012-06-18 (+3d) |  |  |  |  |  |
| 157 | STAGE testing of RC1. | 2012-06-13 → 2012-06-14 (+1d) | 2012-06-15 → 2012-06-18 (+3d) |  |  |  |  |  |
| 158 | Support RC1 testing by API partners. | 2012-06-13 → 2012-06-14 (+1d) | 2012-06-15 → 2012-06-18 (+3d) |  |  |  |  |  |
| 159 | Deployment: Create skeleton Gforge release package and release notes | 2012-06-13 → 2012-06-14 (+1d) | 2012-06-14 → 2012-06-15 (+1d) |  |  |  |  |  |
| 160 | Deployment: Point application to draft release notes | 2012-06-13 → 2012-06-14 (+1d) | 2012-06-18 → 2012-06-19 (+1d) |  |  |  |  |  |
| 161 | Bug Fixes - only Blocker and Critical | 2012-06-13 → 2012-06-14 (+1d) | 2012-06-22 → 2012-06-25 (+3d) |  |  |  |  |  |
| 162 | Documentation: Finish Draft User's Guide. | 2012-06-13 → 2012-06-14 (+1d) | 2012-06-18 → 2012-06-19 (+1d) |  |  |  |  |  |
| 163 | Documentation: Review Draft User's Guide. | 2012-06-19 → 2012-06-20 (+1d) | 2012-06-20 → 2012-06-21 (+1d) |  |  |  |  |  |
| 164 | Documentation: Finish Draft Installation Guide. | 2012-06-13 → 2012-06-14 (+1d) | 2012-06-18 → 2012-06-19 (+1d) |  |  |  |  |  |
| 165 | Documentation: Review Draft Installation Guide. | 2012-06-19 → 2012-06-20 (+1d) | 2012-06-20 → 2012-06-21 (+1d) |  |  |  |  |  |
| 166 | Deployment: Deploy RC2 to STAGE. | 2012-06-25 → 2012-06-26 (+1d) | 2012-06-26 → 2012-06-27 (+1d) |  |  |  |  |  |
| 167 | Deployment: Send Draft release notes to Juli to send to Communications Office | 2012-06-13 → 2012-06-14 (+1d) | 2012-06-13 → 2012-06-14 (+1d) |  |  |  |  |  |
| 168 | **Release Candidate 3** | 2012-06-27 → 2012-06-28 (+1d) | 2012-07-10 → 2012-07-11 (+1d) |  |  |  |  |  |
| 169 | STAGE testing of RC2 | 2012-06-27 → 2012-06-28 (+1d) | 2012-06-28 → 2012-06-29 (+1d) |  |  |  |  |  |
| 170 | Documentation: Finish final User's Guide. | 2012-06-27 → 2012-06-28 (+1d) | 2012-06-28 → 2012-06-29 (+1d) |  |  |  |  |  |
| 171 | Documentation: Review final User's Guide. | 2012-06-29 → 2012-07-02 (+3d) | 2012-06-29 → 2012-07-02 (+3d) |  |  |  |  |  |
| 172 | Documentation: Finish final Installation Guide. | 2012-06-27 → 2012-06-28 (+1d) | 2012-06-28 → 2012-06-29 (+1d) |  |  |  |  |  |
| 173 | Documentation: Review final Installation Guide. | 2012-06-29 → 2012-07-02 (+3d) | 2012-06-29 → 2012-07-02 (+3d) |  |  |  |  |  |
| 174 | Bug Fixes - only Blockers | 2012-06-27 → 2012-06-28 (+1d) | 2012-07-03 → 2012-07-04 (+1d) |  |  |  |  |  |
| 175 | Deployment: Deploy RC3 (GA) to STAGE. | 2012-07-04 → 2012-07-05 (+1d) | 2012-07-05 → 2012-07-06 (+1d) |  |  |  |  |  |
| 176 | Deployment: Run security app scan on RC3 (GA) | 2012-07-06 → 2012-07-09 (+3d) | 2012-07-09 → 2012-07-10 (+1d) |  |  |  |  |  |
| 177 | STAGE testing of RC3 (GA) | 2012-07-06 → 2012-07-09 (+3d) | 2012-07-10 → 2012-07-11 (+1d) |  |  |  |  |  |
| 178 | Deployment: Create GA release artifacts and upload to Gforge. | 2012-06-27 → 2012-06-28 (+1d) | 2012-06-27 → 2012-06-28 (+1d) |  |  |  |  |  |
| 179 | Deployment: Support GA testing by API partners. | 2012-06-27 → 2012-06-28 (+1d) | 2012-06-28 → 2012-06-29 (+1d) |  |  |  |  |  |
| 180 | **Deployment** | 2012-07-11 → 2012-07-12 (+1d) | 2012-07-16 → 2012-07-17 (+1d) |  |  |  |  |  |
| 181 | Deployment: Deploy GA to PRODUCTION | 2012-07-11 → 2012-07-12 (+1d) | 2012-07-13 → 2012-07-16 (+3d) |  |  |  |  |  |
| 182 | Deployment: Update product landing page | 2012-07-11 → 2012-07-12 (+1d) | 2012-07-11 → 2012-07-12 (+1d) |  |  |  |  |  |
| 183 | Deployment: Juli announces the release to the community | 2012-07-16 → 2012-07-17 (+1d) | 2012-07-16 → 2012-07-17 (+1d) |  |  |  |  |  |
| 184 | RELEASE 2.5.0 | 2012-07-16 → 2012-07-17 (+1d) | 2012-07-16 → 2012-07-17 (+1d) |  |  |  |  |  |

## Version 34 (saved 2012-02-09)

Note of the change: Updated project plan after team's feedback at iteration planning meeting.

Last finish 2012-07-17 → 2012-07-19 (+2d). Complete tasks 82 → 85.

Added:

| ID | Task | Duration | Start | Finish | Predecessors | Resources |
| --- | --- | --- | --- | --- | --- | --- |
| 115 | Prototype Single Sign-on architecture (TRANSCEND) | 10d | 2012-02-22 | 2012-03-06 | 99 | Paul; KK; Todd; Quy |

Changed:

| ID | Task | Start | Finish | Duration | Complete | Total float | Predecessors | Other |
| --- | --- | --- | --- | --- | --- | --- | --- | --- |
| 1 | **CAARRAY 2.x** |  | 2012-07-17 → 2012-07-19 (+2d) | 247d? → 249d? |  |  |  |  |
| 25 | **2.5.0** |  | 2012-07-17 → 2012-07-19 (+2d) | 217d → 219d |  |  |  |  |
| 84 | **Iteration M22** |  |  |  | 77% → 88% |  |  |  |
| 93 | ARRAY-2233 - Splitting Imports: Support 2-colour designs | 2012-01-25 A | 2012-01-25 A |  | 0% → 100% | 9d → none |  |  |
| 95 | ARRAY-2266: Regression Test 2.5.0 on QA tiers |  | 2012-01-31 A |  | 50% → 100% | 5d → none |  |  |
| 99 | **Iteration M23** | 2012-02-08 A |  |  | 0% → 8% |  |  |  |
| 100 | ARRAY-2272 - BDALite: Unified target (New) | 2012-02-08 A | 2012-02-09 A |  | 0% → 100% | 6d → none |  |  |
| 107 | ARRAY-2295 - Patch 2.4.1 source code to point to ncisvn | 2012-02-22 → 2012-02-08 (-14d) | 2012-02-23 → 2012-02-09 (-14d) |  |  |  |  |  |
| 109 | **Improved Upload** |  | 2012-03-06 → 2012-03-08 (+2d) | 10d → 12d |  |  |  |  |
| 111 | ARRAY-2267 - Document any restrictions/assumptions for large data upload/import/download/export. | 2012-02-08 → 2012-03-05 (+26d) | 2012-02-09 → 2012-03-05 (+25d) | 2d → 1d |  | 8d → 0d | none → 110 | resources Rashmi → Todd; Paul; Quy |
| 112 | ARRAY-2269 - Document performance requirements for large data upload/import/download/export | 2012-02-08 → 2012-03-06 (+27d) | 2012-02-09 → 2012-03-07 (+27d) |  |  | 8d → 0d | none → 111 | resources Rashmi → Todd; Paul; Quy |
| 113 | Demo resumable uploads | 2012-03-05 → 2012-03-08 (+3d) | 2012-03-05 → 2012-03-08 (+3d) |  |  | 1d → 0d | 110 → 112 |  |
| 122 | **UPT Configurability** | 2012-03-07 → 2012-03-09 (+2d) | 2012-03-13 → 2012-03-15 (+2d) |  |  |  |  |  |
| 123 | ARRAY-2258 - Test new UPT configurability to disallow caArray user group creation within UPT (New) | 2012-03-07 → 2012-03-09 (+2d) | 2012-03-08 → 2012-03-12 (+4d) |  |  |  |  |  |
| 124 | ARRAY-2259 - Update installer to configure UPT to disallow user group creation for caArray within UPT (New) | 2012-03-09 → 2012-03-13 (+4d) | 2012-03-13 → 2012-03-15 (+2d) |  |  |  |  |  |
| 125 | **Support for caIntegrator Automatic Refresh (TRANSCEND)** | 2012-03-07 → 2012-03-09 (+2d) | 2012-03-23 → 2012-03-27 (+4d) |  |  |  |  |  |
| 126 | ARRAY-2273/1932 - Implement API to return whether experiment was changed in time period | 2012-03-07 → 2012-03-09 (+2d) | 2012-03-13 → 2012-03-15 (+2d) |  |  |  |  |  |
| 127 | Integration testing of Automatic Refresh with caIntegrator | 2012-03-14 → 2012-03-16 (+2d) | 2012-03-20 → 2012-03-22 (+2d) |  |  |  |  |  |
| 128 | Demo of Automatic Refresh to UCSF/TRANSCEND team | 2012-03-21 → 2012-03-23 (+2d) | 2012-03-23 → 2012-03-27 (+4d) |  |  |  |  |  |
| 129 | **Permissions Model (TRANSCEND)** | 2012-03-14 → 2012-03-16 (+2d) | 2012-03-20 → 2012-03-22 (+2d) |  |  |  |  |  |
| 130 | ARRAY-1938 - Allow sample search by arbitrary characteristics on Permissions page | 2012-03-14 → 2012-03-16 (+2d) | 2012-03-20 → 2012-03-22 (+2d) |  |  |  |  |  |
| 131 | Demo of Permissions Model to UCSF/TRANSCEND team | 2012-03-14 → 2012-03-16 (+2d) | 2012-03-16 → 2012-03-20 (+4d) |  |  |  |  |  |
| 132 | **Single Sign-on (TRANSCEND)** | 2012-03-26 → 2012-03-28 (+2d) | 2012-04-20 → 2012-04-24 (+4d) |  |  |  |  |  |
| 133 | ARRAY-1930 - Single sign-on between caArray and caIntegrator | 2012-03-26 → 2012-03-28 (+2d) | 2012-04-13 → 2012-04-17 (+4d) |  |  |  | none → 115 |  |
| 134 | Integration testing of Single sign-on | 2012-04-16 → 2012-04-18 (+2d) | 2012-04-20 → 2012-04-24 (+4d) |  |  |  |  |  |
| 135 | Demo of Single Sign-on to UCSF/TRANSCEND team | 2012-03-26 → 2012-03-28 (+2d) | 2012-03-28 → 2012-03-30 (+2d) |  |  |  |  |  |
| 136 | **Audit Trail (TRANSCEND)** | 2012-04-23 → 2012-04-25 (+2d) | 2012-04-27 → 2012-05-01 (+4d) |  |  |  |  |  |
| 137 | ARRAY-1931 - Sample deletions and data imports | 2012-04-23 → 2012-04-25 (+2d) | 2012-04-25 → 2012-04-27 (+2d) |  |  |  |  |  |
| 138 | ARRAY-1933 - Log visibility to Data Owner | 2012-04-26 → 2012-04-30 (+4d) | 2012-04-27 → 2012-05-01 (+4d) |  |  |  |  |  |
| 139 | Demo of Audit Trail to UCSF/TRANSCEND team | 2012-04-23 → 2012-04-25 (+2d) | 2012-04-25 → 2012-04-27 (+2d) |  |  |  |  |  |
| 140 | **Maintenance** | 2012-04-30 → 2012-05-02 (+2d) | 2012-05-02 → 2012-05-04 (+2d) |  |  |  |  |  |
| 141 | ARRAY-1803 - Fix liquibase scripts to eliminate two-step installation process | 2012-04-30 → 2012-05-02 (+2d) | 2012-05-02 → 2012-05-04 (+2d) |  |  |  |  |  |
| 142 | Bug Fixes | 2012-05-03 → 2012-05-07 (+4d) | 2012-05-16 → 2012-05-18 (+2d) |  |  |  |  |  |
| 143 | **Beta 1** | 2012-05-17 → 2012-05-21 (+4d) | 2012-05-30 → 2012-06-01 (+2d) |  |  |  |  |  |
| 144 | Backup and replication for file system - NCI tiers and local installer documentation (ARRAY-1809) | 2012-05-17 → 2012-05-21 (+4d) | 2012-05-29 → 2012-05-31 (+2d) |  |  |  |  |  |
| 145 | Bug Fixes | 2012-05-17 → 2012-05-21 (+4d) | 2012-05-29 → 2012-05-31 (+2d) |  |  |  |  |  |
| 146 | Deployment: Deploy Beta 1 to STAGE. | 2012-05-30 → 2012-06-01 (+2d) | 2012-05-30 → 2012-06-01 (+2d) |  |  |  |  |  |
| 147 | **Release Candidate 1** | 2012-05-31 → 2012-06-04 (+4d) | 2012-06-13 → 2012-06-15 (+2d) |  |  |  |  |  |
| 148 | Deployment: Run security app scan on Beta 1. | 2012-05-31 → 2012-06-04 (+4d) | 2012-06-04 → 2012-06-06 (+2d) |  |  |  |  |  |
| 149 | STAGE Regression testing of Beta 1. | 2012-05-31 → 2012-06-04 (+4d) | 2012-06-06 → 2012-06-08 (+2d) |  |  |  |  |  |
| 150 | Installer testing of Beta 1. | 2012-06-07 → 2012-06-11 (+4d) | 2012-06-11 → 2012-06-13 (+2d) |  |  |  |  |  |
| 151 | Support Beta 1 testing by API partners. | 2012-05-31 → 2012-06-04 (+4d) | 2012-06-06 → 2012-06-08 (+2d) |  |  |  |  |  |
| 152 | Documentation: Send User's Guide changes to Jill. | 2012-05-31 → 2012-06-04 (+4d) | 2012-06-01 → 2012-06-05 (+4d) |  |  |  |  |  |
| 153 | ARRAY-2092 - Documentation: Send Installation Guide changes to Jill. | 2012-05-31 → 2012-06-04 (+4d) | 2012-06-05 → 2012-06-07 (+2d) |  |  |  |  |  |
| 154 | Bug Fixes | 2012-05-31 → 2012-06-04 (+4d) | 2012-06-12 → 2012-06-14 (+2d) |  |  |  |  |  |
| 155 | Deployment: Deploy RC1 to STAGE. | 2012-06-13 → 2012-06-15 (+2d) | 2012-06-13 → 2012-06-15 (+2d) |  |  |  |  |  |
| 156 | **Release Candidate 2** | 2012-06-14 → 2012-06-18 (+4d) | 2012-06-27 → 2012-06-29 (+2d) |  |  |  |  |  |
| 157 | Deployment: Run security app scan on RC1. | 2012-06-14 → 2012-06-18 (+4d) | 2012-06-18 → 2012-06-20 (+2d) |  |  |  |  |  |
| 158 | STAGE testing of RC1. | 2012-06-14 → 2012-06-18 (+4d) | 2012-06-18 → 2012-06-20 (+2d) |  |  |  |  |  |
| 159 | Support RC1 testing by API partners. | 2012-06-14 → 2012-06-18 (+4d) | 2012-06-18 → 2012-06-20 (+2d) |  |  |  |  |  |
| 160 | Deployment: Create skeleton Gforge release package and release notes | 2012-06-14 → 2012-06-18 (+4d) | 2012-06-15 → 2012-06-19 (+4d) |  |  |  |  |  |
| 161 | Deployment: Point application to draft release notes | 2012-06-14 → 2012-06-18 (+4d) | 2012-06-19 → 2012-06-21 (+2d) |  |  |  |  |  |
| 162 | Bug Fixes - only Blocker and Critical | 2012-06-14 → 2012-06-18 (+4d) | 2012-06-25 → 2012-06-27 (+2d) |  |  |  |  |  |
| 163 | Documentation: Finish Draft User's Guide. | 2012-06-14 → 2012-06-18 (+4d) | 2012-06-19 → 2012-06-21 (+2d) |  |  |  |  |  |
| 164 | Documentation: Review Draft User's Guide. | 2012-06-20 → 2012-06-22 (+2d) | 2012-06-21 → 2012-06-25 (+4d) |  |  |  |  |  |
| 165 | Documentation: Finish Draft Installation Guide. | 2012-06-14 → 2012-06-18 (+4d) | 2012-06-19 → 2012-06-21 (+2d) |  |  |  |  |  |
| 166 | Documentation: Review Draft Installation Guide. | 2012-06-20 → 2012-06-22 (+2d) | 2012-06-21 → 2012-06-25 (+4d) |  |  |  |  |  |
| 167 | Deployment: Deploy RC2 to STAGE. | 2012-06-26 → 2012-06-28 (+2d) | 2012-06-27 → 2012-06-29 (+2d) |  |  |  |  |  |
| 168 | Deployment: Send Draft release notes to Juli to send to Communications Office | 2012-06-14 → 2012-06-18 (+4d) | 2012-06-14 → 2012-06-18 (+4d) |  |  |  |  |  |
| 169 | **Release Candidate 3** | 2012-06-28 → 2012-07-02 (+4d) | 2012-07-11 → 2012-07-13 (+2d) |  |  |  |  |  |
| 170 | STAGE testing of RC2 | 2012-06-28 → 2012-07-02 (+4d) | 2012-06-29 → 2012-07-03 (+4d) |  |  |  |  |  |
| 171 | Documentation: Finish final User's Guide. | 2012-06-28 → 2012-07-02 (+4d) | 2012-06-29 → 2012-07-03 (+4d) |  |  |  |  |  |
| 172 | Documentation: Review final User's Guide. | 2012-07-02 → 2012-07-04 (+2d) | 2012-07-02 → 2012-07-04 (+2d) |  |  |  |  |  |
| 173 | Documentation: Finish final Installation Guide. | 2012-06-28 → 2012-07-02 (+4d) | 2012-06-29 → 2012-07-03 (+4d) |  |  |  |  |  |
| 174 | Documentation: Review final Installation Guide. | 2012-07-02 → 2012-07-04 (+2d) | 2012-07-02 → 2012-07-04 (+2d) |  |  |  |  |  |
| 175 | Bug Fixes - only Blockers | 2012-06-28 → 2012-07-02 (+4d) | 2012-07-04 → 2012-07-06 (+2d) |  |  |  |  |  |
| 176 | Deployment: Deploy RC3 (GA) to STAGE. | 2012-07-05 → 2012-07-09 (+4d) | 2012-07-06 → 2012-07-10 (+4d) |  |  |  |  |  |
| 177 | Deployment: Run security app scan on RC3 (GA) | 2012-07-09 → 2012-07-11 (+2d) | 2012-07-10 → 2012-07-12 (+2d) |  |  |  |  |  |
| 178 | STAGE testing of RC3 (GA) | 2012-07-09 → 2012-07-11 (+2d) | 2012-07-11 → 2012-07-13 (+2d) |  |  |  |  |  |
| 179 | Deployment: Create GA release artifacts and upload to Gforge. | 2012-06-28 → 2012-07-02 (+4d) | 2012-06-28 → 2012-07-02 (+4d) |  |  |  |  |  |

| ID | Task | Start | Finish |
| --- | --- | --- | --- |
| 180 | Deployment: Support GA testing by API partners. | 2012-06-28 → 2012-07-02 (+4d) | 2012-06-29 → 2012-07-03 (+4d) |
| 181 | **Deployment** | 2012-07-12 → 2012-07-16 (+4d) | 2012-07-17 → 2012-07-19 (+2d) |
| 182 | Deployment: Deploy GA to PRODUCTION | 2012-07-12 → 2012-07-16 (+4d) | 2012-07-16 → 2012-07-18 (+2d) |
| 183 | Deployment: Update product landing page | 2012-07-12 → 2012-07-16 (+4d) | 2012-07-12 → 2012-07-16 (+4d) |
| 184 | Deployment: Juli announces the release to the community | 2012-07-17 → 2012-07-19 (+2d) | 2012-07-17 → 2012-07-19 (+2d) |
| 185 | RELEASE 2.5.0 | 2012-07-17 → 2012-07-19 (+2d) | 2012-07-17 → 2012-07-19 (+2d) |

## Version 35 (saved 2012-02-14)

Note of the change: Updated project plan to match caIntegrator's latest changes.

Last finish 2012-07-19 → 2012-07-05 (-14d). Complete tasks 85 → 88.

Removed: 188 NOTE: Architecture for TRANSCEND requirements is undecided as yet, and can change some of the LOEs for release 2.6

Changed:

| ID | Task | Start | Finish | Duration | Complete | Total float | Predecessors | Other |
| --- | --- | --- | --- | --- | --- | --- | --- | --- |
| 1 | **CAARRAY 2.x** |  | 2012-07-19 → 2012-07-05 (-14d) | 249d? → 239d | 67% → 69% |  |  |  |
| 25 | **2.5.0** |  | 2012-07-19 → 2012-07-05 (-14d) | 219d → 209d | 49% → 51% |  |  |  |
| 84 | **Iteration M22** |  | 2012-02-07 A |  | 88% → 100% | 0d → none |  |  |
| 86 | Prototype IE browser fallback for Improved Upload |  | 2012-01-27 A |  | 50% → 100% | 7d → none |  |  |
| 90 | ARRAY-2193 - Splitting Imports: Resume of cancelled import job |  | 2012-02-07 A |  | 50% → 100% | 0d → none |  |  |
| 99 | **Iteration M23** |  |  |  | 8% → 28% |  |  |  |
| 101 | ARRAY-2104 - BDALite: osgi plugin location (New) | 2012-02-10 A | 2012-02-13 A |  | 0% → 100% | 6d → none |  |  |
| 102 | ARRAY-1627 - Support resumable uploads of large file sets - Part 1 | 2012-02-08 A |  |  | 0% → 20% |  |  |  |
| 104 | ARRAY-2310 - Meeting with Architecture Review Board re: Improved Uploads | 2012-02-08 → 2012-02-15 (+7d) | 2012-02-08 → 2012-02-15 (+7d) |  |  | 9d → 4d |  | constraint none → start no earlier than 2012-02-15 |
| 105 | ARRAY-2311 - Re-run Section 508 compliance scan | 2012-02-08 A |  |  | 0% → 50% |  |  |  |
| 106 | ARRAY-2309 - UAT of large imports by curators (New) | 2012-02-08 → 2012-02-14 A (+6d) | 2012-02-13 → 2012-02-17 (+4d) |  | 0% → 20% | 6d → 2d |  | constraint none → start no earlier than 2012-02-14 |
| 107 | ARRAY-2295 - Patch 2.4.1 source code to point to ncisvn | 2012-02-08 → 2012-02-14 (+6d) | 2012-02-09 → 2012-02-15 (+6d) |  |  | 8d → 4d | none → 101 |  |
| 109 | **Improved Upload** |  | 2012-03-08 → 2012-03-06 (-2d) | 12d → 10d |  |  |  |  |
| 112 | ARRAY-2269 - Document performance requirements for large data upload/import/download/export | 2012-03-06 → 2012-03-05 (-1d) | 2012-03-07 → 2012-03-06 (-1d) |  |  |  | 111 → 110 |  |
| 113 | Demo resumable uploads | 2012-03-08 → 2012-03-05 (-3d) | 2012-03-08 → 2012-03-05 (-3d) |  |  | 0d → 1d | 112 → 110 |  |
| 121 | Prototype Single Sign-on architecture (TRANSCEND) | 2012-02-22 → 2012-03-07 (+14d) | 2012-03-06 → 2012-03-20 (+14d) |  |  | 16d → 0d | 99 → 109, 115 |  |
| 122 | **Permissions Model (TRANSCEND)** | 2012-03-16 → 2012-03-07 (-9d) | 2012-03-22 → 2012-03-13 (-9d) |  |  | 3d → 0d | 109, 115, 125 → 109, 115 |  |
| 123 | ARRAY-1938 - Allow sample search by arbitrary characteristics on Permissions page | 2012-03-16 → 2012-03-07 (-9d) | 2012-03-22 → 2012-03-13 (-9d) |  |  | 3d → 0d |  |  |
| 124 | Demo of Permissions Model to UCSF/TRANSCEND team | 2012-03-16 → 2012-03-07 (-9d) | 2012-03-20 → 2012-03-09 (-11d) |  |  | 5d → 2d |  |  |
| 125 | **UPT Configurability** | 2012-03-09 → 2012-03-14 (+5d) | 2012-03-15 → 2012-03-20 (+5d) |  |  | 3d → 0d | 115, 109 → 115, 109, 122 |  |
| 126 | ARRAY-2258 - Test new UPT configurability to disallow caArray user group creation within UPT (New) | 2012-03-09 → 2012-03-14 (+5d) | 2012-03-12 → 2012-03-15 (+3d) |  |  | 3d → 0d |  |  |
| 127 | ARRAY-2259 - Update installer to configure UPT to disallow user group creation for caArray within UPT (New) | 2012-03-13 → 2012-03-16 (+3d) | 2012-03-15 → 2012-03-20 (+5d) |  |  | 3d → 0d |  |  |
| 128 | **Support for caIntegrator Automatic Refresh (TRANSCEND)** | 2012-03-09 → 2012-03-21 (+12d) | 2012-03-27 → 2012-04-03 (+7d) | 13d → 10d |  | 0d → 5d | 109, 115 → 121, 122, 125 |  |
| 129 | ARRAY-2273/1932 - Implement API to return whether experiment was changed in time period | 2012-03-09 → 2012-03-21 (+12d) | 2012-03-15 → 2012-03-27 (+12d) |  |  | 0d → 72d |  |  |
| 130 | Integration testing of Automatic Refresh with caIntegrator | 2012-03-16 → 2012-03-28 (+12d) | 2012-03-22 → 2012-04-02 (+11d) | 5d → 4d |  | 0d → 72d |  | resources caIntegrator Team → Paul; KK; Todd; Quy; caIntegrator Team |
| 131 | Demo of Automatic Refresh to UCSF/TRANSCEND team | 2012-03-23 → 2012-04-03 (+11d) | 2012-03-27 → 2012-04-03 (+7d) | 3d → 1d |  | 0d → 72d |  | resources caIntegrator Team → JP; Shine; Rashmi |
| 132 | **Single Sign-on (TRANSCEND)** | 2012-03-28 → 2012-03-21 (-7d) | 2012-04-24 → 2012-05-31 (+37d) | 20d → 52d |  |  | 122, 128 → 121, 122, 125 |  |
| 133 | ARRAY-1930 - Single sign-on between caArray and caIntegrator | 2012-03-28 → 2012-03-21 (-7d) | 2012-04-17 → 2012-04-10 (-7d) |  |  |  |  |  |
| 134 | Integration testing of Single sign-on | 2012-04-18 → 2012-05-22 (+34d) | 2012-04-24 → 2012-05-28 (+34d) |  |  | 0d → 25d |  | constraint none → start no earlier than 2012-05-22 |
| 135 | Demo of Single Sign-on to UCSF/TRANSCEND team | 2012-03-28 → 2012-05-29 (+62d) | 2012-03-30 → 2012-05-31 (+62d) |  |  | 17d → 25d | none → 134 |  |
| 136 | **Audit Trail (TRANSCEND)** | 2012-04-25 → 2012-04-11 (-14d) | 2012-05-01 → 2012-04-17 (-14d) |  |  |  | 132 → 128, 133 |  |
| 137 | ARRAY-1931 - Sample deletions and data imports | 2012-04-25 → 2012-04-11 (-14d) | 2012-04-27 → 2012-04-13 (-14d) |  |  |  |  |  |
| 138 | ARRAY-1933 - Log visibility to Data Owner | 2012-04-30 → 2012-04-16 (-14d) | 2012-05-01 → 2012-04-17 (-14d) |  |  |  |  |  |
| 139 | Demo of Audit Trail to UCSF/TRANSCEND team | 2012-04-25 → 2012-04-11 (-14d) | 2012-04-27 → 2012-04-13 (-14d) |  |  |  |  |  |
| 140 | **Maintenance** | 2012-05-02 → 2012-04-18 (-14d) | 2012-05-04 → 2012-04-20 (-14d) |  |  |  |  |  |
| 141 | ARRAY-1803 - Fix liquibase scripts to eliminate two-step installation process | 2012-05-02 → 2012-04-18 (-14d) | 2012-05-04 → 2012-04-20 (-14d) |  |  |  |  |  |
| 142 | Bug Fixes | 2012-05-07 → 2012-04-23 (-14d) | 2012-05-18 → 2012-05-04 (-14d) |  |  |  |  |  |
| 143 | **Beta 1** | 2012-05-21 → 2012-05-07 (-14d) | 2012-06-01 → 2012-05-18 (-14d) |  |  |  |  |  |
| 144 | Backup and replication for file system - NCI tiers and local installer documentation (ARRAY-1809) | 2012-05-21 → 2012-05-07 (-14d) | 2012-05-31 → 2012-05-17 (-14d) |  |  |  |  |  |
| 145 | Bug Fixes | 2012-05-21 → 2012-05-07 (-14d) | 2012-05-31 → 2012-05-17 (-14d) |  |  |  |  |  |
| 146 | Deployment: Deploy Beta 1 to STAGE. | 2012-06-01 → 2012-05-18 (-14d) | 2012-06-01 → 2012-05-18 (-14d) |  |  |  |  |  |
| 147 | **Release Candidate 1** | 2012-06-04 → 2012-05-21 (-14d) | 2012-06-15 → 2012-06-01 (-14d) |  |  |  |  |  |
| 148 | Deployment: Run security app scan on Beta 1. | 2012-06-04 → 2012-05-21 (-14d) | 2012-06-06 → 2012-05-23 (-14d) |  |  |  |  |  |
| 149 | STAGE Regression testing of Beta 1. | 2012-06-04 → 2012-05-21 (-14d) | 2012-06-08 → 2012-05-25 (-14d) |  |  |  |  |  |
| 150 | Installer testing of Beta 1. | 2012-06-11 → 2012-05-28 (-14d) | 2012-06-13 → 2012-05-30 (-14d) |  |  |  |  |  |
| 151 | Support Beta 1 testing by API partners. | 2012-06-04 → 2012-05-21 (-14d) | 2012-06-08 → 2012-05-25 (-14d) |  |  |  |  |  |
| 152 | Documentation: Send User's Guide changes to Jill. | 2012-06-04 → 2012-05-21 (-14d) | 2012-06-05 → 2012-05-22 (-14d) |  |  |  |  |  |
| 153 | ARRAY-2092 - Documentation: Send Installation Guide changes to Jill. | 2012-06-04 → 2012-05-21 (-14d) | 2012-06-07 → 2012-05-24 (-14d) |  |  |  |  |  |
| 154 | Bug Fixes | 2012-06-04 → 2012-05-21 (-14d) | 2012-06-14 → 2012-05-31 (-14d) |  |  |  |  |  |
| 155 | Deployment: Deploy RC1 to STAGE. | 2012-06-15 → 2012-06-01 (-14d) | 2012-06-15 → 2012-06-01 (-14d) |  |  |  |  |  |
| 156 | **Release Candidate 2** | 2012-06-18 → 2012-06-04 (-14d) | 2012-06-29 → 2012-06-15 (-14d) |  |  |  |  |  |
| 157 | Deployment: Run security app scan on RC1. | 2012-06-18 → 2012-06-04 (-14d) | 2012-06-20 → 2012-06-06 (-14d) |  |  |  |  |  |
| 158 | STAGE testing of RC1. | 2012-06-18 → 2012-06-04 (-14d) | 2012-06-20 → 2012-06-06 (-14d) |  |  |  |  |  |
| 159 | Support RC1 testing by API partners. | 2012-06-18 → 2012-06-04 (-14d) | 2012-06-20 → 2012-06-06 (-14d) |  |  |  |  |  |
| 160 | Deployment: Create skeleton Gforge release package and release notes | 2012-06-18 → 2012-06-04 (-14d) | 2012-06-19 → 2012-06-05 (-14d) |  |  |  |  |  |
| 161 | Deployment: Point application to draft release notes | 2012-06-18 → 2012-06-04 (-14d) | 2012-06-21 → 2012-06-07 (-14d) |  |  |  |  |  |
| 162 | Bug Fixes - only Blocker and Critical | 2012-06-18 → 2012-06-04 (-14d) | 2012-06-27 → 2012-06-13 (-14d) |  |  |  |  |  |
| 163 | Documentation: Finish Draft User's Guide. | 2012-06-18 → 2012-06-04 (-14d) | 2012-06-21 → 2012-06-07 (-14d) |  |  |  |  |  |
| 164 | Documentation: Review Draft User's Guide. | 2012-06-22 → 2012-06-08 (-14d) | 2012-06-25 → 2012-06-11 (-14d) |  |  |  |  |  |
| 165 | Documentation: Finish Draft Installation Guide. | 2012-06-18 → 2012-06-04 (-14d) | 2012-06-21 → 2012-06-07 (-14d) |  |  |  |  |  |
| 166 | Documentation: Review Draft Installation Guide. | 2012-06-22 → 2012-06-08 (-14d) | 2012-06-25 → 2012-06-11 (-14d) |  |  |  |  |  |
| 167 | Deployment: Deploy RC2 to STAGE. | 2012-06-28 → 2012-06-14 (-14d) | 2012-06-29 → 2012-06-15 (-14d) |  |  |  |  |  |
| 168 | Deployment: Send Draft release notes to Juli to send to Communications Office | 2012-06-18 → 2012-06-04 (-14d) | 2012-06-18 → 2012-06-04 (-14d) |  |  |  |  |  |
| 169 | **Release Candidate 3** | 2012-07-02 → 2012-06-18 (-14d) | 2012-07-13 → 2012-06-29 (-14d) |  |  |  |  |  |
| 170 | STAGE testing of RC2 | 2012-07-02 → 2012-06-18 (-14d) | 2012-07-03 → 2012-06-19 (-14d) |  |  |  |  |  |
| 171 | Documentation: Finish final User's Guide. | 2012-07-02 → 2012-06-18 (-14d) | 2012-07-03 → 2012-06-19 (-14d) |  |  |  |  |  |
| 172 | Documentation: Review final User's Guide. | 2012-07-04 → 2012-06-20 (-14d) | 2012-07-04 → 2012-06-20 (-14d) |  |  |  |  |  |
| 173 | Documentation: Finish final Installation Guide. | 2012-07-02 → 2012-06-18 (-14d) | 2012-07-03 → 2012-06-19 (-14d) |  |  |  |  |  |
| 174 | Documentation: Review final Installation Guide. | 2012-07-04 → 2012-06-20 (-14d) | 2012-07-04 → 2012-06-20 (-14d) |  |  |  |  |  |
| 175 | Bug Fixes - only Blockers | 2012-07-02 → 2012-06-18 (-14d) | 2012-07-06 → 2012-06-22 (-14d) |  |  |  |  |  |

| ID | Task | Start | Finish |
| --- | --- | --- | --- |
| 176 | Deployment: Deploy RC3 (GA) to STAGE. | 2012-07-09 → 2012-06-25 (-14d) | 2012-07-10 → 2012-06-26 (-14d) |
| 177 | Deployment: Run security app scan on RC3 (GA) | 2012-07-11 → 2012-06-27 (-14d) | 2012-07-12 → 2012-06-28 (-14d) |
| 178 | STAGE testing of RC3 (GA) | 2012-07-11 → 2012-06-27 (-14d) | 2012-07-13 → 2012-06-29 (-14d) |
| 179 | Deployment: Create GA release artifacts and upload to Gforge. | 2012-07-02 → 2012-06-18 (-14d) | 2012-07-02 → 2012-06-18 (-14d) |
| 180 | Deployment: Support GA testing by API partners. | 2012-07-02 → 2012-06-18 (-14d) | 2012-07-03 → 2012-06-19 (-14d) |
| 181 | **Deployment** | 2012-07-16 → 2012-07-02 (-14d) | 2012-07-19 → 2012-07-05 (-14d) |
| 182 | Deployment: Deploy GA to PRODUCTION | 2012-07-16 → 2012-07-02 (-14d) | 2012-07-18 → 2012-07-04 (-14d) |
| 183 | Deployment: Update product landing page | 2012-07-16 → 2012-07-02 (-14d) | 2012-07-16 → 2012-07-02 (-14d) |
| 184 | Deployment: Juli announces the release to the community | 2012-07-19 → 2012-07-05 (-14d) | 2012-07-19 → 2012-07-05 (-14d) |
| 185 | RELEASE 2.5.0 | 2012-07-19 → 2012-07-05 (-14d) | 2012-07-19 → 2012-07-05 (-14d) |

## Version 36 (saved 2012-02-21)

Note of the change: Latest updates to project plan.

Last finish stays 2012-07-05. Complete tasks 88 → 91.

Changed:

| ID | Task | Start | Finish | Complete | Total float | Other |
| --- | --- | --- | --- | --- | --- | --- |
| 1 | **CAARRAY 2.x** |  |  | 69% → 70% |  |  |
| 25 | **2.5.0** |  |  | 51% → 54% |  |  |
| 99 | **Iteration M23** |  |  | 28% → 83% |  |  |
| 102 | ARRAY-1627 - Support resumable uploads of large file sets - Part 1 |  |  | 20% → 80% |  |  |
| 104 | ARRAY-2310 - Meeting with Architecture Review Board re: Improved Uploads | 2012-02-15 A | 2012-02-15 A | 0% → 100% | 4d → none |  |
| 105 | ARRAY-2311 - Re-run Section 508 compliance scan |  | 2012-02-08 A | 50% → 100% | 9d → none |  |
| 106 | ARRAY-2309 - UAT of large imports by curators (New) |  |  | 20% → 80% |  |  |
| 107 | ARRAY-2295 - Patch 2.4.1 source code to point to ncisvn | 2012-02-14 A | 2012-02-15 A | 0% → 100% | 4d → none |  |
| 108 | ARRAY-2312 - Bug triage | 2012-02-08 A |  | 0% → 80% |  |  |
| 110 | ARRAY-1627 - Finish implementing resumable uploads of large file sets - IE |  |  |  |  | was named ARRAY-1627 - Finish implementing resumable uploads of large file sets |

## Version 37 (saved 2012-02-24)

Note of the change: Latest updates.

Last finish 2012-07-05 → 2012-07-09 (+4d). Complete tasks 91 → 94.

Added:

| ID | Task | Duration | Start | Finish | Predecessors | Constraint | Resources |
| --- | --- | --- | --- | --- | --- | --- | --- |
| 108 | **Iteration M24** | 10d | 2012-02-22 | 2012-03-06 | 99 |  |  |
| 109 | TRANSCEND: Single Sign-on: Prototype CAS architecture | 7d | 2012-02-22 | 2012-03-01 |  |  | Paul |
| 110 | ARRAY-1627 - Part 2 of Resumable Uploads - Resume | 5d | 2012-02-22 | 2012-02-28 |  |  | KK; Quy |
| 113 | Estimate effort to upgrade to caGrid 1.4 or 1.5 (New) | 2d | 2012-03-02 | 2012-03-05 | 112 |  | KK; Todd; Quy |
| 114 | TRANSCEND: Automatic Refresh: Design API and logging | 2d | 2012-03-02 | 2012-03-05 | 109 |  | Todd; Quy; Paul |
| 116 | Bug Fixes: ARRAY-2329,1609,1622,2129,2071 | 1d | 2012-03-06 | 2012-03-06 | 113 |  | KK; Todd; Quy |
| 117 | Demo large imports | 1d | 2012-02-22 | 2012-02-22 |  |  | Rashmi |
| 118 | UAT of large imports by curators (Continued) | 4d | 2012-02-29 | 2012-03-05 | 110 | start no earlier than 2012-02-14 | Curators; Rashmi |

Removed: 103 ARRAY-2308 - Demo large imports; 110 ARRAY-1627 - Finish implementing resumable uploads of large file sets - IE; 121 Prototype Single Sign-on architecture (TRANSCEND)

Changed:

| ID | Task | Start | Finish | Duration | Complete | Total float | Predecessors | Other |
| --- | --- | --- | --- | --- | --- | --- | --- | --- |
| 1 | **CAARRAY 2.x** |  | 2012-07-05 → 2012-07-09 (+4d) | 239d → 241d | 70% → 71% |  |  |  |
| 25 | **2.5.0** |  | 2012-07-05 → 2012-07-09 (+4d) | 209d → 211d | 54% → 55% |  |  |  |
| 99 | **Iteration M23** |  | 2012-02-21 A |  | 83% → 100% | 0d → none |  |  |
| 102 | ARRAY-1627 - Part 1 of Resumable Uploads - Large Files, Multi-Select, Upload and Cancel |  | 2012-02-21 A |  | 80% → 100% | 0d → none |  | was named ARRAY-1627 - Support resumable uploads of large file sets - Part 1 |
| 105 | ARRAY-2309 - UAT of large imports by curators (New) |  | 2012-02-17 A |  | 80% → 100% | 2d → none |  |  |
| 107 | ARRAY-2312 - Bug triage |  | 2012-02-10 A |  | 80% → 100% | 7d → none |  |  |
| 111 | ARRAY-1806 - Ensure API works with storage engine SPI | 2012-02-22 → 2012-02-29 (+7d) | 2012-02-28 → 2012-02-29 (+1d) | 5d → 1d |  |  | none → 110 |  |
| 112 | ARRAY-1391 - Support API access by Java 1.6 clients | 2012-02-29 → 2012-03-01 (+1d) | 2012-03-02 → 2012-03-01 (-1d) | 3d → 1d |  |  |  |  |
| 115 | ARRAY-2267 - Document any restrictions/assumptions for large data upload/import/download/export. | 2012-03-05 → 2012-03-06 (+1d) | 2012-03-05 → 2012-03-06 (+1d) |  |  | 1d → 0d | ARRAY-1627 - Finish implementing resumable uploads of large file sets - IE → 114 |  |
| 119 | **Improved Uploads** | 2012-02-22 → 2012-03-07 (+14d) | 2012-03-06 → 2012-03-08 (+2d) | 10d → 2d |  | 0d → 3d | 99 → 108 | was named Improved Upload |
| 120 | ARRAY-2269 - Document performance requirements for large data upload/import/download/export | 2012-03-05 → 2012-03-07 (+2d) | 2012-03-06 → 2012-03-08 (+2d) |  |  | 0d → 3d | ARRAY-1627 - Finish implementing resumable uploads of large file sets - IE → none |  |
| 121 | Demo resumable uploads | 2012-03-05 → 2012-03-07 (+2d) | 2012-03-05 → 2012-03-07 (+2d) |  |  | 1d → 4d | ARRAY-1627 - Finish implementing resumable uploads of large file sets - IE → none |  |
| 122 | UAT of resumable uploads by curators | 2012-03-05 → 2012-03-07 (+2d) | 2012-03-06 → 2012-03-08 (+2d) |  |  | 0d → 3d | ARRAY-1627 - Finish implementing resumable uploads of large file sets - IE → none | was named UAT of resumable uploads by curators (New) |
| 123 | **Maintenance** | 2012-02-22 → 2012-03-07 (+14d) | 2012-03-06 → 2012-03-13 (+7d) | 10d → 5d |  |  | 99 → 108 |  |
| 124 | API (CQL) changes to account for file system storage (ARRAY-1729) | 2012-03-05 → 2012-03-07 (+2d) | 2012-03-06 → 2012-03-08 (+2d) |  |  | 0d → 3d | 112 → none |  |
| 125 | ARRAY-2313 - Support testing by API partners. | 2012-02-22 → 2012-03-07 (+14d) | 2012-02-28 → 2012-03-13 (+14d) |  |  | 5d → 0d |  |  |
| 126 | QA Test Suite updates for 2.5.0: Move Test Cases to Quality Center | 2012-02-22 → 2012-03-07 (+14d) | 2012-02-28 → 2012-03-13 (+14d) |  |  | 5d → 0d |  |  |
| 127 | **Permissions Model (TRANSCEND)** | 2012-03-07 → 2012-03-14 (+7d) | 2012-03-13 → 2012-03-20 (+7d) |  |  |  |  |  |
| 128 | ARRAY-1938 - Allow sample search by arbitrary characteristics on Permissions page | 2012-03-07 → 2012-03-14 (+7d) | 2012-03-13 → 2012-03-20 (+7d) |  |  |  |  |  |
| 129 | Demo of Permissions Model to UCSF/TRANSCEND team | 2012-03-07 → 2012-03-14 (+7d) | 2012-03-09 → 2012-03-20 (+11d) | 3d → 5d |  | 2d → 0d |  |  |
| 130 | **UPT Configurability** | 2012-03-14 → 2012-03-21 (+7d) | 2012-03-20 → 2012-03-27 (+7d) |  |  | 0d → 5d |  |  |
| 131 | ARRAY-2258 - Test new UPT configurability to disallow caArray user group creation within UPT (New) | 2012-03-14 → 2012-03-21 (+7d) | 2012-03-15 → 2012-03-22 (+7d) |  |  | 0d → 5d |  |  |
| 132 | ARRAY-2259 - Update installer to configure UPT to disallow user group creation for caArray within UPT (New) | 2012-03-16 → 2012-03-23 (+7d) | 2012-03-20 → 2012-03-27 (+7d) |  |  | 0d → 5d |  |  |
| 133 | **Automatic Refresh (TRANSCEND)** |  |  |  |  | 5d → 0d | Prototype Single Sign-on architecture (TRANSCEND), 127, 130 → 127, 123, 119 | was named Support for caIntegrator Automatic Refresh (TRANSCEND) |
| 137 | **Single Sign-on (TRANSCEND)** | 2012-03-21 → 2012-04-04 (+14d) | 2012-05-31 → 2012-05-24 (-7d) | 52d → 37d |  |  | Prototype Single Sign-on architecture (TRANSCEND), 127, 130 → 130, 133 |  |
| 138 | ARRAY-1930 - Single sign-on between caArray and caIntegrator | 2012-03-21 → 2012-04-04 (+14d) | 2012-04-10 → 2012-04-17 (+7d) | 15d → 10d |  |  | Prototype Single Sign-on architecture (TRANSCEND) → none |  |
| 139 | Integration testing of Single sign-on | 2012-05-22 → 2012-05-15 (-7d) | 2012-05-28 → 2012-05-21 (-7d) |  |  | 25d → 35d |  | constraint start no earlier than 2012-05-22 → start no earlier than 2012-05-15 |
| 140 | Demo of Single Sign-on to UCSF/TRANSCEND team | 2012-05-29 → 2012-05-22 (-7d) | 2012-05-31 → 2012-05-24 (-7d) |  |  | 25d → 35d |  |  |
| 141 | **Audit Trail (TRANSCEND)** | 2012-04-11 → 2012-04-18 (+7d) | 2012-04-17 → 2012-04-24 (+7d) |  |  |  |  |  |
| 142 | ARRAY-1931 - Sample deletions and data imports | 2012-04-11 → 2012-04-18 (+7d) | 2012-04-13 → 2012-04-20 (+7d) |  |  |  |  |  |
| 143 | ARRAY-1933 - Log visibility to Data Owner | 2012-04-16 → 2012-04-23 (+7d) | 2012-04-17 → 2012-04-24 (+7d) |  |  |  |  |  |
| 144 | Demo of Audit Trail to UCSF/TRANSCEND team | 2012-04-11 → 2012-04-18 (+7d) | 2012-04-13 → 2012-04-24 (+11d) | 3d → 5d |  | 2d → 0d |  |  |
| 145 | **Maintenance** | 2012-04-18 → 2012-04-25 (+7d) | 2012-04-20 → 2012-04-27 (+7d) |  |  | 0d → 51d |  |  |
| 146 | ARRAY-1803 - Fix liquibase scripts to eliminate two-step installation process | 2012-04-18 → 2012-04-25 (+7d) | 2012-04-20 → 2012-04-27 (+7d) |  |  | 0d → 51d |  |  |
| 147 | Bug Fixes | 2012-04-23 → 2012-04-25 (+2d) | 2012-05-04 → 2012-05-08 (+4d) |  |  |  | 145 → 141 |  |
| 148 | **Beta 1** | 2012-05-07 → 2012-05-09 (+2d) | 2012-05-18 → 2012-05-22 (+4d) |  |  |  |  |  |
| 149 | Backup and replication for file system - NCI tiers and local installer documentation (ARRAY-1809) | 2012-05-07 → 2012-05-09 (+2d) | 2012-05-17 → 2012-05-21 (+4d) |  |  |  |  |  |
| 150 | Bug Fixes | 2012-05-07 → 2012-05-09 (+2d) | 2012-05-17 → 2012-05-21 (+4d) |  |  |  |  |  |
| 151 | Deployment: Deploy Beta 1 to STAGE. | 2012-05-18 → 2012-05-22 (+4d) | 2012-05-18 → 2012-05-22 (+4d) |  |  |  |  |  |
| 152 | **Release Candidate 1** | 2012-05-21 → 2012-05-23 (+2d) | 2012-06-01 → 2012-06-05 (+4d) |  |  |  |  |  |
| 153 | Deployment: Run security app scan on Beta 1. | 2012-05-21 → 2012-05-23 (+2d) | 2012-05-23 → 2012-05-25 (+2d) |  |  |  |  |  |
| 154 | STAGE Regression testing of Beta 1. | 2012-05-21 → 2012-05-23 (+2d) | 2012-05-25 → 2012-05-29 (+4d) |  |  |  |  |  |
| 155 | Installer testing of Beta 1. | 2012-05-28 → 2012-05-30 (+2d) | 2012-05-30 → 2012-06-01 (+2d) |  |  |  |  |  |
| 156 | Support Beta 1 testing by API partners. | 2012-05-21 → 2012-05-23 (+2d) | 2012-05-25 → 2012-05-29 (+4d) |  |  |  |  |  |
| 157 | Documentation: Send User's Guide changes to Jill. | 2012-05-21 → 2012-05-23 (+2d) | 2012-05-22 → 2012-05-24 (+2d) |  |  |  |  |  |
| 158 | ARRAY-2092 - Documentation: Send Installation Guide changes to Jill. | 2012-05-21 → 2012-05-23 (+2d) | 2012-05-24 → 2012-05-28 (+4d) |  |  |  |  |  |
| 159 | Bug Fixes | 2012-05-21 → 2012-05-23 (+2d) | 2012-05-31 → 2012-06-04 (+4d) |  |  |  |  |  |
| 160 | Deployment: Deploy RC1 to STAGE. | 2012-06-01 → 2012-06-05 (+4d) | 2012-06-01 → 2012-06-05 (+4d) |  |  |  |  |  |
| 161 | **Release Candidate 2** | 2012-06-04 → 2012-06-06 (+2d) | 2012-06-15 → 2012-06-19 (+4d) |  |  |  |  |  |
| 162 | Deployment: Run security app scan on RC1. | 2012-06-04 → 2012-06-06 (+2d) | 2012-06-06 → 2012-06-08 (+2d) |  |  |  |  |  |
| 163 | STAGE testing of RC1. | 2012-06-04 → 2012-06-06 (+2d) | 2012-06-06 → 2012-06-08 (+2d) |  |  |  |  |  |
| 164 | Support RC1 testing by API partners. | 2012-06-04 → 2012-06-06 (+2d) | 2012-06-06 → 2012-06-08 (+2d) |  |  |  |  |  |
| 165 | Deployment: Create skeleton Gforge release package and release notes | 2012-06-04 → 2012-06-06 (+2d) | 2012-06-05 → 2012-06-07 (+2d) |  |  |  |  |  |
| 166 | Deployment: Point application to draft release notes | 2012-06-04 → 2012-06-06 (+2d) | 2012-06-07 → 2012-06-11 (+4d) |  |  |  |  |  |
| 167 | Bug Fixes - only Blocker and Critical | 2012-06-04 → 2012-06-06 (+2d) | 2012-06-13 → 2012-06-15 (+2d) |  |  |  |  |  |
| 168 | Documentation: Finish Draft User's Guide. | 2012-06-04 → 2012-06-06 (+2d) | 2012-06-07 → 2012-06-11 (+4d) |  |  |  |  |  |
| 169 | Documentation: Review Draft User's Guide. | 2012-06-08 → 2012-06-12 (+4d) | 2012-06-11 → 2012-06-13 (+2d) |  |  |  |  |  |
| 170 | Documentation: Finish Draft Installation Guide. | 2012-06-04 → 2012-06-06 (+2d) | 2012-06-07 → 2012-06-11 (+4d) |  |  |  |  |  |
| 171 | Documentation: Review Draft Installation Guide. | 2012-06-08 → 2012-06-12 (+4d) | 2012-06-11 → 2012-06-13 (+2d) |  |  |  |  |  |
| 172 | Deployment: Deploy RC2 to STAGE. | 2012-06-14 → 2012-06-18 (+4d) | 2012-06-15 → 2012-06-19 (+4d) |  |  |  |  |  |
| 173 | Deployment: Send Draft release notes to Juli to send to Communications Office | 2012-06-04 → 2012-06-06 (+2d) | 2012-06-04 → 2012-06-06 (+2d) |  |  |  |  |  |
| 174 | **Release Candidate 3** | 2012-06-18 → 2012-06-20 (+2d) | 2012-06-29 → 2012-07-03 (+4d) |  |  |  |  |  |
| 175 | STAGE testing of RC2 | 2012-06-18 → 2012-06-20 (+2d) | 2012-06-19 → 2012-06-21 (+2d) |  |  |  |  |  |
| 176 | Documentation: Finish final User's Guide. | 2012-06-18 → 2012-06-20 (+2d) | 2012-06-19 → 2012-06-21 (+2d) |  |  |  |  |  |
| 177 | Documentation: Review final User's Guide. | 2012-06-20 → 2012-06-22 (+2d) | 2012-06-20 → 2012-06-22 (+2d) |  |  |  |  |  |
| 178 | Documentation: Finish final Installation Guide. | 2012-06-18 → 2012-06-20 (+2d) | 2012-06-19 → 2012-06-21 (+2d) |  |  |  |  |  |
| 179 | Documentation: Review final Installation Guide. | 2012-06-20 → 2012-06-22 (+2d) | 2012-06-20 → 2012-06-22 (+2d) |  |  |  |  |  |
| 180 | Bug Fixes - only Blockers | 2012-06-18 → 2012-06-20 (+2d) | 2012-06-22 → 2012-06-26 (+4d) |  |  |  |  |  |
| 181 | Deployment: Deploy RC3 (GA) to STAGE. | 2012-06-25 → 2012-06-27 (+2d) | 2012-06-26 → 2012-06-28 (+2d) |  |  |  |  |  |
| 182 | Deployment: Run security app scan on RC3 (GA) | 2012-06-27 → 2012-06-29 (+2d) | 2012-06-28 → 2012-07-02 (+4d) |  |  |  |  |  |

| ID | Task | Start | Finish |
| --- | --- | --- | --- |
| 183 | STAGE testing of RC3 (GA) | 2012-06-27 → 2012-06-29 (+2d) | 2012-06-29 → 2012-07-03 (+4d) |
| 184 | Deployment: Create GA release artifacts and upload to Gforge. | 2012-06-18 → 2012-06-20 (+2d) | 2012-06-18 → 2012-06-20 (+2d) |
| 185 | Deployment: Support GA testing by API partners. | 2012-06-18 → 2012-06-20 (+2d) | 2012-06-19 → 2012-06-21 (+2d) |
| 186 | **Deployment** | 2012-07-02 → 2012-07-04 (+2d) | 2012-07-05 → 2012-07-09 (+4d) |
| 187 | Deployment: Deploy GA to PRODUCTION | 2012-07-02 → 2012-07-04 (+2d) | 2012-07-04 → 2012-07-06 (+2d) |
| 188 | Deployment: Update product landing page | 2012-07-02 → 2012-07-04 (+2d) | 2012-07-02 → 2012-07-04 (+2d) |
| 189 | Deployment: Juli announces the release to the community | 2012-07-05 → 2012-07-09 (+4d) | 2012-07-05 → 2012-07-09 (+4d) |
| 190 | RELEASE 2.5.0 | 2012-07-05 → 2012-07-09 (+4d) | 2012-07-05 → 2012-07-09 (+4d) |

## Version 38 (saved 2012-02-27)

Note of the change: Added NGS to project plan.

Last finish stays 2012-07-09.

Added:

| ID | Task | Duration | Start | Finish | Resources |
| --- | --- | --- | --- | --- | --- |
| 127 | Support for next gen sequencing development by Columbia | 5d | 2012-03-07 | 2012-03-13 | Rashmi |

## Version 39 (saved 2012-03-05)

Note of the change: Updated project plan.

Last finish stays 2012-07-09. Complete tasks 94 → 97.

Changed:

| ID | Task | Start | Finish | Complete | Total float |
| --- | --- | --- | --- | --- | --- |
| 1 | **CAARRAY 2.x** |  |  | 71% → 73% |  |
| 25 | **2.5.0** |  |  | 55% → 58% |  |
| 108 | **Iteration M24** | 2012-02-22 A |  | 0% → 63% |  |
| 109 | TRANSCEND: Single Sign-on: Prototype CAS architecture | 2012-02-22 A | 2012-03-01 A | 0% → 100% | 0d → none |
| 110 | ARRAY-1627 - Part 2 of Resumable Uploads - Resume | 2012-02-22 A |  | 0% → 25% | 0d → 3d |
| 111 | ARRAY-1806 - Ensure API works with storage engine SPI | 2012-02-29 A |  | 0% → 25% | 0d → 3.25d |
| 112 | ARRAY-1391 - Support API access by Java 1.6 clients | 2012-03-01 A |  | 0% → 25% | 0d → 3d |
| 113 | Estimate effort to upgrade to caGrid 1.4 or 1.5 (New) | 2012-03-02 A | 2012-03-05 A | 0% → 100% | 0d → none |
| 114 | TRANSCEND: Automatic Refresh: Design API and logging | 2012-03-02 A |  | 0% → 25% |  |
| 116 | Bug Fixes: ARRAY-2329,1609,1622,2129,2071 | 2012-03-06 A | 2012-03-06 A | 0% → 100% | 0d → none |
| 117 | Demo large imports | 2012-02-22 A |  | 0% → 25% |  |
| 118 | UAT of large imports by curators (Continued) | 2012-02-29 A |  | 0% → 80% | 91d → 1d |

## Version 40 (saved 2012-03-12)

Note of the change: Latest updates to project plan.

Last finish 2012-07-09 → 2012-07-16 (+7d). Complete tasks 97 → 104.

Added:

| ID | Task | Duration | Start | Finish | Resources |
| --- | --- | --- | --- | --- | --- |
| 115 | TRANSCEND: Single Sign-on: Demonstrate EJB CAS authentication in Prototype | 1d | 2012-02-22 A | 2012-02-22 A | Todd; Paul; Quy |
| 120 | ARRAY-1627 - Part 3 of Resumable Uploads | 4d | 2012-03-07 A | 2012-03-12 | KK |
| 127 | Configure STAGE tier with BDALite and Test (as part of ARRAY-1391) | 5d | 2012-03-07 A | 2012-03-13 | Rashmi; Systems; Quy |

Changed:

| ID | Task | Start | Finish | Duration | Complete | Total float | Predecessors | Other |
| --- | --- | --- | --- | --- | --- | --- | --- | --- |
| 1 | **CAARRAY 2.x** |  | 2012-07-09 → 2012-07-16 (+7d) | 241d → 246d | 73% → 74% |  |  |  |
| 25 | **2.5.0** |  | 2012-07-09 → 2012-07-16 (+7d) | 211d → 216d | 58% → 60% |  |  |  |
| 108 | **Iteration M24** |  | 2012-03-06 A |  | 63% → 100% | 0d → none |  |  |
| 110 | ARRAY-1627 - Part 2 of Resumable Uploads - Resume |  | 2012-02-28 A |  | 25% → 100% | 3d → none |  |  |
| 111 | ARRAY-1806 - Ensure API works with storage engine SPI |  | 2012-02-29 A |  | 25% → 100% | 3.25d → none |  |  |
| 112 | ARRAY-1391 - Support API access by Java 1.6 clients |  | 2012-03-01 A |  | 25% → 100% | 3d → none |  |  |
| 114 | TRANSCEND: Automatic Refresh: Design API and logging |  | 2012-03-05 A |  | 25% → 100% | 0d → none |  |  |
| 117 | Demo large imports |  | 2012-02-22 A |  | 25% → 100% | 9d → none |  |  |
| 118 | UAT of large imports by curators (Continued) |  | 2012-03-05 A |  | 80% → 100% | 1d → none |  |  |
| 119 | **Improved Uploads** | 2012-03-07 A | 2012-03-08 → 2012-03-14 (+6d) | 2d → 6d | 0% → 12% | 3d → 3.3d |  |  |
| 121 | ARRAY-2267 - Document any restrictions/assumptions for large data upload/import/download/export. | 2012-03-06 → 2012-03-07 (+1d) | 2012-03-06 → 2012-03-09 (+3d) | 1d → 3d |  | 0d → 6.3d | 114 → none | resources Todd; Paul; Quy → Paul |
| 122 | ARRAY-2269 - Document performance requirements for large data upload/import/download/export | 2012-03-07 A |  |  | 0% → 50% | 3d → 4d |  | resources Todd; Paul; Quy → Quy |
| 123 | Demo resumable uploads | 2012-03-07 → 2012-03-13 (+6d) | 2012-03-07 → 2012-03-13 (+6d) |  |  | 4d → 4.3d | none → 120 |  |
| 124 | UAT of resumable uploads by curators | 2012-03-07 → 2012-03-13 (+6d) | 2012-03-08 → 2012-03-14 (+6d) |  |  | 3d → 3.3d | none → 120 |  |
| 125 | **Maintenance** | 2012-03-07 A | 2012-03-13 → 2012-03-20 (+7d) | 5d → 10d | 0% → 23% |  |  |  |
| 128 | ARRAY-2313 - Support testing by API partners. | 2012-03-07 → 2012-03-14 (+7d) | 2012-03-13 → 2012-03-20 (+7d) |  |  |  | none → 127 |  |
| 130 | Support for next gen sequencing development by Columbia | 2012-03-07 A |  |  | 0% → 50% | 0d → 5d |  |  |
| 131 | **Permissions Model (TRANSCEND)** | 2012-03-14 A | 2012-03-20 → 2012-03-27 (+7d) | 5d → 10d | 0% → 5% |  |  |  |
| 132 | ARRAY-1938 - Allow sample search by arbitrary characteristics on Permissions page | 2012-03-14 A | 2012-03-20 → 2012-03-27 (+7d) |  | 0% → 10% | 0d → 0.5d |  |  |
| 133 | Demo of Permissions Model to UCSF/TRANSCEND team | 2012-03-14 → 2012-03-21 (+7d) | 2012-03-20 → 2012-03-27 (+7d) |  |  |  |  |  |
| 134 | **UPT Configurability** | 2012-03-21 → 2012-03-28 (+7d) | 2012-03-27 → 2012-04-03 (+7d) |  |  |  |  |  |
| 135 | ARRAY-2258 - Test new UPT configurability to disallow caArray user group creation within UPT (New) | 2012-03-21 → 2012-03-28 (+7d) | 2012-03-22 → 2012-03-29 (+7d) |  |  |  |  |  |
| 136 | ARRAY-2259 - Update installer to configure UPT to disallow user group creation for caArray within UPT (New) | 2012-03-23 → 2012-03-30 (+7d) | 2012-03-27 → 2012-04-03 (+7d) |  |  |  |  |  |
| 137 | **Automatic Refresh (TRANSCEND)** | 2012-03-21 → 2012-03-28 (+7d) | 2012-04-03 → 2012-04-10 (+7d) |  |  |  |  |  |
| 138 | ARRAY-2273/1932 - Implement API to return whether experiment was changed in time period | 2012-03-21 → 2012-03-28 (+7d) | 2012-03-27 → 2012-04-03 (+7d) |  |  |  |  |  |
| 139 | Integration testing of Automatic Refresh with caIntegrator | 2012-03-28 → 2012-04-04 (+7d) | 2012-04-02 → 2012-04-09 (+7d) |  |  |  |  |  |
| 140 | Demo of Automatic Refresh to UCSF/TRANSCEND team | 2012-04-03 → 2012-04-10 (+7d) | 2012-04-03 → 2012-04-10 (+7d) |  |  |  |  |  |
| 141 | **Single Sign-on (TRANSCEND)** | 2012-04-04 → 2012-04-11 (+7d) |  | 37d → 32d |  |  |  |  |
| 142 | ARRAY-1930 - Single sign-on between caArray and caIntegrator | 2012-04-04 → 2012-04-11 (+7d) | 2012-04-17 → 2012-04-24 (+7d) |  |  |  |  |  |
| 145 | **Audit Trail (TRANSCEND)** | 2012-04-18 → 2012-04-25 (+7d) | 2012-04-24 → 2012-05-01 (+7d) |  |  |  |  |  |
| 146 | ARRAY-1931 - Sample deletions and data imports | 2012-04-18 → 2012-04-25 (+7d) | 2012-04-20 → 2012-04-27 (+7d) |  |  |  |  |  |
| 147 | ARRAY-1933 - Log visibility to Data Owner | 2012-04-23 → 2012-04-30 (+7d) | 2012-04-24 → 2012-05-01 (+7d) |  |  |  |  |  |
| 148 | Demo of Audit Trail to UCSF/TRANSCEND team | 2012-04-18 → 2012-04-25 (+7d) | 2012-04-24 → 2012-05-01 (+7d) |  |  |  |  |  |
| 149 | **Maintenance** | 2012-04-25 → 2012-05-02 (+7d) | 2012-04-27 → 2012-05-04 (+7d) |  |  |  |  |  |
| 150 | ARRAY-1803 - Fix liquibase scripts to eliminate two-step installation process | 2012-04-25 → 2012-05-02 (+7d) | 2012-04-27 → 2012-05-04 (+7d) |  |  |  |  |  |
| 151 | Bug Fixes | 2012-04-25 → 2012-05-02 (+7d) | 2012-05-08 → 2012-05-15 (+7d) |  |  |  |  |  |
| 152 | **Beta 1** | 2012-05-09 → 2012-05-16 (+7d) | 2012-05-22 → 2012-05-29 (+7d) |  |  |  |  |  |
| 153 | Backup and replication for file system - NCI tiers and local installer documentation (ARRAY-1809) | 2012-05-09 → 2012-05-16 (+7d) | 2012-05-21 → 2012-05-28 (+7d) |  |  |  |  |  |
| 154 | Bug Fixes | 2012-05-09 → 2012-05-16 (+7d) | 2012-05-21 → 2012-05-28 (+7d) |  |  |  |  |  |
| 155 | Deployment: Deploy Beta 1 to STAGE. | 2012-05-22 → 2012-05-29 (+7d) | 2012-05-22 → 2012-05-29 (+7d) |  |  |  |  |  |
| 156 | **Release Candidate 1** | 2012-05-23 → 2012-05-30 (+7d) | 2012-06-05 → 2012-06-12 (+7d) |  |  |  |  |  |
| 157 | Deployment: Run security app scan on Beta 1. | 2012-05-23 → 2012-05-30 (+7d) | 2012-05-25 → 2012-06-01 (+7d) |  |  |  |  |  |
| 158 | STAGE Regression testing of Beta 1. | 2012-05-23 → 2012-05-30 (+7d) | 2012-05-29 → 2012-06-05 (+7d) |  |  |  |  |  |
| 159 | Installer testing of Beta 1. | 2012-05-30 → 2012-06-06 (+7d) | 2012-06-01 → 2012-06-08 (+7d) |  |  |  |  |  |
| 160 | Support Beta 1 testing by API partners. | 2012-05-23 → 2012-05-30 (+7d) | 2012-05-29 → 2012-06-05 (+7d) |  |  |  |  |  |
| 161 | Documentation: Send User's Guide changes to Jill. | 2012-05-23 → 2012-05-30 (+7d) | 2012-05-24 → 2012-05-31 (+7d) |  |  |  |  |  |
| 162 | ARRAY-2092 - Documentation: Send Installation Guide changes to Jill. | 2012-05-23 → 2012-05-30 (+7d) | 2012-05-28 → 2012-06-04 (+7d) |  |  |  |  |  |
| 163 | Bug Fixes | 2012-05-23 → 2012-05-30 (+7d) | 2012-06-04 → 2012-06-11 (+7d) |  |  |  |  |  |
| 164 | Deployment: Deploy RC1 to STAGE. | 2012-06-05 → 2012-06-12 (+7d) | 2012-06-05 → 2012-06-12 (+7d) |  |  |  |  |  |
| 165 | **Release Candidate 2** | 2012-06-06 → 2012-06-13 (+7d) | 2012-06-19 → 2012-06-26 (+7d) |  |  |  |  |  |
| 166 | Deployment: Run security app scan on RC1. | 2012-06-06 → 2012-06-13 (+7d) | 2012-06-08 → 2012-06-15 (+7d) |  |  |  |  |  |
| 167 | STAGE testing of RC1. | 2012-06-06 → 2012-06-13 (+7d) | 2012-06-08 → 2012-06-15 (+7d) |  |  |  |  |  |
| 168 | Support RC1 testing by API partners. | 2012-06-06 → 2012-06-13 (+7d) | 2012-06-08 → 2012-06-15 (+7d) |  |  |  |  |  |
| 169 | Deployment: Create skeleton Gforge release package and release notes | 2012-06-06 → 2012-06-13 (+7d) | 2012-06-07 → 2012-06-14 (+7d) |  |  |  |  |  |
| 170 | Deployment: Point application to draft release notes | 2012-06-06 → 2012-06-13 (+7d) | 2012-06-11 → 2012-06-18 (+7d) |  |  |  |  |  |
| 171 | Bug Fixes - only Blocker and Critical | 2012-06-06 → 2012-06-13 (+7d) | 2012-06-15 → 2012-06-22 (+7d) |  |  |  |  |  |
| 172 | Documentation: Finish Draft User's Guide. | 2012-06-06 → 2012-06-13 (+7d) | 2012-06-11 → 2012-06-18 (+7d) |  |  |  |  |  |
| 173 | Documentation: Review Draft User's Guide. | 2012-06-12 → 2012-06-19 (+7d) | 2012-06-13 → 2012-06-20 (+7d) |  |  |  |  |  |
| 174 | Documentation: Finish Draft Installation Guide. | 2012-06-06 → 2012-06-13 (+7d) | 2012-06-11 → 2012-06-18 (+7d) |  |  |  |  |  |
| 175 | Documentation: Review Draft Installation Guide. | 2012-06-12 → 2012-06-19 (+7d) | 2012-06-13 → 2012-06-20 (+7d) |  |  |  |  |  |
| 176 | Deployment: Deploy RC2 to STAGE. | 2012-06-18 → 2012-06-25 (+7d) | 2012-06-19 → 2012-06-26 (+7d) |  |  |  |  |  |
| 177 | Deployment: Send Draft release notes to Juli to send to Communications Office | 2012-06-06 → 2012-06-13 (+7d) | 2012-06-06 → 2012-06-13 (+7d) |  |  |  |  |  |
| 178 | **Release Candidate 3** | 2012-06-20 → 2012-06-27 (+7d) | 2012-07-03 → 2012-07-10 (+7d) |  |  |  |  |  |
| 179 | STAGE testing of RC2 | 2012-06-20 → 2012-06-27 (+7d) | 2012-06-21 → 2012-06-28 (+7d) |  |  |  |  |  |
| 180 | Documentation: Finish final User's Guide. | 2012-06-20 → 2012-06-27 (+7d) | 2012-06-21 → 2012-06-28 (+7d) |  |  |  |  |  |
| 181 | Documentation: Review final User's Guide. | 2012-06-22 → 2012-06-29 (+7d) | 2012-06-22 → 2012-06-29 (+7d) |  |  |  |  |  |
| 182 | Documentation: Finish final Installation Guide. | 2012-06-20 → 2012-06-27 (+7d) | 2012-06-21 → 2012-06-28 (+7d) |  |  |  |  |  |
| 183 | Documentation: Review final Installation Guide. | 2012-06-22 → 2012-06-29 (+7d) | 2012-06-22 → 2012-06-29 (+7d) |  |  |  |  |  |
| 184 | Bug Fixes - only Blockers | 2012-06-20 → 2012-06-27 (+7d) | 2012-06-26 → 2012-07-03 (+7d) |  |  |  |  |  |
| 185 | Deployment: Deploy RC3 (GA) to STAGE. | 2012-06-27 → 2012-07-04 (+7d) | 2012-06-28 → 2012-07-05 (+7d) |  |  |  |  |  |

| ID | Task | Start | Finish |
| --- | --- | --- | --- |
| 186 | Deployment: Run security app scan on RC3 (GA) | 2012-06-29 → 2012-07-06 (+7d) | 2012-07-02 → 2012-07-09 (+7d) |
| 187 | STAGE testing of RC3 (GA) | 2012-06-29 → 2012-07-06 (+7d) | 2012-07-03 → 2012-07-10 (+7d) |
| 188 | Deployment: Create GA release artifacts and upload to Gforge. | 2012-06-20 → 2012-06-27 (+7d) | 2012-06-20 → 2012-06-27 (+7d) |
| 189 | Deployment: Support GA testing by API partners. | 2012-06-20 → 2012-06-27 (+7d) | 2012-06-21 → 2012-06-28 (+7d) |
| 190 | **Deployment** | 2012-07-04 → 2012-07-11 (+7d) | 2012-07-09 → 2012-07-16 (+7d) |
| 191 | Deployment: Deploy GA to PRODUCTION | 2012-07-04 → 2012-07-11 (+7d) | 2012-07-06 → 2012-07-13 (+7d) |
| 192 | Deployment: Update product landing page | 2012-07-04 → 2012-07-11 (+7d) | 2012-07-04 → 2012-07-11 (+7d) |
| 193 | Deployment: Juli announces the release to the community | 2012-07-09 → 2012-07-16 (+7d) | 2012-07-09 → 2012-07-16 (+7d) |
| 194 | RELEASE 2.5.0 | 2012-07-09 → 2012-07-16 (+7d) | 2012-07-09 → 2012-07-16 (+7d) |

## Version 41 (saved 2012-03-20)

Note of the change: Latest changes.

Last finish stays 2012-07-16. Complete tasks 104 → 106.

Changed:

| ID | Task | Start | Finish | Complete | Total float |
| --- | --- | --- | --- | --- | --- |
| 1 | **CAARRAY 2.x** |  |  | 74% → 75% |  |
| 25 | **2.5.0** |  |  | 60% → 61% |  |
| 119 | **Improved Uploads** |  |  | 12% → 37% | 3.3d → 4d |
| 122 | ARRAY-2269 - Document performance requirements for large data upload/import/download/export |  |  | 50% → 75% | 4d → 8d |
| 123 | Demo resumable uploads | 2012-03-13 A | 2012-03-13 A | 0% → 100% | 4.3d → none |
| 124 | UAT of resumable uploads by curators | 2012-03-13 A |  | 0% → 75% | 3.3d → 4d |
| 125 | **Maintenance** |  |  | 23% → 34% |  |
| 127 | Configure STAGE tier with BDALite and Test (as part of ARRAY-1391) |  | 2012-03-13 A | 50% → 100% | 0d → none |
| 131 | **Permissions Model (TRANSCEND)** |  |  | 5% → 25% |  |
| 132 | ARRAY-1938 - Allow sample search by arbitrary characteristics on Permissions page |  |  | 10% → 50% |  |

## Version 42 (saved 2012-03-26)

Note of the change: Latest updates to project plan.

Last finish 2012-07-16 → 2012-07-17 (+1d). Complete tasks 106 → 108.

Added:

| ID | Task | Duration | Start | Finish | Predecessors | Resources |
| --- | --- | --- | --- | --- | --- | --- |
| 127 | Support for next gen sequencing development by Columbia (Ongoing) | 5d | 2012-03-07 A | 2012-03-23 | 126 | Rashmi |

Changed:

| ID | Task | Start | Finish | Duration | Complete | Total float | Predecessors | Other |
| --- | --- | --- | --- | --- | --- | --- | --- | --- |
| 1 | **CAARRAY 2.x** |  | 2012-07-16 → 2012-07-17 (+1d) | 246d → 247d | 75% → 73% |  |  |  |
| 25 | **2.5.0** |  | 2012-07-16 → 2012-07-17 (+1d) | 216d → 217d | 61% → 60% |  |  |  |
| 119 | **Improved Uploads** |  | 2012-03-14 → 2012-03-29 (+15d) | 6d → 17d | 37% → 86% | 4d → 76.5d |  |  |
| 120 | ARRAY-1627 - Part 3 of Resumable Uploads - Not feasible after investigation |  | 2012-03-12 → 2012-03-26 A (+14d) | 4d → 14d | 10% → 100% | 3.3d → none |  | was named ARRAY-1627 - Part 3 of Resumable Uploads; resources KK → KK; Winston |
| 121 | ARRAY-2267 - Document any restrictions/assumptions for large data upload/import/download/export. | 2012-03-07 → 2012-03-27 (+20d) | 2012-03-09 → 2012-03-29 (+20d) |  |  | 6.3d → 11d | none → 120 |  |
| 122 | ARRAY-2269 - Document performance requirements for large data upload/import/download/export |  | 2012-03-08 A |  | 75% → 100% | 8d → none |  |  |
| 124 | UAT of resumable uploads by curators |  | 2012-03-14 A |  | 75% → 100% | 4d → none |  |  |
| 125 | **Maintenance** |  | 2012-03-20 → 2012-04-04 (+15d) | 10d → 20.5d | 34% → 40% | 0d → 73d |  |  |
| 126 | Configure STAGE tier with BDALite and Test (as part of ARRAY-1391 and ARRAY-2419) |  | 2012-03-13 A → 2012-03-20 (+7d) | 5d → 10d | 100% → 75% | none → 72.7d |  | was named Configure STAGE tier with BDALite and Test (as part of ARRAY-1391); resources Rashmi; Systems; Quy → Rashmi; Systems; Quy; Paul |
| 128 | ARRAY-2313 - Support testing by API partners (Ongoing) | 2012-03-14 → 2012-03-26 (+12d) | 2012-03-20 → 2012-03-30 (+10d) |  |  | 0d → 75.5d | 126 → none | was named ARRAY-2313 - Support testing by API partners.; constraint none → start no earlier than 2012-03-26 |
| 129 | Bug Fixes (ARRAY-2414,2416) | 2012-03-07 A → 2012-03-26 (+19d) | 2012-03-13 → 2012-04-04 (+22d) |  | 50% → 0% | 5d → 73d |  | was named Support for next gen sequencing development by Columbia; constraint none → start no earlier than 2012-03-26; resources Rashmi → Adam |
| 130 | **Permissions Model (TRANSCEND)** | 2012-03-14 A → 2012-03-21 A (+7d) | 2012-03-27 → 2012-04-13 (+17d) | 10d → 18d | 25% → 40% | 0d → 65.5d | 119, 125 → 126 |  |
| 131 | ARRAY-1938 - Allow sample search by arbitrary characteristics on Permissions page | 2012-03-14 A → 2012-03-21 A (+7d) | 2012-03-27 → 2012-04-03 (+7d) |  | 50% → 80% | 0.5d → 45.5d |  | resources KK; Todd; Quy → Paul; Quy |
| 132 | Demo of Permissions Model to UCSF/TRANSCEND team | 2012-03-21 → 2012-04-09 (+19d) | 2012-03-27 → 2012-04-13 (+17d) |  |  | 0d → 65.5d |  | constraint none → start no earlier than 2012-04-09 |
| 133 | **Automatic Refresh (TRANSCEND)** | 2012-03-28 → 2012-03-27 (-1d) | 2012-04-10 → 2012-04-12 (+2d) | 10d → 13d |  |  | 130, 125, 119 → none |  |
| 134 | ARRAY-2273/1932 - Implement API to return whether experiment was changed in time period | 2012-03-28 → 2012-03-27 (-1d) | 2012-04-03 → 2012-04-04 (+1d) | 5d → 7d |  |  | none → 120 | resources Paul; Todd; Ye → Winston |
| 135 | Integration testing of Automatic Refresh with caIntegrator | 2012-04-04 → 2012-04-05 (+1d) | 2012-04-09 → 2012-04-11 (+2d) | 4d → 5d |  | 0d → 7.5d |  | resources Paul; KK; Todd; Quy; caIntegrator Team → Winston; Quy; caIntegrator Team |
| 136 | Demo of Automatic Refresh to UCSF/TRANSCEND team | 2012-04-10 → 2012-04-12 (+2d) | 2012-04-10 → 2012-04-12 (+2d) |  |  | 0d → 7.5d |  |  |
| 137 | **Single Sign-on (TRANSCEND)** | 2012-04-11 → 2012-04-03 (-8d) |  | 32d → 37.5d |  | 0d → 0.5d | 145, 133 → none |  |
| 138 | ARRAY-1930 - Single sign-on between caArray and caIntegrator | 2012-04-11 → 2012-04-03 (-8d) |  | 10d → 15d |  | 0d → 45.5d | none → 131 | resources Paul; KK; Todd; Quy → Paul; Quy |
| 141 | **Audit Trail (TRANSCEND)** | 2012-04-25 → 2012-04-05 (-20d) | 2012-05-01 → 2012-04-25 (-6d) | 5d → 15d |  |  | 133, 138 → none |  |
| 142 | ARRAY-1931 - Sample deletions and data imports | 2012-04-25 → 2012-04-05 (-20d) | 2012-04-27 → 2012-04-12 (-15d) | 3d → 6d |  |  | none → 134 | resources Paul; KK; Todd; Quy → Winston; Quy |
| 143 | ARRAY-1933 - Log visibility to Data Owner | 2012-04-30 → 2012-04-13 (-17d) | 2012-05-01 → 2012-04-18 (-13d) | 2d → 4d |  |  |  | resources Paul; KK; Todd; Quy → Winston; Quy |
| 144 | Demo of Audit Trail to UCSF/TRANSCEND team | 2012-04-25 → 2012-04-19 (-6d) | 2012-05-01 → 2012-04-25 (-6d) |  |  | 0d → 59d | none → 143 |  |
| 145 | **UPT Configurability** | 2012-03-28 → 2012-04-19 (+22d) | 2012-04-03 → 2012-04-27 (+24d) | 5d → 7d |  | 5d → 0d | 125, 119, 130 → none |  |
| 146 | ARRAY-2258 - Test new UPT configurability to disallow caArray user group creation within UPT (New) | 2012-03-28 → 2012-04-19 (+22d) | 2012-03-29 → 2012-04-20 (+22d) |  |  | 5d → 0d | none → 143 | resources UPT Team; Quy; KK → UPT Team; Quy; Winston |
| 147 | ARRAY-2259 - Update installer to configure UPT to disallow user group creation for caArray within UPT (New) | 2012-03-30 → 2012-04-23 (+24d) | 2012-04-03 → 2012-04-27 (+24d) | 3d → 5d |  | 5d → 0d |  | resources KK; Todd; Quy → Winston; Quy |
| 148 | **Maintenance** | 2012-05-02 → 2012-04-24 (-8d) |  | 3d → 8.5d |  | 51d → 0.5d | 141 → none |  |
| 149 | API (CQL) changes to account for file system storage (ARRAY-1729) | 2012-03-07 → 2012-04-24 (+48d) | 2012-03-08 → 2012-05-02 (+55d) | 2d → 6d |  | 4d → 0.5d | none → 138 | resources KK; Todd; Quy → Paul |
| 150 | QA Test Suite updates for 2.5.0: Move Test Cases to Quality Center | 2012-03-07 → 2012-04-30 (+54d) | 2012-03-13 → 2012-05-04 (+52d) |  |  | 4.3d → 52d | none → 147 |  |
| 151 | ARRAY-1803 - Fix liquibase scripts to eliminate two-step installation process | 2012-05-02 → 2012-04-30 (-2d) | 2012-05-04 → 2012-05-02 (-2d) |  |  | 51d → 0d | none → 147 | resources KK; Quy; Systems → Winston; Quy; Systems |
| 152 | Bug Fixes | 2012-05-02 → 2012-05-03 (+1d) | 2012-05-15 → 2012-05-16 (+1d) |  |  |  | 141 → 149, 151 |  |
| 153 | **Beta 1** | 2012-05-16 → 2012-05-17 (+1d) | 2012-05-29 → 2012-05-30 (+1d) |  |  |  |  |  |
| 154 | Backup and replication for file system - NCI tiers and local installer documentation (ARRAY-1809) | 2012-05-16 → 2012-05-17 (+1d) | 2012-05-28 → 2012-05-29 (+1d) |  |  |  |  |  |
| 155 | Bug Fixes | 2012-05-16 → 2012-05-17 (+1d) | 2012-05-28 → 2012-05-29 (+1d) |  |  |  |  |  |
| 156 | Deployment: Deploy Beta 1 to STAGE. | 2012-05-29 → 2012-05-30 (+1d) | 2012-05-29 → 2012-05-30 (+1d) |  |  |  |  |  |
| 157 | **Release Candidate 1** | 2012-05-30 → 2012-05-31 (+1d) | 2012-06-12 → 2012-06-13 (+1d) |  |  |  |  |  |
| 158 | Deployment: Run security app scan on Beta 1. | 2012-05-30 → 2012-05-31 (+1d) | 2012-06-01 → 2012-06-04 (+3d) |  |  |  |  |  |
| 159 | STAGE Regression testing of Beta 1. | 2012-05-30 → 2012-05-31 (+1d) | 2012-06-05 → 2012-06-06 (+1d) |  |  |  |  |  |
| 160 | Installer testing of Beta 1. | 2012-06-06 → 2012-06-07 (+1d) | 2012-06-08 → 2012-06-11 (+3d) |  |  |  |  |  |
| 161 | Support Beta 1 testing by API partners. | 2012-05-30 → 2012-05-31 (+1d) | 2012-06-05 → 2012-06-06 (+1d) |  |  |  |  |  |
| 162 | Documentation: Send User's Guide changes to Jill. | 2012-05-30 → 2012-05-31 (+1d) | 2012-05-31 → 2012-06-01 (+1d) |  |  |  |  |  |
| 163 | ARRAY-2092 - Documentation: Send Installation Guide changes to Jill. | 2012-05-30 → 2012-05-31 (+1d) | 2012-06-04 → 2012-06-05 (+1d) |  |  |  |  |  |
| 164 | Bug Fixes | 2012-05-30 → 2012-05-31 (+1d) | 2012-06-11 → 2012-06-12 (+1d) |  |  |  |  |  |
| 165 | Deployment: Deploy RC1 to STAGE. | 2012-06-12 → 2012-06-13 (+1d) | 2012-06-12 → 2012-06-13 (+1d) |  |  |  |  |  |
| 166 | **Release Candidate 2** | 2012-06-13 → 2012-06-14 (+1d) | 2012-06-26 → 2012-06-27 (+1d) |  |  |  |  |  |
| 167 | Deployment: Run security app scan on RC1. | 2012-06-13 → 2012-06-14 (+1d) | 2012-06-15 → 2012-06-18 (+3d) |  |  |  |  |  |
| 168 | STAGE testing of RC1. | 2012-06-13 → 2012-06-14 (+1d) | 2012-06-15 → 2012-06-18 (+3d) |  |  |  |  |  |
| 169 | Support RC1 testing by API partners. | 2012-06-13 → 2012-06-14 (+1d) | 2012-06-15 → 2012-06-18 (+3d) |  |  |  |  |  |
| 170 | Deployment: Create skeleton Gforge release package and release notes | 2012-06-13 → 2012-06-14 (+1d) | 2012-06-14 → 2012-06-15 (+1d) |  |  |  |  |  |
| 171 | Deployment: Point application to draft release notes | 2012-06-13 → 2012-06-14 (+1d) | 2012-06-18 → 2012-06-19 (+1d) |  |  |  |  |  |
| 172 | Bug Fixes - only Blocker and Critical | 2012-06-13 → 2012-06-14 (+1d) | 2012-06-22 → 2012-06-25 (+3d) |  |  |  |  |  |
| 173 | Documentation: Finish Draft User's Guide. | 2012-06-13 → 2012-06-14 (+1d) | 2012-06-18 → 2012-06-19 (+1d) |  |  |  |  |  |
| 174 | Documentation: Review Draft User's Guide. | 2012-06-19 → 2012-06-20 (+1d) | 2012-06-20 → 2012-06-21 (+1d) |  |  |  |  |  |
| 175 | Documentation: Finish Draft Installation Guide. | 2012-06-13 → 2012-06-14 (+1d) | 2012-06-18 → 2012-06-19 (+1d) |  |  |  |  |  |
| 176 | Documentation: Review Draft Installation Guide. | 2012-06-19 → 2012-06-20 (+1d) | 2012-06-20 → 2012-06-21 (+1d) |  |  |  |  |  |
| 177 | Deployment: Deploy RC2 to STAGE. | 2012-06-25 → 2012-06-26 (+1d) | 2012-06-26 → 2012-06-27 (+1d) |  |  |  |  |  |
| 178 | Deployment: Send Draft release notes to Juli to send to Communications Office | 2012-06-13 → 2012-06-14 (+1d) | 2012-06-13 → 2012-06-14 (+1d) |  |  |  |  |  |
| 179 | **Release Candidate 3** | 2012-06-27 → 2012-06-28 (+1d) | 2012-07-10 → 2012-07-11 (+1d) |  |  |  |  |  |
| 180 | STAGE testing of RC2 | 2012-06-27 → 2012-06-28 (+1d) | 2012-06-28 → 2012-06-29 (+1d) |  |  |  |  |  |
| 181 | Documentation: Finish final User's Guide. | 2012-06-27 → 2012-06-28 (+1d) | 2012-06-28 → 2012-06-29 (+1d) |  |  |  |  |  |
| 182 | Documentation: Review final User's Guide. | 2012-06-29 → 2012-07-02 (+3d) | 2012-06-29 → 2012-07-02 (+3d) |  |  |  |  |  |
| 183 | Documentation: Finish final Installation Guide. | 2012-06-27 → 2012-06-28 (+1d) | 2012-06-28 → 2012-06-29 (+1d) |  |  |  |  |  |
| 184 | Documentation: Review final Installation Guide. | 2012-06-29 → 2012-07-02 (+3d) | 2012-06-29 → 2012-07-02 (+3d) |  |  |  |  |  |
| 185 | Bug Fixes - only Blockers | 2012-06-27 → 2012-06-28 (+1d) | 2012-07-03 → 2012-07-04 (+1d) |  |  |  |  |  |
| 186 | Deployment: Deploy RC3 (GA) to STAGE. | 2012-07-04 → 2012-07-05 (+1d) | 2012-07-05 → 2012-07-06 (+1d) |  |  |  |  |  |
| 187 | Deployment: Run security app scan on RC3 (GA) | 2012-07-06 → 2012-07-09 (+3d) | 2012-07-09 → 2012-07-10 (+1d) |  |  |  |  |  |
| 188 | STAGE testing of RC3 (GA) | 2012-07-06 → 2012-07-09 (+3d) | 2012-07-10 → 2012-07-11 (+1d) |  |  |  |  |  |
| 189 | Deployment: Create GA release artifacts and upload to Gforge. | 2012-06-27 → 2012-06-28 (+1d) | 2012-06-27 → 2012-06-28 (+1d) |  |  |  |  |  |
| 190 | Deployment: Support GA testing by API partners. | 2012-06-27 → 2012-06-28 (+1d) | 2012-06-28 → 2012-06-29 (+1d) |  |  |  |  |  |

| ID | Task | Start | Finish |
| --- | --- | --- | --- |
| 191 | **Deployment** | 2012-07-11 → 2012-07-12 (+1d) | 2012-07-16 → 2012-07-17 (+1d) |
| 192 | Deployment: Deploy GA to PRODUCTION | 2012-07-11 → 2012-07-12 (+1d) | 2012-07-13 → 2012-07-16 (+3d) |
| 193 | Deployment: Update product landing page | 2012-07-11 → 2012-07-12 (+1d) | 2012-07-11 → 2012-07-12 (+1d) |
| 194 | Deployment: Juli announces the release to the community | 2012-07-16 → 2012-07-17 (+1d) | 2012-07-16 → 2012-07-17 (+1d) |
| 195 | RELEASE 2.5.0 | 2012-07-16 → 2012-07-17 (+1d) | 2012-07-16 → 2012-07-17 (+1d) |

## Version 43 (saved 2012-03-28)

Note of the change: Latest updates to the project plan based on resourcing changes and coordination with Shine.

Last finish 2012-07-17 → 2012-07-16 (-1d).

Added:

| ID | Task | Duration | Start | Finish | Predecessors | Resources |
| --- | --- | --- | --- | --- | --- | --- |
| 139 | Single Sign-on for caIntegrator | 10d | 2012-04-18 | 2012-05-01 | 138 | Paul; Quy; caIntegrator Team |
| 146 | **Maintenance** | 6d | 2012-05-02 | 2012-05-09 |  |  |

Changed:

| ID | Task | Start | Finish | Duration | Complete | Total float | Predecessors | Other |
| --- | --- | --- | --- | --- | --- | --- | --- | --- |
| 1 | **CAARRAY 2.x** |  | 2012-07-17 → 2012-07-16 (-1d) | 247d → 246d | 73% → 71% |  |  |  |
| 25 | **2.5.0** |  | 2012-07-17 → 2012-07-16 (-1d) | 217d → 216d | 60% → 57% |  |  |  |
| 119 | **Improved Uploads** |  | 2012-03-29 → 2012-04-03 (+5d) | 17d → 20d | 86% → 18% | 76.5d → 0d |  |  |
| 120 | ARRAY-1627 - Part 3 of Resumable Uploads (chunked upload/resume) | 2012-03-07 A → 2012-03-07 | 2012-03-26 A → 2012-04-03 (+8d) | 14d → 20d | 100% → 0% | none → 0d |  | was named ARRAY-1627 - Part 3 of Resumable Uploads - Not feasible after investigation |
| 121 | ARRAY-2267 - Document any restrictions/assumptions for large data upload/import/download/export. | 2012-03-27 → 2012-03-07 (-20d) | 2012-03-29 → 2012-03-09 (-20d) |  |  | 11d → 17d | 120 → none | resources Paul → Winston |
| 125 | **Maintenance** |  | 2012-04-04 → 2012-04-03 (-1d) | 20.5d → 20d | 40% → 53% | 73d → 74d |  |  |
| 126 | Configure STAGE tier with BDALite and Test (as part of ARRAY-1391 and ARRAY-2419) |  | 2012-03-20 → 2012-03-27 (+7d) | 10d → 15d | 75% → 80% | 72.7d → 46d |  |  |
| 127 | Support for next gen sequencing development by Columbia (Ongoing) |  | 2012-03-23 → 2012-03-13 A (-10d) |  | 50% → 100% | 81d → none | 126 → none | resources Rashmi → Rashmi; Columbia |
| 128 | ARRAY-2313 - Support testing by API partners (Ongoing) |  | 2012-03-30 → 2012-04-03 (+4d) | 5d → 7d |  | 75.5d → 74d |  |  |
| 129 | Bug Fixes (ARRAY-2414,2416) |  | 2012-04-04 → 2012-03-30 (-5d) |  |  | 73d → 76d |  | resources Adam → Adam; Paul |
| 130 | **Permissions Model (TRANSCEND)** |  |  |  |  | 65.5d → 66d | 126 → none |  |
| 131 | ARRAY-1938 - Allow sample search by arbitrary characteristics on Permissions page |  |  |  |  | 45.5d → 46.5d | none → 126 |  |
| 133 | **Automatic Refresh (TRANSCEND)** | 2012-03-27 → 2012-03-28 (+1d) | 2012-04-12 → 2012-04-18 (+6d) | 13d → 16d |  | 0d → 46d | none → 108 |  |
| 134 | ARRAY-2273/1932 - Implement API to return whether experiment was changed in time period | 2012-03-27 → 2012-03-28 (+1d) | 2012-04-04 → 2012-04-03 (-1d) | 7d → 5d |  | 0d → 46d | 120 → 126 | resources Winston → Paul |
| 135 | Integration testing of Automatic Refresh with caIntegrator | 2012-04-05 → 2012-04-11 (+6d) | 2012-04-11 → 2012-04-17 (+6d) |  |  | 7.5d → 63d | 134 → none | constraint none → start no earlier than 2012-04-11; resources Winston; Quy; caIntegrator Team → Paul; Quy; caIntegrator Team |
| 136 | Demo of Automatic Refresh to UCSF/TRANSCEND team | 2012-04-12 → 2012-04-18 (+6d) | 2012-04-12 → 2012-04-18 (+6d) |  |  | 7.5d → 63d |  |  |
| 137 | **Single Sign-on (TRANSCEND)** | 2012-04-03 → 2012-04-04 (+1d) | 2012-05-24 → 2012-05-11 (-13d) | 37.5d → 28d |  | 0.5d → 46d |  |  |
| 138 | ARRAY-1930 - Single sign-on between caArray and caIntegrator | 2012-04-03 → 2012-04-04 (+1d) | 2012-04-24 → 2012-04-17 (-7d) | 15d → 10d |  | 45.5d → 46d | 131 → 131, 134 |  |
| 140 | Integration testing of Single sign-on | 2012-05-15 → 2012-05-02 (-13d) | 2012-05-21 → 2012-05-08 (-13d) |  |  | 38d → 46d | 138 → 139 | constraint start no earlier than 2012-05-15 → none |
| 141 | Demo of Single Sign-on to UCSF/TRANSCEND team | 2012-05-22 → 2012-05-09 (-13d) | 2012-05-24 → 2012-05-11 (-13d) |  |  | 31d → 46d |  |  |
| 142 | **Audit Trail (TRANSCEND)** | 2012-04-05 → 2012-04-04 (-1d) | 2012-04-25 → 2012-04-24 (-1d) |  |  |  |  |  |
| 143 | ARRAY-1931 - Sample deletions and data imports | 2012-04-05 → 2012-04-04 (-1d) | 2012-04-12 → 2012-04-11 (-1d) |  |  |  | 134 → 120, 121 |  |
| 144 | ARRAY-1933 - Log visibility to Data Owner | 2012-04-13 → 2012-04-12 (-1d) | 2012-04-18 → 2012-04-17 (-1d) |  |  |  |  |  |
| 145 | Demo of Audit Trail to UCSF/TRANSCEND team | 2012-04-19 → 2012-04-18 (-1d) | 2012-04-25 → 2012-04-24 (-1d) |  |  |  |  |  |
| 147 | API (CQL) changes to account for file system storage (ARRAY-1729) | 2012-04-24 → 2012-05-02 (+8d) | 2012-05-02 → 2012-05-09 (+7d) |  |  | 0.5d → 48d | 138 → 139 |  |
| 148 | **UPT Configurability** | 2012-04-19 → 2012-04-18 (-1d) | 2012-04-27 → 2012-04-26 (-1d) |  |  |  |  |  |
| 149 | ARRAY-2258 - Test new UPT configurability to disallow caArray user group creation within UPT (New) | 2012-04-19 → 2012-04-18 (-1d) | 2012-04-20 → 2012-04-19 (-1d) |  |  |  |  |  |
| 150 | ARRAY-2259 - Update installer to configure UPT to disallow user group creation for caArray within UPT (New) | 2012-04-23 → 2012-04-20 (-3d) | 2012-04-27 → 2012-04-26 (-1d) |  |  |  |  |  |
| 151 | **Maintenance** | 2012-04-24 → 2012-04-27 (+3d) | 2012-05-04 → 2012-05-03 (-1d) | 8.5d → 5d |  | 0.5d → 0d |  |  |
| 152 | QA Test Suite updates for 2.5.0: Move Test Cases to Quality Center | 2012-04-30 → 2012-04-27 (-3d) | 2012-05-04 → 2012-05-03 (-1d) |  |  |  |  |  |
| 153 | ARRAY-1803 - Fix liquibase scripts to eliminate two-step installation process | 2012-04-30 → 2012-04-27 (-3d) | 2012-05-02 → 2012-05-01 (-1d) |  |  |  |  |  |
| 154 | Bug Fixes | 2012-05-03 → 2012-05-02 (-1d) | 2012-05-16 → 2012-05-15 (-1d) |  |  |  | 147, 153 → 153 | resources Paul; Quy; KK; Todd → Paul; Quy; Winston |
| 155 | **Beta 1** | 2012-05-17 → 2012-05-16 (-1d) | 2012-05-30 → 2012-05-29 (-1d) |  |  |  |  |  |
| 156 | Backup and replication for file system - NCI tiers and local installer documentation (ARRAY-1809) | 2012-05-17 → 2012-05-16 (-1d) | 2012-05-29 → 2012-05-28 (-1d) |  |  |  |  |  |
| 157 | Bug Fixes | 2012-05-17 → 2012-05-16 (-1d) | 2012-05-29 → 2012-05-28 (-1d) |  |  |  |  |  |
| 158 | Deployment: Deploy Beta 1 to STAGE. | 2012-05-30 → 2012-05-29 (-1d) | 2012-05-30 → 2012-05-29 (-1d) |  |  |  |  |  |
| 159 | **Release Candidate 1** | 2012-05-31 → 2012-05-30 (-1d) | 2012-06-13 → 2012-06-12 (-1d) |  |  |  |  |  |
| 160 | Deployment: Run security app scan on Beta 1. | 2012-05-31 → 2012-05-30 (-1d) | 2012-06-04 → 2012-06-01 (-3d) |  |  |  |  |  |
| 161 | STAGE Regression testing of Beta 1. | 2012-05-31 → 2012-05-30 (-1d) | 2012-06-06 → 2012-06-05 (-1d) |  |  |  |  |  |
| 162 | Installer testing of Beta 1. | 2012-06-07 → 2012-06-06 (-1d) | 2012-06-11 → 2012-06-08 (-3d) |  |  |  |  |  |
| 163 | Support Beta 1 testing by API partners. | 2012-05-31 → 2012-05-30 (-1d) | 2012-06-06 → 2012-06-05 (-1d) |  |  |  |  |  |
| 164 | Documentation: Send User's Guide changes to Jill. | 2012-05-31 → 2012-05-30 (-1d) | 2012-06-01 → 2012-05-31 (-1d) |  |  |  |  |  |
| 165 | ARRAY-2092 - Documentation: Send Installation Guide changes to Jill. | 2012-05-31 → 2012-05-30 (-1d) | 2012-06-05 → 2012-06-04 (-1d) |  |  |  |  |  |
| 166 | Bug Fixes | 2012-05-31 → 2012-05-30 (-1d) | 2012-06-12 → 2012-06-11 (-1d) |  |  |  |  |  |
| 167 | Deployment: Deploy RC1 to STAGE. | 2012-06-13 → 2012-06-12 (-1d) | 2012-06-13 → 2012-06-12 (-1d) |  |  |  |  |  |
| 168 | **Release Candidate 2** | 2012-06-14 → 2012-06-13 (-1d) | 2012-06-27 → 2012-06-26 (-1d) |  |  |  |  |  |
| 169 | Deployment: Run security app scan on RC1. | 2012-06-14 → 2012-06-13 (-1d) | 2012-06-18 → 2012-06-15 (-3d) |  |  |  |  |  |
| 170 | STAGE testing of RC1. | 2012-06-14 → 2012-06-13 (-1d) | 2012-06-18 → 2012-06-15 (-3d) |  |  |  |  |  |
| 171 | Support RC1 testing by API partners. | 2012-06-14 → 2012-06-13 (-1d) | 2012-06-18 → 2012-06-15 (-3d) |  |  |  |  |  |
| 172 | Deployment: Create skeleton Gforge release package and release notes | 2012-06-14 → 2012-06-13 (-1d) | 2012-06-15 → 2012-06-14 (-1d) |  |  |  |  |  |
| 173 | Deployment: Point application to draft release notes | 2012-06-14 → 2012-06-13 (-1d) | 2012-06-19 → 2012-06-18 (-1d) |  |  |  |  |  |
| 174 | Bug Fixes - only Blocker and Critical | 2012-06-14 → 2012-06-13 (-1d) | 2012-06-25 → 2012-06-22 (-3d) |  |  |  |  |  |
| 175 | Documentation: Finish Draft User's Guide. | 2012-06-14 → 2012-06-13 (-1d) | 2012-06-19 → 2012-06-18 (-1d) |  |  |  |  |  |
| 176 | Documentation: Review Draft User's Guide. | 2012-06-20 → 2012-06-19 (-1d) | 2012-06-21 → 2012-06-20 (-1d) |  |  |  |  |  |
| 177 | Documentation: Finish Draft Installation Guide. | 2012-06-14 → 2012-06-13 (-1d) | 2012-06-19 → 2012-06-18 (-1d) |  |  |  |  |  |
| 178 | Documentation: Review Draft Installation Guide. | 2012-06-20 → 2012-06-19 (-1d) | 2012-06-21 → 2012-06-20 (-1d) |  |  |  |  |  |
| 179 | Deployment: Deploy RC2 to STAGE. | 2012-06-26 → 2012-06-25 (-1d) | 2012-06-27 → 2012-06-26 (-1d) |  |  |  |  |  |
| 180 | Deployment: Send Draft release notes to Juli to send to Communications Office | 2012-06-14 → 2012-06-13 (-1d) | 2012-06-14 → 2012-06-13 (-1d) |  |  |  |  |  |
| 181 | **Release Candidate 3** | 2012-06-28 → 2012-06-27 (-1d) | 2012-07-11 → 2012-07-10 (-1d) |  |  |  |  |  |
| 182 | STAGE testing of RC2 | 2012-06-28 → 2012-06-27 (-1d) | 2012-06-29 → 2012-06-28 (-1d) |  |  |  |  |  |
| 183 | Documentation: Finish final User's Guide. | 2012-06-28 → 2012-06-27 (-1d) | 2012-06-29 → 2012-06-28 (-1d) |  |  |  |  |  |
| 184 | Documentation: Review final User's Guide. | 2012-07-02 → 2012-06-29 (-3d) | 2012-07-02 → 2012-06-29 (-3d) |  |  |  |  |  |
| 185 | Documentation: Finish final Installation Guide. | 2012-06-28 → 2012-06-27 (-1d) | 2012-06-29 → 2012-06-28 (-1d) |  |  |  |  |  |
| 186 | Documentation: Review final Installation Guide. | 2012-07-02 → 2012-06-29 (-3d) | 2012-07-02 → 2012-06-29 (-3d) |  |  |  |  |  |
| 187 | Bug Fixes - only Blockers | 2012-06-28 → 2012-06-27 (-1d) | 2012-07-04 → 2012-07-03 (-1d) |  |  |  |  |  |
| 188 | Deployment: Deploy RC3 (GA) to STAGE. | 2012-07-05 → 2012-07-04 (-1d) | 2012-07-06 → 2012-07-05 (-1d) |  |  |  |  |  |
| 189 | Deployment: Run security app scan on RC3 (GA) | 2012-07-09 → 2012-07-06 (-3d) | 2012-07-10 → 2012-07-09 (-1d) |  |  |  |  |  |
| 190 | STAGE testing of RC3 (GA) | 2012-07-09 → 2012-07-06 (-3d) | 2012-07-11 → 2012-07-10 (-1d) |  |  |  |  |  |
| 191 | Deployment: Create GA release artifacts and upload to Gforge. | 2012-06-28 → 2012-06-27 (-1d) | 2012-06-28 → 2012-06-27 (-1d) |  |  |  |  |  |
| 192 | Deployment: Support GA testing by API partners. | 2012-06-28 → 2012-06-27 (-1d) | 2012-06-29 → 2012-06-28 (-1d) |  |  |  |  |  |

| ID | Task | Start | Finish |
| --- | --- | --- | --- |
| 193 | **Deployment** | 2012-07-12 → 2012-07-11 (-1d) | 2012-07-17 → 2012-07-16 (-1d) |
| 194 | Deployment: Deploy GA to PRODUCTION | 2012-07-12 → 2012-07-11 (-1d) | 2012-07-16 → 2012-07-13 (-3d) |
| 195 | Deployment: Update product landing page | 2012-07-12 → 2012-07-11 (-1d) | 2012-07-12 → 2012-07-11 (-1d) |
| 196 | Deployment: Juli announces the release to the community | 2012-07-17 → 2012-07-16 (-1d) | 2012-07-17 → 2012-07-16 (-1d) |
| 197 | RELEASE 2.5.0 | 2012-07-17 → 2012-07-16 (-1d) | 2012-07-17 → 2012-07-16 (-1d) |

## Version 44 (saved 2012-04-09)

Note of the change: Updated project plan.

Last finish stays 2012-07-16. Complete tasks 108 → 112.

Added:

| ID | Task | Duration | Start | Finish | Constraint | Resources |
| --- | --- | --- | --- | --- | --- | --- |
| 130 | Bug Fix for Permissions issue in production (ARRAY-2435) | 5d | 2012-04-06 A | 2012-04-12 | start no earlier than 2012-04-06 | Paul; Quy |

Changed:

| ID | Task | Start | Finish | Duration | Complete | Total float | Other |
| --- | --- | --- | --- | --- | --- | --- | --- |
| 1 | **CAARRAY 2.x** |  |  |  | 71% → 74% |  |  |
| 25 | **2.5.0** |  |  |  | 57% → 62% |  |  |
| 119 | **Improved Uploads** |  | 2012-04-03 A |  | 18% → 100% | 0d → none |  |
| 120 | ARRAY-1627 - Part 3 of Resumable Uploads (chunked upload/resume) | 2012-03-07 A | 2012-04-03 A |  | 0% → 100% | 0d → none |  |
| 121 | ARRAY-2267 - Document any restrictions/assumptions for large data upload/import/download/export. | 2012-03-07 A | 2012-03-09 A |  | 0% → 100% | 17d → none |  |
| 125 | **Maintenance** |  | 2012-04-03 → 2012-04-12 (+9d) | 20d → 27d | 53% → 64% | 74d → 67d |  |
| 126 | Configure STAGE tier with BDALite and Test (as part of ARRAY-1391 and ARRAY-2419) |  | 2012-03-27 A |  | 80% → 100% | 46d → none |  |
| 129 | Bug Fixes (ARRAY-2414,2416) | 2012-03-26 A |  |  | 0% → 50% |  | resources Adam; Paul → Adam; Winston |
| 131 | **Permissions Model (TRANSCEND)** |  |  |  | 40% → 50% |  |  |
| 132 | ARRAY-1938 - Allow sample search by arbitrary characteristics on Permissions page |  | 2012-04-03 A |  | 80% → 100% | 46.5d → none |  |
| 134 | **Automatic Refresh (TRANSCEND)** | 2012-03-28 A |  |  | 0% → 11% | 46d → 63d |  |
| 135 | ARRAY-2273/1932 - Implement API to return whether experiment was changed in time period | 2012-03-28 A |  |  | 0% → 25% | 46d → 48d |  |
| 138 | **Single Sign-on (TRANSCEND)** |  | 2012-05-11 → 2012-05-15 (+4d) | 28d → 30d |  | 46d → 44d |  |
| 139 | ARRAY-1930 - Single sign-on between caArray and caIntegrator |  | 2012-04-17 → 2012-04-19 (+2d) |  |  | 46d → 44d | resources Paul; Quy → Winston; Adam |
| 140 | Single Sign-on for caIntegrator | 2012-04-18 → 2012-04-20 (+2d) | 2012-05-01 → 2012-05-03 (+2d) |  |  | 46d → 44d |  |
| 141 | Integration testing of Single sign-on | 2012-05-02 → 2012-05-04 (+2d) | 2012-05-08 → 2012-05-10 (+2d) |  |  | 46d → 44d |  |
| 142 | Demo of Single Sign-on to UCSF/TRANSCEND team | 2012-05-09 → 2012-05-11 (+2d) | 2012-05-11 → 2012-05-15 (+4d) |  |  | 46d → 44d |  |
| 147 | **Maintenance** | 2012-05-02 → 2012-05-04 (+2d) | 2012-05-09 → 2012-05-11 (+2d) |  |  | 48d → 46d |  |
| 148 | API (CQL) changes to account for file system storage (ARRAY-1729) | 2012-05-02 → 2012-05-04 (+2d) | 2012-05-09 → 2012-05-11 (+2d) |  |  | 48d → 46d |  |

## Version 45 (saved 2012-04-16)

Note of the change: Updated project plan.

Last finish 2012-07-16 → 2012-07-17 (+1d). Complete tasks 112 → 115.

Added:

| ID | Task | Duration | Start | Finish | Predecessors | Constraint | Resources |
| --- | --- | --- | --- | --- | --- | --- | --- |
| 128 | Security appscan of STAGE and firewall exception | 5d | 2012-04-09 A | 2012-04-13 |  | start no earlier than 2012-04-09 | Systems |
| 135 | UAT of Permissions Model by UCSF | 5d | 2012-04-19 | 2012-04-25 | 134, 128 |  | UCSF |
| 140 | UAT of Automatic Refresh by UCSF | 5d | 2012-04-24 | 2012-04-30 | 139 |  | UCSF |
| 146 | UAT of Single Sign-on by UCSF | 5d | 2012-05-16 | 2012-05-22 | 145 |  | UCSF |
| 151 | UAT of Audit Trail by UCSF | 5d | 2012-05-07 | 2012-05-11 | 150 |  | UCSF |
| 153 | caGrid v1.4 upgrade | 10d | 2012-04-09 A | 2012-04-20 |  | start no earlier than 2012-04-09 | Todd |

Changed:

| ID | Task | Start | Finish | Duration | Complete | Total float | Predecessors | Other |
| --- | --- | --- | --- | --- | --- | --- | --- | --- |
| 1 | **CAARRAY 2.x** |  | 2012-07-16 → 2012-07-17 (+1d) | 246d → 247d |  |  |  |  |
| 25 | **2.5.0** |  | 2012-07-16 → 2012-07-17 (+1d) | 216d → 217d | 62% → 63% |  |  |  |
| 125 | **Maintenance** |  | 2012-04-12 → 2012-04-27 (+15d) | 27d → 38d | 64% → 68% | 67d → 66d |  |  |
| 129 | ARRAY-2313 - Support testing by API partners (Ongoing) | 2012-03-26 → 2012-04-09 A (+14d) | 2012-04-03 → 2012-04-27 (+24d) | 7d → 15d | 0% → 10% | 74d → 66d |  | constraint start no earlier than 2012-03-26 → start no earlier than 2012-04-09 |
| 130 | Bug Fixes (ARRAY-2414,2416) |  | 2012-03-30 A |  | 50% → 100% | 76d → none |  |  |
| 131 | Bug Fix for Permissions issue in production (ARRAY-2435) |  | 2012-04-12 A |  | 20% → 100% | 67d → none |  |  |
| 132 | **Permissions Model (TRANSCEND)** |  | 2012-04-13 → 2012-04-25 (+12d) | 18d → 26d | 50% → 45% | 66d → 68d |  |  |
| 134 | Demo of Permissions Model to UCSF/TRANSCEND team | 2012-04-09 → 2012-04-18 (+9d) | 2012-04-13 → 2012-04-18 (+5d) | 5d → 1d |  | 66d → 68d |  | constraint start no earlier than 2012-04-09 → start no earlier than 2012-04-18 |
| 136 | **Automatic Refresh (TRANSCEND)** |  | 2012-04-18 → 2012-04-30 (+12d) | 16d → 24d | 11% → 31% | 63d → 65d |  |  |
| 137 | ARRAY-2273/1932 - Implement API to return whether experiment was changed in time period |  | 2012-04-03 A |  | 25% → 100% | 48d → none |  | resources Paul → Winston |
| 138 | Integration testing of Automatic Refresh with caIntegrator | 2012-04-11 → 2012-04-16 (+5d) | 2012-04-17 → 2012-04-20 (+3d) |  |  | 63d → 65d |  | constraint start no earlier than 2012-04-11 → start no earlier than 2012-04-16; resources Paul; Quy; caIntegrator Team → Winston; Quy; caIntegrator Team |
| 139 | Demo of Automatic Refresh to UCSF/TRANSCEND team | 2012-04-18 → 2012-04-23 (+5d) | 2012-04-18 → 2012-04-23 (+5d) |  |  | 63d → 60d |  |  |
| 141 | **Single Sign-on (TRANSCEND)** | 2012-04-04 A | 2012-05-15 → 2012-05-22 (+7d) | 30d → 35d | 0% → 24% | 44d → 39d |  |  |
| 142 | ARRAY-1930 - Single sign-on between caArray and caIntegrator | 2012-04-04 A |  |  | 0% → 80% | 44d → 39d |  |  |
| 143 | Single Sign-on for caIntegrator |  |  |  |  | 44d → 39d |  | resources Paul; Quy; caIntegrator Team → Adam; caIntegrator Team |
| 147 | **Audit Trail (TRANSCEND)** | 2012-04-04 → 2012-04-18 (+14d) | 2012-04-24 → 2012-05-11 (+17d) | 15d → 18d |  |  |  |  |
| 148 | ARRAY-1931 - Sample deletions and data imports | 2012-04-04 → 2012-04-18 (+14d) | 2012-04-11 → 2012-04-24 (+13d) | 6d → 5d |  |  | 120, 121 → none | constraint none → start no earlier than 2012-04-18 |
| 149 | ARRAY-1933 - Log visibility to Data Owner | 2012-04-12 → 2012-04-25 (+13d) | 2012-04-17 → 2012-04-27 (+10d) | 4d → 3d |  |  |  |  |
| 150 | Demo of Audit Trail to UCSF/TRANSCEND team | 2012-04-18 → 2012-04-30 (+12d) | 2012-04-24 → 2012-05-04 (+10d) |  |  | 59d → 47d |  |  |
| 152 | **Maintenance** | 2012-05-04 → 2012-04-09 A (-25d) |  | 6d → 25d | 0% → 19% | 46d → 56d |  |  |
| 156 | ARRAY-2258 - Test new UPT configurability to disallow caArray user group creation within UPT (New) |  |  |  |  | 0d → 1d | 149 → none | constraint none → start no earlier than 2012-04-18; resources UPT Team; Quy; Winston → UPT Team; Quy; Paul |
| 157 | ARRAY-2259 - Update installer to configure UPT to disallow user group creation for caArray within UPT (New) |  |  |  |  | 0d → 1d |  | resources Winston; Quy → Paul; Quy |
| 158 | **Maintenance** | 2012-04-27 → 2012-04-30 (+3d) | 2012-05-03 → 2012-05-04 (+1d) |  |  |  |  |  |
| 159 | QA Test Suite updates for 2.5.0: Move Test Cases to Quality Center | 2012-04-27 → 2012-04-30 (+3d) | 2012-05-03 → 2012-05-04 (+1d) |  |  |  | 157 → 157, 149 |  |
| 160 | ARRAY-1803 - Fix liquibase scripts to eliminate two-step installation process | 2012-04-27 → 2012-04-30 (+3d) | 2012-05-01 → 2012-05-02 (+1d) |  |  |  | 157 → 157, 149 |  |
| 161 | Bug Fixes | 2012-05-02 → 2012-05-03 (+1d) | 2012-05-15 → 2012-05-16 (+1d) |  |  |  |  |  |
| 162 | **Beta 1** | 2012-05-16 → 2012-05-17 (+1d) | 2012-05-29 → 2012-05-30 (+1d) |  |  |  |  |  |
| 163 | Backup and replication for file system - NCI tiers and local installer documentation (ARRAY-1809) | 2012-05-16 → 2012-05-17 (+1d) | 2012-05-28 → 2012-05-29 (+1d) |  |  |  |  |  |
| 164 | Bug Fixes | 2012-05-16 → 2012-05-17 (+1d) | 2012-05-28 → 2012-05-29 (+1d) |  |  |  |  |  |
| 165 | Deployment: Deploy Beta 1 to STAGE. | 2012-05-29 → 2012-05-30 (+1d) | 2012-05-29 → 2012-05-30 (+1d) |  |  |  |  |  |
| 166 | **Release Candidate 1** | 2012-05-30 → 2012-05-31 (+1d) | 2012-06-12 → 2012-06-13 (+1d) |  |  |  |  |  |
| 167 | Deployment: Run security app scan on Beta 1. | 2012-05-30 → 2012-05-31 (+1d) | 2012-06-01 → 2012-06-04 (+3d) |  |  |  |  |  |
| 168 | STAGE Regression testing of Beta 1. | 2012-05-30 → 2012-05-31 (+1d) | 2012-06-05 → 2012-06-06 (+1d) |  |  |  |  |  |
| 169 | Installer testing of Beta 1. | 2012-06-06 → 2012-06-07 (+1d) | 2012-06-08 → 2012-06-11 (+3d) |  |  |  |  |  |
| 170 | Support Beta 1 testing by API partners. | 2012-05-30 → 2012-05-31 (+1d) | 2012-06-05 → 2012-06-06 (+1d) |  |  |  |  |  |
| 171 | Documentation: Send User's Guide changes to Jill. | 2012-05-30 → 2012-05-31 (+1d) | 2012-05-31 → 2012-06-01 (+1d) |  |  |  |  |  |
| 172 | ARRAY-2092 - Documentation: Send Installation Guide changes to Jill. | 2012-05-30 → 2012-05-31 (+1d) | 2012-06-04 → 2012-06-05 (+1d) |  |  |  |  |  |
| 173 | Bug Fixes | 2012-05-30 → 2012-05-31 (+1d) | 2012-06-11 → 2012-06-12 (+1d) |  |  |  |  |  |
| 174 | Deployment: Deploy RC1 to STAGE. | 2012-06-12 → 2012-06-13 (+1d) | 2012-06-12 → 2012-06-13 (+1d) |  |  |  |  |  |
| 175 | **Release Candidate 2** | 2012-06-13 → 2012-06-14 (+1d) | 2012-06-26 → 2012-06-27 (+1d) |  |  |  |  |  |
| 176 | Deployment: Run security app scan on RC1. | 2012-06-13 → 2012-06-14 (+1d) | 2012-06-15 → 2012-06-18 (+3d) |  |  |  |  |  |
| 177 | STAGE testing of RC1. | 2012-06-13 → 2012-06-14 (+1d) | 2012-06-15 → 2012-06-18 (+3d) |  |  |  |  |  |
| 178 | Support RC1 testing by API partners. | 2012-06-13 → 2012-06-14 (+1d) | 2012-06-15 → 2012-06-18 (+3d) |  |  |  |  |  |
| 179 | Deployment: Create skeleton Gforge release package and release notes | 2012-06-13 → 2012-06-14 (+1d) | 2012-06-14 → 2012-06-15 (+1d) |  |  |  |  |  |
| 180 | Deployment: Point application to draft release notes | 2012-06-13 → 2012-06-14 (+1d) | 2012-06-18 → 2012-06-19 (+1d) |  |  |  |  |  |
| 181 | Bug Fixes - only Blocker and Critical | 2012-06-13 → 2012-06-14 (+1d) | 2012-06-22 → 2012-06-25 (+3d) |  |  |  |  |  |
| 182 | Documentation: Finish Draft User's Guide. | 2012-06-13 → 2012-06-14 (+1d) | 2012-06-18 → 2012-06-19 (+1d) |  |  |  |  |  |
| 183 | Documentation: Review Draft User's Guide. | 2012-06-19 → 2012-06-20 (+1d) | 2012-06-20 → 2012-06-21 (+1d) |  |  |  |  |  |
| 184 | Documentation: Finish Draft Installation Guide. | 2012-06-13 → 2012-06-14 (+1d) | 2012-06-18 → 2012-06-19 (+1d) |  |  |  |  |  |
| 185 | Documentation: Review Draft Installation Guide. | 2012-06-19 → 2012-06-20 (+1d) | 2012-06-20 → 2012-06-21 (+1d) |  |  |  |  |  |
| 186 | Deployment: Deploy RC2 to STAGE. | 2012-06-25 → 2012-06-26 (+1d) | 2012-06-26 → 2012-06-27 (+1d) |  |  |  |  |  |
| 187 | Deployment: Send Draft release notes to Juli to send to Communications Office | 2012-06-13 → 2012-06-14 (+1d) | 2012-06-13 → 2012-06-14 (+1d) |  |  |  |  |  |
| 188 | **Release Candidate 3** | 2012-06-27 → 2012-06-28 (+1d) | 2012-07-10 → 2012-07-11 (+1d) |  |  |  |  |  |
| 189 | STAGE testing of RC2 | 2012-06-27 → 2012-06-28 (+1d) | 2012-06-28 → 2012-06-29 (+1d) |  |  |  |  |  |
| 190 | Documentation: Finish final User's Guide. | 2012-06-27 → 2012-06-28 (+1d) | 2012-06-28 → 2012-06-29 (+1d) |  |  |  |  |  |
| 191 | Documentation: Review final User's Guide. | 2012-06-29 → 2012-07-02 (+3d) | 2012-06-29 → 2012-07-02 (+3d) |  |  |  |  |  |
| 192 | Documentation: Finish final Installation Guide. | 2012-06-27 → 2012-06-28 (+1d) | 2012-06-28 → 2012-06-29 (+1d) |  |  |  |  |  |
| 193 | Documentation: Review final Installation Guide. | 2012-06-29 → 2012-07-02 (+3d) | 2012-06-29 → 2012-07-02 (+3d) |  |  |  |  |  |
| 194 | Bug Fixes - only Blockers | 2012-06-27 → 2012-06-28 (+1d) | 2012-07-03 → 2012-07-04 (+1d) |  |  |  |  |  |
| 195 | Deployment: Deploy RC3 (GA) to STAGE. | 2012-07-04 → 2012-07-05 (+1d) | 2012-07-05 → 2012-07-06 (+1d) |  |  |  |  |  |
| 196 | Deployment: Run security app scan on RC3 (GA) | 2012-07-06 → 2012-07-09 (+3d) | 2012-07-09 → 2012-07-10 (+1d) |  |  |  |  |  |
| 197 | STAGE testing of RC3 (GA) | 2012-07-06 → 2012-07-09 (+3d) | 2012-07-10 → 2012-07-11 (+1d) |  |  |  |  |  |
| 198 | Deployment: Create GA release artifacts and upload to Gforge. | 2012-06-27 → 2012-06-28 (+1d) | 2012-06-27 → 2012-06-28 (+1d) |  |  |  |  |  |
| 199 | Deployment: Support GA testing by API partners. | 2012-06-27 → 2012-06-28 (+1d) | 2012-06-28 → 2012-06-29 (+1d) |  |  |  |  |  |
| 200 | **Deployment** | 2012-07-11 → 2012-07-12 (+1d) | 2012-07-16 → 2012-07-17 (+1d) |  |  |  |  |  |
| 201 | Deployment: Deploy GA to PRODUCTION | 2012-07-11 → 2012-07-12 (+1d) | 2012-07-13 → 2012-07-16 (+3d) |  |  |  |  |  |
| 202 | Deployment: Update product landing page | 2012-07-11 → 2012-07-12 (+1d) | 2012-07-11 → 2012-07-12 (+1d) |  |  |  |  |  |
| 203 | Deployment: Juli announces the release to the community | 2012-07-16 → 2012-07-17 (+1d) | 2012-07-16 → 2012-07-17 (+1d) |  |  |  |  |  |
| 204 | RELEASE 2.5.0 | 2012-07-16 → 2012-07-17 (+1d) | 2012-07-16 → 2012-07-17 (+1d) |  |  |  |  |  |

## Version 46 (saved 2012-04-17)

Note of the change: Added TRANSCEND UAT and appscan requirements.

Last finish stays 2012-07-17. Complete tasks 115 → 116.

Added:

| ID | Task | Duration | Start | Finish | Predecessors | Constraint | Resources |
| --- | --- | --- | --- | --- | --- | --- | --- |
| 146 | **TRANSCEND Testing** | 22d | 2012-04-09 A | 2012-05-08 |  |  |  |
| 147 | Security appscan on STAGE | 6d | 2012-04-09 A | 2012-04-16 A | 126 | start no earlier than 2012-04-09 | Systems Team |
| 148 | Address security vulnerabilities | 6d | 2012-04-17 | 2012-04-24 | 147 |  | Winston |
| 149 | Re-run appscan on STAGE | 4d | 2012-04-25 | 2012-04-30 | 148 |  | Systems Team |
| 150 | Obtain permanent firewall exception for STAGE | 3d | 2012-05-01 | 2012-05-03 | 149 |  | Systems Team |
| 151 | Package intermediate deliverables for UAT by UCSF | 15d | 2012-04-18 | 2012-05-08 |  | start no earlier than 2012-04-18 | Winston; Jill; Rashmi; Quy |

Removed: 128 Security appscan of STAGE and firewall exception

Changed:

| ID | Task | Complete | Total float | Predecessors |
| --- | --- | --- | --- | --- |
| 1 | **CAARRAY 2.x** | 74% → 72% |  |  |
| 25 | **2.5.0** | 63% → 60% |  |  |
| 125 | **Maintenance** | 68% → 70% | 66d → 57d |  |
| 134 | UAT of Permissions Model by UCSF |  |  | 133, Security appscan of STAGE and firewall exception → 133 |

## Version 47 (saved 2012-04-23)

Note of the change: Updated project plan.

Last finish stays 2012-07-17. Complete tasks 116 → 119.

Removed: 149 Re-run appscan on STAGE

Changed:

| ID | Task | Start | Finish | Duration | Complete | Total float | Predecessors | Other |
| --- | --- | --- | --- | --- | --- | --- | --- | --- |
| 1 | **CAARRAY 2.x** |  |  |  | 72% → 74% |  |  |  |
| 25 | **2.5.0** |  |  |  | 60% → 63% |  |  |  |
| 125 | **Maintenance** |  |  |  | 70% → 77% |  |  |  |
| 128 | ARRAY-2313 - Support testing by API partners (Ongoing) |  |  |  | 10% → 30% |  |  |  |
| 131 | **Permissions Model (TRANSCEND)** |  |  |  | 45% → 55% |  |  |  |
| 133 | Demo of Permissions Model to UCSF/TRANSCEND team | 2012-04-18 A | 2012-04-18 A |  | 0% → 100% | 59d → none |  |  |
| 135 | **Automatic Refresh (TRANSCEND)** |  | 2012-04-30 → 2012-05-07 (+7d) | 24d → 29d |  | 56d → 51d |  |  |
| 137 | Integration testing of Automatic Refresh with caIntegrator | 2012-04-16 → 2012-04-23 (+7d) | 2012-04-20 → 2012-04-27 (+7d) |  |  | 56d → 51d |  | constraint start no earlier than 2012-04-16 → start no earlier than 2012-04-23 |
| 138 | Demo of Automatic Refresh to UCSF/TRANSCEND team | 2012-04-23 → 2012-04-30 (+7d) | 2012-04-23 → 2012-04-30 (+7d) |  |  | 60d → 51d |  |  |
| 139 | UAT of Automatic Refresh by UCSF | 2012-04-24 → 2012-05-01 (+7d) | 2012-04-30 → 2012-05-07 (+7d) |  |  | 65d → 51d |  |  |
| 140 | **Single Sign-on (TRANSCEND)** |  |  |  | 24% → 30% |  |  |  |
| 141 | ARRAY-1930 - Single sign-on between caArray and caIntegrator |  |  |  | 80% → 90% | 40d → 41d |  |  |
| 142 | Single Sign-on for caIntegrator | 2012-04-20 A |  |  | 0% → 10% |  |  |  |
| 146 | **TRANSCEND Testing** |  |  |  | 18% → 42% |  |  |  |
| 148 | Address security vulnerabilities | 2012-04-17 A | 2012-04-24 → 2012-04-19 A (-5d) | 6d → 3d | 0% → 100% | 60d → none |  |  |
| 149 | Obtain permanent firewall exception for STAGE | 2012-05-01 → 2012-04-20 A (-11d) | 2012-05-03 → 2012-04-23 A (-10d) | 3d → 2d | 0% → 100% | 53d → none | Re-run appscan on STAGE → 148 |  |
| 151 | **Audit Trail (TRANSCEND)** | 2012-04-18 A |  |  | 0% → 8% | 0d → 47d |  |  |
| 152 | ARRAY-1931 - Sample deletions and data imports | 2012-04-18 A |  |  | 0% → 30% |  |  |  |
| 156 | **Maintenance** |  |  |  | 19% → 38% |  |  |  |
| 157 | caGrid v1.5 upgrade |  | 2012-04-20 → 2012-05-04 (+14d) | 10d → 20d | 30% → 50% | 62d → 40d |  | was named caGrid v1.4 upgrade; resources Todd → Todd; Paul |
| 159 | **UPT Configurability** | 2012-04-18 → 2012-05-07 (+19d) | 2012-04-26 → 2012-05-15 (+19d) |  |  | 1d → 40d |  |  |
| 160 | ARRAY-2258 - Test new UPT configurability to disallow caArray user group creation within UPT (New) | 2012-04-18 → 2012-05-07 (+19d) | 2012-04-19 → 2012-05-08 (+19d) |  |  | 1d → 40d | none → 157 |  |
| 161 | ARRAY-2259 - Update installer to configure UPT to disallow user group creation for caArray within UPT (New) | 2012-04-20 → 2012-05-09 (+19d) | 2012-04-26 → 2012-05-15 (+19d) |  |  | 1d → 40d |  |  |
| 162 | **Maintenance** |  | 2012-05-04 → 2012-05-22 (+18d) | 5d → 17d |  |  |  |  |
| 163 | QA Test Suite updates for 2.5.0: Move Test Cases to Quality Center | 2012-04-30 → 2012-05-16 (+16d) | 2012-05-04 → 2012-05-22 (+18d) |  |  | 52d → 40d |  |  |
| 164 | ARRAY-1803 - Fix liquibase scripts to eliminate two-step installation process |  |  |  |  |  | 161, 153 → 153 |  |

## Version 48 (saved 2012-04-30)

Note of the change: Latest updates to project plan.

Last finish stays 2012-07-17. Complete tasks 119 → 122.

Added:

| ID | Task | Duration | Start | Finish | Constraint | Resources |
| --- | --- | --- | --- | --- | --- | --- |
| 157 | caGrid v1.4 upgrade | 10d | 2012-04-09 A | 2012-04-20 A | start no earlier than 2012-04-09 | Todd |

Removed: 163 QA Test Suite updates for 2.5.0: Move Test Cases to Quality Center

Changed:

| ID | Task | Start | Finish | Duration | Complete | Total float | Predecessors | Other |
| --- | --- | --- | --- | --- | --- | --- | --- | --- |
| 1 | **CAARRAY 2.x** |  |  | 247d → 246.5d | 74% → 76% |  |  |  |
| 25 | **2.5.0** |  |  | 217d → 216.5d | 63% → 66% |  |  |  |
| 125 | **Maintenance** |  | 2012-04-27 → 2012-05-04 (+7d) | 38d → 43d | 77% → 80% | 57d → 56d |  |  |
| 128 | ARRAY-2313 - Support testing by API partners (Ongoing) |  | 2012-04-27 → 2012-05-04 (+7d) | 15d → 20d | 30% → 50% | 57d → 56d |  |  |
| 131 | **Permissions Model (TRANSCEND)** |  | 2012-04-25 → 2012-05-04 (+9d) | 26d → 33d |  | 59d → 56d |  |  |
| 134 | UAT of Permissions Model by UCSF | 2012-04-19 → 2012-04-30 (+11d) | 2012-04-25 → 2012-05-04 (+9d) |  |  | 59d → 56d |  | constraint none → start no earlier than 2012-04-30 |
| 135 | **Automatic Refresh (TRANSCEND)** |  |  |  | 31% → 63% | 51d → 55d |  |  |
| 137 | Integration testing of Automatic Refresh with caIntegrator | 2012-04-23 A | 2012-04-27 A |  | 0% → 100% | 51d → none |  |  |
| 140 | **Single Sign-on (TRANSCEND)** |  | 2012-05-22 → 2012-05-29 (+7d) | 35d → 40d | 30% → 37% | 40d → 39d |  |  |
| 142 | Single Sign-on for caIntegrator |  |  |  | 10% → 50% | 40d → 39d |  |  |
| 143 | Integration testing of Single sign-on |  | 2012-05-10 → 2012-05-17 (+7d) | 5d → 10d |  | 40d → 39d |  | resources caIntegrator Team; Paul; KK; Todd; Quy; Systems → caIntegrator Team; Quy; Adam |
| 144 | Demo of Single Sign-on to UCSF/TRANSCEND team | 2012-05-11 → 2012-05-18 (+7d) | 2012-05-15 → 2012-05-22 (+7d) |  |  | 40d → 39d |  |  |
| 145 | UAT of Single Sign-on by UCSF | 2012-05-16 → 2012-05-23 (+7d) | 2012-05-22 → 2012-05-29 (+7d) |  |  | 40d → 39d |  |  |
| 146 | **TRANSCEND Testing** |  |  |  | 42% → 71% | 50d → 54d |  |  |
| 150 | Package intermediate deliverables for UAT by UCSF | 2012-04-18 A |  |  | 0% → 50% | 50d → 54d |  |  |
| 151 | **Audit Trail (TRANSCEND)** |  | 2012-05-11 → 2012-05-17 (+6d) | 18d → 22d | 8% → 36% |  |  |  |
| 152 | ARRAY-1931 - Sample deletions and data imports |  | 2012-04-24 → 2012-04-27 A (+3d) | 5d → 8d | 30% → 100% | 0d → none |  |  |
| 153 | ARRAY-1933 - Log visibility to Data Owner | 2012-04-25 → 2012-04-30 (+5d) | 2012-04-27 → 2012-05-03 (+6d) | 3d → 4d |  |  |  |  |
| 154 | Demo of Audit Trail to UCSF/TRANSCEND team | 2012-04-30 → 2012-05-04 (+4d) | 2012-05-04 → 2012-05-10 (+6d) |  |  |  |  |  |
| 155 | UAT of Audit Trail by UCSF | 2012-05-07 → 2012-05-11 (+4d) | 2012-05-11 → 2012-05-17 (+6d) |  |  |  |  |  |
| 156 | **Maintenance** |  | 2012-05-11 → 2012-05-18 (+7d) | 25d → 30d | 38% → 28% | 47d → 46d |  |  |
| 158 | caGrid v1.5 upgrade (ON HOLD) | 2012-04-09 A → 2012-04-23 (+14d) | 2012-05-04 → 2012-05-18 (+14d) |  | 50% → 0% | 40d → 46d | none → 157 | was named caGrid v1.5 upgrade; resources Todd; Paul → Todd |
| 159 | API (CQL) changes to account for file system storage (ARRAY-1729) |  |  |  |  | 47d → 51d |  | resources Paul → Todd |
| 160 | **UPT Configurability** | 2012-05-07 → 2012-05-02 (-5d) | 2012-05-15 → 2012-05-10 (-5d) |  |  | 40d → 52d |  |  |
| 161 | ARRAY-2258 - Test new UPT configurability to disallow caArray user group creation within UPT (New) | 2012-05-07 → 2012-05-02 (-5d) | 2012-05-08 → 2012-05-03 (-5d) |  |  | 40d → 52d | 158 → none | constraint start no earlier than 2012-04-18 → start no earlier than 2012-05-02 |
| 162 | ARRAY-2259 - Update installer to configure UPT to disallow user group creation for caArray within UPT (New) | 2012-05-09 → 2012-05-04 (-5d) | 2012-05-15 → 2012-05-10 (-5d) |  |  | 40d → 52d |  |  |
| 163 | **Maintenance** | 2012-04-30 → 2012-05-04 (+4d) | 2012-05-22 → 2012-05-08 (-14d) | 17d → 3d |  |  |  |  |
| 164 | ARRAY-1803 - Fix liquibase scripts to eliminate two-step installation process | 2012-04-30 → 2012-05-04 (+4d) | 2012-05-02 → 2012-05-08 (+6d) |  |  |  |  |  |
| 165 | Bug Fixes | 2012-05-03 → 2012-05-09 (+6d) | 2012-05-16 → 2012-05-22 (+6d) |  |  |  |  |  |
| 166 | **Beta 1** | 2012-05-17 → 2012-05-23 (+6d) | 2012-05-30 → 2012-06-05 (+6d) |  |  |  |  |  |
| 167 | Backup and replication for file system - NCI tiers and local installer documentation (ARRAY-1809) | 2012-05-17 → 2012-05-23 (+6d) | 2012-05-29 → 2012-06-04 (+6d) |  |  |  |  |  |
| 168 | Bug Fixes | 2012-05-17 → 2012-05-23 (+6d) | 2012-05-29 → 2012-06-04 (+6d) |  |  |  |  |  |
| 169 | Deployment: Deploy Beta 1 to STAGE. | 2012-05-30 → 2012-06-05 (+6d) | 2012-05-30 → 2012-06-05 (+6d) |  |  |  |  |  |
| 170 | **Release Candidate 1** | 2012-05-31 → 2012-06-06 (+6d) | 2012-06-13 → 2012-06-19 (+6d) |  |  |  |  |  |
| 171 | Deployment: Run security app scan on Beta 1. | 2012-05-31 → 2012-06-06 (+6d) | 2012-06-04 → 2012-06-08 (+4d) |  |  |  |  |  |
| 172 | STAGE Regression testing of Beta 1. | 2012-05-31 → 2012-06-06 (+6d) | 2012-06-06 → 2012-06-12 (+6d) |  |  |  |  |  |
| 173 | Installer testing of Beta 1. | 2012-06-07 → 2012-06-13 (+6d) | 2012-06-11 → 2012-06-15 (+4d) |  |  |  |  |  |
| 174 | Support Beta 1 testing by API partners. | 2012-05-31 → 2012-06-06 (+6d) | 2012-06-06 → 2012-06-12 (+6d) |  |  |  |  |  |
| 175 | Documentation: Send User's Guide changes to Jill. | 2012-05-31 → 2012-06-06 (+6d) | 2012-06-01 → 2012-06-07 (+6d) |  |  |  |  |  |
| 176 | ARRAY-2092 - Documentation: Send Installation Guide changes to Jill. | 2012-05-31 → 2012-06-06 (+6d) | 2012-06-05 → 2012-06-11 (+6d) |  |  |  |  |  |
| 177 | Bug Fixes | 2012-05-31 → 2012-06-06 (+6d) | 2012-06-12 → 2012-06-18 (+6d) |  |  |  |  |  |
| 178 | Deployment: Deploy RC1 to STAGE. | 2012-06-13 → 2012-06-19 (+6d) | 2012-06-13 → 2012-06-19 (+6d) |  |  |  |  |  |
| 179 | **Release Candidate 2** | 2012-06-14 → 2012-06-20 (+6d) | 2012-06-27 → 2012-07-02 (+5d) | 10d → 9d |  |  |  |  |
| 180 | Deployment: Run security app scan on RC1. | 2012-06-14 → 2012-06-20 (+6d) | 2012-06-18 → 2012-06-22 (+4d) |  |  | 7d → 6d |  |  |
| 181 | STAGE testing of RC1. | 2012-06-14 → 2012-06-20 (+6d) | 2012-06-18 → 2012-06-22 (+4d) |  |  | 7d → 6d |  |  |
| 182 | Support RC1 testing by API partners. | 2012-06-14 → 2012-06-20 (+6d) | 2012-06-18 → 2012-06-22 (+4d) |  |  | 7d → 6d |  |  |
| 183 | Deployment: Create skeleton Gforge release package and release notes | 2012-06-14 → 2012-06-20 (+6d) | 2012-06-15 → 2012-06-21 (+6d) |  |  | 8d → 7d |  |  |
| 184 | Deployment: Point application to draft release notes | 2012-06-14 → 2012-06-20 (+6d) | 2012-06-19 → 2012-06-25 (+6d) |  |  | 6d → 5d |  |  |
| 185 | Bug Fixes - only Blocker and Critical | 2012-06-14 → 2012-06-20 (+6d) | 2012-06-25 → 2012-06-28 (+3d) | 8d → 7d |  |  |  |  |
| 186 | Documentation: Finish Draft User's Guide. | 2012-06-14 → 2012-06-20 (+6d) | 2012-06-19 → 2012-06-25 (+6d) |  |  | 4d → 3d |  |  |
| 187 | Documentation: Review Draft User's Guide. | 2012-06-20 → 2012-06-26 (+6d) | 2012-06-21 → 2012-06-27 (+6d) |  |  | 4d → 3d |  |  |
| 188 | Documentation: Finish Draft Installation Guide. | 2012-06-14 → 2012-06-20 (+6d) | 2012-06-19 → 2012-06-25 (+6d) |  |  | 4d → 3d |  |  |
| 189 | Documentation: Review Draft Installation Guide. | 2012-06-20 → 2012-06-26 (+6d) | 2012-06-21 → 2012-06-27 (+6d) |  |  | 4d → 3d |  |  |
| 190 | Deployment: Deploy RC2 to STAGE. | 2012-06-26 → 2012-06-29 (+3d) | 2012-06-27 → 2012-07-02 (+5d) |  |  |  |  |  |
| 191 | Deployment: Send Draft release notes to Juli to send to Communications Office | 2012-06-14 → 2012-06-20 (+6d) | 2012-06-14 → 2012-06-20 (+6d) |  |  | 9d → 8d |  |  |
| 192 | **Release Candidate 3** | 2012-06-28 → 2012-07-03 (+5d) | 2012-07-11 → 2012-07-12 (+1d) | 10d → 8d |  |  |  |  |
| 193 | STAGE testing of RC2 | 2012-06-28 → 2012-07-03 (+5d) | 2012-06-29 → 2012-07-04 (+5d) |  |  | 8d → 8.5d |  |  |
| 194 | Documentation: Finish final User's Guide. | 2012-06-28 → 2012-07-03 (+5d) | 2012-06-29 → 2012-07-04 (+5d) |  |  | 7d → 7.5d |  |  |
| 195 | Documentation: Review final User's Guide. | 2012-07-02 → 2012-07-05 (+3d) | 2012-07-02 → 2012-07-05 (+3d) |  |  | 7d → 7.5d |  |  |
| 196 | Documentation: Finish final Installation Guide. | 2012-06-28 → 2012-07-03 (+5d) | 2012-06-29 → 2012-07-04 (+5d) |  |  | 7d → 7.5d |  |  |
| 197 | Documentation: Review final Installation Guide. | 2012-07-02 → 2012-07-05 (+3d) | 2012-07-02 → 2012-07-05 (+3d) |  |  | 7d → 7.5d |  |  |
| 198 | Bug Fixes - only Blockers | 2012-06-28 → 2012-07-03 (+5d) | 2012-07-04 → 2012-07-05 (+1d) | 5d → 3d |  |  |  |  |
| 199 | Deployment: Deploy RC3 (GA) to STAGE. | 2012-07-05 → 2012-07-06 (+1d) | 2012-07-06 → 2012-07-09 (+3d) |  |  |  |  |  |
| 200 | Deployment: Run security app scan on RC3 (GA) | 2012-07-09 → 2012-07-10 (+1d) | 2012-07-10 → 2012-07-11 (+1d) |  |  |  |  |  |
| 201 | STAGE testing of RC3 (GA) | 2012-07-09 → 2012-07-10 (+1d) | 2012-07-11 → 2012-07-12 (+1d) |  |  |  |  |  |
| 202 | Deployment: Create GA release artifacts and upload to Gforge. | 2012-06-28 → 2012-07-03 (+5d) | 2012-06-28 → 2012-07-03 (+5d) |  |  | 9d → 9.5d |  |  |
| 203 | Deployment: Support GA testing by API partners. | 2012-06-28 → 2012-07-03 (+5d) | 2012-06-29 → 2012-07-04 (+5d) |  |  | 8d → 8.5d |  |  |
| 204 | **Deployment** | 2012-07-12 → 2012-07-13 (+1d) |  | 4d → 2.5d |  |  | 192 → none |  |
| 205 | Deployment: Deploy GA to PRODUCTION | 2012-07-12 → 2012-07-13 (+1d) |  | 3d → 2d |  |  | 171 → 200, 201 |  |
| 206 | Deployment: Update product landing page | 2012-07-12 → 2012-07-17 (+5d) | 2012-07-12 → 2012-07-17 (+5d) | 1d → 0.5d |  | 3d → 0d | none → 205 |  |

| ID | Task | Duration |
| --- | --- | --- |
| 207 | Deployment: Juli announces the release to the community | 1d → 0.5d |

## Version 49 (saved 2012-05-03)

Note of the change: Added QA signoff and final Prod testing dates.

Last finish stays 2012-07-17. Complete tasks 122 → 123.

Added:

| ID | Task | Duration | Start | Finish | Predecessors |
| --- | --- | --- | --- | --- | --- |
| 207 | Deployment: QA smoke tests PRODUCTION | 1d | 2012-07-17 | 2012-07-17 | 205 |

Changed:

| ID | Task | Start | Finish | Duration | Complete | Total float | Other |
| --- | --- | --- | --- | --- | --- | --- | --- |
| 1 | **CAARRAY 2.x** |  |  | 246.5d → 247d | 76% → 78% |  |  |
| 25 | **2.5.0** |  |  | 216.5d → 217d | 66% → 69% |  |  |
| 125 | **Maintenance** |  | 2012-05-04 A |  | 80% → 100% | 56d → none |  |
| 128 | ARRAY-2313 - Support testing by API partners (Ongoing) |  | 2012-05-04 A |  | 50% → 100% | 56d → none |  |
| 156 | **Maintenance** |  |  |  | 28% → 56% |  |  |
| 158 | caGrid v1.5 upgrade (ON HOLD) | 2012-04-23 A |  |  | 0% → 50% | 46d → 41.5d |  |
| 201 | STAGE testing of RC3 (GA) and QA Signoff |  |  |  |  |  | was named STAGE testing of RC3 (GA) |
| 204 | **Deployment** |  |  | 2.5d → 3d |  |  |  |

## Version 50 (saved 2012-05-07)

Note of the change: Latest updates to project plan.

Last finish stays 2012-07-17. Complete tasks 123 → 125.

Removed: 163 Maintenance; 164 ARRAY-1803 - Fix liquibase scripts to eliminate two-step installation process

Changed:

| ID | Task | Start | Finish | Duration | Complete | Total float | Predecessors | Other |
| --- | --- | --- | --- | --- | --- | --- | --- | --- |
| 1 | **CAARRAY 2.x** |  |  |  | 78% → 80% |  |  |  |
| 25 | **2.5.0** |  |  |  | 69% → 72% |  |  |  |
| 135 | **Automatic Refresh (TRANSCEND)** |  | 2012-05-07 → 2012-05-16 (+9d) | 29d → 36d |  | 55d → 9d |  |  |
| 138 | Demo of Automatic Refresh to UCSF/TRANSCEND team | 2012-04-30 → 2012-05-09 (+9d) | 2012-04-30 → 2012-05-09 (+9d) |  |  | 55d → 9d |  | constraint none → start no earlier than 2012-05-09 |
| 139 | UAT of Automatic Refresh by UCSF | 2012-05-01 → 2012-05-10 (+9d) | 2012-05-07 → 2012-05-16 (+9d) |  |  | 55d → 48d |  |  |
| 140 | **Single Sign-on (TRANSCEND)** |  |  |  | 37% → 53% | 39d → 36d |  |  |
| 141 | ARRAY-1930 - Single sign-on between caArray and caIntegrator |  | 2012-04-19 A |  | 90% → 100% | 44d → none |  |  |
| 142 | Single Sign-on for caIntegrator |  | 2012-05-03 A |  | 50% → 100% | 39d → none |  |  |
| 151 | **Audit Trail (TRANSCEND)** |  |  |  | 36% → 51% | 47d → 8d |  |  |
| 153 | ARRAY-1933 - Log visibility to Data Owner | 2012-04-30 A |  |  | 0% → 80% | 0d → 8d |  |  |
| 156 | **Maintenance** |  |  |  | 56% → 72% | 46d → 7d |  |  |
| 158 | caGrid v1.5 upgrade (Limited Scope) |  |  |  | 50% → 80% | 41.5d → 7d |  | was named caGrid v1.5 upgrade (ON HOLD) |
| 160 | **UPT Configurability** | 2012-05-02 A | 2012-05-10 → 2012-05-09 (-1d) | 7d → 6d | 0% → 25% | 52d → 0d |  |  |
| 161 | ARRAY-2258 - Test new UPT configurability to disallow caArray user group creation within UPT (New) | 2012-05-02 A | 2012-05-03 → 2012-05-04 (+1d) | 2d → 3d | 0% → 50% | 52d → 0d |  |  |
| 162 | ARRAY-2259 - Update installer to configure UPT to disallow user group creation for caArray within UPT (New) | 2012-05-04 → 2012-05-07 (+3d) | 2012-05-10 → 2012-05-09 (-1d) | 5d → 3d |  | 52d → 0d |  |  |
| 163 | Maintenance and Bug Fixes | 2012-05-09 → 2012-05-10 (+1d) |  | 10d → 9d |  |  | ARRAY-1803 - Fix liquibase scripts to eliminate two-step installation process → 162 | was named Bug Fixes |

## Version 51 (saved 2012-05-14)

Note of the change: Updated project plan.

Last finish stays 2012-07-17. Complete tasks 125 → 130.

Added:

| ID | Task | Duration | Start | Finish | Predecessors | Constraint | Resources |
| --- | --- | --- | --- | --- | --- | --- | --- |
| 158 | caGrid v1.5 upgrade - compile and test | 10d | 2012-04-23 A | 2012-05-04 A | 157 | start no earlier than 2012-04-09 | Todd |
| 159 | caGrid v1.5 upgrade - automated build and deploy | 5d | 2012-05-14 | 2012-05-18 | 158 | start no earlier than 2012-05-14 | Todd |

Changed:

| ID | Task | Start | Finish | Duration | Complete | Total float | Predecessors | Other |
| --- | --- | --- | --- | --- | --- | --- | --- | --- |
| 1 | **CAARRAY 2.x** |  |  |  | 80% → 82% |  |  |  |
| 25 | **2.5.0** |  |  |  | 72% → 74% |  |  |  |
| 131 | **Permissions Model (TRANSCEND)** |  | 2012-05-04 A |  | 55% → 100% | 17d → none |  |  |
| 134 | UAT Support for UCSF - Permissions Model | 2012-04-30 A | 2012-05-04 A |  | 0% → 100% | 17d → none |  | was named UAT of Permissions Model by UCSF |
| 135 | **Automatic Refresh (TRANSCEND)** |  | 2012-05-16 → 2012-05-23 (+7d) | 36d → 41d |  | 9d → 39d |  |  |
| 138 | Demo of Automatic Refresh to UCSF/TRANSCEND team | 2012-05-09 → 2012-05-16 (+7d) | 2012-05-09 → 2012-05-16 (+7d) |  |  | 9d → 39d |  | constraint start no earlier than 2012-05-09 → start no earlier than 2012-05-16 |
| 139 | UAT Support for UCSF - Automatic Refresh | 2012-05-10 → 2012-05-17 (+7d) | 2012-05-16 → 2012-05-23 (+7d) |  |  | 48d → 39d |  | was named UAT of Automatic Refresh by UCSF |
| 140 | **Single Sign-on (TRANSCEND)** |  |  |  | 53% → 66% | 36d → 35d |  |  |
| 143 | Integration testing of Single sign-on | 2012-05-04 A |  |  | 0% → 50% | 36d → 35d |  |  |
| 145 | UATSupport for UCSF - Single Sign-on |  |  |  |  | 36d → 35d |  | was named UAT of Single Sign-on by UCSF |
| 146 | **TRANSCEND Testing** |  |  |  | 71% → 86% | 15d → 50d |  |  |
| 150 | Package intermediate deliverables for UAT by UCSF |  |  |  | 50% → 75% | 15d → 50d |  |  |
| 151 | **Audit Trail (TRANSCEND)** |  | 2012-05-17 → 2012-05-23 (+6d) | 22d → 26d | 51% → 67% | 8d → 39d |  |  |
| 153 | ARRAY-1933 - Log visibility to Data Owner |  | 2012-05-03 A |  | 80% → 100% | 8d → none |  |  |
| 154 | Demo of Audit Trail to UCSF/TRANSCEND team | 2012-05-04 → 2012-05-16 (+12d) | 2012-05-10 → 2012-05-16 (+6d) | 5d → 1d |  | 8d → 39d |  | constraint none → start no earlier than 2012-05-16 |
| 155 | UAT Support for UCSF - Audit Trail | 2012-05-11 → 2012-05-17 (+6d) | 2012-05-17 → 2012-05-23 (+6d) |  |  | 8d → 39d |  | was named UAT of Audit Trail by UCSF |
| 156 | **Maintenance** |  | 2012-05-18 → 2012-06-01 (+14d) | 30d → 40d | 72% → 49% | 7d → 32d |  |  |
| 160 | caGrid v1.5 upgrade - deployment on NCI tiers | 2012-04-23 A → 2012-05-21 (+28d) | 2012-05-18 → 2012-06-01 (+14d) | 20d → 10d | 80% → 0% | 7d → 32d | 157 → 159 | was named caGrid v1.5 upgrade (Limited Scope); resources Todd → Todd; Systems |
| 162 | **UPT Configurability** |  | 2012-05-09 A |  | 25% → 100% | 0d → none |  |  |
| 163 | ARRAY-2258 - Test new UPT configurability to disallow caArray user group creation within UPT (New) |  | 2012-05-04 A |  | 50% → 100% | 0d → none |  |  |
| 164 | ARRAY-2259 - Update installer to configure UPT to disallow user group creation for caArray within UPT (New) | 2012-05-07 A | 2012-05-09 A |  | 0% → 100% | 0d → none |  |  |
| 165 | Maintenance and Bug Fixes | 2012-05-10 A |  |  | 0% → 25% |  |  |  |

## Version 52 (saved 2012-05-15)

Note of the change: Updated SSO status on project plan.

Last finish stays 2012-07-17.

Changed:

| ID | Task | Start | Finish | Duration | Complete | Total float |
| --- | --- | --- | --- | --- | --- | --- |
| 1 | **CAARRAY 2.x** |  |  |  | 82% → 81% |  |
| 140 | **Single Sign-on (TRANSCEND)** |  | 2012-05-29 → 2012-06-06 (+8d) | 40d → 46d | 66% → 57% | 35d → 29d |
| 143 | Integration testing of Single sign-on |  | 2012-05-17 → 2012-05-24 (+7d) | 10d → 15d | 50% → 33% | 35d → 29d |
| 144 | Demo of Single Sign-on to UCSF/TRANSCEND team | 2012-05-18 → 2012-05-25 (+7d) | 2012-05-22 → 2012-05-30 (+8d) | 3d → 4d |  | 35d → 29d |
| 145 | UATSupport for UCSF - Single Sign-on | 2012-05-23 → 2012-05-31 (+8d) | 2012-05-29 → 2012-06-06 (+8d) |  |  | 35d → 29d |

## Version 53 (saved 2012-05-21)

Note of the change: Updated project plan.

Last finish stays 2012-07-17. Complete tasks 130 → 132.

Added:

| ID | Task | Duration | Start | Finish | Predecessors | Constraint | Resources |
| --- | --- | --- | --- | --- | --- | --- | --- |
| 144 | QA of Single Sign-on | 4d | 2012-05-25 | 2012-05-30 | 142 |  | Systems Team; Quy |
| 150 | Support UCSF as they do UAT | 50d | 2012-05-01 | 2012-07-09 |  | start no earlier than 2012-05-01 | UCSF; caArray Team |

Removed: 139 UAT Support for UCSF - Automatic Refresh; 145 UATSupport for UCSF - Single Sign-on; 155 UAT Support for UCSF - Audit Trail

Changed:

| ID | Task | Start | Finish | Duration | Complete | Total float |
| --- | --- | --- | --- | --- | --- | --- |
| 1 | **CAARRAY 2.x** |  |  |  | 81% → 79% |  |
| 25 | **2.5.0** |  |  |  | 74% → 71% |  |
| 135 | **Automatic Refresh (TRANSCEND)** |  | 2012-05-23 → 2012-05-16 A (-7d) | 41d → 36d | 63% → 100% | 39d → none |
| 138 | Demo of Automatic Refresh to UCSF/TRANSCEND team | 2012-05-16 A | 2012-05-16 A |  | 0% → 100% | 39d → none |
| 139 | **Single Sign-on (TRANSCEND)** |  | 2012-06-06 → 2012-05-30 (-7d) | 46d → 41d | 57% → 64% | 29d → 34d |
| 142 | Integration testing of Single sign-on |  |  |  | 33% → 50% | 29d → 34d |
| 145 | **TRANSCEND Testing** |  | 2012-05-08 → 2012-07-09 (+62d) | 22d → 66d | 86% → 29% | 50d → 6d |
| 151 | **Audit Trail (TRANSCEND)** |  | 2012-05-23 → 2012-05-16 A (-7d) | 26d → 21d | 67% → 100% | 39d → none |
| 154 | Demo of Audit Trail to UCSF/TRANSCEND team | 2012-05-16 A | 2012-05-16 A |  | 0% → 100% | 39d → none |
| 155 | **Maintenance** |  |  |  | 49% → 55% |  |
| 158 | caGrid v1.5 upgrade - automated build and deploy | 2012-05-14 A |  |  | 0% → 50% |  |
| 164 | Maintenance and Bug Fixes |  |  |  | 25% → 50% |  |

## Version 54 (saved 2012-06-04)

Note of the change: Updated project plan.

Last finish 2012-07-17 → 2012-07-16 (-1d). Complete tasks 132 → 147.

Added:

| ID | Task | Duration | Start | Finish | Predecessors | Resources |
| --- | --- | --- | --- | --- | --- | --- |
| 167 | Regression test Beta 1 on QA | 2d | 2012-06-05 | 2012-06-06 | 166 | Quy |
| 169 | Regression test Beta 1 on STAGE | 3d | 2012-06-08 | 2012-06-12 | 168 | Quy |
| 170 | Run security app scan on Beta 1. | 3d | 2012-06-08 | 2012-06-12 | 168 | Systems |
| 177 | Regression test RC1 on QA | 2d | 2012-06-13 | 2012-06-14 | 175 | Quy |
| 178 | Deploy RC1 to STAGE. | 1d | 2012-06-15 | 2012-06-15 | 177 | Systems |
| 183 | Regression test RC2 on QA | 2d | 2012-06-20 | 2012-06-21 | 182 | Systems |
| 185 | Regression test RC2 on STAGE | 2d | 2012-06-26 | 2012-06-27 | 184 | Systems |
| 194 | **Documentation** | 175d | 2011-09-14 A | 2012-05-18 A |  |  |

Removed: 160 API (CQL) changes to account for file system storage (ARRAY-1729); 170 Deployment: Run security app scan on Beta 1.; 171 STAGE Regression testing of Beta 1.; 179 Deployment: Run security app scan on RC1.; 180 STAGE testing of RC1.; 192 STAGE testing of RC2

Changed:

| ID | Task | Start | Finish | Duration | Complete | Total float | Predecessors | Other |
| --- | --- | --- | --- | --- | --- | --- | --- | --- |
| 1 | **CAARRAY 2.x** |  | 2012-07-17 → 2012-07-16 (-1d) | 247d → 246d | 79% → 84% |  |  |  |
| 25 | **2.5.0** |  | 2012-07-17 → 2012-07-16 (-1d) | 217d → 216d | 71% → 78% |  |  |  |
| 139 | **Single Sign-on (TRANSCEND)** |  | 2012-05-30 → 2012-06-20 (+21d) | 41d → 56d | 64% → 60% | 34d → 21d |  |  |
| 142 | Integration testing of Single sign-on |  | 2012-05-24 → 2012-06-14 (+21d) | 15d → 30d |  | 34d → 21d |  |  |
| 143 | Demo of Single Sign-on to UCSF/TRANSCEND team | 2012-05-25 → 2012-06-15 (+21d) | 2012-05-30 → 2012-06-20 (+21d) |  |  | 29d → 24d |  |  |
| 144 | QA of Single Sign-on | 2012-05-25 → 2012-06-15 (+21d) | 2012-05-30 → 2012-06-20 (+21d) |  |  | 34d → 24d |  |  |
| 145 | **TRANSCEND Delivery and UAT** |  |  |  | 29% → 34% | 6d → 8d |  | was named TRANSCEND Testing |
| 149 | Package intermediate deliverables for UAT by UCSF |  | 2012-05-08 A |  | 75% → 100% | 50d → none |  |  |
| 155 | **Maintenance** |  | 2012-06-01 → 2012-06-22 (+21d) | 40d → 55d | 55% → 53% | 32d → 19d |  |  |
| 158 | caGrid v1.5 upgrade - automated build and deploy |  | 2012-05-18 → 2012-06-08 (+21d) | 5d → 20d | 50% → 33% | 32d → 19d |  |  |
| 159 | caGrid v1.5 upgrade - deployment on NCI tiers | 2012-05-21 → 2012-06-11 (+21d) | 2012-06-01 → 2012-06-22 (+21d) |  |  | 32d → 22d |  |  |
| 163 | Maintenance and Bug Fixes |  | 2012-05-22 A |  | 50% → 100% | 0d → none |  |  |
| 164 | **Beta 1** | 2012-05-23 A | 2012-06-05 → 2012-06-12 (+7d) | 10d → 15d | 0% → 54% | 0d → 27d |  |  |
| 165 | Backup and replication for file system - NCI tiers and local installer documentation (ARRAY-1809) | 2012-05-23 A | 2012-06-04 A |  | 0% → 100% | 1d → none |  | resources KK; Systems → Paul; Winston; Todd; Quy |
| 166 | Bug Fixes | 2012-05-23 A | 2012-06-04 A |  | 0% → 100% | 0d → none |  | resources KK; Todd; Paul; Quy → Winston; Todd; Paul; Quy |
| 168 | Deployment: Deploy Beta 1 to STAGE. | 2012-06-05 → 2012-06-07 (+2d) | 2012-06-05 → 2012-06-07 (+2d) |  |  | 0d → 23d | 166 → 167 |  |
| 171 | Installer testing of Beta 1. | 2012-06-13 → 2012-05-23 (-21d) | 2012-06-15 → 2012-05-25 (-21d) |  |  | 2d → 39d | STAGE Regression testing of Beta 1. → none |  |
| 172 | Support Beta 1 testing by API partners. | 2012-06-06 → 2012-05-23 (-14d) | 2012-06-12 → 2012-05-29 (-14d) |  |  | 5d → 10d |  |  |
| 173 | Deployment: Create skeleton Gforge release package and release notes | 2012-06-20 → 2012-05-23 A (-28d) | 2012-06-21 → 2012-05-24 A (-28d) |  | 0% → 100% | 7d → none |  |  |
| 174 | **Release Candidate 1** | 2012-06-06 → 2012-06-05 (-1d) | 2012-06-19 → 2012-06-20 (+1d) | 10d → 12d |  |  | 164 → none |  |
| 175 | Bug Fixes | 2012-06-06 → 2012-06-05 (-1d) | 2012-06-18 → 2012-06-12 (-6d) | 9d → 6d |  |  | none → 166 | resources KK; Todd; Paul; Quy → Rashmi; Winston; Paul; Quy |
| 176 | Deployment: Point application to draft release notes | 2012-06-20 → 2012-06-05 (-15d) | 2012-06-25 → 2012-06-05 (-20d) | 4d → 1d |  |  | none → 166 | resources KK → Winston |
| 179 | Regression test RC1 on STAGE. | 2012-06-19 → 2012-06-18 (-1d) | 2012-06-19 → 2012-06-18 (-1d) |  |  | 0d → 23d | 175 → 178 | was named Deployment: Deploy RC1 to STAGE. |
| 180 | Support RC1 testing by API partners. | 2012-06-20 → 2012-06-18 (-2d) | 2012-06-22 → 2012-06-20 (-2d) |  |  | 6d → 21d | none → 178 |  |
| 181 | **Release Candidate 2** | 2012-06-20 → 2012-06-13 (-7d) | 2012-07-02 → 2012-06-27 (-5d) | 9d → 11d |  |  | 174 → none |  |
| 182 | Bug Fixes - only Blocker and Critical | 2012-06-20 → 2012-06-13 (-7d) | 2012-06-28 → 2012-06-19 (-9d) | 7d → 5d |  |  | none → 175, 176 | resources KK; Todd; Paul; Quy → Rashmi; Todd; Winston; Quy |
| 184 | Deployment: Deploy RC2 to STAGE. | 2012-06-29 → 2012-06-22 (-7d) | 2012-07-02 → 2012-06-25 (-7d) |  |  |  | 182 → 183 |  |
| 186 | Deployment: Send Draft release notes to Juli to send to Communications Office | 2012-06-20 → 2012-06-13 (-7d) | 2012-06-20 → 2012-06-13 (-7d) |  |  | 8d → 15d | none → 175, 176 |  |
| 187 | **Release Candidate 3** | 2012-07-03 → 2012-06-28 (-5d) | 2012-07-12 → 2012-07-11 (-1d) | 8d → 10d |  |  |  |  |
| 188 | Bug Fixes - only Blockers | 2012-07-03 → 2012-06-28 (-5d) | 2012-07-05 → 2012-07-02 (-3d) |  |  |  | none → 182 |  |
| 189 | Deployment: Deploy RC3 (GA) to STAGE. | 2012-07-06 → 2012-07-03 (-3d) | 2012-07-09 → 2012-07-04 (-5d) |  |  |  |  |  |
| 190 | Deployment: Run security app scan on RC3 (GA) | 2012-07-10 → 2012-07-05 (-5d) | 2012-07-11 → 2012-07-06 (-5d) |  |  | 1d → 3d |  |  |
| 191 | STAGE testing of RC3 (GA) and QA Signoff | 2012-07-10 → 2012-07-05 (-5d) | 2012-07-12 → 2012-07-11 (-1d) | 3d → 5d |  |  |  |  |
| 192 | Deployment: Create GA release artifacts and upload to Gforge. | 2012-07-03 → 2012-07-09 (+6d) | 2012-07-03 → 2012-07-09 (+6d) |  |  | 10d → 5d | none → 190 |  |
| 193 | Deployment: Support GA testing by API partners. | 2012-07-03 → 2012-07-09 (+6d) | 2012-07-04 → 2012-07-10 (+6d) |  |  | 9d → 4d | none → 190 |  |
| 195 | Documentation: Send User's Guide changes to Jill. | 2012-06-06 → 2012-05-01 A (-36d) | 2012-06-07 → 2012-05-02 A (-36d) |  | 0% → 100% | 8d → none |  | constraint none → start no earlier than 2012-05-01 |
| 196 | ARRAY-2092 - Documentation: Send Installation Guide changes to Jill. | 2012-06-06 → 2012-05-03 A (-34d) | 2012-06-11 → 2012-05-08 A (-34d) |  | 0% → 100% | 6d → none | none → 195 | resources KK → Winston |
| 197 | Documentation: Finish Draft User's Guide. | 2012-06-20 → 2012-05-03 A (-48d) | 2012-06-25 → 2012-05-08 A (-48d) |  | 0% → 100% | 3d → none | none → 195 |  |
| 198 | Documentation: Review Draft User's Guide. | 2012-06-26 → 2012-05-09 A (-48d) | 2012-06-27 → 2012-05-10 A (-48d) |  | 0% → 100% | 3d → none |  |  |
| 199 | Documentation: Finish Draft Installation Guide. | 2012-06-20 → 2012-05-09 A (-42d) | 2012-06-25 → 2012-05-14 A (-42d) |  | 0% → 100% | 3d → none | none → 196 |  |
| 200 | Documentation: Review Draft Installation Guide. | 2012-06-26 → 2012-05-15 A (-42d) | 2012-06-27 → 2012-05-18 A (-40d) | 2d → 4d | 0% → 100% | 3d → none |  | resources KK; Quy → Winston |
| 201 | Documentation: Finish final User's Guide. | 2012-07-03 → 2011-09-14 A (-293d) | 2012-07-04 → 2011-09-15 A (-293d) |  | 0% → 100% | 8d → none |  |  |
| 202 | Documentation: Review final User's Guide. | 2012-07-05 → 2011-09-16 A (-293d) | 2012-07-05 → 2011-09-16 A (-293d) |  | 0% → 100% | 8d → none |  |  |
| 203 | Documentation: Finish final Installation Guide. | 2012-07-03 → 2011-09-14 A (-293d) | 2012-07-04 → 2011-09-15 A (-293d) |  | 0% → 100% | 8d → none |  |  |
| 204 | Documentation: Review final Installation Guide. | 2012-07-05 → 2011-09-16 A (-293d) | 2012-07-05 → 2011-09-16 A (-293d) |  | 0% → 100% | 8d → none |  | resources KK; Quy → Winston |
| 205 | **Deployment** | 2012-07-13 → 2012-07-12 (-1d) | 2012-07-17 → 2012-07-16 (-1d) |  |  |  |  |  |
| 206 | Deployment: Deploy GA to PRODUCTION | 2012-07-13 → 2012-07-12 (-1d) | 2012-07-16 → 2012-07-13 (-3d) |  |  |  |  |  |
| 207 | Deployment: Update product landing page | 2012-07-17 → 2012-07-16 (-1d) | 2012-07-17 → 2012-07-16 (-1d) |  |  |  |  |  |
| 208 | Deployment: QA smoke tests PRODUCTION | 2012-07-17 → 2012-07-16 (-1d) | 2012-07-17 → 2012-07-16 (-1d) |  |  |  |  |  |
| 209 | Deployment: Juli announces the release to the community | 2012-07-17 → 2012-07-16 (-1d) | 2012-07-17 → 2012-07-16 (-1d) |  |  |  |  |  |
| 210 | RELEASE 2.5.0 | 2012-07-17 → 2012-07-16 (-1d) | 2012-07-17 → 2012-07-16 (-1d) |  |  |  |  |  |

## Version 55 (saved 2012-06-07)

Note of the change: Elaborated on QA testing effort and reduced number of release candidates after talking to Quy.

Last finish 2012-07-16 → 2012-07-17 (+1d).

Added:

| ID | Task | Duration | Start | Finish | Predecessors | Constraint | Resources |
| --- | --- | --- | --- | --- | --- | --- | --- |
| 158 | caGrid v1.5 upgrade - BDA for local installers | 21d | 2012-05-14 A | 2012-06-11 | 157 | start no earlier than 2012-05-14 | Todd |
| 172 | API testing of Beta 1 on STAGE | 2d | 2012-06-11 | 2012-06-12 | 168 |  | Ye Wu |
| 179 | Manual and Large Data Regression Tests of RC1 on QA | 2d | 2012-06-22 | 2012-06-25 | 178 |  | Quy; Jie |
| 180 | Installer Testing of RC1 | 2d | 2012-06-26 | 2012-06-27 | 179 |  | Quy; Jie |
| 182 | API testing of RC1 on STAGE | 2d | 2012-06-27 | 2012-06-28 | 181 |  | Ye Wu |
| 183 | Run security appscan on RC1 | 3d | 2012-06-27 | 2012-06-29 | 181 |  | Systems |
| 190 | Manual and Large Data Regression Tests of RC2 on QA | 2d | 2012-07-03 | 2012-07-04 | 189 |  | Quy; Jie |
| 191 | Automated Regression Tests of RC2 on QA | 2d | 2012-07-05 | 2012-07-06 | 190 |  | Quy; Jie |
| 193 | Automated Regression Tests of RC2 on STAGE | 2d | 2012-07-11 | 2012-07-12 | 192 |  | Quy; Jie |
| 194 | API testing of RC2 on STAGE | 2d | 2012-07-11 | 2012-07-12 | 192 |  | Ye Wu |

Removed: 158 caGrid v1.5 upgrade - automated build and deploy; 182 Bug Fixes - only Blocker and Critical; 187 Release Candidate 3; 189 Deployment: Deploy RC3 (GA) to STAGE.; 190 Deployment: Run security app scan on RC3 (GA); 191 STAGE testing of RC3 (GA) and QA Signoff; 192 Deployment: Create GA release artifacts and upload to Gforge.; 193 Deployment: Support GA testing by API partners.

Changed:

| ID | Task | Start | Finish | Duration | Complete | Total float | Predecessors | Other |
| --- | --- | --- | --- | --- | --- | --- | --- | --- |
| 1 | **CAARRAY 2.x** |  | 2012-07-16 → 2012-07-17 (+1d) | 246d → 247d | 84% → 83% |  |  |  |
| 25 | **2.5.0** |  | 2012-07-16 → 2012-07-17 (+1d) | 216d → 217d | 78% → 77% |  |  |  |
| 155 | **Maintenance** |  |  |  | 53% → 57% | 19d → 17d |  |  |
| 159 | caGrid v1.5 upgrade - deployment on NCI tiers | 2012-06-11 → 2012-06-04 A (-7d) |  | 10d → 15d | 0% → 33% | 22d → 17d | caGrid v1.5 upgrade - automated build and deploy → none | constraint start no earlier than 2012-04-09 → start no earlier than 2012-06-04; resources Todd; Systems → Rashmi; Systems |
| 164 | **Beta 1** |  | 2012-06-12 → 2012-06-15 (+3d) | 15d → 18d | 54% → 50% | 27d → 22d |  |  |
| 167 | Automated Regression Tests of Beta 1 on QA |  | 2012-06-06 → 2012-06-07 (+1d) | 2d → 3d |  | 23d → 26d |  | was named Regression test Beta 1 on QA |
| 168 | Deployment: Deploy Beta 1 to STAGE. | 2012-06-07 → 2012-06-08 (+1d) | 2012-06-07 → 2012-06-08 (+1d) |  |  | 23d → 26d |  |  |
| 169 | Automated Regression Tests of Beta 1 on STAGE | 2012-06-08 → 2012-06-11 (+3d) | 2012-06-12 → 2012-06-13 (+1d) |  |  | 23d → 28d |  | was named Regression test Beta 1 on STAGE |
| 170 | Run security app scan on Beta 1. | 2012-06-08 → 2012-06-11 (+3d) | 2012-06-12 → 2012-06-13 (+1d) |  |  | 23d → 28d |  |  |
| 173 | Support Beta 1 testing by API partners. | 2012-05-23 → 2012-06-11 (+19d) | 2012-05-29 → 2012-06-15 (+17d) |  |  | 10d → 22d | none → 168 |  |
| 175 | **Release Candidate 1** |  | 2012-06-20 → 2012-06-29 (+9d) | 12d → 19d |  |  |  |  |
| 176 | Bug Fixes |  | 2012-06-12 → 2012-06-19 (+7d) | 6d → 11d |  |  |  | resources Rashmi; Winston; Paul; Quy → Rashmi; Winston; Quy |
| 177 | Deployment: Point application to draft release notes |  |  | 1d → 0.5d |  | 5d → 10.5d |  |  |
| 178 | Automated Regression Tests of RC1 on QA | 2012-06-13 → 2012-06-20 (+7d) | 2012-06-14 → 2012-06-21 (+7d) |  |  | 21d → 12d |  | was named Regression test RC1 on QA; resources Quy → Quy; Jie |
| 181 | Deploy RC1 to STAGE. | 2012-06-15 → 2012-06-26 (+11d) | 2012-06-15 → 2012-06-26 (+11d) |  |  | 21d → 12d | 178 → 178, 179 |  |
| 184 | Automated Regression Tests of RC1 on STAGE. | 2012-06-18 → 2012-06-27 (+9d) | 2012-06-18 → 2012-06-28 (+10d) | 1d → 2d |  | 23d → 13d |  | was named Regression test RC1 on STAGE.; resources Systems → Quy |
| 185 | Support RC1 testing by API partners. | 2012-06-18 → 2012-06-27 (+9d) | 2012-06-20 → 2012-06-29 (+9d) |  |  | 21d → 12d |  |  |
| 186 | Deployment: Send Draft release notes to Juli to send to Communications Office | 2012-06-13 → 2012-06-20 (+7d) | 2012-06-13 → 2012-06-20 (+7d) |  |  | 15d → 19d |  |  |
| 187 | **Release Candidate 2** | 2012-06-13 → 2012-06-20 (+7d) | 2012-06-27 → 2012-07-13 (+16d) | 11d → 18d |  |  |  |  |
| 188 | Bug Fixes - only Blockers | 2012-06-28 → 2012-06-20 (-8d) | 2012-07-02 → 2012-06-28 (-4d) | 3d → 7d |  |  | Bug Fixes - only Blocker and Critical → 176, 177 | resources KK; Todd; Paul; Quy → Rashmi; Todd; Winston; Quy |
| 189 | Automated Regression Tests of RC2 on QA | 2012-06-20 → 2012-06-29 (+9d) | 2012-06-21 → 2012-07-02 (+11d) |  |  |  | Bug Fixes - only Blocker and Critical → 188 | was named Regression test RC2 on QA; resources Systems → Quy; Jie |
| 192 | Deployment: Deploy RC2 to STAGE. | 2012-06-22 → 2012-07-09 (+17d) | 2012-06-25 → 2012-07-10 (+15d) |  |  |  | 189 → 191 |  |
| 195 | Support RC2 testing by API partners. | 2012-06-26 → 2012-07-11 (+15d) | 2012-06-27 → 2012-07-13 (+16d) | 2d → 3d |  | 0d → 2d |  | was named Regression test RC2 on STAGE; resources Systems → Rashmi |
| 207 | **Deployment** | 2012-07-12 → 2012-07-13 (+1d) | 2012-07-16 → 2012-07-17 (+1d) |  |  |  |  |  |
| 208 | Deployment: Deploy GA to PRODUCTION | 2012-07-12 → 2012-07-13 (+1d) | 2012-07-13 → 2012-07-16 (+3d) |  |  |  | Deployment: Run security app scan on RC3 (GA), STAGE testing of RC3 (GA) and QA Signoff → 193 |  |
| 209 | Deployment: Update product landing page | 2012-07-16 → 2012-07-17 (+1d) | 2012-07-16 → 2012-07-17 (+1d) |  |  |  |  |  |
| 210 | Deployment: QA smoke tests PRODUCTION | 2012-07-16 → 2012-07-17 (+1d) | 2012-07-16 → 2012-07-17 (+1d) |  |  |  |  | resources none → Quy; Jie |
| 211 | Deployment: Juli announces the release to the community | 2012-07-16 → 2012-07-17 (+1d) | 2012-07-16 → 2012-07-17 (+1d) |  |  |  |  |  |
| 212 | RELEASE 2.5.0 | 2012-07-16 → 2012-07-17 (+1d) | 2012-07-16 → 2012-07-17 (+1d) |  |  |  |  |  |

## Version 56 (saved 2012-06-13)

Note of the change: Latest project plan status.

Last finish stays 2012-07-17. Complete tasks 147 → 150.

Changed:

| ID | Task | Start | Finish | Complete | Total float |
| --- | --- | --- | --- | --- | --- |
| 1 | **CAARRAY 2.x** |  |  | 83% → 84% | 0d → 4d |
| 25 | **2.5.0** |  |  | 77% → 78% | 0d → 4d |
| 164 | **Beta 1** |  |  | 50% → 74% | 22d → 26d |
| 167 | Automated Regression Tests of Beta 1 on QA | 2012-06-05 A | 2012-06-07 A | 0% → 100% | 26d → none |
| 168 | Deployment: Deploy Beta 1 to STAGE. | 2012-06-08 A | 2012-06-08 A | 0% → 100% | 26d → none |
| 171 | Installer testing of Beta 1. | 2012-05-23 A | 2012-05-25 A | 0% → 100% | 37d → none |
| 173 | Support Beta 1 testing by API partners. | 2012-06-11 A |  | 0% → 50% |  |

## Version 57 (saved 2012-06-25)

Note of the change: Latest status.

Last finish 2012-07-17 → 2012-07-24 (+7d). Complete tasks 150 → 158.

Added:

| ID | Task | Duration | Start | Finish | Predecessors | Resources |
| --- | --- | --- | --- | --- | --- | --- |
| 177 | Fix appscan issues. | 1d | 2012-06-21 A | 2012-06-21 A | 170 |  |
| 179 | Run security appscan on RC1 on Dev tier | 3d | 2012-06-22 | 2012-06-26 | 177 | Systems |

Removed: 194 API testing of RC2 on STAGE; 195 Support RC2 testing by API partners.

Changed:

| ID | Task | Start | Finish | Duration | Complete | Total float | Other |
| --- | --- | --- | --- | --- | --- | --- | --- |
| 1 | **CAARRAY 2.x** |  | 2012-07-17 → 2012-07-24 (+7d) | 247d → 252d | 84% → 88% | 4d → 0d |  |
| 25 | **2.5.0** |  | 2012-07-17 → 2012-07-24 (+7d) | 217d → 222d | 78% → 83% | 4d → 0d |  |
| 155 | **Maintenance** |  |  |  | 57% → 82% | 17d → 22d |  |
| 158 | caGrid v1.5 upgrade - BDA for local installers |  | 2012-06-11 A |  | 33% → 100% | 26d → none |  |
| 164 | **Beta 1** |  | 2012-06-15 → 2012-06-20 A (+5d) | 18d → 21d | 74% → 100% | 26d → none |  |
| 169 | Automated Regression Tests of Beta 1 on STAGE | 2012-06-11 A | 2012-06-13 A |  | 0% → 100% | 28d → none |  |
| 170 | Run security app scan on Beta 1. | 2012-06-11 A | 2012-06-13 → 2012-06-20 A (+7d) | 3d → 8d | 0% → 100% | 28d → none |  |
| 172 | API testing of Beta 1 on STAGE | 2012-06-11 A | 2012-06-12 A |  | 0% → 100% | 25d → none |  |
| 173 | Support Beta 1 testing by API partners. |  | 2012-06-15 A |  | 50% → 100% | 22d → none |  |
| 175 | **Release Candidate 1** | 2012-06-05 A | 2012-06-29 → 2012-07-05 (+6d) | 19d → 23d | 0% → 43% | 0d → 13d |  |
| 176 | Bug Fixes | 2012-06-05 A | 2012-06-19 → 2012-06-25 (+6d) | 11d → 15d | 0% → 90% |  |  |
| 178 | Deployment: Point application to draft release notes | 2012-06-05 A | 2012-06-05 A |  | 0% → 100% | 10.5d → none |  |
| 180 | Automated Regression Tests of RC1 on QA | 2012-06-20 → 2012-06-26 (+6d) | 2012-06-21 → 2012-06-27 (+6d) |  |  | 12d → 13d |  |
| 181 | Manual and Large Data Regression Tests of RC1 on QA | 2012-06-22 → 2012-06-28 (+6d) | 2012-06-25 → 2012-06-29 (+4d) |  |  | 12d → 13d |  |
| 182 | Installer Testing of RC1 | 2012-06-26 → 2012-07-02 (+6d) | 2012-06-27 → 2012-07-03 (+6d) |  |  | 14d → 15d |  |
| 183 | Deploy RC1 to STAGE. | 2012-06-26 → 2012-07-02 (+6d) | 2012-06-26 → 2012-07-02 (+6d) |  |  | 12d → 13d |  |
| 184 | API testing of RC1 on STAGE | 2012-06-27 → 2012-07-03 (+6d) | 2012-06-28 → 2012-07-04 (+6d) |  |  | 13d → 14d |  |
| 185 | Run security appscan on RC1 on STAGE | 2012-06-27 → 2012-07-03 (+6d) | 2012-06-29 → 2012-07-05 (+6d) |  |  | 12d → 13d | was named Run security appscan on RC1 |
| 186 | Automated Regression Tests of RC1 on STAGE. | 2012-06-27 → 2012-07-03 (+6d) | 2012-06-28 → 2012-07-04 (+6d) |  |  | 13d → 14d |  |
| 187 | Support RC1 testing by API partners. | 2012-06-27 → 2012-07-03 (+6d) | 2012-06-29 → 2012-07-05 (+6d) |  |  | 12d → 13d |  |
| 188 | Deployment: Send Draft release notes to Juli to send to Communications Office | 2012-06-20 A | 2012-06-20 A |  | 0% → 100% | 19d → none |  |
| 189 | **Release Candidate 2** | 2012-06-20 → 2012-06-26 (+6d) | 2012-07-13 → 2012-07-19 (+6d) |  |  |  |  |
| 190 | Bug Fixes - only Blockers | 2012-06-20 → 2012-06-26 (+6d) | 2012-06-28 → 2012-07-05 (+7d) | 7d → 8d |  |  |  |
| 191 | Automated Regression Tests of RC2 on QA | 2012-06-29 → 2012-07-06 (+7d) | 2012-07-02 → 2012-07-09 (+7d) |  |  |  |  |
| 192 | Manual and Large Data Regression Tests of RC2 on QA | 2012-07-03 → 2012-07-10 (+7d) | 2012-07-04 → 2012-07-11 (+7d) |  |  |  |  |
| 193 | Automated Regression Tests of RC2 on QA | 2012-07-05 → 2012-07-12 (+7d) | 2012-07-06 → 2012-07-13 (+7d) |  |  |  |  |
| 194 | Deployment: Deploy RC2 to STAGE. | 2012-07-09 → 2012-07-16 (+7d) | 2012-07-10 → 2012-07-17 (+7d) |  |  |  |  |
| 195 | Automated Regression Tests of RC2 on STAGE | 2012-07-11 → 2012-07-18 (+7d) | 2012-07-12 → 2012-07-19 (+7d) |  |  |  |  |
| 207 | **Deployment** | 2012-07-13 → 2012-07-20 (+7d) | 2012-07-17 → 2012-07-24 (+7d) |  |  |  |  |
| 208 | Deployment: Deploy GA to PRODUCTION | 2012-07-13 → 2012-07-20 (+7d) | 2012-07-16 → 2012-07-23 (+7d) |  |  |  |  |
| 209 | Deployment: Update product landing page | 2012-07-17 → 2012-07-24 (+7d) | 2012-07-17 → 2012-07-24 (+7d) |  |  |  |  |
| 210 | Deployment: QA smoke tests PRODUCTION | 2012-07-17 → 2012-07-24 (+7d) | 2012-07-17 → 2012-07-24 (+7d) |  |  |  |  |
| 211 | Deployment: Juli announces the release to the community | 2012-07-17 → 2012-07-24 (+7d) | 2012-07-17 → 2012-07-24 (+7d) |  |  |  |  |
| 212 | RELEASE 2.5.0 | 2012-07-17 → 2012-07-24 (+7d) | 2012-07-17 → 2012-07-24 (+7d) |  |  |  |  |

## Version 58 (saved 2012-06-26)

Note of the change: Updated project plan with latest status.

Last finish 2012-07-24 → 2012-07-20 (-4d). Complete tasks 158 → 160.

Changed:

| ID | Task | Start | Finish | Duration | Complete | Total float | Predecessors |
| --- | --- | --- | --- | --- | --- | --- | --- |
| 1 | **CAARRAY 2.x** |  | 2012-07-24 → 2012-07-20 (-4d) | 252d → 250d | 88% → 91% |  |  |
| 25 | **2.5.0** |  | 2012-07-24 → 2012-07-20 (-4d) | 222d → 220d | 83% → 87% |  |  |
| 139 | **Single Sign-on (TRANSCEND)** |  |  |  | 60% → 92% |  |  |
| 142 | Integration testing of Single sign-on |  | 2012-06-14 A |  | 50% → 100% | 24d → none |  |
| 144 | QA of Single Sign-on | 2012-06-15 A |  |  | 0% → 80% | 18d → 24d |  |
| 155 | **Maintenance** |  | 2012-06-22 A |  | 82% → 100% | 22d → none |  |
| 159 | caGrid v1.5 upgrade - deployment on NCI tiers |  | 2012-06-22 A |  | 33% → 100% | 22d → none |  |
| 175 | **Release Candidate 1** |  | 2012-07-05 → 2012-07-06 (+1d) | 23d → 24d | 43% → 44% |  |  |
| 176 | Bug Fixes |  | 2012-06-25 → 2012-06-26 (+1d) | 15d → 16d |  |  |  |
| 180 | Automated Regression Tests of RC1 on QA | 2012-06-26 → 2012-06-27 (+1d) | 2012-06-27 → 2012-06-28 (+1d) |  |  |  |  |
| 181 | Manual and Large Data Regression Tests of RC1 on QA | 2012-06-28 → 2012-06-29 (+1d) | 2012-06-29 → 2012-07-02 (+3d) |  |  |  |  |
| 182 | Installer Testing of RC1 | 2012-07-02 → 2012-07-03 (+1d) | 2012-07-03 → 2012-07-04 (+1d) |  |  |  |  |
| 183 | Deploy RC1 to STAGE. | 2012-07-02 → 2012-07-03 (+1d) | 2012-07-02 → 2012-07-03 (+1d) |  |  |  |  |
| 184 | API testing of RC1 on STAGE | 2012-07-03 → 2012-07-04 (+1d) | 2012-07-04 → 2012-07-05 (+1d) |  |  |  |  |
| 185 | Run security appscan on RC1 on STAGE | 2012-07-03 → 2012-07-04 (+1d) | 2012-07-05 → 2012-07-06 (+1d) |  |  |  |  |
| 186 | Automated Regression Tests of RC1 on STAGE. | 2012-07-03 → 2012-07-04 (+1d) | 2012-07-04 → 2012-07-05 (+1d) |  |  |  |  |
| 187 | Support RC1 testing by API partners. | 2012-07-03 → 2012-07-04 (+1d) | 2012-07-05 → 2012-07-06 (+1d) |  |  |  |  |
| 189 | **Release Candidate 2** | 2012-06-26 → 2012-06-27 (+1d) | 2012-07-19 → 2012-07-17 (-2d) | 18d → 15d |  |  |  |
| 190 | Bug Fixes - only Blockers | 2012-06-26 → 2012-06-27 (+1d) | 2012-07-05 → 2012-07-03 (-2d) | 8d → 5d |  |  |  |
| 191 | Automated Regression Tests of RC2 on QA | 2012-07-06 → 2012-07-04 (-2d) | 2012-07-09 → 2012-07-05 (-4d) |  |  |  |  |
| 192 | Manual and Large Data Regression Tests of RC2 on QA | 2012-07-10 → 2012-07-06 (-4d) | 2012-07-11 → 2012-07-09 (-2d) |  |  |  |  |
| 193 | Automated Regression Tests of RC2 on QA | 2012-07-12 → 2012-07-10 (-2d) | 2012-07-13 → 2012-07-11 (-2d) |  |  |  |  |
| 194 | Deployment: Deploy RC2 to STAGE. | 2012-07-16 → 2012-07-12 (-4d) | 2012-07-17 → 2012-07-13 (-4d) |  |  |  |  |
| 195 | Automated Regression Tests of RC2 on STAGE | 2012-07-18 → 2012-07-16 (-2d) | 2012-07-19 → 2012-07-17 (-2d) |  |  |  |  |
| 196 | **Documentation** | 2011-09-14 A → 2012-05-01 A (+230d) | 2012-05-18 A → 2012-05-23 A (+5d) | 175d → 17d |  |  |  |
| 203 | Documentation: Finish final User's Guide. | 2011-09-14 A → 2012-05-11 A (+240d) | 2011-09-15 A → 2012-05-14 A (+242d) |  |  |  | none → 200 |
| 204 | Documentation: Review final User's Guide. | 2011-09-16 A → 2012-05-15 A (+242d) | 2011-09-16 A → 2012-05-15 A (+242d) |  |  |  |  |
| 205 | Documentation: Finish final Installation Guide. | 2011-09-14 A → 2012-05-21 A (+250d) | 2011-09-15 A → 2012-05-22 A (+250d) |  |  |  | none → 202 |
| 206 | Documentation: Review final Installation Guide. | 2011-09-16 A → 2012-05-23 A (+250d) | 2011-09-16 A → 2012-05-23 A (+250d) |  |  |  |  |
| 207 | **Deployment** | 2012-07-20 → 2012-07-18 (-2d) | 2012-07-24 → 2012-07-20 (-4d) |  |  |  |  |
| 208 | Deployment: Deploy GA to PRODUCTION | 2012-07-20 → 2012-07-18 (-2d) | 2012-07-23 → 2012-07-19 (-4d) |  |  |  |  |
| 209 | Deployment: Update product landing page | 2012-07-24 → 2012-07-20 (-4d) | 2012-07-24 → 2012-07-20 (-4d) |  |  |  |  |
| 210 | Deployment: QA smoke tests PRODUCTION | 2012-07-24 → 2012-07-20 (-4d) | 2012-07-24 → 2012-07-20 (-4d) |  |  |  |  |
| 211 | Deployment: Juli announces the release to the community | 2012-07-24 → 2012-07-20 (-4d) | 2012-07-24 → 2012-07-20 (-4d) |  |  |  |  |
| 212 | RELEASE 2.5.0 | 2012-07-24 → 2012-07-20 (-4d) | 2012-07-24 → 2012-07-20 (-4d) |  |  |  |  |

## Version 59 (saved 2012-06-29)

Note of the change: Latest status.

Last finish 2012-07-20 → 2012-07-17 (-3d). Complete tasks 160 → 162.

Removed: 193 Automated Regression Tests of RC2 on QA

Changed:

| ID | Task | Start | Finish | Duration | Complete | Total float | Predecessors |
| --- | --- | --- | --- | --- | --- | --- | --- |
| 1 | **CAARRAY 2.x** |  | 2012-07-20 → 2012-07-17 (-3d) | 250d → 247d |  |  |  |
| 25 | **2.5.0** |  | 2012-07-20 → 2012-07-17 (-3d) | 220d → 217d | 87% → 88% |  |  |
| 175 | **Release Candidate 1** |  | 2012-07-06 → 2012-07-10 (+4d) | 24d → 26d | 44% → 58% | 13d → 5d |  |
| 176 | Bug Fixes |  | 2012-06-26 A |  | 90% → 100% | 0d → none |  |
| 179 | Run security appscan on RC1 on Dev tier | 2012-06-22 A | 2012-06-26 → 2012-06-28 A (+2d) | 3d → 5d | 0% → 100% | 20d → none |  |
| 183 | Deploy RC1 to STAGE. | 2012-07-03 → 2012-07-05 (+2d) | 2012-07-03 → 2012-07-05 (+2d) |  |  | 13d → 5d | 180, 181 → 180, 181, 182 |
| 184 | API testing of RC1 on STAGE | 2012-07-04 → 2012-07-06 (+2d) | 2012-07-05 → 2012-07-09 (+4d) |  |  | 14d → 6d |  |
| 185 | Run security appscan on RC1 on STAGE | 2012-07-04 → 2012-07-06 (+2d) | 2012-07-06 → 2012-07-10 (+4d) |  |  | 13d → 5d |  |
| 186 | Automated Regression Tests of RC1 on STAGE. | 2012-07-04 → 2012-07-06 (+2d) | 2012-07-05 → 2012-07-09 (+4d) |  |  | 14d → 6d |  |
| 187 | Support RC1 testing by API partners. | 2012-07-04 → 2012-07-06 (+2d) | 2012-07-06 → 2012-07-10 (+4d) |  |  | 13d → 5d |  |
| 189 | **Release Candidate 2** |  | 2012-07-17 → 2012-07-13 (-4d) | 15d → 13d |  |  |  |
| 193 | Deployment: Deploy RC2 to STAGE. | 2012-07-12 → 2012-07-10 (-2d) | 2012-07-13 → 2012-07-11 (-2d) |  |  |  | Automated Regression Tests of RC2 on QA → 192 |
| 194 | Automated Regression Tests of RC2 on STAGE | 2012-07-16 → 2012-07-12 (-4d) | 2012-07-17 → 2012-07-13 (-4d) |  |  |  |  |
| 206 | **Deployment** | 2012-07-18 → 2012-07-16 (-2d) | 2012-07-20 → 2012-07-17 (-3d) | 3d → 2d |  |  |  |
| 207 | Deployment: Deploy GA to PRODUCTION | 2012-07-18 → 2012-07-16 (-2d) | 2012-07-19 → 2012-07-17 (-2d) | 2d → 1.5d |  |  |  |
| 208 | Deployment: Update product landing page | 2012-07-20 → 2012-07-17 (-3d) | 2012-07-20 → 2012-07-17 (-3d) |  |  | 0.5d → 0d |  |
| 209 | Deployment: QA smoke tests PRODUCTION | 2012-07-20 → 2012-07-17 (-3d) | 2012-07-20 → 2012-07-17 (-3d) | 1d → 0.5d |  |  |  |
| 210 | Deployment: Juli announces the release to the community | 2012-07-20 → 2012-07-17 (-3d) | 2012-07-20 → 2012-07-17 (-3d) |  |  | 0.5d → 0d |  |
| 211 | RELEASE 2.5.0 | 2012-07-20 → 2012-07-17 (-3d) | 2012-07-20 → 2012-07-17 (-3d) |  |  |  |  |

## Version 60 (saved 2012-07-10)

Note of the change: Latest project plan.

Last finish stays 2012-07-17. Complete tasks 162 → 168.

Removed: 189 Release Candidate 2; 190 Bug Fixes - only Blockers; 191 Automated Regression Tests of RC2 on QA; 192 Manual and Large Data Regression Tests of RC2 on QA; 193 Deployment: Deploy RC2 to STAGE.; 194 Automated Regression Tests of RC2 on STAGE

Changed:

| ID | Task | Start | Finish | Duration | Complete | Total float | Predecessors |
| --- | --- | --- | --- | --- | --- | --- | --- |
| 1 | **CAARRAY 2.x** |  |  |  | 91% → 94% |  |  |
| 25 | **2.5.0** |  |  |  | 88% → 91% |  |  |
| 64 | **Iteration M21** |  | 2012-01-24 A |  | 99% → 100% | 125.5d → none |  |
| 83 | Coordinate release dates for caArray and caIntegrator |  | 2012-01-24 A |  | 80% → 100% | 125.5d → none |  |
| 139 | **Single Sign-on (TRANSCEND)** |  | 2012-06-20 A |  | 92% → 100% | 19.5d → none |  |
| 143 | Demo of Single Sign-on to UCSF/TRANSCEND team | 2012-06-15 A | 2012-06-20 A |  | 0% → 100% | 19.5d → none |  |
| 144 | QA of Single Sign-on |  | 2012-06-20 A |  | 80% → 100% | 19.5d → none |  |
| 175 | **Release Candidate 1** |  | 2012-07-10 → 2012-07-13 (+3d) | 26d → 29d | 58% → 76% | 5d → 2d |  |
| 180 | Automated Regression Tests of RC1 on QA | 2012-06-27 A | 2012-06-28 → 2012-07-03 A (+5d) | 2d → 5d | 0% → 100% | 5d → none |  |
| 181 | Manual and Large Data Regression Tests of RC1 on QA | 2012-06-29 → 2012-07-04 A (+5d) | 2012-07-02 → 2012-07-05 A (+3d) |  | 0% → 100% | 5d → none |  |
| 182 | Installer Testing of RC1 | 2012-07-03 → 2012-07-06 A (+3d) | 2012-07-04 → 2012-07-09 A (+5d) |  | 0% → 100% | 5d → none |  |
| 183 | Deploy RC1 to STAGE. | 2012-07-05 → 2012-07-10 (+5d) | 2012-07-05 → 2012-07-10 (+5d) |  |  | 5d → 0d |  |
| 184 | API testing of RC1 on STAGE | 2012-07-06 → 2012-07-11 (+5d) | 2012-07-09 → 2012-07-12 (+3d) |  |  | 6d → 3d |  |
| 185 | Run security appscan on RC1 on STAGE | 2012-07-06 → 2012-07-11 (+5d) | 2012-07-10 → 2012-07-13 (+3d) |  |  | 5d → 0d |  |
| 186 | Automated Regression Tests of RC1 on STAGE. | 2012-07-06 → 2012-07-11 (+5d) | 2012-07-09 → 2012-07-12 (+3d) |  |  | 6d → 3d |  |
| 187 | Support RC1 testing by API partners. | 2012-07-06 → 2012-07-11 (+5d) | 2012-07-10 → 2012-07-12 (+2d) | 3d → 2d |  | 5d → 3d |  |
| 201 | Deployment: Deploy GA to PRODUCTION |  |  |  |  |  | Automated Regression Tests of RC2 on STAGE → 185, 186 |

## Version 61 (saved 2012-08-14)

Note of the change: Added patch release to project plan.

Last finish 2012-07-17 → 2012-09-25 (+70d). Complete tasks 168 → 179.

Added:

| ID | Task | Duration | Start | Finish | Predecessors | Constraint | Resources |
| --- | --- | --- | --- | --- | --- | --- | --- |
| 1 | **CTRP2-ProjectSchedule** | 297d | 2011-08-03 A | 2012-09-25 |  |  |  |
| 207 | **2.5.1** | 51d | 2012-07-17 A | 2012-09-25 |  |  |  |
| 208 | **Maintenance and Bug Fixes** | 51d | 2012-07-17 A | 2012-09-25 |  |  |  |
| 209 | ARRAY-2390, ARRAY-2053, ARRAY-2401 | 10d | 2012-07-17 A | 2012-07-30 A | 202 |  | Winston; Quy; Rashmi |
| 210 | ARRAY-2584, ARRAY-2585, ARRAY-2344, ARRAY-2588, ARRAY-2590, ARRAY-2344 | 10d | 2012-07-31 A | 2012-08-13 A | 209 |  | Winston; Quy; Rashmi |
| 211 | ARRAY-2586, ARRAY-2589 | 4d | 2012-08-14 | 2012-08-17 | 210 |  | Winston; Quy; Rashmi |
| 212 | Appscan on Dev tier | 4d | 2012-08-20 | 2012-08-23 | 211 |  | Systems |
| 213 | Verify bug fixes on QA tier | 1d | 2012-08-20 | 2012-08-20 | 211 |  | Quy |
| 214 | Automated Regression Testing on QA tier | 3d | 2012-08-21 | 2012-08-23 | 213 |  | Quy |
| 215 | Onboard new QA person | 4d | 2012-08-27 | 2012-08-30 |  | start no earlier than 2012-08-27 | New QA Person; Rashmi; Winston |
| 216 | Manual Regression Testing on QA tier | 4d | 2012-08-31 | 2012-09-05 | 215 |  | New QA Person |
| 217 | Appscan on QA tier | 3d | 2012-09-06 | 2012-09-10 | 216 |  | Systems |
| 218 | Installer Testing | 3d | 2012-09-06 | 2012-09-10 | 216 |  | New QA Person |
| 219 | Deploy to STAGE | 1d | 2012-09-11 | 2012-09-11 | 217 |  | Systems |
| 220 | Automated Regression Testing on STAGE | 4d | 2012-09-12 | 2012-09-17 | 219 |  | New QA Person |
| 221 | Appscan on STAGE | 3d | 2012-09-18 | 2012-09-20 | 220 |  | Systems |
| 222 | API Testing on STAGE | 2d | 2012-09-18 | 2012-09-19 | 220 |  | Ye |
| 223 | Create release artifacts | 1d | 2012-09-12 | 2012-09-12 | 219 |  | Rashmi |
| 224 | Deploy to PRODUCTION | 2d | 2012-09-21 | 2012-09-24 | 221 |  | Systems |
| 225 | Update product landing page | 0.5d | 2012-09-25 | 2012-09-25 | 224 |  | Rashmi; Ann Wiley |
| 226 | QA smoke tests PRODUCTION | 1d | 2012-09-25 | 2012-09-25 | 224 |  | New QA Person |
| 227 | RELEASE 2.5.1 | 0d | 2012-09-25 | 2012-09-25 | 226 |  |  |

Changed:

| ID | Task | Start | Finish | Duration | Complete | Total float |
| --- | --- | --- | --- | --- | --- | --- |
| 2 | **CAARRAY 2.x** |  | 2012-07-17 → 2012-09-25 (+70d) | 247d → 297d | 94% → 90% |  |
| 26 | **2.5.0** |  | 2012-07-17 → 2012-08-13 (+27d) | 217d → 236d | 91% → 90% | 0d → 31d |
| 146 | **TRANSCEND Delivery and UAT** |  | 2012-07-09 → 2012-08-13 (+35d) | 66d → 91d | 34% → 26% | 6d → 31d |
| 151 | Support UCSF as they do UAT |  | 2012-07-09 → 2012-08-13 (+35d) | 50d → 75d |  | 6d → 31d |
| 176 | **Release Candidate 1** |  | 2012-07-13 A |  | 76% → 100% | 2d → none |
| 184 | Deploy RC1 to STAGE. | 2012-07-10 A | 2012-07-10 A |  | 0% → 100% | 0d → none |
| 185 | API testing of RC1 on STAGE | 2012-07-11 A | 2012-07-12 A |  | 0% → 100% | 3d → none |
| 186 | Run security appscan on RC1 on STAGE | 2012-07-11 A | 2012-07-13 A |  | 0% → 100% | 0d → none |
| 187 | Automated Regression Tests of RC1 on STAGE. | 2012-07-11 A | 2012-07-12 A |  | 0% → 100% | 3d → none |
| 188 | Support RC1 testing by API partners. | 2012-07-11 A | 2012-07-12 A |  | 0% → 100% | 3d → none |
| 201 | **Deployment** | 2012-07-16 A | 2012-07-17 A |  | 0% → 100% | 0d → none |
| 202 | Deployment: Deploy GA to PRODUCTION | 2012-07-16 A | 2012-07-17 → 2012-07-16 A (-1d) | 1.5d → 1d | 0% → 100% | 0d → none |
| 203 | Deployment: Update product landing page | 2012-07-17 A | 2012-07-17 A |  | 0% → 100% | 0d → none |
| 204 | Deployment: QA smoke tests PRODUCTION | 2012-07-17 A | 2012-07-17 A |  | 0% → 100% | 0d → none |
| 205 | Deployment: Juli announces the release to the community | 2012-07-17 A | 2012-07-17 A |  | 0% → 100% | 0d → none |

## Version 62 (saved 2012-08-20)

Note of the change: Added more time for QA and appscans.

Last finish 2012-09-25 → 2012-10-26 (+31d).

Added:

| ID | Task | Duration | Start | Finish | Predecessors | Constraint | Resources |
| --- | --- | --- | --- | --- | --- | --- | --- |
| 212 | Test Plan Updates | 2d | 2012-08-20 | 2012-08-21 |  | start no earlier than 2012-08-20 | Quy |
| 213 | Test Plan Review | 2d | 2012-08-22 | 2012-08-23 | 212 |  | Quy; JJ; Juli |
| 217 | Fix Automated Regression Tests | 2d | 2012-08-31 | 2012-09-03 | 216 |  | New QA Person; Vivek |
| 218 | Move Test Cases to HP Quality Center | 2d | 2012-09-04 | 2012-09-05 | 217 |  | New QA Person |
| 221 | Section 508 testing on QA tier | 2d | 2012-09-18 | 2012-09-19 | 220 |  | New QA Person |
| 222 | Test Results Review and Reporting | 1d | 2012-09-20 | 2012-09-20 | 221 |  | New QA Person |
| 229 | Test Results Review and Reporting | 1d | 2012-10-23 | 2012-10-23 | 226, 228, 227 |  | New QA Person |

Changed:

| ID | Task | Start | Finish | Duration | Complete | Total float | Predecessors | Other |
| --- | --- | --- | --- | --- | --- | --- | --- | --- |
| 1 | **CTRP2-ProjectSchedule** |  | 2012-09-25 → 2012-10-26 (+31d) | 297d → 320d | 90% → 87% |  |  |  |
| 2 | **CAARRAY 2.x** |  | 2012-09-25 → 2012-10-26 (+31d) | 297d → 320d | 90% → 87% |  |  |  |
| 207 | **2.5.1** |  | 2012-09-25 → 2012-10-26 (+31d) | 51d → 74d | 33% → 20% |  |  |  |
| 208 | **Maintenance and Bug Fixes** |  | 2012-09-25 → 2012-10-26 (+31d) | 51d → 74d | 33% → 20% |  |  |  |
| 211 | ARRAY-2586, ARRAY-2589 |  | 2012-08-17 → 2012-08-23 (+6d) | 4d → 8d |  | 21.5d → 31d |  |  |
| 214 | Appscan on Dev tier | 2012-08-20 → 2012-08-24 (+4d) | 2012-08-23 → 2012-09-06 (+14d) | 4d → 10d |  | 21.5d → 36d | 211 → 213 |  |
| 215 | Verify bug fixes on QA tier | 2012-08-20 → 2012-08-24 (+4d) | 2012-08-20 → 2012-08-24 (+4d) |  |  | 21.5d → 40d |  |  |
| 219 | Automated Regression Testing on QA tier | 2012-08-21 → 2012-09-06 (+16d) | 2012-08-23 → 2012-09-11 (+19d) | 3d → 4d |  | 21.5d → 0d | 215 → 218 | resources Quy → New QA Person |
| 220 | Manual Regression Testing on QA tier | 2012-08-31 → 2012-09-12 (+12d) | 2012-09-05 → 2012-09-17 (+12d) |  |  |  | 216 → 219 |  |
| 223 | Appscan on QA tier | 2012-09-06 → 2012-09-18 (+12d) | 2012-09-10 → 2012-10-01 (+21d) | 3d → 10d |  |  |  |  |
| 224 | Installer Testing | 2012-09-06 → 2012-09-18 (+12d) | 2012-09-10 → 2012-09-21 (+11d) | 3d → 4d |  | 11d → 25d |  |  |
| 225 | Deploy to STAGE | 2012-09-11 → 2012-10-02 (+21d) | 2012-09-11 → 2012-10-02 (+21d) |  |  |  |  |  |
| 226 | Automated Regression Testing on STAGE | 2012-09-12 → 2012-10-03 (+21d) | 2012-09-17 → 2012-10-08 (+21d) |  |  |  |  |  |
| 227 | Appscan on STAGE | 2012-09-18 → 2012-10-09 (+21d) | 2012-09-20 → 2012-10-22 (+32d) | 3d → 10d |  |  |  |  |
| 228 | API Testing on STAGE | 2012-09-18 → 2012-10-09 (+21d) | 2012-09-19 → 2012-10-10 (+21d) |  |  | 4d → 8d |  |  |
| 230 | Create release artifacts | 2012-09-12 → 2012-10-03 (+21d) | 2012-09-12 → 2012-10-03 (+21d) |  |  | 9d → 17d |  |  |
| 231 | Deploy to PRODUCTION | 2012-09-21 → 2012-10-24 (+33d) | 2012-09-24 → 2012-10-25 (+31d) |  |  |  | 227 → 229 |  |
| 232 | Update product landing page | 2012-09-25 → 2012-10-26 (+31d) | 2012-09-25 → 2012-10-26 (+31d) |  |  |  |  |  |
| 233 | QA smoke tests PRODUCTION | 2012-09-25 → 2012-10-26 (+31d) | 2012-09-25 → 2012-10-26 (+31d) |  |  |  |  |  |
| 234 | RELEASE 2.5.1 | 2012-09-25 → 2012-10-26 (+31d) | 2012-09-25 → 2012-10-26 (+31d) |  |  |  |  |  |

## Version 63 (saved 2012-08-28)

Note of the change: Updated project plan.

Last finish 2012-10-26 → 2012-10-31 (+5d).

Changed:

| ID | Task | Start | Finish | Duration | Complete | Total float | Predecessors | Other |
| --- | --- | --- | --- | --- | --- | --- | --- | --- |
| 1 | **CTRP2-ProjectSchedule** |  | 2012-10-26 → 2012-10-31 (+5d) | 320d → 323d | 87% → 86% |  |  |  |
| 2 | **CAARRAY 2.x** |  | 2012-10-26 → 2012-10-31 (+5d) | 320d → 323d | 87% → 86% |  |  |  |
| 207 | **2.5.1** |  | 2012-10-26 → 2012-10-31 (+5d) | 74d → 77d |  |  |  |  |
| 208 | **Maintenance and Bug Fixes** |  | 2012-10-26 → 2012-10-31 (+5d) | 74d → 77d |  |  |  |  |
| 211 | ARRAY-2586, ARRAY-2589 |  | 2012-08-23 → 2012-09-03 (+11d) | 8d → 15d |  | 31d → 0d |  |  |
| 213 | Test Plan Review | 2012-08-22 → 2012-09-04 (+13d) | 2012-08-23 → 2012-09-05 (+13d) |  |  | 36d → 8d |  | constraint none → start no earlier than 2012-09-04; resources Quy; JJ; Juli → Marina; JJ; Juli |
| 214 | Appscan on Dev tier | 2012-08-24 → 2012-09-04 (+11d) | 2012-09-06 → 2012-09-17 (+11d) |  |  | 36d → 32d | 213 → 211 |  |
| 215 | Onboard new QA person | 2012-08-27 A |  |  | 0% → 25% | 0d → 12d |  | resources New QA Person; Rashmi; Winston → Marina; Rashmi; Winston |
| 216 | Verify bug fixes on QA tier | 2012-08-24 → 2012-09-04 (+11d) | 2012-08-24 → 2012-09-04 (+11d) |  |  | 40d → 0d |  | resources Quy → Marina |
| 217 | Fix Automated Regression Tests | 2012-08-31 → 2012-09-05 (+5d) | 2012-09-03 → 2012-09-06 (+3d) |  |  |  | 215 → 216 | resources New QA Person; Vivek → Marina; Vivek |
| 218 | Move Test Cases to HP Quality Center | 2012-09-04 → 2012-09-07 (+3d) | 2012-09-05 → 2012-09-10 (+5d) |  |  |  |  | resources New QA Person → Marina |
| 219 | Automated Regression Testing on QA tier | 2012-09-06 → 2012-09-11 (+5d) | 2012-09-11 → 2012-09-14 (+3d) |  |  |  |  | resources New QA Person → Marina |
| 220 | Manual Regression Testing on QA tier | 2012-09-12 → 2012-09-17 (+5d) | 2012-09-17 → 2012-09-20 (+3d) |  |  |  |  | resources New QA Person → Marina |
| 221 | Section 508 testing on QA tier | 2012-09-18 → 2012-09-21 (+3d) | 2012-09-19 → 2012-09-24 (+5d) |  |  |  |  | resources New QA Person → Marina |
| 222 | Test Results Review and Reporting | 2012-09-20 → 2012-09-25 (+5d) | 2012-09-20 → 2012-09-25 (+5d) |  |  |  |  | resources New QA Person → Marina |
| 223 | Appscan on QA tier | 2012-09-18 → 2012-09-21 (+3d) | 2012-10-01 → 2012-10-04 (+3d) |  |  |  |  |  |
| 224 | Installer Testing | 2012-09-18 → 2012-09-21 (+3d) | 2012-09-21 → 2012-09-26 (+5d) |  |  |  |  | resources New QA Person → Marina |
| 225 | Deploy to STAGE | 2012-10-02 → 2012-10-05 (+3d) | 2012-10-02 → 2012-10-05 (+3d) |  |  |  |  |  |
| 226 | Automated Regression Testing on STAGE | 2012-10-03 → 2012-10-08 (+5d) | 2012-10-08 → 2012-10-11 (+3d) |  |  |  |  | resources New QA Person → Marina |
| 227 | Appscan on STAGE | 2012-10-09 → 2012-10-12 (+3d) | 2012-10-22 → 2012-10-25 (+3d) |  |  |  |  |  |
| 228 | API Testing on STAGE | 2012-10-09 → 2012-10-12 (+3d) | 2012-10-10 → 2012-10-15 (+5d) |  |  |  |  |  |
| 229 | Test Results Review and Reporting | 2012-10-23 → 2012-10-26 (+3d) | 2012-10-23 → 2012-10-26 (+3d) |  |  |  |  | resources New QA Person → Marina |
| 230 | Create release artifacts | 2012-10-03 → 2012-10-08 (+5d) | 2012-10-03 → 2012-10-08 (+5d) |  |  |  |  |  |
| 231 | Deploy to PRODUCTION | 2012-10-24 → 2012-10-29 (+5d) | 2012-10-25 → 2012-10-30 (+5d) |  |  |  |  |  |
| 232 | Update product landing page | 2012-10-26 → 2012-10-31 (+5d) | 2012-10-26 → 2012-10-31 (+5d) |  |  |  |  |  |
| 233 | QA smoke tests PRODUCTION | 2012-10-26 → 2012-10-31 (+5d) | 2012-10-26 → 2012-10-31 (+5d) |  |  |  |  | resources New QA Person → Marina |
| 234 | RELEASE 2.5.1 | 2012-10-26 → 2012-10-31 (+5d) | 2012-10-26 → 2012-10-31 (+5d) |  |  |  |  |  |

## Version 64 (saved 2012-09-04)

Note of the change: Updated project plan.

Last finish 2012-10-31 → 2012-11-07 (+7d).

Changed:

| ID | Task | Start | Finish | Duration | Complete | Other |
| --- | --- | --- | --- | --- | --- | --- |
| 1 | **CTRP2-ProjectSchedule** |  | 2012-10-31 → 2012-11-07 (+7d) | 323d → 328d |  |  |
| 2 | **CAARRAY 2.x** |  | 2012-10-31 → 2012-11-07 (+7d) | 323d → 328d |  |  |
| 207 | **2.5.1** |  | 2012-10-31 → 2012-11-07 (+7d) | 77d → 82d | 20% → 19% |  |
| 208 | **Maintenance and Bug Fixes** |  | 2012-10-31 → 2012-11-07 (+7d) | 77d → 82d | 20% → 19% |  |
| 211 | ARRAY-2586, ARRAY-2598 |  | 2012-09-03 → 2012-09-10 (+7d) | 15d → 20d |  | was named ARRAY-2586, ARRAY-2589 |
| 214 | Appscan on Dev tier | 2012-09-04 → 2012-09-11 (+7d) | 2012-09-17 → 2012-09-24 (+7d) |  |  |  |
| 216 | Verify bug fixes on QA tier | 2012-09-04 → 2012-09-11 (+7d) | 2012-09-04 → 2012-09-11 (+7d) |  |  |  |
| 217 | Fix Automated Regression Tests | 2012-09-05 → 2012-09-12 (+7d) | 2012-09-06 → 2012-09-13 (+7d) |  |  |  |
| 218 | Move Test Cases to HP Quality Center | 2012-09-07 → 2012-09-14 (+7d) | 2012-09-10 → 2012-09-17 (+7d) |  |  |  |
| 219 | Automated Regression Testing on QA tier | 2012-09-11 → 2012-09-18 (+7d) | 2012-09-14 → 2012-09-21 (+7d) |  |  |  |
| 220 | Manual Regression Testing on QA tier | 2012-09-17 → 2012-09-24 (+7d) | 2012-09-20 → 2012-09-27 (+7d) |  |  |  |
| 221 | Section 508 testing on QA tier | 2012-09-21 → 2012-09-28 (+7d) | 2012-09-24 → 2012-10-01 (+7d) |  |  |  |
| 222 | Test Results Review and Reporting | 2012-09-25 → 2012-10-02 (+7d) | 2012-09-25 → 2012-10-02 (+7d) |  |  |  |
| 223 | Appscan on QA tier | 2012-09-21 → 2012-09-28 (+7d) | 2012-10-04 → 2012-10-11 (+7d) |  |  |  |
| 224 | Installer Testing | 2012-09-21 → 2012-09-28 (+7d) | 2012-09-26 → 2012-10-03 (+7d) |  |  |  |
| 225 | Deploy to STAGE | 2012-10-05 → 2012-10-12 (+7d) | 2012-10-05 → 2012-10-12 (+7d) |  |  |  |
| 226 | Automated Regression Testing on STAGE | 2012-10-08 → 2012-10-15 (+7d) | 2012-10-11 → 2012-10-18 (+7d) |  |  |  |
| 227 | Appscan on STAGE | 2012-10-12 → 2012-10-19 (+7d) | 2012-10-25 → 2012-11-01 (+7d) |  |  |  |
| 228 | API Testing on STAGE | 2012-10-12 → 2012-10-19 (+7d) | 2012-10-15 → 2012-10-22 (+7d) |  |  |  |
| 229 | Test Results Review and Reporting | 2012-10-26 → 2012-11-02 (+7d) | 2012-10-26 → 2012-11-02 (+7d) |  |  |  |
| 230 | Create release artifacts | 2012-10-08 → 2012-10-15 (+7d) | 2012-10-08 → 2012-10-15 (+7d) |  |  |  |
| 231 | Deploy to PRODUCTION | 2012-10-29 → 2012-11-05 (+7d) | 2012-10-30 → 2012-11-06 (+7d) |  |  |  |
| 232 | Update product landing page | 2012-10-31 → 2012-11-07 (+7d) | 2012-10-31 → 2012-11-07 (+7d) |  |  |  |
| 233 | QA smoke tests PRODUCTION | 2012-10-31 → 2012-11-07 (+7d) | 2012-10-31 → 2012-11-07 (+7d) |  |  |  |
| 234 | RELEASE 2.5.1 | 2012-10-31 → 2012-11-07 (+7d) | 2012-10-31 → 2012-11-07 (+7d) |  |  |  |

## Version 65 (saved 2012-10-22)

Note of the change: Updated project plan.

Last finish 2012-11-07 → 2012-12-26 (+49d). Complete tasks 179 → 185.

Added:

| ID | Task | Duration | Start | Finish | Predecessors | Resources |
| --- | --- | --- | --- | --- | --- | --- |
| 212 | ARRAY-2584, 2592 | 7d | 2012-08-28 A | 2012-09-05 A | 211 |  |
| 213 | ARRAY-2598, 2605 | 10d | 2012-09-06 A | 2012-09-19 A | 212 |  |
| 214 | ARRAY-2586, 2609, 2603, 2606, 2607 | 10d | 2012-09-20 A | 2012-10-03 A | 213 |  |
| 215 | ARRAY-1618, 2597, 2599, 2608 | 10d | 2012-10-04 A | 2012-10-17 A | 214 |  |
| 216 | ARRAY-2617,2616 | 10d | 2012-10-18 A | 2012-10-31 | 215 | Winston; Rashmi |
| 217 | QA-test and Release patched 2.5.0 installer | 10d | 2012-11-01 | 2012-11-14 | 216 | Marina; Rashmi |

Removed: 227 Appscan on STAGE

Changed:

| ID | Task | Start | Finish | Duration | Complete | Total float | Predecessors | Other |
| --- | --- | --- | --- | --- | --- | --- | --- | --- |
| 1 | **CTRP2-ProjectSchedule** |  | 2012-11-07 → 2012-12-26 (+49d) | 328d → 363d | 86% → 79% |  |  |  |
| 2 | **CAARRAY 2.x** |  | 2012-11-07 → 2012-12-26 (+49d) | 328d → 363d | 86% → 79% |  |  |  |
| 207 | **2.5.1** | 2012-07-17 A → 2011-09-13 A (-308d) | 2012-11-07 → 2012-12-26 (+49d) | 82d → 334d | 19% → 29% |  |  |  |
| 208 | **Maintenance and Bug Fixes** | 2012-07-17 A → 2011-09-13 A (-308d) | 2012-11-07 → 2012-12-26 (+49d) | 82d → 334d | 19% → 29% |  |  |  |
| 210 | ARRAY-2585, ARRAY-2344, ARRAY-2588, ARRAY-2590, ARRAY-2344 |  |  |  |  |  |  | was named ARRAY-2584, ARRAY-2585, ARRAY-2344, ARRAY-2588, ARRAY-2590, ARRAY-2344 |
| 211 | ARRAY-1516,1892,2063,2350,2412,2454 | 2012-08-14 A | 2012-09-10 → 2012-08-27 A (-14d) | 20d → 10d | 0% → 100% | 0d → none |  | was named ARRAY-2586, ARRAY-2598 |
| 218 | Test Plan Updates |  | 2012-08-21 → 2012-10-19 (+59d) | 2d → 45d |  | 17d → 48d |  | resources Quy → Marina |
| 219 | Test Plan Review | 2012-09-04 A | 2012-09-05 → 2012-11-05 (+61d) | 2d → 45d | 0% → 25% | 8d → 37d | 218 → none |  |
| 220 | Appscan on Dev tier | 2012-09-11 → 2012-11-15 (+65d) | 2012-09-24 → 2012-11-28 (+65d) |  |  | 32d → 20d | 211 → 217 |  |
| 221 | Onboard new QA person |  | 2012-08-30 A |  | 25% → 100% | 12d → none |  |  |
| 222 | Verify bug fixes on QA tier | 2012-09-11 → 2012-11-15 (+65d) | 2012-09-11 → 2012-11-15 (+65d) |  |  |  | 211 → 217 |  |
| 223 | Fix Automated Regression Tests | 2012-09-12 → 2011-09-13 (-365d) | 2012-09-13 → 2011-10-24 (-325d) | 2d → 30d |  | 0d → 304d | 222 → none | constraint none → start no earlier than 2011-09-13 |
| 224 | Move Test Cases to HP Quality Center | 2012-09-14 → 2011-09-13 (-367d) | 2012-09-17 → 2011-10-24 (-329d) | 2d → 30d |  | 0d → 304d | 223 → none | constraint none → start no earlier than 2011-09-13 |
| 225 | Automated Regression Testing on QA tier | 2012-09-18 → 2012-11-16 (+59d) | 2012-09-21 → 2012-11-21 (+61d) |  |  |  | 224 → 222 |  |
| 226 | Manual Regression Testing on QA tier | 2012-09-24 → 2012-11-22 (+59d) | 2012-09-27 → 2012-11-27 (+61d) |  |  |  |  |  |
| 227 | Section 508 testing on QA tier | 2012-09-28 → 2012-11-28 (+61d) | 2012-10-01 → 2012-11-29 (+59d) |  |  | 26d → 18d |  |  |
| 228 | Test Results Review and Reporting | 2012-10-02 → 2012-11-30 (+59d) | 2012-10-02 → 2012-11-30 (+59d) |  |  | 26d → 18d |  |  |
| 229 | Appscan on QA tier | 2012-09-28 → 2012-11-28 (+61d) | 2012-10-11 → 2012-12-11 (+61d) |  |  |  |  |  |
| 230 | Installer Testing | 2012-09-28 → 2012-11-28 (+61d) | 2012-10-03 → 2012-12-03 (+61d) |  |  | 25d → 17d |  |  |
| 231 | Deploy to STAGE | 2012-10-12 → 2012-12-12 (+61d) | 2012-10-12 → 2012-12-12 (+61d) |  |  |  |  |  |
| 232 | Automated Regression Testing on STAGE | 2012-10-15 → 2012-12-13 (+59d) | 2012-10-18 → 2012-12-18 (+61d) |  |  |  |  |  |
| 233 | API Testing on STAGE | 2012-10-19 → 2012-12-19 (+61d) | 2012-10-22 → 2012-12-20 (+59d) |  |  | 8d → 0d |  |  |
| 234 | Test Results Review and Reporting | 2012-11-02 → 2012-12-21 (+49d) | 2012-11-02 → 2012-12-21 (+49d) |  |  |  | 232, 233, Appscan on STAGE → 232, 233 |  |
| 235 | Create release artifacts | 2012-10-15 → 2012-12-13 (+59d) | 2012-10-15 → 2012-12-13 (+59d) |  |  | 17d → 9d |  |  |
| 236 | Deploy to PRODUCTION | 2012-11-05 → 2012-12-24 (+49d) | 2012-11-06 → 2012-12-25 (+49d) |  |  |  |  |  |
| 237 | Update product landing page | 2012-11-07 → 2012-12-26 (+49d) | 2012-11-07 → 2012-12-26 (+49d) |  |  |  |  |  |
| 238 | QA smoke tests PRODUCTION | 2012-11-07 → 2012-12-26 (+49d) | 2012-11-07 → 2012-12-26 (+49d) |  |  |  |  |  |
| 239 | RELEASE 2.5.1 | 2012-11-07 → 2012-12-26 (+49d) | 2012-11-07 → 2012-12-26 (+49d) |  |  |  |  |  |
