# caarray_2_2_1

How a schedule from MS Project changed from version to version. A marks actual dates.

## Version 1 (saved 2009-03-13)

Note of the change: caarray 221 schedule

| ID | WBS | Task | Duration | Start | Finish | Predecessors | Complete | Total float | Constraint |
| --- | --- | --- | --- | --- | --- | --- | --- | --- | --- |
| 1 | 1 | **caArray 2.2.1** | 187d? | 2008-10-13 A | 2009-06-30 |  | 23% | 0d |  |
| 2 | 1.1 | **Construction Beta** | 13d | 2009-02-16 A | 2009-03-04 A |  | 100% |  |  |
| 3 | 1.1.1 | **Implementation** | 5d | 2009-02-19 A | 2009-02-25 A |  | 100% |  |  |
| 4 |  | Implement Beta items | 4d | 2009-02-19 A | 2009-02-24 A |  | 100% |  | finish no earlier than 2009-02-24 |
| 5 |  | Verify Beta items on DEV tier | 1d | 2009-02-25 A | 2009-02-25 A | 4 | 100% |  |  |
| 6 |  | Milestone: Deploy Beta to QA-VM | 0d | 2009-02-25 A | 2009-02-25 A | 5 | 100% |  |  |
| 7 | 1.1.2 | **IQA Testing** | 13d | 2009-02-16 A | 2009-03-04 A |  | 100% |  |  |
| 8 |  | UAT new items on QA | 5d | 2009-02-26 A | 2009-03-04 A | 6 | 100% |  |  |
| 9 |  | Milestone: Complete Beta Testing | 0d | 2009-02-16 A | 2009-02-16 A |  | 100% |  |  |
| 10 |  | Milestone: Complete Beta Construction | 0d | 2009-02-25 A | 2009-02-25 A | 6, 9 | 100% |  |  |
| 11 | 1.2 | **Construction RC1** | 29d? | 2009-03-02 | 2009-04-09 |  |  | 38d |  |
| 12 | 1.2.1 | **Implementation** | 16d? | 2009-03-02 | 2009-03-23 | 6 |  | 38d |  |
| 13 |  | Implement RC1 items | 15d? | 2009-03-02 | 2009-03-20 | 6 |  | 38d | finish no earlier than 2009-03-20 |
| 14 |  | Verify RC1 items on DEV tier | 1d | 2009-03-23 | 2009-03-23 | 13 |  | 38d |  |
| 15 |  | Milestone: Deploy RC1 to QA | 0d | 2009-03-23 | 2009-03-23 | 14 |  | 38d |  |
| 16 | 1.2.2 | **IQA Testing** | 13d | 2009-03-24 | 2009-04-09 | 15 |  | 38d |  |
| 17 |  | 221RC1: Verify new items on QA | 5d | 2009-03-24 | 2009-03-30 | 15 |  | 38d |  |
| 18 |  | 221RC1: Regression test on QA | 3d | 2009-03-24 | 2009-03-26 | 15 |  | 40d |  |
| 19 |  | Deployment test on QA-VM | 2d | 2009-03-24 | 2009-03-25 | 15 |  | 69d |  |
| 20 |  | Installer test | 3d | 2009-03-24 | 2009-03-26 | 15 |  | 43d |  |
| 21 |  | App scan on QA | 3d | 2009-03-31 | 2009-04-02 | 17, 18 |  | 38d |  |
| 22 |  | Deploy RC1 to STAGE | 2d | 2009-03-31 | 2009-04-01 | 17, 18 |  | 58d |  |
| 23 |  | 221RC1: Verify new items on STAGE | 2d | 2009-04-02 | 2009-04-03 | 22 |  | 59d |  |
| 24 |  | 221RC1: Regression test on STAGE | 3d | 2009-04-02 | 2009-04-06 | 22 |  | 58d |  |
| 25 |  | App scan on STAGE | 3d | 2009-04-07 | 2009-04-09 | 21, 23, 24 |  | 58d |  |
| 26 |  | Milestone: Complete RC2 Testing | 0d | 2009-04-09 | 2009-04-09 | 25 |  | 58d |  |
| 27 |  | Milestone: Complete RC1 Construction | 0d | 2009-04-09 | 2009-04-09 | 15, 16 |  | 71d |  |
| 28 | 1.3 | **Construction RC2** | 15d | 2009-04-03 | 2009-04-23 |  |  | 38d |  |
| 29 | 1.3.1 | **Implementation** | 4d | 2009-04-03 | 2009-04-08 |  |  | 38d |  |
| 30 |  | Implement RC2 items | 3d | 2009-04-03 | 2009-04-07 | 17, 18, 20, 21 |  | 38d |  |
| 31 |  | Verify RC2 items on DEV tier | 1d | 2009-04-08 | 2009-04-08 | 30 |  | 38d |  |
| 32 |  | Milestone: Deploy R2 to QA | 0d | 2009-04-08 | 2009-04-08 | 31 |  | 38d |  |
| 33 | 1.3.2 | **IQA Testing** | 11d | 2009-04-09 | 2009-04-23 | 32 |  | 38d |  |
| 34 |  | 221RC2: Verify defects on QA | 3d | 2009-04-09 | 2009-04-13 | 32 |  | 38d |  |
| 35 |  | 221RC2: Regression test on QA | 3d | 2009-04-09 | 2009-04-13 | 32 |  | 38d |  |
| 36 |  | Deployment test on QA-VM | 2d | 2009-04-09 | 2009-04-10 | 32 |  | 57d |  |
| 37 |  | Installer test | 3d | 2009-04-09 | 2009-04-13 | 32 |  | 56d |  |
| 38 |  | App scan on QA | 3d | 2009-04-14 | 2009-04-16 | 34, 35 |  | 45d |  |
| 39 |  | Deploy RC2 to Stage | 2d | 2009-04-14 | 2009-04-15 | 34, 35 |  | 43d |  |
| 40 |  | 221RC2: Verify defects on STAGE | 3d | 2009-04-16 | 2009-04-20 | 39 |  | 43d |  |
| 41 |  | 221RC2: Regression test on STAGE | 3d | 2009-04-16 | 2009-04-20 | 39 |  | 43d |  |
| 42 |  | App scan on STAGE | 3d | 2009-04-21 | 2009-04-23 | 38, 40, 41 |  | 43d |  |
| 43 |  | Milestone: Complete RC2 Testing | 0d | 2009-04-23 | 2009-04-23 | 42 |  | 43d |  |
| 44 |  | Milestone: Complete RC2 Construction | 0d | 2009-04-23 | 2009-04-23 | 43 |  | 43d |  |
| 45 | 1.4 | **Construction RC3** | 15d | 2009-04-14 | 2009-05-04 |  |  | 38d |  |
| 46 | 1.4.1 | **Implementation** | 4d | 2009-04-14 | 2009-04-17 |  |  | 38d |  |
| 47 |  | Implement RC3 items | 3d | 2009-04-14 | 2009-04-16 | 34, 35 |  | 51d |  |
| 48 |  | Verify RC3 items on DEV tier | 1d | 2009-04-17 | 2009-04-17 | 47 |  | 51d |  |
| 49 |  | Milestone: Deploy R3 to QA | 0d | 2009-04-17 | 2009-04-17 | 48 |  | 38d |  |
| 50 | 1.4.2 | **IQA Testing** | 11d | 2009-04-20 | 2009-05-04 | 49 |  | 38d |  |
| 51 |  | 221RC3: Verify defects on QA | 2d | 2009-04-20 | 2009-04-21 | 49 |  | 52d |  |
| 52 |  | 221RC3: Regression test on QA | 3d | 2009-04-20 | 2009-04-22 | 49 |  | 51d |  |
| 53 |  | Deployment test on QA-VM | 2d | 2009-04-20 | 2009-04-21 | 49 |  | 63d |  |
| 54 |  | Installer test | 5d | 2009-04-20 | 2009-04-24 | 49 |  | 60d |  |
| 55 |  | App scan on QA | 3d | 2009-04-23 | 2009-04-27 | 51, 52 |  | 53d |  |
| 56 |  | Deploy RC3 to Stage | 2d | 2009-04-23 | 2009-04-24 | 51, 52 |  | 51d |  |
| 57 |  | 221RC3: Verify defects on STAGE | 3d | 2009-04-27 | 2009-04-29 | 56 |  | 51d |  |
| 58 |  | 221RC3: Regression test on STAGE | 3d | 2009-04-27 | 2009-04-29 | 56 |  | 51d |  |
| 59 |  | App scan on STAGE | 3d | 2009-04-30 | 2009-05-04 | 55, 57, 58 |  | 51d |  |
| 60 |  | Milestone: Complete RC3 Testing | 0d | 2009-05-04 | 2009-05-04 | 59 |  | 51d |  |
| 61 |  | Milestone: Complete RC3 Construction | 0d | 2009-05-04 | 2009-05-04 | 60 |  | 51d |  |
| 62 | 1.5 | **Transition** | 187d | 2008-10-13 A | 2009-06-30 |  | 30% | 0d |  |
| 63 | 1.5.1 | **CBIIT Deployment** | 3d | 2009-05-05 | 2009-05-07 |  |  | 38d |  |
| 64 |  | Deploy to PROD | 2d | 2009-05-05 | 2009-05-06 | 61 |  | 51d |  |
| 65 |  | Verify PROD deployment | 1d | 2009-05-07 | 2009-05-07 | 64 |  | 51d |  |
| 66 |  | Milestone: Complete PROD deployment | 0d | 2009-05-07 | 2009-05-07 | 65 |  | 38d |  |
| 67 | 1.5.2 | **All Release Artifacts** | 41d | 2009-03-05 | 2009-04-30 |  |  | 43d |  |
| 68 | 1.5.2.1 | **User's Guide** | 11d | 2009-03-05 | 2009-03-19 |  |  | 69d |  |
| 69 |  | Send changes to Jill | 1d | 2009-03-05 | 2009-03-05 | 8 |  | 82d |  |
| 70 |  | Update User's Guide | 5d | 2009-03-06 | 2009-03-12 | 69 |  | 82d |  |

| ID | WBS | Task | Duration | Start | Finish | Predecessors | Complete | Total float |
| --- | --- | --- | --- | --- | --- | --- | --- | --- |
| 71 |  | Revise User's Guide after review | 5d | 2009-03-13 | 2009-03-19 | 70 |  | 82d |
| 72 |  | Milestone: Complete User's Guide | 0d | 2009-03-19 | 2009-03-19 | 71 |  | 69d |
| 73 | 1.5.2.2 | **Installation Guide** | 7d | 2009-03-27 | 2009-04-06 |  |  | 57d |
| 74 |  | Send changes to Jill | 1d | 2009-03-27 | 2009-03-27 | 20 |  | 70d |
| 75 |  | Update Installation Guide | 3d | 2009-03-30 | 2009-04-01 | 74 |  | 70d |
| 76 |  | Revise Installation Guide after review | 3d | 2009-04-02 | 2009-04-06 | 75 |  | 70d |
| 77 |  | Milestone: Complete Installation Guide | 0d | 2009-04-06 | 2009-04-06 | 76 |  | 57d |
| 78 | 1.5.2.3 | **Other Release Artifacts** | 9d | 2009-04-14 | 2009-04-24 |  |  | 43d |
| 79 |  | Prepare Release Notes | 1d | 2009-04-14 | 2009-04-14 | 34 |  | 64d |
| 80 |  | Prepare Client Libraries and javadoc | 1d | 2009-04-24 | 2009-04-24 | 44 |  | 56d |
| 81 |  | Prepare installer packages | 1d | 2009-04-24 | 2009-04-24 | 44 |  | 56d |
| 82 |  | Milestone: Complete other release artifacts | 0d | 2009-04-24 | 2009-04-24 | 79, 80, 81 |  | 43d |
| 83 | 1.5.2.4 | **Update sites and Announce release** | 4d | 2009-04-27 | 2009-04-30 | 72, 77, 82 |  | 43d |
| 84 |  | Update caArray Gforge site | 1d | 2009-04-27 | 2009-04-27 |  |  | 59d |
| 85 |  | Update Download Centre page | 4d | 2009-04-27 | 2009-04-30 |  |  | 56d |
| 86 |  | Update Tools page | 1d | 2009-04-27 | 2009-04-27 |  |  | 59d |
| 87 |  | Update Landing site | 1d | 2009-04-27 | 2009-04-27 |  |  | 59d |
| 88 |  | Update LSD Gforge site | 1d | 2009-04-27 | 2009-04-27 |  |  | 59d |
| 89 |  | caArray 2.20 Closeout | 0d | 2009-05-07 | 2009-05-07 | 67, 66 |  | 38d |
| 90 |  | caarray_schedule_2_3_0 | 187d | 2008-10-13 A | 2009-06-30 |  | 35% | 0d |

## Version 2 (saved 2009-04-13)

Note of the change: updated 2.2.1 schedule with the latest status.

Last finish stays 2009-06-30. Complete tasks 6 → 11.

Changed:

| ID | Task | Start | Finish | Duration | Complete | Total float | Other |
| --- | --- | --- | --- | --- | --- | --- | --- |
| 1 | **caArray 2.2.1** |  |  |  | 23% → 32% |  |  |
| 11 | **Construction RC1** | 2009-03-02 A | 2009-04-09 → 2009-04-21 (+12d) | 29d? → 37d? | 0% → 64% | 38d → 50d |  |
| 12 | **Implementation** | 2009-03-02 A | 2009-03-23 → 2009-04-02 A (+10d) | 16d? → 24d? | 0% → 100% | 38d → none |  |
| 13 | Implement RC1 items | 2009-03-02 A | 2009-03-20 → 2009-04-01 A (+12d) | 15d? → 23d? | 0% → 100% | 38d → none | constraint finish no earlier than 2009-03-20 → finish no earlier than 2009-04-01 |
| 14 | Verify RC1 items on DEV tier | 2009-03-23 → 2009-04-02 A (+10d) | 2009-03-23 → 2009-04-02 A (+10d) |  | 0% → 100% | 38d → none |  |
| 15 | Milestone: Deploy RC1 to QA | 2009-03-23 → 2009-04-02 A (+10d) | 2009-03-23 → 2009-04-02 A (+10d) |  | 0% → 100% | 38d → none |  |
| 16 | **IQA Testing** | 2009-03-24 → 2009-04-03 A (+10d) | 2009-04-09 → 2009-04-21 (+12d) |  | 0% → 31% | 38d → 50d |  |
| 17 | 221RC1: Verify new items on QA | 2009-03-24 → 2009-04-03 A (+10d) | 2009-03-30 → 2009-04-09 A (+10d) |  | 0% → 100% | 38d → none |  |
| 18 | 221RC1: Regression test on QA | 2009-03-24 → 2009-04-03 A (+10d) | 2009-03-26 → 2009-04-07 A (+12d) |  | 0% → 100% | 40d → none |  |
| 19 | Deployment test on QA-VM | 2009-03-24 → 2009-04-03 (+10d) | 2009-03-25 → 2009-04-06 (+12d) |  |  | 69d → 61d |  |
| 20 | Installer test | 2009-03-24 → 2009-04-03 (+10d) | 2009-03-26 → 2009-04-07 (+12d) |  |  | 43d → 35d |  |
| 21 | App scan on QA | 2009-03-31 → 2009-04-10 (+10d) | 2009-04-02 → 2009-04-14 (+12d) |  |  | 38d → 30d |  |
| 22 | Deploy RC1 to STAGE | 2009-03-31 → 2009-04-10 (+10d) | 2009-04-01 → 2009-04-13 (+12d) |  |  | 58d → 50d |  |
| 23 | 221RC1: Verify new items on STAGE | 2009-04-02 → 2009-04-14 (+12d) | 2009-04-03 → 2009-04-15 (+12d) |  |  | 59d → 51d |  |
| 24 | 221RC1: Regression test on STAGE | 2009-04-02 → 2009-04-14 (+12d) | 2009-04-06 → 2009-04-16 (+10d) |  |  | 58d → 50d |  |
| 25 | App scan on STAGE | 2009-04-07 → 2009-04-17 (+10d) | 2009-04-09 → 2009-04-21 (+12d) |  |  | 58d → 50d |  |
| 26 | Milestone: Complete RC2 Testing | 2009-04-09 → 2009-04-21 (+12d) | 2009-04-09 → 2009-04-21 (+12d) |  |  | 58d → 50d |  |
| 27 | Milestone: Complete RC1 Construction | 2009-04-09 → 2009-04-21 (+12d) | 2009-04-09 → 2009-04-21 (+12d) |  |  | 71d → 50d |  |
| 28 | **Construction RC2** | 2009-04-03 → 2009-04-15 (+12d) | 2009-04-23 → 2009-05-05 (+12d) |  |  | 38d → 30d |  |
| 29 | **Implementation** | 2009-04-03 → 2009-04-15 (+12d) | 2009-04-08 → 2009-04-20 (+12d) |  |  | 38d → 30d |  |
| 30 | Implement RC2 items | 2009-04-03 → 2009-04-15 (+12d) | 2009-04-07 → 2009-04-17 (+10d) |  |  | 38d → 30d |  |
| 31 | Verify RC2 items on DEV tier | 2009-04-08 → 2009-04-20 (+12d) | 2009-04-08 → 2009-04-20 (+12d) |  |  | 38d → 30d |  |
| 32 | Milestone: Deploy R2 to QA | 2009-04-08 → 2009-04-20 (+12d) | 2009-04-08 → 2009-04-20 (+12d) |  |  | 38d → 30d |  |
| 33 | **IQA Testing** | 2009-04-09 → 2009-04-21 (+12d) | 2009-04-23 → 2009-05-05 (+12d) |  |  | 38d → 30d |  |
| 34 | 221RC2: Verify defects on QA | 2009-04-09 → 2009-04-21 (+12d) | 2009-04-13 → 2009-04-23 (+10d) |  |  | 38d → 30d |  |
| 35 | 221RC2: Regression test on QA | 2009-04-09 → 2009-04-21 (+12d) | 2009-04-13 → 2009-04-23 (+10d) |  |  | 38d → 30d |  |
| 36 | Deployment test on QA-VM | 2009-04-09 → 2009-04-21 (+12d) | 2009-04-10 → 2009-04-22 (+12d) |  |  | 57d → 49d |  |
| 37 | Installer test | 2009-04-09 → 2009-04-21 (+12d) | 2009-04-13 → 2009-04-23 (+10d) |  |  | 56d → 48d |  |
| 38 | App scan on QA | 2009-04-14 → 2009-04-24 (+10d) | 2009-04-16 → 2009-04-28 (+12d) |  |  | 45d → 37d |  |
| 39 | Deploy RC2 to Stage | 2009-04-14 → 2009-04-24 (+10d) | 2009-04-15 → 2009-04-27 (+12d) |  |  | 43d → 35d |  |
| 40 | 221RC2: Verify defects on STAGE | 2009-04-16 → 2009-04-28 (+12d) | 2009-04-20 → 2009-04-30 (+10d) |  |  | 43d → 35d |  |
| 41 | 221RC2: Regression test on STAGE | 2009-04-16 → 2009-04-28 (+12d) | 2009-04-20 → 2009-04-30 (+10d) |  |  | 43d → 35d |  |
| 42 | App scan on STAGE | 2009-04-21 → 2009-05-01 (+10d) | 2009-04-23 → 2009-05-05 (+12d) |  |  | 43d → 35d |  |
| 43 | Milestone: Complete RC2 Testing | 2009-04-23 → 2009-05-05 (+12d) | 2009-04-23 → 2009-05-05 (+12d) |  |  | 43d → 35d |  |
| 44 | Milestone: Complete RC2 Construction | 2009-04-23 → 2009-05-05 (+12d) | 2009-04-23 → 2009-05-05 (+12d) |  |  | 43d → 35d |  |
| 45 | **Construction RC3** | 2009-04-14 → 2009-04-24 (+10d) | 2009-05-04 → 2009-05-14 (+10d) |  |  | 38d → 30d |  |
| 46 | **Implementation** | 2009-04-14 → 2009-04-24 (+10d) | 2009-04-17 → 2009-04-29 (+12d) |  |  | 38d → 30d |  |
| 47 | Implement RC3 items | 2009-04-14 → 2009-04-24 (+10d) | 2009-04-16 → 2009-04-28 (+12d) |  |  | 51d → 30d |  |
| 48 | Verify RC3 items on DEV tier | 2009-04-17 → 2009-04-29 (+12d) | 2009-04-17 → 2009-04-29 (+12d) |  |  | 51d → 30d |  |
| 49 | Milestone: Deploy R3 to QA | 2009-04-17 → 2009-04-29 (+12d) | 2009-04-17 → 2009-04-29 (+12d) |  |  | 38d → 30d |  |
| 50 | **IQA Testing** | 2009-04-20 → 2009-04-30 (+10d) | 2009-05-04 → 2009-05-14 (+10d) |  |  | 38d → 30d |  |
| 51 | 221RC3: Verify defects on QA | 2009-04-20 → 2009-04-30 (+10d) | 2009-04-21 → 2009-05-01 (+10d) |  |  | 52d → 31d |  |
| 52 | 221RC3: Regression test on QA | 2009-04-20 → 2009-04-30 (+10d) | 2009-04-22 → 2009-05-04 (+12d) |  |  | 51d → 30d |  |
| 53 | Deployment test on QA-VM | 2009-04-20 → 2009-04-30 (+10d) | 2009-04-21 → 2009-05-01 (+10d) |  |  | 63d → 42d |  |
| 54 | Installer test | 2009-04-20 → 2009-04-30 (+10d) | 2009-04-24 → 2009-05-06 (+12d) |  |  | 60d → 39d |  |
| 55 | App scan on QA | 2009-04-23 → 2009-05-05 (+12d) | 2009-04-27 → 2009-05-07 (+10d) |  |  | 53d → 32d |  |
| 56 | Deploy RC3 to Stage | 2009-04-23 → 2009-05-05 (+12d) | 2009-04-24 → 2009-05-06 (+12d) |  |  | 51d → 30d |  |
| 57 | 221RC3: Verify defects on STAGE | 2009-04-27 → 2009-05-07 (+10d) | 2009-04-29 → 2009-05-11 (+12d) |  |  | 51d → 30d |  |
| 58 | 221RC3: Regression test on STAGE | 2009-04-27 → 2009-05-07 (+10d) | 2009-04-29 → 2009-05-11 (+12d) |  |  | 51d → 30d |  |
| 59 | App scan on STAGE | 2009-04-30 → 2009-05-12 (+12d) | 2009-05-04 → 2009-05-14 (+10d) |  |  | 51d → 30d |  |
| 60 | Milestone: Complete RC3 Testing | 2009-05-04 → 2009-05-14 (+10d) | 2009-05-04 → 2009-05-14 (+10d) |  |  | 51d → 30d |  |
| 61 | Milestone: Complete RC3 Construction | 2009-05-04 → 2009-05-14 (+10d) | 2009-05-04 → 2009-05-14 (+10d) |  |  | 51d → 30d |  |
| 63 | **CBIIT Deployment** | 2009-05-05 → 2009-05-15 (+10d) | 2009-05-07 → 2009-05-19 (+12d) |  |  | 38d → 30d |  |
| 64 | Deploy to PROD | 2009-05-05 → 2009-05-15 (+10d) | 2009-05-06 → 2009-05-18 (+12d) |  |  | 51d → 30d |  |
| 65 | Verify PROD deployment | 2009-05-07 → 2009-05-19 (+12d) | 2009-05-07 → 2009-05-19 (+12d) |  |  | 51d → 30d |  |
| 66 | Milestone: Complete PROD deployment | 2009-05-07 → 2009-05-19 (+12d) | 2009-05-07 → 2009-05-19 (+12d) |  |  | 38d → 30d |  |
| 67 | **All Release Artifacts** |  | 2009-04-30 → 2009-05-12 (+12d) | 41d → 49d |  | 43d → 35d |  |
| 73 | **Installation Guide** | 2009-03-27 → 2009-04-08 (+12d) | 2009-04-06 → 2009-04-16 (+10d) |  |  | 57d → 49d |  |
| 74 | Send changes to Jill | 2009-03-27 → 2009-04-08 (+12d) | 2009-03-27 → 2009-04-08 (+12d) |  |  | 70d → 49d |  |
| 75 | Update Installation Guide | 2009-03-30 → 2009-04-09 (+10d) | 2009-04-01 → 2009-04-13 (+12d) |  |  | 70d → 49d |  |
| 76 | Revise Installation Guide after review | 2009-04-02 → 2009-04-14 (+12d) | 2009-04-06 → 2009-04-16 (+10d) |  |  | 70d → 49d |  |
| 77 | Milestone: Complete Installation Guide | 2009-04-06 → 2009-04-16 (+10d) | 2009-04-06 → 2009-04-16 (+10d) |  |  | 57d → 49d |  |
| 78 | **Other Release Artifacts** | 2009-04-14 → 2009-04-24 (+10d) | 2009-04-24 → 2009-05-06 (+12d) |  |  | 43d → 35d |  |
| 79 | Prepare Release Notes | 2009-04-14 → 2009-04-24 (+10d) | 2009-04-14 → 2009-04-24 (+10d) |  |  | 64d → 43d |  |
| 80 | Prepare Client Libraries and javadoc | 2009-04-24 → 2009-05-06 (+12d) | 2009-04-24 → 2009-05-06 (+12d) |  |  | 56d → 35d |  |
| 81 | Prepare installer packages | 2009-04-24 → 2009-05-06 (+12d) | 2009-04-24 → 2009-05-06 (+12d) |  |  | 56d → 35d |  |
| 82 | Milestone: Complete other release artifacts | 2009-04-24 → 2009-05-06 (+12d) | 2009-04-24 → 2009-05-06 (+12d) |  |  | 43d → 35d |  |
| 83 | **Update sites and Announce release** | 2009-04-27 → 2009-05-07 (+10d) | 2009-04-30 → 2009-05-12 (+12d) |  |  | 43d → 35d |  |
| 84 | Update caArray Gforge site | 2009-04-27 → 2009-05-07 (+10d) | 2009-04-27 → 2009-05-07 (+10d) |  |  | 59d → 38d |  |
| 85 | Update Download Centre page | 2009-04-27 → 2009-05-07 (+10d) | 2009-04-30 → 2009-05-12 (+12d) |  |  | 56d → 35d |  |

| ID | Task | Start | Finish | Total float |
| --- | --- | --- | --- | --- |
| 86 | Update Tools page | 2009-04-27 → 2009-05-07 (+10d) | 2009-04-27 → 2009-05-07 (+10d) | 59d → 38d |
| 87 | Update Landing site | 2009-04-27 → 2009-05-07 (+10d) | 2009-04-27 → 2009-05-07 (+10d) | 59d → 38d |
| 88 | Update LSD Gforge site | 2009-04-27 → 2009-05-07 (+10d) | 2009-04-27 → 2009-05-07 (+10d) | 59d → 38d |
| 89 | caArray 2.20 Closeout | 2009-05-07 → 2009-05-19 (+12d) | 2009-05-07 → 2009-05-19 (+12d) | 38d → 30d |
