# caArray

How a schedule from MS Project changed from version to version. A marks actual dates.

## Version 1 (saved 2007-05-11)

Note of the change: updated through the week of May 11

| ID | WBS | Task | Duration | Start | Finish | Predecessors | Complete | Total float | Constraint |
| --- | --- | --- | --- | --- | --- | --- | --- | --- | --- |
| 1 | 1 | **caArray 2.0** | 35.9d? | 2007-04-02 A | 2007-05-21 |  | 69% | 0d |  |
| 2 | 1.1 | **Inception Phase** | 33.3d | 2007-04-02 A | 2007-05-17 |  | 73% | 2.6d |  |
| 3 | 1.1.1 | **Inception Iteration 1** | 33.3d | 2007-04-02 A | 2007-05-17 |  | 73% | 2.6d |  |
| 4 | 1 | **Project Management** | 31.25d | 2007-04-02 A | 2007-05-15 |  | 92% | 0.15d |  |
| 5 |  | Plan the project | 12d | 2007-04-02 A | 2007-04-19 |  | 95% | 17.4d | start no earlier than 2007-04-02 |
| 6 |  | Plan Remainder of Initial Iteration | 1d | 2007-04-19 A | 2007-04-19 A |  | 100% |  | start no earlier than 2007-04-19 |
| 7 |  | Plan for Next Iteration | 5d | 2007-05-07 A | 2007-05-11 | 12FF | 95% | 1.4d |  |
| 8 | 1.1.1.1.4 | **Finalize Deliverables** | 31.25d | 2007-04-02 A | 2007-05-15 |  | 57% | 0.15d |  |
| 9 |  | March Status Report | 2h | 2007-04-16 A | 2007-04-16 A |  | 100% |  | start no earlier than 2007-04-16 |
| 10 |  | April Status Report | 2h | 2007-05-15 A | 2007-05-15 A |  | 100% |  | start no earlier than 2007-05-15 |
| 11 |  | Release Risk List | 2h | 2007-04-02 | 2007-04-02 |  |  | 31.15d |  |
| 12 |  | Release Software Development Plan | 1d | 2007-05-11 A | 2007-05-11 |  | 50% | 1.4d | start no earlier than 2007-05-11 |
| 13 | 3 | **Requirements** | 30.5d | 2007-04-02 A | 2007-05-14 |  | 62% | 5.4d |  |
| 14 |  | Define the Preliminary Vision | 5d | 2007-04-23 A | 2007-05-04 A | 5SS, 15FF | 100% |  | start no earlier than 1999-05-04 |
| 15 | 3.2 | **Elicit Stakeholder Needs** | 22.4d | 2007-04-04 A | 2007-05-04 A | 5SS | 100% |  |  |
| 16 |  | Live Meeting with NCICB Stakeholders | 4.38d | 2007-04-04 A | 2007-04-12 A |  | 100% |  | start no earlier than 2007-04-04 |
| 17 |  | Teleconference with Columbia - Aris | 1h | 2007-04-09 A | 2007-04-09 A | 16 | 100% |  |  |
| 18 |  | Teleconference with Northwestern | 2h | 2007-04-20 A | 2007-04-20 A |  | 100% |  | start no earlier than 2007-04-20 |
| 19 |  | Live Meeting with Georgetown | 4h | 2007-04-23 A | 2007-04-23 A | 18 | 100% |  | start no earlier than 2007-04-23 |
| 20 |  | Live Meeting with Thomas Jefferson | 4h | 2007-04-27 A | 2007-04-27 A | 19 | 100% |  | start no earlier than 2007-04-26 |
| 21 |  | Live Meeting with U Pitt | 4h | 2007-05-03 A | 2007-05-04 A | 20 | 100% |  | start no earlier than 2007-04-30 |
| 22 |  | Identify and Describe Use Cases | 4d | 2007-04-18 A | 2007-04-23 |  | 50% | 8.5d | finish no earlier than 2007-04-20 |
| 23 |  | Refine the System Definition | 6.35d | 2007-04-24 | 2007-05-04 | 6, 22 |  | 10.9d | start no earlier than 2007-04-18 |
| 24 | 1.1.1.2.5 | **Implement Requirement and Test Traceability** | 3.25d | 2007-04-16 A | 2007-04-19 |  | 50% | 22.65d |  |
| 25 |  | Determine Approach | 2.25d | 2007-04-16 A | 2007-04-19 |  | 50% | 22.65d | start no earlier than 2007-04-16 |
| 26 |  | Manage Changing Requirements | 1d | 2007-04-27 A | 2007-05-04 A | 14SS | 100% |  | start no earlier than 2007-04-25 |
| 27 | 1.1.1.2.7 | **Finalize Deliverables** | 30.5d | 2007-04-02 A | 2007-05-14 |  | 65% | 0.9d |  |
| 28 |  | Requirements Management Plan | 0.25d | 2007-04-02 A | 2007-04-09 |  | 50% | 26.27d |  |
| 29 |  | Finalize Questionnaire | 0.25d | 2007-04-02 A | 2007-04-02 A |  | 100% |  |  |
| 30 |  | Finalize Vision Document | 1d | 2007-04-30 A | 2007-05-11 | 21, 14 | 90% | 1.4d |  |
| 31 |  | Finalize Supplementary Spec | 1d | 2007-05-11 A | 2007-05-14 | 30 | 50% | 0.9d |  |
| 32 |  | Finalize Use Case Model | 1d | 2007-04-27 A | 2007-05-03 | 22 | 50% | 1.1d |  |
| 33 | 4 | **Analysis and Design** | 33.3d | 2007-04-02 A | 2007-05-17 |  | 86% | 2.6d |  |
| 34 |  | Use Case Analysis (Manage Protocols) | 1d | 2007-04-05 A | 2007-04-05 A |  | 100% |  | start no earlier than 2007-04-05 |
| 35 |  | Use Case Design (Manage Protocols) | 1d | 2007-04-06 A | 2007-04-06 A | 34 | 100% |  |  |
| 36 |  | Vocabulary Management Subsystem Design | 4.95d | 2007-04-04 A | 2007-04-12 A |  | 100% |  | start no earlier than 2007-04-04 |
| 37 |  | Data Access Subsystem Design | 2.75d | 2007-04-09 A | 2007-04-13 A |  | 100% |  | start no earlier than 2007-04-09 |
| 38 |  | MAGE-OM Façade | 4.5d | 2007-04-02 A | 2007-04-10 |  | 80% | 23.9d |  |
| 39 | 1.1.1.3.6 | **Finalize Deliverables** | 3.3d | 2007-05-14 A | 2007-05-17 |  | 50% | 2.6d |  |
| 40 |  | Release Candidate Software Architecture Document | 3d | 2007-05-14 A | 2007-05-17 |  | 50% | 2.6d | start no earlier than 2007-05-14 |
| 41 | 1.1.1.4 | **Implementation** | 32d | 2007-04-02 A | 2007-05-15 |  | 73% | 3.9d |  |
| 42 |  | Structure the Implementation Model | 1.5d | 2007-04-02 A | 2007-04-04 A |  | 100% |  | start no earlier than 2007-04-09 |
| 43 |  | Implement Vocabulary Subsystem | 3w | 2007-04-13 A | 2007-05-08 A | 42, 36 | 100% |  |  |
| 44 |  | Implement MAGE-OM | 2w | 2007-04-10 A | 2007-04-27 | 42, 38 | 50% | 16.52d |  |
| 45 |  | Implement Data Access | 3d | 2007-04-16 A | 2007-04-30 | 42 | 90% | -5.38d | start no earlier than 2007-04-16 |
| 46 |  | Implement MAGE-OM Façade | 1.7w | 2007-04-18 | 2007-05-15 |  |  | 3.9d | start no earlier than 2007-04-18 |
| 47 |  | Implement Protocol Management | 2.2w | 2007-04-16 A | 2007-05-09 A | 35 | 100% |  | start no earlier than 2007-04-16 |
| 48 |  | Implement Protocol User Interface (minimal) | 3d | 2007-05-09 A | 2007-05-14 A | 47 | 100% |  |  |
| 49 | 1.1.1.4.8 | **Finalize Deliverables** | 1d | 2007-05-14 A | 2007-05-15 |  | 50% | 0d |  |
| 50 |  | Release Architectural Prototype | 1d | 2007-05-14 A | 2007-05-15 | 48 | 50% | 0d |  |
| 51 | 5 | **Test** | 31.82d | 2007-04-02 A | 2007-05-15 |  | 44% | 4.08d |  |
| 52 |  | Meet with Indepdent QA | 2h | 2007-04-09 A | 2007-04-09 |  | 50% | 14.62d | finish no later than 2007-04-27 |
| 53 |  | Implement System Tests Against Protocol Management | 0d | 2007-05-15 A | 2007-05-15 | 50 | 50% | 4.08d | start no earlier than 2007-05-14 |
| 54 |  | Analyze and Identify Test Approach | 1d | 2007-04-02 A | 2007-04-27 |  | 25% | 10.5d |  |
| 55 | 1.1.1.5.4 | **Finalize Deliverables** | 4.9d | 2007-04-27 A | 2007-05-04 |  | 50% | 6.9d |  |
| 56 |  | Release Test Plan | 2.6d | 2007-04-27 A | 2007-05-04 | 54 | 50% | 6.9d |  |
| 57 | 6 | **Environment** | 30.25d | 2007-04-02 A | 2007-05-14 |  | 75% | 5.65d |  |
| 58 |  | Launch Development Process | 6h | 2007-04-09 A | 2007-04-18 A |  | 100% |  | start no earlier than 2007-04-09 |
| 59 | 1.1.1.6.2 | **Set Up Tools** | 20d | 2007-04-02 A | 2007-04-27 |  | 93% | 15.9d |  |
| 60 |  | Set Up Maven | 4d | 2007-04-02 A | 2007-04-09 A |  | 100% |  | start no earlier than 2007-04-02 |
| 61 |  | Set Up Continuous Integration | 1d | 2007-04-16 A | 2007-04-16 A |  | 100% |  | start no earlier than 2007-04-16 |
| 62 |  | Set Up Eclipse | 2d | 2007-04-03 A | 2007-04-06 A |  | 100% |  | start no earlier than 2007-04-03 |
| 63 |  | Set Up Selenium | 2d | 2007-04-26 A | 2007-04-27 | 61 | 80% | 0d | finish no earlier than 2007-04-27 |
| 64 |  | Set Up Code Quality Tools | 2d | 2007-04-02 A | 2007-04-09 |  | 80% | 30.4d |  |
| 65 | 1.1.1.6.3 | **Finalize Deliverables** | 19.25d | 2007-04-17 A | 2007-05-14 |  | 44% | 1.15d |  |
| 66 |  | Release Development Case | 0.25d | 2007-05-14 A | 2007-05-14 |  | 90% | 1.15d | start no earlier than 2007-05-14 |
| 67 |  | Release Guidelines for the Project | 1.25d | 2007-04-20 A | 2007-04-23 |  | 50% | 15.59d | start no earlier than 2007-04-16 |
| 68 |  | Release Templates for the Project | 5.5d | 2007-04-17 A | 2007-04-30 |  | 40% | 10.4d | finish no earlier than 2007-04-13 |
| 69 | 7 | **Configuration & Change Management** | 31.25d | 2007-04-02 A | 2007-05-15 |  | 25% | 0.6d |  |
| 70 |  | Plan Project Configuration and Change Control | 0.5d | 2007-04-20 A | 2007-04-20 |  | 50% | 17d | finish no earlier than 2007-04-20 |

| ID | WBS | Task | Duration | Start | Finish | Predecessors | Complete | Total float | Constraint |
| --- | --- | --- | --- | --- | --- | --- | --- | --- | --- |
| 71 | 1.1.1.7.2 | **Finalize Deliverables** | 31.25d | 2007-04-02 A | 2007-05-15 |  | 20% | 0d |  |
| 72 |  | Release Configuration Management Plan | 0.75d | 2007-04-02 A | 2007-05-15 |  | 75% | 0d |  |
| 73 |  | G-Forge Implementation of the Change Control Process | 2d | 2007-04-02 | 2007-05-14 |  |  | 0.9d |  |
| 74 |  | Inception Complete | 0d | 2007-05-15 | 2007-05-15 | 4, 5, 27, 8, 55, 65, 71 |  | 0d | start no earlier than 2007-05-15 |
| 75 | 1.2 | **Elaboration Phase** | 2.5d? | 2007-05-15 | 2007-05-17 | 74 |  | 0d |  |
| 76 | 1.2.1 | **Elaboration - Iteration 1** | 2.5d | 2007-05-15 | 2007-05-17 |  |  | 0d |  |
| 77 |  | Iteration Post Mortem | 20h | 2007-05-15 | 2007-05-17 | 74 |  | 0d | start no earlier than 2007-05-14 |
| 78 |  | Elaboration - Iteration 2 | 1d? | 2007-05-15 | 2007-05-16 |  |  | 1.5d |  |
| 79 |  | Elaboration - Iteration n | 1d? | 2007-05-15 | 2007-05-16 |  |  | 1.5d |  |
| 80 | 1.3 | **Construction Phase** | 1d? | 2007-05-17 | 2007-05-18 | 75 |  | 0d |  |
| 81 |  | Construction - Iteration 1 | 1d? | 2007-05-17 | 2007-05-18 |  |  | 0d |  |
| 82 |  | Construction - Iteration 2 | 1d? | 2007-05-17 | 2007-05-18 |  |  | 0d |  |
| 83 |  | Construction - Iteration n | 1d? | 2007-05-17 | 2007-05-18 |  |  | 0d |  |
| 84 | 1.4 | **Transition Phase** | 1d? | 2007-05-18 | 2007-05-21 | 80 |  | 0d |  |
| 85 |  | Transition - Iteration 1 | 1d? | 2007-05-18 | 2007-05-21 |  |  | 0d |  |
| 86 |  | Transition - Iteration n | 1d? | 2007-05-18 | 2007-05-21 |  |  | 0d |  |

## Version 2 (saved 2007-05-18)

Last finish 2007-05-21 → 2007-11-13 (+176d). Complete tasks 24 → 40.

Added:

| ID | Task | Duration | Start | Finish | Predecessors | Constraint | Resources |
| --- | --- | --- | --- | --- | --- | --- | --- |
| 77 | **Project Management** | 24d | 2007-05-22 | 2007-06-22 | 74 |  |  |
| 79 | Plan Remainder of Initial Iteration | 1d | 2007-06-07 | 2007-06-07 |  | start no earlier than 2007-06-07 | etavela [90%]; bgendleman [80%] |
| 80 | Weekly Status Meetings | 1.5d | 2007-05-23 | 2007-05-24 |  | start no earlier than 2007-05-23 | bgendleman [80%] |
| 81 | Plan for Next Iteration | 1d | 2007-06-22 | 2007-06-22 | 85FF | start no earlier than 2007-06-20 | bgendleman [80%]; etavela [90%] |
| 82 | **Finalize Deliverables** | 22d | 2007-05-24 | 2007-06-22 |  |  |  |
| 83 | May Status Report | 2h | 2007-06-08 | 2007-06-08 |  | start no earlier than 2007-06-08 | bgendleman |
| 84 | Update Risk List | 2h | 2007-05-24 | 2007-05-24 |  | start no earlier than 2007-05-24 | bgendleman |
| 85 | Update Software Development Plan | 1d | 2007-06-22 | 2007-06-22 |  | start no earlier than 2007-06-22 |  |
| 86 | **Requirements** | 25d | 2007-05-22 | 2007-06-25 |  |  |  |
| 87 | Update Draft Documents | 3d | 2007-05-22 | 2007-05-24 |  | start no earlier than 2007-05-22 | bgendleman |
| 88 | Write Prioritized Use Cases | 10d | 2007-05-25 | 2007-06-07 |  | start no earlier than 2007-05-25 | bgendleman |
| 89 | Create Wireframes for targeted Ucs | 3d | 2007-06-08 | 2007-06-12 | 88 |  | bgendleman |
| 90 | Harmonize Models | 1d | 2007-05-24 | 2007-05-24 |  | start no earlier than 2007-05-24 | bgendleman [80%]; etavela [90%] |
| 91 | **Finalize Deliverables** | 22d | 2007-05-25 | 2007-06-25 |  |  |  |
| 92 | Finalize Vision | 1d | 2007-05-25 | 2007-05-25 | 87 |  | bgendleman |
| 93 | Finalize Supplemental Specification | 1d | 2007-05-25 | 2007-05-25 | 87 |  | bgendleman |
| 94 | UC Import Project Data | 1d | 2007-06-08 | 2007-06-08 | 88 |  | bgendleman |
| 95 | UC Sumbit Project Proposal | 1d | 2007-06-11 | 2007-06-11 | 94 |  | bgendleman |
| 96 | UC Report on Work Accomplished | 1d | 2007-06-12 | 2007-06-12 | 95 |  | bgendleman |
| 97 | UC Validate File for Submission | 1d | 2007-06-13 | 2007-06-13 | 96 |  | bgendleman |
| 98 | UC Download Project Data | 1d | 2007-06-14 | 2007-06-14 | 97 |  | bgendleman |
| 99 | UC Login | 1d | 2007-06-15 | 2007-06-15 | 98 |  | bgendleman |
| 100 | UC Manage Users | 1d | 2007-06-18 | 2007-06-18 | 99 |  | bgendleman |
| 101 | UC Manage Institutional Groups | 1d | 2007-06-19 | 2007-06-19 | 100 |  | bgendleman |
| 102 | UC Wireframes | 2d | 2007-06-20 | 2007-06-21 | 101 |  | bgendleman |
| 103 | Stylesheet Framework | 2d | 2007-06-22 | 2007-06-25 | 102 |  | bgendleman |
| 104 | **Analysis and Design** | 10d | 2007-06-11 | 2007-06-22 |  |  |  |
| 105 | Targeted Use Case Analysis and Design | 5d | 2007-06-11 | 2007-06-15 | 94 |  | etavela [90%]; jpike; rsrinavasa |
| 106 | Grid Strategy | 5d | 2007-06-18 | 2007-06-22 | 105 |  | etavela [90%] |
| 107 | Parsing Strategy | 3d | 2007-06-18 | 2007-06-20 | 105 |  | etavela [90%] |
| 108 | Binary Storage | 3d | 2007-06-18 | 2007-06-20 | 105 |  | etavela [90%] |
| 109 | 1.6 Data Migration Strategy | 1.93d | 2007-06-18 | 2007-06-19 | 105 |  | etavela [90%]; smatyas [50%] |
| 110 | **Finalize Deliverables** | 3d | 2007-06-19 | 2007-06-22 |  |  |  |
| 111 | Update Software Architecture Document | 3d | 2007-06-19 | 2007-06-22 | 109 |  | etavela |
| 112 | **Implementation** | 31.6d | 2007-05-15 | 2007-06-27 |  |  |  |
| 113 | Implement UC Import Project Data | 5d | 2007-06-21 | 2007-06-27 | 107 |  |  |
| 114 | Implement UC Validate File For Submission | 5d | 2007-06-18 | 2007-06-22 | 105 |  |  |
| 115 | Implement UC Download Project Data | 5d | 2007-06-21 | 2007-06-27 | 108 |  |  |
| 116 | Implement Login | 2d | 2007-06-01 | 2007-06-04 |  | start no earlier than 2007-06-01 |  |
| 117 | Implement Manage Users | 5d | 2007-06-05 | 2007-06-11 | 116 |  |  |
| 118 | **Finalize Deliverables** | 0.64d | 2007-05-15 | 2007-05-16 |  |  |  |
| 119 | Release Final E1 Development Build | 0.64d | 2007-05-15 | 2007-05-16 |  |  | etavela [90%]; smatyas [50%] |
| 120 | **Test** | 6.91d | 2007-06-18 | 2007-06-26 |  |  |  |
| 121 | Create Junit Test for targeted UC's | 3d | 2007-06-18 | 2007-06-20 | 105 |  | jpike; rsrinavasa; etavela [90%] |
| 122 | Create Selenium Tests for targeted Ucs | 2d | 2007-06-21 | 2007-06-22 | 121 |  | smatyas [50%] |
| 123 | Incorporate Test Cases into Gforge | 1d | 2007-06-25 | 2007-06-25 | 122 |  | bgendleman |
| 124 | Manage Test Assets | 1.91d | 2007-06-21 | 2007-06-22 | 121 |  | smatyas [50%]; etavela [90%]; bgendleman [80%] |
| 125 | **Finalize Deliverables** | 2d | 2007-06-22 | 2007-06-26 |  |  |  |
| 126 | Release Test Plan | 2d | 2007-06-22 | 2007-06-26 | 124 |  | bgendleman |
| 127 | **Environment** | 1d | 2007-06-22 | 2007-06-25 |  |  |  |
| 128 | Integrate Test Suite into Gforge | 1d | 2007-06-22 | 2007-06-25 | 124 |  |  |
| 129 | **Configuration and Change Management** | 25d | 2007-05-22 | 2007-06-25 |  |  |  |
| 130 | Manage Gforge Content | 25d | 2007-05-22 | 2007-06-25 |  | start no earlier than 2007-05-22 | bgendleman [80%]; etavela [90%] |
| 131 | Elaboration 1 Complete | 0d | 2007-06-27 | 2007-06-27 |  | start no earlier than 2007-06-27 |  |
| 133 | Project Management | 20d | 2007-06-27 | 2007-07-24 |  |  | bgendleman |
| 134 | E1 Post Mortem | 1d | 2007-06-27 | 2007-06-27 | 131 |  |  |
| 135 | **Requirements** | 10d? | 2007-06-27 | 2007-07-10 |  |  |  |
| 136 | Incorporate Stakeholder Feedback on Vision and Supp Spec | 2d | 2007-06-27 | 2007-06-28 |  |  | bgendleman |
| 137 | Incorporate Stakeholder Feedback on E1 Use Cases | 3d | 2007-06-29 | 2007-07-03 | 136 |  | bgendleman |
| 138 | Update Wireframes | 1d? | 2007-06-27 | 2007-06-27 |  |  |  |
| 139 | User Interface Design | 1d? | 2007-06-27 | 2007-06-27 |  |  | bgendleman [80%] |
| 140 | Detail E2 Use Cases | 10d | 2007-06-27 | 2007-07-10 |  |  | bgendleman |
| 141 | Analysis and Design | 20d | 2007-06-27 | 2007-07-24 |  |  |  |
| 142 | **Implementation** | 1d? | 2007-06-27 | 2007-06-27 |  |  |  |
| 143 | User Interface | 1d? | 2007-06-27 | 2007-06-27 |  |  |  |
| 144 | Test | 20d | 2007-06-27 | 2007-07-24 |  |  |  |
| 145 | Environment | 20d | 2007-06-27 | 2007-07-24 |  |  |  |
| 146 | Configuration and Change Management | 20d | 2007-06-27 | 2007-07-24 |  |  |  |
| 147 | Elaboration 2 Complete | 0d | 2007-07-24 | 2007-07-24 | 146 |  |  |
| 150 | Project Management | 20d | 2007-07-25 | 2007-08-21 |  |  |  |
| 151 | Requirements | 20d | 2007-07-25 | 2007-08-21 |  |  |  |
| 152 | Analysis and Design | 20d | 2007-07-25 | 2007-08-21 |  |  |  |
| 153 | Implementation | 20d | 2007-07-25 | 2007-08-21 |  |  |  |
| 154 | Test | 20d | 2007-07-25 | 2007-08-21 |  |  |  |
| 155 | Environment | 20d | 2007-07-25 | 2007-08-21 |  |  |  |
| 156 | Configuration and Change Management | 20d | 2007-07-25 | 2007-08-21 |  |  |  |
| 157 | Construction 1 Complete | 0d | 2007-08-21 | 2007-08-21 | 156 |  |  |
| 159 | Project Management | 20d | 2007-08-22 | 2007-09-18 |  |  |  |
| 160 | Requirements | 20d | 2007-08-22 | 2007-09-18 |  |  |  |
| 161 | Analysis and Design | 20d | 2007-08-22 | 2007-09-18 |  |  |  |
| 162 | Implementation | 20d | 2007-08-22 | 2007-09-18 |  |  |  |
| 163 | Test | 20d | 2007-08-22 | 2007-09-18 |  |  |  |
| 164 | Environment | 20d | 2007-08-22 | 2007-09-18 |  |  |  |
| 165 | Configuration and Change Management | 20d | 2007-08-22 | 2007-09-18 |  |  |  |
| 166 | Construction 2 Complete | 0d | 2007-08-21 | 2007-08-21 |  |  |  |
| 167 | **Construction - Iteration 3** | 20d | 2007-08-22 | 2007-09-18 | 166 |  |  |
| 168 | Project Management | 20d | 2007-08-22 | 2007-09-18 |  |  |  |
| 169 | Requirements | 20d | 2007-08-22 | 2007-09-18 |  |  |  |
| 170 | Analysis and Design | 20d | 2007-08-22 | 2007-09-18 |  |  |  |
| 171 | Implementation | 20d | 2007-08-22 | 2007-09-18 |  |  |  |
| 172 | Test | 20d | 2007-08-22 | 2007-09-18 |  |  |  |
| 173 | Environment | 20d | 2007-08-22 | 2007-09-18 |  |  |  |
| 174 | Configuration and Change Management | 20d | 2007-08-22 | 2007-09-18 |  |  |  |

Removed: 79 Elaboration - Iteration n

Changed:

| ID | Task | Start | Finish | Duration | Complete | Total float | Predecessors | Other |
| --- | --- | --- | --- | --- | --- | --- | --- | --- |
| 1 | **caArray 2.0** |  | 2007-05-21 → 2007-11-13 (+176d) | 35.9d? → 162d? | 69% → 16% |  |  |  |
| 2 | **Inception Phase** |  |  |  | 73% → 96% | 2.6d → 128.7d |  |  |
| 3 | **Inception Iteration 1** |  |  |  | 73% → 96% | 2.6d → 128.7d |  |  |
| 13 | **Requirements** |  |  |  | 62% → 98% | 5.4d → 0d |  |  |
| 22 | Identify and Describe Use Cases |  | 2007-04-23 A |  | 50% → 100% | 8.5d → none |  |  |
| 23 | Refine the System Definition | 2007-04-24 A | 2007-05-04 A |  | 0% → 100% | 10.9d → none |  |  |
| 24 | **Implement Requirement and Test Traceability** |  | 2007-04-19 A |  | 50% → 100% | 22.65d → none |  |  |
| 25 | Determine Approach |  | 2007-04-19 A |  | 50% → 100% | 22.65d → none |  |  |
| 27 | **Finalize Deliverables** |  |  |  | 65% → 83% | 0.9d → 0d |  |  |
| 28 | Requirements Management Plan |  | 2007-04-09 A |  | 50% → 100% | 26.27d → none |  |  |
| 30 | Draft Vision Document |  |  |  |  | 1.4d → -16.75d |  | was named Finalize Vision Document |
| 31 | Draft Supplementary Spec |  |  |  |  | 0.9d → -17.75d |  | was named Finalize Supplementary Spec |
| 32 | Draft Use Case Model |  | 2007-05-03 A |  | 50% → 100% | 1.1d → none |  | was named Finalize Use Case Model |
| 41 | **Implementation** |  | 2007-05-15 A |  | 73% → 100% | 3.9d → none |  |  |
| 44 | Implement MAGE-OM |  | 2007-04-27 A |  | 50% → 100% | 16.52d → none |  |  |
| 45 | Implement Data Access |  | 2007-04-30 A |  | 90% → 100% | -5.38d → none |  |  |
| 46 | Implement MAGE-OM Façade | 2007-04-18 A | 2007-05-15 A |  | 0% → 100% | 3.9d → none |  |  |
| 49 | **Finalize Deliverables** |  | 2007-05-15 A |  | 50% → 100% | 0d → none |  |  |
| 50 | Release Architectural Prototype |  | 2007-05-15 A |  | 50% → 100% | 0d → none |  |  |
| 51 | **Test** |  |  |  | 44% → 69% | 4.08d → 130.18d |  |  |
| 52 | Meet with Indepdent QA |  |  |  | 50% → 90% |  |  |  |
| 54 | Analyze and Identify Test Approach |  |  |  | 25% → 50% | 10.5d → 3.6d |  |  |
| 55 | **Finalize Deliverables** |  | 2007-05-04 → 2007-05-03 (-1d) | 4.9d → 4.25d | 50% → 75% | 6.9d → 0d |  |  |
| 56 | Release Test Plan |  | 2007-05-04 → 2007-05-03 (-1d) |  | 50% → 75% | 6.9d → -2.95d |  |  |
| 57 | **Environment** |  | 2007-05-14 A |  | 75% → 100% | 5.65d → none |  |  |
| 59 | **Set Up Tools** |  | 2007-04-27 A |  | 93% → 100% | 15.9d → none |  |  |
| 63 | Set Up Selenium |  | 2007-04-27 A |  | 80% → 100% | 0d → none |  |  |
| 64 | Set Up Code Quality Tools |  | 2007-04-09 A |  | 80% → 100% | 30.4d → none |  |  |
| 65 | **Finalize Deliverables** |  | 2007-05-14 A |  | 44% → 100% | 1.15d → none |  |  |
| 66 | Release Development Case |  | 2007-05-14 A |  | 90% → 100% | 1.15d → none |  |  |
| 67 | Release Guidelines for the Project |  | 2007-04-23 A |  | 50% → 100% | 15.59d → none |  |  |
| 68 | Release Templates for the Project |  | 2007-04-30 A |  | 40% → 100% | 10.4d → none |  |  |
| 69 | **Configuration & Change Management** |  |  |  | 25% → 85% | 0.6d → 0d |  |  |
| 70 | Plan Project Configuration and Change Control |  | 2007-04-20 A |  | 50% → 100% | 17d → none |  |  |
| 71 | **Finalize Deliverables** |  |  |  | 20% → 82% |  |  |  |
| 72 | Release Configuration Management Plan |  | 2007-05-15 A |  | 75% → 100% | 0d → none |  |  |
| 73 | G-Forge Implementation of the Change Control Process | 2007-04-02 A |  |  | 0% → 75% | 0.9d → -17.75d |  |  |
| 75 | **Elaboration Phase** |  | 2007-05-17 → 2007-07-24 (+68d) | 2.5d? → 50.6d? |  | 0d → -18.65d |  |  |
| 76 | **Elaboration - Iteration 1** |  | 2007-05-17 → 2007-06-27 (+41d) | 2.5d → 31.6d |  | 0d → -18.65d |  |  |
| 78 | Inception Post Mortem | 2007-05-15 → 2007-05-22 (+7d) | 2007-05-17 → 2007-05-22 (+5d) | 20h → 1.7h |  | 0d → 45.79d | 74 → none | was named Iteration Post Mortem; constraint start no earlier than 2007-05-14 → start no earlier than 2007-05-22; resources smatyas → smatyas; bgendleman [80%]; etavela [90%]; jpike; rsrinavasa |
| 132 | **Elaboration - Iteration 2** | 2007-05-15 → 2007-06-27 (+43d) | 2007-05-16 → 2007-07-24 (+69d) | 1d? → 20d? |  | 1.5d → 0d | none → 131 |  |
| 148 | **Construction Phase** | 2007-05-17 → 2007-07-25 (+69d) | 2007-05-18 → 2007-09-18 (+123d) | 1d? → 40d |  |  |  |  |
| 149 | **Construction - Iteration 1** | 2007-05-17 → 2007-07-25 (+69d) | 2007-05-18 → 2007-08-21 (+95d) | 1d? → 20d |  |  |  |  |
| 158 | **Construction - Iteration 2** | 2007-05-17 → 2007-08-21 (+96d) | 2007-05-18 → 2007-09-18 (+123d) | 1d? → 20d |  |  | none → 157 |  |
| 175 | Construction Iteration 3 Complete | 2007-05-17 → 2007-09-18 (+124d) | 2007-05-18 → 2007-09-18 (+123d) | 1d? → 0d |  |  | none → 174 | was named Construction - Iteration n |
| 176 | **Transition Phase** | 2007-05-18 → 2007-09-19 (+124d) | 2007-05-21 → 2007-11-13 (+176d) | 1d? → 40d |  |  |  |  |
| 177 | Transition - Iteration 1 | 2007-05-18 → 2007-09-19 (+124d) | 2007-05-21 → 2007-10-16 (+148d) | 1d? → 20d |  |  |  |  |
| 178 | Transition - Iteration 2 | 2007-05-18 → 2007-10-17 (+152d) | 2007-05-21 → 2007-11-13 (+176d) | 1d? → 20d |  |  | none → 177 | was named Transition - Iteration n |

## Version 3 (saved 2007-05-21)

Note of the change: updated post dev team review

Last finish 2007-11-13 → 2007-11-20 (+7d). Complete tasks 40 → 51.

Added:

| ID | Task | Duration | Start | Finish | Constraint |
| --- | --- | --- | --- | --- | --- |
| 106 | Represent SNP Data | 3d | 2007-05-24 | 2007-05-28 | start no earlier than 2007-05-24 |
| 107 | Security | 3d | 2007-05-29 | 2007-05-31 | start no earlier than 2007-05-29 |

Removed: 12 Release Software Development Plan; 44 Implement MAGE-OM; 46 Implement MAGE-OM Façade; 114 Implement UC Validate File For Submission; 122 Create Selenium Tests for targeted Ucs; 178 Transition - Iteration 2

Changed:

| ID | Task | Start | Finish | Duration | Complete | Total float | Predecessors | Other |
| --- | --- | --- | --- | --- | --- | --- | --- | --- |
| 1 | **caArray 2.0** |  | 2007-11-13 → 2007-11-20 (+7d) | 162d? → 167d? | 16% → 15% |  |  |  |
| 2 | **Inception Phase** |  | 2007-05-17 A |  | 96% → 100% | 128.7d → none |  |  |
| 3 | **Inception Iteration 1** |  | 2007-05-17 A |  | 96% → 100% | 128.7d → none |  |  |
| 4 | **Project Management** |  | 2007-05-15 A |  | 92% → 100% | 0d → none |  |  |
| 5 | Plan the project |  | 2007-04-19 A |  | 95% → 100% | -1.25d → none |  |  |
| 7 | Plan for Next Iteration |  | 2007-05-11 A |  | 95% → 100% | -17.25d → none | Release Software Development PlanFF → none |  |
| 8 | **Finalize Deliverables** |  | 2007-05-15 A |  | 57% → 100% | 0d → none |  |  |
| 11 | Release Risk List | 2007-04-02 A | 2007-04-02 A |  | 0% → 100% | 12.5d → none |  |  |
| 12 | **Requirements** |  | 2007-05-14 A |  | 98% → 100% | 0d → none |  |  |
| 26 | **Finalize Deliverables** |  | 2007-05-14 A |  | 83% → 100% | 0d → none |  |  |
| 29 | Draft Vision Document |  | 2007-05-11 A |  | 90% → 100% | -16.75d → none |  |  |
| 30 | Draft Supplementary Spec |  | 2007-05-14 A |  | 50% → 100% | -17.75d → none |  |  |
| 32 | **Analysis and Design** |  | 2007-05-17 A |  | 86% → 100% | 128.7d → none |  |  |
| 37 | MAGE-OM Façade |  | 2007-04-10 A |  | 80% → 100% | 155d → none |  |  |
| 38 | **Finalize Deliverables** |  | 2007-05-17 A |  | 50% → 100% | 128.7d → none |  |  |
| 39 | Release Candidate Software Architecture Document |  | 2007-05-17 A |  | 50% → 100% | 128.7d → none |  |  |
| 40 | **Implementation** |  |  | 32d → 31.82d |  |  |  |  |
| 48 | **Test** |  | 2007-05-15 A |  | 69% → 100% | 130.18d → none |  |  |
| 49 | Meet with Indepdent QA |  | 2007-04-09 A |  | 90% → 100% | 14.62d → none |  |  |
| 50 | Implement System Tests Against Protocol Management |  | 2007-05-15 A |  | 50% → 100% | 130.18d → none |  |  |
| 51 | Analyze and Identify Test Approach |  | 2007-04-27 A |  | 50% → 100% | 3.6d → none |  |  |
| 52 | **Finalize Deliverables** |  | 2007-05-03 A |  | 75% → 100% | 0d → none |  |  |
| 53 | Release Test Plan |  | 2007-05-03 A |  | 75% → 100% | -2.95d → none |  |  |
| 66 | **Configuration & Change Management** |  | 2007-05-15 A |  | 85% → 100% | 0d → none |  |  |
| 68 | **Finalize Deliverables** |  | 2007-05-15 A |  | 82% → 100% | 0d → none |  |  |
| 70 | G-Forge Implementation of the Change Control Process |  | 2007-05-14 A |  | 75% → 100% | -17.75d → none |  |  |
| 71 | Inception Complete | 2007-05-15 A | 2007-05-15 A |  | 0% → 100% | -18.65d → none |  |  |
| 73 | **Elaboration - Iteration 1** |  |  | 31.6d → 30.6d |  |  |  |  |
| 92 | UC Submit Project Proposal |  |  |  |  |  |  | was named UC Sumbit Project Proposal |
| 101 | **Analysis and Design** | 2007-06-11 → 2007-05-23 (-19d) | 2007-06-22 → 2007-06-15 (-7d) | 10d → 18d |  | 19d → 26d |  |  |
| 102 | Targeted Use Case Analysis and Design | 2007-06-11 → 2007-05-23 (-19d) | 2007-06-15 → 2007-06-05 (-10d) | 5d → 10d |  | 19d → 26d | 91 → 75 | constraint none → start no earlier than 2007-05-23 |
| 103 | Grid Strategy | 2007-06-18 → 2007-06-06 (-12d) | 2007-06-22 → 2007-06-12 (-10d) |  |  | 22d → 27d |  |  |
| 104 | Parsing Strategy | 2007-06-18 → 2007-06-06 (-12d) | 2007-06-20 → 2007-06-08 (-12d) |  |  | 19d → 27d |  |  |
| 105 | Binary Storage | 2007-06-18 → 2007-06-06 (-12d) | 2007-06-20 → 2007-06-08 (-12d) |  |  | 19d → 27d |  |  |
| 108 | 1.6 Data Migration Strategy | 2007-06-18 → 2007-06-06 (-12d) | 2007-06-19 → 2007-06-07 (-12d) | 1.93d → 2d |  | 22.07d → 33d |  |  |
| 109 | **Finalize Deliverables** | 2007-06-19 → 2007-06-13 (-6d) | 2007-06-22 → 2007-06-15 (-7d) |  |  | 22.07d → 27d |  |  |
| 110 | Update Software Architecture Document | 2007-06-19 → 2007-06-13 (-6d) | 2007-06-22 → 2007-06-15 (-7d) |  |  | 22.07d → 27d | 108 → 103 |  |
| 111 | **Implementation** |  | 2007-06-27 → 2007-06-15 (-12d) | 31.6d → 23.6d |  | 19d → 27d |  |  |
| 112 | Implement UC Import Project Data | 2007-06-21 → 2007-06-11 (-10d) | 2007-06-27 → 2007-06-15 (-12d) |  |  | 19d → 27d |  |  |
| 113 | Implement UC Download Project Data | 2007-06-21 → 2007-06-11 (-10d) | 2007-06-27 → 2007-06-15 (-12d) |  |  | 19d → 27d |  |  |
| 114 | Implement UC Login |  |  |  |  |  |  | was named Implement Login |
| 115 | Implement UC Report on Work Accomplished |  |  |  |  |  |  | was named Implement Manage Users |
| 118 | **Test** | 2007-06-18 → 2007-05-15 (-34d) | 2007-06-26 → 2007-06-18 (-8d) | 6.91d → 24.6d |  | 20.09d → 26d |  |  |
| 119 | Create Functional Test for targeted UC's | 2007-06-18 → 2007-06-06 (-12d) | 2007-06-20 → 2007-06-12 (-8d) | 3d → 5d |  | 20.09d → 26d |  | was named Create Junit Test for targeted UC's |
| 120 | Incorporate Test Cases into Gforge | 2007-06-25 → 2007-05-15 (-41d) | 2007-06-25 → 2007-05-16 (-40d) |  |  | 21d → 49.6d | Create Selenium Tests for targeted Ucs → none |  |
| 121 | Manage Test Assets | 2007-06-21 → 2007-06-13 (-8d) | 2007-06-22 → 2007-06-14 (-8d) | 1.91d → 2d |  | 20.09d → 26d |  |  |
| 122 | **Finalize Deliverables** | 2007-06-22 → 2007-06-15 (-7d) | 2007-06-26 → 2007-06-18 (-8d) |  |  | 20.09d → 26d |  |  |
| 123 | Release Test Plan | 2007-06-22 → 2007-06-15 (-7d) | 2007-06-26 → 2007-06-18 (-8d) |  |  | 20.09d → 26d |  |  |
| 124 | **Environment** | 2007-06-22 → 2007-06-15 (-7d) | 2007-06-25 → 2007-06-15 (-10d) |  |  | 21.09d → 27d |  |  |
| 125 | Integrate Test Suite into Gforge | 2007-06-22 → 2007-06-15 (-7d) | 2007-06-25 → 2007-06-15 (-10d) |  |  | 21.09d → 27d |  |  |
| 145 | **Construction Phase** |  | 2007-09-18 → 2007-10-16 (+28d) | 40d → 60d |  |  |  |  |
| 164 | **Construction - Iteration 3** | 2007-08-22 → 2007-09-19 (+28d) | 2007-09-18 → 2007-10-16 (+28d) |  |  |  | 163 → 163, 155 |  |
| 165 | Project Management | 2007-08-22 → 2007-09-19 (+28d) | 2007-09-18 → 2007-10-16 (+28d) |  |  |  |  |  |
| 166 | Requirements | 2007-08-22 → 2007-09-19 (+28d) | 2007-09-18 → 2007-10-16 (+28d) |  |  |  |  |  |
| 167 | Analysis and Design | 2007-08-22 → 2007-09-19 (+28d) | 2007-09-18 → 2007-10-16 (+28d) |  |  |  |  |  |
| 168 | Implementation | 2007-08-22 → 2007-09-19 (+28d) | 2007-09-18 → 2007-10-16 (+28d) |  |  |  |  |  |
| 169 | Test | 2007-08-22 → 2007-09-19 (+28d) | 2007-09-18 → 2007-10-16 (+28d) |  |  |  |  |  |
| 170 | Environment | 2007-08-22 → 2007-09-19 (+28d) | 2007-09-18 → 2007-10-16 (+28d) |  |  |  |  |  |
| 171 | Configuration and Change Management | 2007-08-22 → 2007-09-19 (+28d) | 2007-09-18 → 2007-10-16 (+28d) |  |  |  |  |  |
| 172 | Construction Iteration 3 Complete | 2007-09-18 → 2007-10-16 (+28d) | 2007-09-18 → 2007-10-16 (+28d) |  |  |  |  |  |
| 173 | **Transition Phase** | 2007-09-19 → 2007-10-17 (+28d) | 2007-11-13 → 2007-11-20 (+7d) | 40d → 25d |  |  |  |  |
| 174 | Transition - Iteration 1 | 2007-09-19 → 2007-10-17 (+28d) | 2007-10-16 → 2007-11-20 (+35d) | 20d → 25d |  |  |  |  |

## Version 4 (saved 2007-06-18)

Note of the change: minor tweaks to E1 tasks

Last finish 2007-11-20 → 2007-12-28 (+38d). Complete tasks 51 → 52.

Added:

| ID | Task | Duration | Start | Finish | Predecessors | Resources |
| --- | --- | --- | --- | --- | --- | --- |
| 72 | caArray 1.x Focus | 22d | 2007-05-17 A | 2007-06-18 A | 3 | etavela [90%]; bgendleman [80%]; smatyas; jpike |
| 175 | Task | 25d | 2007-11-23 | 2007-12-28 |  |  |

Removed: 140 User Interface

Changed:

| ID | Task | Start | Finish | Duration | Complete | Total float | Predecessors | Other |
| --- | --- | --- | --- | --- | --- | --- | --- | --- |
| 1 | **caArray 2.0** |  | 2007-11-20 → 2007-12-28 (+38d) | 167d? → 194.3d | 15% → 17% |  |  |  |
| 73 | **Elaboration Phase** | 2007-05-15 → 2007-06-18 A (+34d) | 2007-07-24 → 2007-08-31 (+38d) | 50.6d? → 54d | 0% → 1% | -18.65d → 0d | 71 → 71, 72 |  |
| 74 | **Elaboration - Iteration 1** | 2007-05-15 → 2007-06-18 A (+34d) | 2007-06-27 → 2007-07-27 (+30d) | 30.6d → 29d | 0% → 2% | -18.65d → 25d |  |  |
| 75 | **Project Management** | 2007-05-22 → 2007-06-18 A (+27d) | 2007-06-22 → 2007-07-23 (+31d) | 24d → 25.7d | 0% → 13% | -23.25d → 28.3d |  |  |
| 76 | Inception Post Mortem | 2007-05-22 → 2007-06-22 (+31d) | 2007-05-22 → 2007-06-22 (+31d) | 1.7h → 5h |  | 26.79d → 5.67d |  | constraint start no earlier than 2007-05-22 → start no earlier than 2007-06-22 |
| 77 | Plan Remainder of Initial Iteration | 2007-06-07 → 2007-06-27 A (+20d) | 2007-06-07 → 2007-06-27 (+20d) |  | 0% → 20% | 33d → 46.3d |  | constraint start no earlier than 2007-06-07 → start no earlier than 2007-06-27 |
| 78 | Weekly Status Meetings | 2007-05-23 → 2007-06-18 A (+26d) | 2007-05-24 → 2007-06-19 (+26d) |  | 0% → 10% | 43.5d → 52.5d |  |  |
| 79 | Plan for Next Iteration | 2007-06-22 → 2007-07-23 (+31d) | 2007-06-22 → 2007-07-23 (+31d) |  |  | 22d → 28.3d |  | constraint start no earlier than 2007-06-20 → start no earlier than 2007-07-23 |
| 80 | **Finalize Deliverables** | 2007-05-24 → 2007-06-18 A (+25d) | 2007-06-22 → 2007-06-25 (+3d) | 22d → 5.7d | 0% → 20% | -25.25d → 48.3d |  |  |
| 81 | May Status Report | 2007-06-08 → 2007-06-18 (+10d) | 2007-06-08 → 2007-06-18 (+10d) |  |  | -36.25d → -42.55d |  |  |
| 82 | Update Risk List | 2007-05-24 → 2007-06-18 (+25d) | 2007-05-24 → 2007-06-18 (+25d) |  |  | -6.25d → -23.55d |  |  |
| 83 | Finalize Iteration Plans | 2007-06-22 A | 2007-06-22 → 2007-06-25 (+3d) | 1d → 2d | 0% → 25% | 22d → 48.3d |  | was named Update Software Development Plan; resources none → bgendleman [80%]; etavela [50%] |
| 84 | **Requirements** | 2007-05-22 → 2007-06-18 A (+27d) | 2007-06-25 → 2007-07-17 (+22d) | 25d → 21d | 0% → 5% | 21d → 33d |  |  |
| 85 | Update Draft Documents | 2007-05-22 → 2007-06-18 (+27d) | 2007-05-24 → 2007-06-21 (+28d) |  |  | 42d → 50d |  |  |
| 86 | Write Prioritized Use Cases | 2007-05-25 → 2007-06-18 A (+24d) | 2007-06-07 → 2007-07-02 (+25d) |  | 0% → 10% | 21d → 0d |  |  |
| 87 | Create Wireframes for targeted Ucs | 2007-06-08 → 2007-07-02 (+24d) | 2007-06-12 → 2007-07-05 (+23d) |  |  | 30d → 41d |  |  |
| 88 | Harmonize Models | 2007-05-24 → 2007-06-18 (+25d) | 2007-05-24 → 2007-06-19 (+26d) |  |  | 43d → 53d |  |  |
| 89 | **Finalize Deliverables** | 2007-05-25 → 2007-06-18 A (+24d) | 2007-06-25 → 2007-07-17 (+22d) | 22d → 21d | 0% → 4% | 21d → 33d |  |  |
| 90 | Update Vision | 2007-05-25 → 2007-06-21 (+27d) | 2007-05-25 → 2007-06-22 (+28d) |  |  | 42d → 50d |  | was named Finalize Vision |
| 91 | Update Supplemental Specification | 2007-05-25 → 2007-06-21 (+27d) | 2007-05-25 → 2007-06-22 (+28d) |  |  | 42d → 50d |  | was named Finalize Supplemental Specification |
| 92 | UC Login | 2007-06-15 → 2007-06-18 A (+3d) | 2007-06-15 → 2007-06-19 (+4d) |  | 0% → 50% | 21d → 53d | 97 → none |  |
| 93 | UC Import Project Data | 2007-06-08 → 2007-07-02 (+24d) | 2007-06-08 → 2007-07-03 (+25d) |  |  | 21d → 33d |  |  |
| 94 | UC Submit Project Proposal | 2007-06-11 → 2007-07-03 (+22d) | 2007-06-11 → 2007-07-04 (+23d) |  |  | 21d → 33d |  |  |
| 95 | UC Report on Work Accomplished | 2007-06-12 → 2007-07-04 (+22d) | 2007-06-12 → 2007-07-05 (+23d) |  |  | 21d → 33d |  |  |
| 96 | UC Validate File for Submission | 2007-06-13 → 2007-07-05 (+22d) | 2007-06-13 → 2007-07-06 (+23d) |  |  | 21d → 33d |  |  |
| 97 | UC Download Project Data | 2007-06-14 → 2007-07-06 (+22d) | 2007-06-14 → 2007-07-09 (+25d) |  |  | 21d → 33d |  |  |
| 98 | UC Manage Users | 2007-06-18 → 2007-07-09 (+21d) | 2007-06-18 → 2007-07-10 (+22d) |  |  | 21d → 33d | 92 → 97 |  |
| 99 | UC Manage Institutional Groups | 2007-06-19 → 2007-07-10 (+21d) | 2007-06-19 → 2007-07-11 (+22d) |  |  | 21d → 33d |  |  |
| 100 | UC Wireframes | 2007-06-20 → 2007-07-11 (+21d) | 2007-06-21 → 2007-07-13 (+22d) |  |  | 21d → 33d |  |  |
| 101 | Stylesheet Framework | 2007-06-22 → 2007-07-13 (+21d) | 2007-06-25 → 2007-07-17 (+22d) |  |  | 21d → 33d |  |  |
| 102 | **Analysis and Design** | 2007-05-23 → 2007-06-18 (+26d) | 2007-06-15 → 2007-07-19 (+34d) | 18d → 23d |  | 26d → 10d |  |  |
| 103 | Targeted Use Case Analysis and Design | 2007-05-23 → 2007-07-02 (+40d) | 2007-06-05 → 2007-07-16 (+41d) |  |  | 26d → 0d | 76 → 76, 86 |  |
| 104 | Grid Strategy | 2007-06-06 → 2007-06-18 (+12d) | 2007-06-12 → 2007-06-28 (+16d) | 5d → 8.53d |  | 27d → 42.47d | 103 → none | resources etavela [90%] → etavela [25%]; rsrinavasa |
| 105 | Parsing Strategy | 2007-06-06 → 2007-07-16 (+40d) | 2007-06-08 → 2007-07-19 (+41d) |  |  | 27d → 26d |  |  |
| 106 | Binary Storage | 2007-06-06 → 2007-07-16 (+40d) | 2007-06-08 → 2007-07-19 (+41d) |  |  | 27d → 26d |  |  |
| 107 | Represent SNP Data | 2007-05-24 → 2007-06-18 (+25d) | 2007-05-28 → 2007-06-21 (+24d) |  |  | 41d → 51d |  |  |
| 108 | Security | 2007-05-29 → 2007-07-16 (+48d) | 2007-05-31 → 2007-07-19 (+49d) |  |  | 38d → 31d | none → 103 |  |
| 109 | 1.6 Data Migration Strategy | 2007-06-06 → 2007-07-16 (+40d) | 2007-06-07 → 2007-07-18 (+41d) |  |  | 33d → 32d |  |  |
| 110 | **Finalize Deliverables** | 2007-06-13 → 2007-06-28 (+15d) | 2007-06-15 → 2007-07-03 (+18d) |  |  | 27d → 42.47d |  |  |
| 111 | Update Software Architecture Document | 2007-06-13 → 2007-06-28 (+15d) | 2007-06-15 → 2007-07-03 (+18d) |  |  | 27d → 42.47d |  |  |
| 112 | **Implementation** | 2007-05-15 → 2007-06-18 (+34d) | 2007-06-15 → 2007-07-26 (+41d) | 23.6d → 28d |  | 27d → 26d |  |  |
| 113 | Implement UC Import Project Data | 2007-06-11 → 2007-07-19 (+38d) | 2007-06-15 → 2007-07-26 (+41d) |  |  | 27d → 26d |  |  |
| 114 | Implement UC Download Project Data | 2007-06-11 → 2007-07-19 (+38d) | 2007-06-15 → 2007-07-26 (+41d) |  |  | 27d → 26d |  |  |
| 115 | Implement UC Login | 2007-06-01 → 2007-07-02 (+31d) | 2007-06-04 → 2007-07-04 (+30d) |  |  | 31d → 37d | none → 86 |  |
| 116 | Implement UC Report on Work Accomplished | 2007-06-05 → 2007-07-04 (+29d) | 2007-06-11 → 2007-07-11 (+30d) |  |  | 31d → 37d |  |  |
| 117 | **Finalize Deliverables** | 2007-05-15 → 2007-06-18 (+34d) | 2007-05-16 → 2007-06-18 (+33d) |  |  | 49.96d → 53.36d |  |  |
| 118 | Release Final E1 Development Build | 2007-05-15 → 2007-06-18 (+34d) | 2007-05-16 → 2007-06-18 (+33d) |  |  | 49.96d → 53.36d |  |  |
| 119 | **Test** | 2007-05-15 → 2007-06-18 (+34d) | 2007-06-18 → 2007-07-27 (+39d) | 24.6d → 29d |  | 26d → 20d |  |  |
| 120 | Create Functional Test for targeted UC's | 2007-06-06 → 2007-07-16 (+40d) | 2007-06-12 → 2007-07-23 (+41d) |  |  | 26d → 0d |  |  |
| 121 | Incorporate Test Cases into Gforge | 2007-05-15 → 2007-06-18 (+34d) | 2007-05-16 → 2007-06-19 (+34d) |  |  | 49.6d → 53d |  |  |
| 122 | Manage Test Assets | 2007-06-13 → 2007-07-23 (+40d) | 2007-06-14 → 2007-07-25 (+41d) |  |  | 26d → 0d |  |  |
| 123 | **Finalize Deliverables** | 2007-06-15 → 2007-07-25 (+40d) | 2007-06-18 → 2007-07-27 (+39d) |  |  | 26d → 0d |  |  |
| 124 | Release Test Plan | 2007-06-15 → 2007-07-25 (+40d) | 2007-06-18 → 2007-07-27 (+39d) |  |  | 26d → 0d |  |  |
| 125 | **Environment** | 2007-06-15 → 2007-07-25 (+40d) | 2007-06-15 → 2007-07-27 (+42d) | 1d → 2d |  | 27d → 25d |  |  |
| 126 | Integrate Test Suite into Gforge | 2007-06-15 → 2007-07-25 (+40d) | 2007-06-15 → 2007-07-27 (+42d) | 1d → 2d |  | 27d → 25d |  |  |
| 127 | **Configuration and Change Management** | 2007-05-22 → 2007-06-18 (+27d) | 2007-06-25 → 2007-07-23 (+28d) |  |  | 21d → 29d |  |  |
| 128 | Manage Gforge Content | 2007-05-22 → 2007-06-18 (+27d) | 2007-06-25 → 2007-07-23 (+28d) |  |  | 21d → 29d |  |  |
| 129 | Elaboration 1 Complete | 2007-06-27 → 2007-07-27 (+30d) | 2007-06-27 → 2007-07-27 (+30d) |  |  |  | none → 124 |  |
| 130 | **Elaboration - Iteration 2** | 2007-06-27 → 2007-07-27 (+30d) | 2007-07-24 → 2007-08-31 (+38d) | 20d? → 25d |  |  |  |  |
| 131 | Project Management | 2007-06-27 → 2007-07-27 (+30d) | 2007-07-24 → 2007-08-24 (+31d) |  |  | 0d → 5d |  |  |
| 132 | E1 Post Mortem | 2007-06-27 → 2007-07-27 (+30d) | 2007-06-27 → 2007-07-30 (+33d) |  |  | 19d → 24d |  |  |
| 133 | **Requirements** | 2007-06-27 → 2007-07-27 (+30d) | 2007-07-10 → 2007-08-10 (+31d) | 10d? → 10d |  | 10d → 15d |  |  |
| 134 | Incorporate Stakeholder Feedback on Vision and Supp Spec | 2007-06-27 → 2007-07-27 (+30d) | 2007-06-28 → 2007-07-31 (+33d) |  |  | 15d → 20d |  |  |
| 135 | Incorporate Stakeholder Feedback on E1 Use Cases | 2007-06-29 → 2007-07-31 (+32d) | 2007-07-03 → 2007-08-03 (+31d) |  |  | 15d → 20d |  |  |
| 136 | Update Wireframes | 2007-06-27 → 2007-07-27 (+30d) | 2007-06-27 → 2007-08-01 (+35d) | 1d? → 3d |  | 19d → 22d |  |  |
| 137 | User Interface Design | 2007-06-27 → 2007-07-27 (+30d) | 2007-06-27 → 2007-08-01 (+35d) | 1d? → 3d |  | 19d → 22d |  |  |
| 138 | Detail E2 Use Cases | 2007-06-27 → 2007-07-27 (+30d) | 2007-07-10 → 2007-08-10 (+31d) |  |  | 10d → 15d |  |  |
| 139 | Analysis and Design | 2007-06-27 → 2007-07-27 (+30d) | 2007-07-24 → 2007-08-31 (+38d) | 20d → 25d |  |  |  |  |
| 140 | Implementation | 2007-06-27 → 2007-07-27 (+30d) | 2007-06-27 → 2007-08-24 (+58d) | 1d? → 20d |  | 19d → 5d |  |  |
| 141 | Test | 2007-06-27 → 2007-07-27 (+30d) | 2007-07-24 → 2007-08-31 (+38d) | 20d → 25d |  |  |  |  |

| ID | Task | Start | Finish | Duration |
| --- | --- | --- | --- | --- |
| 142 | Environment | 2007-06-27 → 2007-07-27 (+30d) | 2007-07-24 → 2007-08-31 (+38d) | 20d → 25d |
| 143 | Configuration and Change Management | 2007-06-27 → 2007-07-27 (+30d) | 2007-07-24 → 2007-08-31 (+38d) | 20d → 25d |
| 144 | Elaboration 2 Complete | 2007-07-24 → 2007-08-31 (+38d) | 2007-07-24 → 2007-08-31 (+38d) |  |
| 145 | **Construction Phase** | 2007-07-25 → 2007-08-31 (+37d) | 2007-10-16 → 2007-11-23 (+38d) |  |
| 146 | **Construction - Iteration 1** | 2007-07-25 → 2007-08-31 (+37d) | 2007-08-21 → 2007-09-28 (+38d) |  |
| 147 | Project Management | 2007-07-25 → 2007-08-31 (+37d) | 2007-08-21 → 2007-09-28 (+38d) |  |
| 148 | Requirements | 2007-07-25 → 2007-08-31 (+37d) | 2007-08-21 → 2007-09-28 (+38d) |  |
| 149 | Analysis and Design | 2007-07-25 → 2007-08-31 (+37d) | 2007-08-21 → 2007-09-28 (+38d) |  |
| 150 | Implementation | 2007-07-25 → 2007-08-31 (+37d) | 2007-08-21 → 2007-09-28 (+38d) |  |
| 151 | Test | 2007-07-25 → 2007-08-31 (+37d) | 2007-08-21 → 2007-09-28 (+38d) |  |
| 152 | Environment | 2007-07-25 → 2007-08-31 (+37d) | 2007-08-21 → 2007-09-28 (+38d) |  |
| 153 | Configuration and Change Management | 2007-07-25 → 2007-08-31 (+37d) | 2007-08-21 → 2007-09-28 (+38d) |  |
| 154 | Construction 1 Complete | 2007-08-21 → 2007-09-28 (+38d) | 2007-08-21 → 2007-09-28 (+38d) |  |
| 155 | **Construction - Iteration 2** | 2007-08-21 → 2007-09-28 (+38d) | 2007-09-18 → 2007-10-26 (+38d) |  |
| 156 | Project Management | 2007-08-22 → 2007-09-28 (+37d) | 2007-09-18 → 2007-10-26 (+38d) |  |
| 157 | Requirements | 2007-08-22 → 2007-09-28 (+37d) | 2007-09-18 → 2007-10-26 (+38d) |  |
| 158 | Analysis and Design | 2007-08-22 → 2007-09-28 (+37d) | 2007-09-18 → 2007-10-26 (+38d) |  |
| 159 | Implementation | 2007-08-22 → 2007-09-28 (+37d) | 2007-09-18 → 2007-10-26 (+38d) |  |
| 160 | Test | 2007-08-22 → 2007-09-28 (+37d) | 2007-09-18 → 2007-10-26 (+38d) |  |
| 161 | Environment | 2007-08-22 → 2007-09-28 (+37d) | 2007-09-18 → 2007-10-26 (+38d) |  |
| 162 | Configuration and Change Management | 2007-08-22 → 2007-09-28 (+37d) | 2007-09-18 → 2007-10-26 (+38d) |  |
| 163 | Construction 2 Complete | 2007-08-21 → 2007-09-28 (+38d) | 2007-08-21 → 2007-09-28 (+38d) |  |
| 164 | **Construction - Iteration 3** | 2007-09-19 → 2007-10-26 (+37d) | 2007-10-16 → 2007-11-23 (+38d) |  |
| 165 | Project Management | 2007-09-19 → 2007-10-26 (+37d) | 2007-10-16 → 2007-11-23 (+38d) |  |
| 166 | Requirements | 2007-09-19 → 2007-10-26 (+37d) | 2007-10-16 → 2007-11-23 (+38d) |  |
| 167 | Analysis and Design | 2007-09-19 → 2007-10-26 (+37d) | 2007-10-16 → 2007-11-23 (+38d) |  |
| 168 | Implementation | 2007-09-19 → 2007-10-26 (+37d) | 2007-10-16 → 2007-11-23 (+38d) |  |
| 169 | Test | 2007-09-19 → 2007-10-26 (+37d) | 2007-10-16 → 2007-11-23 (+38d) |  |
| 170 | Environment | 2007-09-19 → 2007-10-26 (+37d) | 2007-10-16 → 2007-11-23 (+38d) |  |
| 171 | Configuration and Change Management | 2007-09-19 → 2007-10-26 (+37d) | 2007-10-16 → 2007-11-23 (+38d) |  |
| 172 | Construction Iteration 3 Complete | 2007-10-16 → 2007-11-23 (+38d) | 2007-10-16 → 2007-11-23 (+38d) |  |
| 173 | **Transition Phase** | 2007-10-17 → 2007-11-23 (+37d) | 2007-11-20 → 2007-12-28 (+38d) |  |
| 174 | **Transition - Iteration 1** | 2007-10-17 → 2007-11-23 (+37d) | 2007-11-20 → 2007-12-28 (+38d) |  |

## Version 5 (saved 2007-06-27)

Note of the change: minor updates based on recent progress - need to rename some of the use cases

Last finish stays 2007-12-28. Complete tasks 52 → 55.

Changed:

| ID | Task | Start | Finish | Duration | Complete | Total float | Other |
| --- | --- | --- | --- | --- | --- | --- | --- |
| 1 | **caArray 2.0** |  |  |  | 17% → 18% |  |  |
| 73 | **Elaboration Phase** |  |  |  | 1% → 4% |  |  |
| 74 | **Elaboration - Iteration 1** |  |  |  | 2% → 8% |  |  |
| 75 | **Project Management** |  |  |  | 13% → 28% |  |  |
| 76 | Inception Post Mortem | 2007-06-22 → 2007-06-28 (+6d) | 2007-06-22 → 2007-06-28 (+6d) |  |  | 5.67d → 2.67d | constraint start no earlier than 2007-06-22 → start no earlier than 2007-06-28 |
| 77 | Plan Remainder of Initial Iteration |  | 2007-06-27 A |  | 20% → 100% | 46.3d → none |  |
| 78 | Weekly Status Meetings |  |  |  | 10% → 25% |  |  |
| 84 | **Requirements** |  |  |  | 5% → 22% |  |  |
| 86 | Write Prioritized Use Cases |  |  |  | 10% → 25% | 0d → 1d |  |
| 88 | Harmonize Models | 2007-06-18 A | 2007-06-19 A |  | 0% → 100% | 53d → none |  |
| 89 | **Finalize Deliverables** |  |  |  | 4% → 23% |  |  |
| 90 | Update Vision | 2007-06-21 A |  |  | 0% → 25% |  |  |
| 91 | Update Supplemental Specification | 2007-06-21 A |  |  | 0% → 25% |  |  |
| 92 | UC Login |  | 2007-06-19 A |  | 50% → 100% | 53d → none |  |
| 93 | UC Import Project Data | 2007-07-02 A |  |  | 0% → 50% | 33d → 34.25d |  |
| 94 | UC Submit Project Proposal | 2007-07-03 A |  |  | 0% → 25% | 33d → 34d |  |
| 95 | UC Report on Work Accomplished | 2007-07-04 A |  |  | 0% → 25% | 33d → 33.75d |  |
| 96 | UC Validate File for Submission | 2007-07-05 A |  |  | 0% → 25% | 33d → 33.5d |  |
| 97 | UC Download Project Data | 2007-07-06 A |  |  | 0% → 25% | 33d → 33.25d |  |
| 98 | UC Manage Users | 2007-07-09 A |  |  | 0% → 25% |  |  |
| 102 | **Analysis and Design** | 2007-06-18 A |  |  | 0% → 5% | 10d → 31d |  |
| 103 | Targeted Use Case Analysis and Design | 2007-07-02 A |  |  | 0% → 10% |  |  |
| 104 | Grid Strategy | 2007-06-18 A |  |  | 0% → 10% |  |  |
| 112 | **Implementation** | 2007-06-18 A |  |  | 0% → 2% |  |  |
| 115 | Implement UC Login | 2007-07-02 A | 2007-07-04 → 2007-07-05 (+1d) | 2d → 3d | 0% → 10% | 37d → 36d |  |
| 116 | Implement UC Report on Work Accomplished | 2007-07-04 → 2007-07-05 (+1d) | 2007-07-11 → 2007-07-12 (+1d) |  |  | 37d → 36d |  |

## Version 6 (saved 2007-07-02)

Note of the change: schedule update

Last finish stays 2007-12-28. Complete tasks 55 → 57.

Added:

| ID | Task | Duration | Start | Finish | Constraint | Resources |
| --- | --- | --- | --- | --- | --- | --- |
| 93 | UC Acquire Project Data via API | 2d | 2007-06-18 A | 2007-06-20 A |  | rsrinavasa |
| 94 | UC Manage Data Files | 2d | 2007-06-22 A | 2007-06-25 A |  | rsrinavasa; bgendleman [80%] |
| 106 | MIAME and MAGE-TAB Comparison | 2d | 2007-07-05 | 2007-07-06 | start no earlier than 2007-07-05 | etavela [10%]; jpike; rsrinavasa |

Changed:

| ID | Task | Start | Finish | Duration | Complete | Total float |
| --- | --- | --- | --- | --- | --- | --- |
| 1 | **caArray 2.0** |  |  |  | 18% → 19% |  |
| 73 | **Elaboration Phase** |  |  |  | 4% → 7% |  |
| 74 | **Elaboration - Iteration 1** |  |  |  | 8% → 16% |  |
| 84 | **Requirements** |  |  |  | 22% → 36% |  |
| 89 | **Finalize Deliverables** |  |  |  | 23% → 50% |  |
| 96 | UC Submit Project Proposal |  |  |  | 25% → 75% | 34d → 35.25d |
| 97 | UC Report on Work Accomplished |  |  |  | 25% → 75% | 33.75d → 34.5d |
| 98 | UC Validate File for Submission |  |  |  | 25% → 75% | 33.5d → 33.75d |
| 99 | UC Download Project Data |  |  |  | 25% → 50% |  |
| 104 | **Analysis and Design** |  |  |  | 5% → 18% |  |
| 105 | Targeted Use Case Analysis and Design |  |  |  | 10% → 25% |  |
| 108 | Parsing Strategy | 2007-07-16 A |  |  | 0% → 50% |  |
| 109 | Binary Storage | 2007-07-16 A |  |  | 0% → 50% |  |
| 112 | 1.6 Data Migration Strategy | 2007-07-16 A |  |  | 0% → 20% |  |
| 115 | **Implementation** |  |  |  | 2% → 1% |  |
| 118 | Implement UC Login |  | 2007-07-05 → 2007-07-09 (+4d) | 3d → 5d | 10% → 6% | 36d → 34d |
| 119 | Implement UC Report on Work Accomplished | 2007-07-05 → 2007-07-09 (+4d) | 2007-07-12 → 2007-07-16 (+4d) |  |  | 36d → 34d |

## Version 7 (saved 2007-07-06)

Note of the change: updates on requirements and analysis activities

Last finish stays 2007-12-28. Complete tasks 57 → 59.

Changed:

| ID | Task | Start | Finish | Complete | Total float |
| --- | --- | --- | --- | --- | --- |
| 84 | **Requirements** |  |  | 36% → 38% |  |
| 85 | Update Draft Documents | 2007-06-18 A |  | 0% → 25% |  |
| 93 | UC Acquire Project Data via API |  | 2007-06-20 A → 2007-06-20 | 100% → 50% | none → 52d |
| 96 | UC Submit Project Proposal |  | 2007-07-04 A | 75% → 100% | 35.25d → none |
| 97 | UC Report on Work Accomplished |  | 2007-07-05 A | 75% → 100% | 34.5d → none |
| 98 | UC Validate File for Submission |  | 2007-07-06 A | 75% → 100% | 33.75d → none |
| 102 | UC Wireframes | 2007-07-11 A |  | 0% → 10% |  |

## Version 8 (saved 2007-07-18)

Note of the change: updated with pm, req and environment tasks, initial E2 tasks

Last finish stays 2007-12-28. Complete tasks 59 → 65.

Added:

| ID | Task | Duration | Start | Finish | Predecessors | Constraint | Resources |
| --- | --- | --- | --- | --- | --- | --- | --- |
| 119 | Implement UC Acquire Project Data via API | 10d | 2007-07-09 A | 2007-07-23 | 118 |  | etavela [90%]; rsrinavasa |
| 120 | Implement UC Manage Project Data Files (to support import) | 2d | 2007-07-23 A | 2007-07-25 | 119 |  | rsrinavasa |
| 130 | Create and Revise ARC Document | 1d? | 2007-07-10 A | 2007-07-10 |  | start no earlier than 2007-07-10 |  |
| 131 | Work with Systems to Establish Dev and QA Boxes | 1d? | 2007-06-18 A | 2007-06-19 |  |  |  |
| 132 | Craft Draft Build and Deploy Plan | 4.2w | 2007-06-29 A | 2007-07-27 |  | finish no earlier than 2007-07-27 | pduvall; aglover; smatyas [25%]; bgendleman [10%]; etavela [10%] |
| 133 | Integrate Automation Scripts to Support Dev to QA Builds | 1w | 2007-06-18 A | 2007-06-25 |  |  | pduvall; aglover; etavela [10%] |
| 141 | E2 Review | 0.5d | 2007-07-27 | 2007-07-27 | 137 |  | bgendleman |
| 142 | Plan Remainder of Initial Iteration | 1d | 2007-07-27 | 2007-07-30 |  |  | bgendleman |
| 143 | Weekly Status Meetings | 1.5d | 2007-07-27 | 2007-07-30 |  |  | bgendleman |
| 144 | Plan for Next Iteration | 1d | 2007-07-27 | 2007-07-30 |  |  | bgendleman |
| 145 | **Finalize Deliverables** | 1d | 2007-07-27 | 2007-07-30 |  |  | bgendleman |
| 146 | July Status Report | 0.5d | 2007-07-27 | 2007-07-27 |  |  | bgendleman |
| 147 | Update Risk List | 1d | 2007-07-27 | 2007-07-30 |  |  | bgendleman |
| 148 | Finalize C1 Iteration Plans | 1d | 2007-07-27 | 2007-07-30 |  |  | bgendleman |
| 160 | Complete DEV to QA Integration | 3d | 2007-07-27 | 2007-08-01 |  |  | aglover; pduvall |

Changed:

| ID | Task | Start | Finish | Duration | Complete | Total float | Predecessors | Other |
| --- | --- | --- | --- | --- | --- | --- | --- | --- |
| 1 | **caArray 2.0** |  |  | 194.3d → 194.3d? | 19% → 26% |  |  |  |
| 73 | **Elaboration Phase** |  |  | 54d → 54d? | 7% → 28% |  |  |  |
| 74 | **Elaboration - Iteration 1** |  |  | 29d → 29.7d? | 16% → 46% | 25d → 24.3d |  |  |
| 75 | **Project Management** |  |  |  | 28% → 68% |  |  |  |
| 76 | Inception Post Mortem | 2007-06-28 A | 2007-06-28 → 2007-07-03 A (+5d) | 5h → 4d | 0% → 100% | 2.67d → none |  |  |
| 78 | Weekly Status Meetings |  |  |  | 25% → 50% |  |  |  |
| 79 | Plan for Next Iteration | 2007-07-23 A |  |  | 0% → 25% |  |  |  |
| 80 | **Finalize Deliverables** |  |  |  | 20% → 33% |  |  |  |
| 81 | May Status Report | 2007-06-18 A | 2007-06-18 A |  | 0% → 100% | -42.55d → none |  |  |
| 82 | Update Risk List | 2007-06-18 A |  |  | 0% → 25% |  |  |  |
| 84 | **Requirements** |  | 2007-07-17 → 2007-07-25 (+8d) | 21d → 27.7d | 38% → 57% | 33d → 26.3d |  |  |
| 85 | Update Draft Documents |  |  |  | 25% → 75% |  |  |  |
| 86 | Write Prioritized Use Cases |  |  |  | 25% → 50% | 2.5d → 8.75d |  |  |
| 87 | Create Wireframes for targeted Ucs | 2007-07-02 → 2007-07-23 (+21d) | 2007-07-05 → 2007-07-25 (+20d) |  |  | 41d → 26.3d | 86 → 86, 102 |  |
| 88 | Consolidate Models |  |  |  |  |  |  | was named Harmonize Models |
| 89 | **Finalize Deliverables** |  | 2007-07-17 → 2007-07-24 (+7d) | 21d → 26.7d | 50% → 65% | 33d → 27.3d |  |  |
| 90 | Update Vision |  |  |  | 25% → 75% |  |  |  |
| 95 | UC Import Project Data |  | 2007-07-03 A |  | 50% → 100% | 43d → none |  |  |
| 100 | UC Manage Users |  | 2007-07-10 A |  | 25% → 100% | 33.2d → none |  |  |
| 101 | UC Manage Institutional Groups | 2007-07-10 A | 2007-07-11 A |  | 0% → 100% | 33.2d → none |  |  |
| 102 | UX Modeling/Wireframes | 2007-07-11 A → 2007-07-19 A (+8d) | 2007-07-13 → 2007-07-20 (+7d) |  |  | 33d → 26.3d |  | was named UC Wireframes |
| 103 | Stylesheet Framework | 2007-07-13 → 2007-07-23 (+10d) | 2007-07-17 → 2007-07-24 (+7d) |  |  | 33d → 27.3d |  |  |
| 104 | **Analysis and Design** |  |  |  | 18% → 39% |  |  |  |
| 105 | Targeted Use Case Analysis and Design |  |  |  | 25% → 75% | 0d → 1.25d |  |  |
| 106 | MIAME and MAGE-TAB Comparison | 2007-07-05 A |  |  | 0% → 50% |  |  |  |
| 107 | Grid Strategy |  |  |  | 10% → 25% |  |  |  |
| 110 | Represent SNP Data | 2007-06-18 A |  |  | 0% → 25% |  |  |  |
| 115 | **Implementation** |  |  |  | 1% → 47% |  |  |  |
| 116 | Implement UC Import Project Data | 2007-07-19 A |  |  | 0% → 50% |  |  | resources none → bmason; rsrinavasa |
| 117 | Implement UC Submit Project Proposal |  |  |  |  |  |  | was named Implement UC Download Project Data; resources none → etavela |
| 118 | Implement UC Login (incomplete) |  | 2007-07-09 A |  | 6% → 100% | 34d → none |  | was named Implement UC Login; resources none → jpike |
| 123 | **Test** | 2007-06-18 A |  |  | 0% → 13% | 20d → 25d |  |  |
| 124 | Create Functional Test for targeted UC's | 2007-07-16 A |  |  | 0% → 25% |  |  |  |
| 129 | **Environment** | 2007-07-25 → 2007-06-18 A (-37d) |  | 2d → 29.7d? | 0% → 41% | 25d → 24.3d |  |  |
| 134 | Integrate Test Suite into Gforge |  |  |  |  |  |  | resources none → smatyas [50%] |
| 135 | **Configuration and Change Management** | 2007-06-18 A |  |  | 0% → 50% |  |  |  |
| 136 | Manage Gforge Content | 2007-06-18 A |  |  | 0% → 50% |  |  |  |
| 139 | **Project Management** |  | 2007-08-24 → 2007-07-30 (-25d) | 20d → 1.5d |  | 5d → 23.5d |  |  |
| 140 | E1 Post Mortem |  |  |  |  |  | 137 → none | resources none → bgendleman |
| 156 | **Implementation** |  | 2007-08-24 → 2007-08-03 (-21d) | 20d → 5d |  | 5d → 20d |  |  |
| 157 | Implement UC Report on Work Accomplished | 2007-07-09 → 2007-07-27 (+18d) | 2007-07-16 → 2007-08-03 (+18d) |  |  | 34d → 20d | 118 → none |  |
| 159 | **Environment** |  | 2007-08-31 → 2007-08-01 (-30d) | 25d → 3d |  | 0d → 22d |  |  |

## Version 9 (saved 2007-07-19)

Note of the change: updates for the week of July 19

Last finish stays 2007-12-28. Complete tasks 65 → 67.

Changed:

| ID | Task | Start | Finish | Duration | Complete | Total float | Predecessors | Other |
| --- | --- | --- | --- | --- | --- | --- | --- | --- |
| 1 | **caArray 2.0** |  |  |  | 26% → 27% | 0d → -109.3d |  |  |
| 73 | **Elaboration Phase** |  |  |  | 28% → 30% | 0d → -24.3d |  |  |
| 74 | **Elaboration - Iteration 1** |  |  |  | 46% → 48% | 24.3d → 0d |  |  |
| 104 | **Analysis and Design** |  | 2007-07-19 → 2007-07-27 (+8d) | 23d → 29.7d | 39% → 43% | 31d → 0d |  |  |
| 105 | Targeted Use Case Analysis and Design |  |  |  | 75% → 90% | 1.25d → -75.3d |  |  |
| 106 | MIAME and MAGE-TAB Comparison |  | 2007-07-06 A |  | 50% → 100% | 39.3d → none |  |  |
| 108 | Parsing Strategy |  |  |  | 50% → 90% | 28.5d → -78.3d |  |  |
| 109 | Binary Storage |  |  |  | 50% → 75% | 26d → -78.3d |  |  |
| 110 | Represent SNP Data - Deferred |  | 2007-06-21 A |  | 25% → 100% | 51d → none |  | was named Represent SNP Data |
| 111 | Security | 2007-07-16 A |  |  | 0% → 20% | 31d → -78.3d |  |  |
| 113 | **Finalize Deliverables** | 2007-06-28 A | 2007-07-03 → 2007-07-27 (+24d) | 3d → 21.17d | 0% → 10% | 42.47d → 0d |  |  |
| 114 | Update Software Architecture Document | 2007-06-28 A | 2007-07-03 → 2007-07-27 (+24d) | 3d → 21.17d | 0% → 10% | 42.47d → 0d |  | constraint none → finish no earlier than 2007-07-27 |
| 115 | **Implementation** | 2007-06-18 A → 2007-07-02 A (+14d) | 2007-07-26 → 2007-07-27 (+1d) | 28d → 19.34d | 47% → 57% | 26d → -1.34d |  |  |
| 116 | Implement UC Import Project Data |  |  |  | 50% → 60% | 26d → -83.3d |  | resources bmason; rsrinavasa → bmason; rsrinavasa; jpike; etavela [90%] |
| 117 | Implement UC Submit Project Proposal | 2007-07-19 → 2007-07-23 (+4d) | 2007-07-26 → 2007-07-24 (-2d) | 5d → 2d |  | 26d → -82d | 109 → none | constraint none → start no earlier than 2007-07-23; resources etavela → etavela [90%]; tparnell |
| 120 | Implement UC Manage Project Data Files (to support import) |  | 2007-07-25 → 2007-07-24 (-1d) | 2d → 1.02d | 25% → 49% | 27d → -81.32d |  | resources rsrinavasa → rsrinavasa; etavela [90%]; tparnell |
| 121 | **Finalize Deliverables** | 2007-06-18 → 2007-07-27 (+39d) | 2007-06-18 → 2007-07-27 (+39d) |  |  | 53.36d → -84.64d |  |  |
| 122 | Release Final E1 Development Build | 2007-06-18 → 2007-07-27 (+39d) | 2007-06-18 → 2007-07-27 (+39d) |  |  | 53.36d → -84.64d |  | constraint none → start no earlier than 2007-07-27 |
| 123 | **Test** | 2007-06-18 A → 2007-07-16 A (+28d) |  | 29d → 9d |  | 25d → -4d |  |  |
| 125 | Incorporate Test Cases into Gforge | 2007-06-18 → 2007-07-25 (+37d) | 2007-06-19 → 2007-07-25 (+36d) |  |  | 53d → -83d |  | constraint none → start no earlier than 2007-07-25 |

## Version 10 (saved 2007-07-26)

Note of the change: e2 and c1 need to be planned, most items covered for e1

Last finish stays 2007-12-28. Complete tasks 67 → 79.

Added:

| ID | Task | Duration | Start | Finish | Resources |
| --- | --- | --- | --- | --- | --- |
| 82 | June Status Report | 2h | 2007-07-13 A | 2007-07-13 A | bgendleman |

Changed:

| ID | Task | Start | Finish | Duration | Complete | Total float | Predecessors | Other |
| --- | --- | --- | --- | --- | --- | --- | --- | --- |
| 1 | **caArray 2.0** |  |  | 194.3d? → 195d | 27% → 31% | -109.3d → -110d |  |  |
| 73 | **Elaboration Phase** |  |  | 54d? → 54.7d | 30% → 44% | -24.3d → -25d |  |  |
| 74 | **Elaboration - Iteration 1** |  |  | 29.7d? → 29.7d | 48% → 68% |  |  |  |
| 75 | **Project Management** |  | 2007-07-23 → 2007-07-27 (+4d) | 25.7d → 29.7d | 68% → 95% |  |  |  |
| 78 | Weekly Status Meetings |  | 2007-06-19 A |  | 50% → 100% | -56.8d → none |  |  |
| 79 | Plan for Next Iteration |  | 2007-07-23 → 2007-07-26 (+3d) |  |  | -81d → 0d |  |  |
| 80 | **Finalize Deliverables** |  | 2007-06-25 → 2007-07-27 (+32d) | 5.7d → 29.7d | 33% → 98% |  |  |  |
| 83 | Update Risk List |  | 2007-06-18 → 2007-07-27 (+39d) | 2h → 4h | 25% → 50% | -23.55d → 0d |  | constraint start no earlier than 2007-05-24 → finish no earlier than 2007-07-27; resources bgendleman → bgendleman [6774.3%] |
| 84 | Finalize Iteration Plans | 2007-06-22 A → 2007-07-13 A (+21d) | 2007-06-25 → 2007-07-26 A (+31d) | 2d → 10d | 25% → 100% | -61d → none |  | constraint start no earlier than 2007-06-22 → finish no earlier than 2007-07-27 |
| 85 | **Requirements** |  |  |  | 57% → 86% | -3d → 0d |  |  |
| 87 | Write Prioritized Use Cases |  | 2007-07-02 A |  | 50% → 100% | -68.3d → none |  |  |
| 88 | Create Wireframes for targeted Ucs (deferred) | 2007-07-23 A | 2007-07-25 A |  | 0% → 100% | -83d → none |  | was named Create Wireframes for targeted Ucs |
| 90 | **Finalize Deliverables** |  |  |  | 65% → 76% |  |  |  |
| 91 | Update Vision |  | 2007-06-22 A |  | 75% → 100% | -59.3d → none |  |  |
| 92 | Update Supplemental Specification |  |  |  | 25% → 50% |  |  |  |
| 94 | UC Acquire Project Data via API |  | 2007-06-20 A |  | 50% → 100% | -57.3d → none |  |  |
| 100 | UC Download Project Data (deferred) |  | 2007-07-09 A |  | 50% → 100% | -70.3d → none |  | was named UC Download Project Data |
| 103 | UX Modeling/Wireframes (deferred) |  |  |  |  | -83d → -82d |  | was named UX Modeling/Wireframes |
| 104 | Stylesheet Framework (deferred) |  |  |  |  |  |  | was named Stylesheet Framework |
| 105 | **Analysis and Design** |  |  |  | 43% → 45% |  |  |  |
| 106 | Targeted Use Case Analysis and Design |  | 2007-07-16 A |  | 90% → 100% | -75.3d → none |  |  |
| 124 | **Test** |  |  |  | 13% → 50% |  |  |  |
| 125 | Create Functional Test for targeted UC's |  | 2007-07-23 A |  | 25% → 100% | -109.3d → none |  |  |
| 130 | **Environment** |  |  | 29.7d? → 29.7d | 41% → 83% |  |  |  |
| 131 | Create and Revise ARC Document |  | 2007-07-10 A | 1d? → 1d | 50% → 100% | -72d → none |  | resources none → bgendleman |
| 132 | Work with Systems to Establish Dev and QA Boxes |  | 2007-06-19 → 2007-07-27 (+38d) | 1d? → 1d | 10% → 50% | -56.3d → 0d |  | constraint none → finish no earlier than 2007-07-27; resources none → bgendleman |
| 133 | Craft Draft Build and Deploy Plan |  | 2007-07-27 A |  | 50% → 100% | 0d → none |  |  |
| 134 | Integrate Automation Scripts to Support Dev to QA Builds |  |  |  | 25% → 50% |  |  |  |
| 135 | Integrate Test Suite into Gforge (deferred) |  |  |  |  |  |  | was named Integrate Test Suite into Gforge |
| 136 | **Configuration and Change Management** |  | 2007-07-23 → 2007-07-27 (+4d) | 25d → 29.7d | 50% → 75% |  |  |  |
| 137 | Manage Gforge Content |  | 2007-07-23 → 2007-07-27 (+4d) | 25d → 29.7d | 50% → 75% | -80.3d → 0d |  | constraint start no earlier than 2007-05-22 → finish no earlier than 2007-07-27 |
| 139 | **Elaboration - Iteration 2** |  |  | 25d → 25.7d |  | -109.3d → -110d |  |  |
| 140 | **Project Management** |  | 2007-07-30 → 2007-08-31 (+32d) | 1.5d → 25.7d |  | -85.8d → -110d |  |  |
| 142 | E2 Review | 2007-07-27 → 2007-08-17 (+21d) | 2007-07-27 → 2007-08-17 (+21d) |  |  | -84.8d → -100.5d | 138 → none | constraint none → start no earlier than 2007-08-17 |
| 143 | Plan Remainder of Initial Iteration | 2007-07-27 → 2007-08-17 (+21d) | 2007-07-30 → 2007-08-20 (+21d) |  |  | -85.3d → -100.5d | none → 142 |  |
| 144 | Weekly Status Meetings | 2007-07-27 → 2007-08-30 (+34d) | 2007-07-30 → 2007-08-31 (+32d) |  |  | -85.8d → -110d |  | constraint none → finish no earlier than 2007-08-31 |
| 146 | **Finalize Deliverables** |  | 2007-07-30 → 2007-08-27 (+28d) | 1d → 21.7d |  | -85.3d → -106d |  |  |
| 147 | July Status Report | 2007-07-27 → 2007-08-17 (+21d) | 2007-07-27 → 2007-08-17 (+21d) |  |  | -84.8d → -100d |  | constraint none → finish no earlier than 2007-08-17 |
| 149 | Finalize C1 Iteration Plans | 2007-07-27 → 2007-08-27 (+31d) | 2007-07-30 → 2007-08-27 (+28d) |  |  | -85.3d → -106d |  | constraint none → finish no earlier than 2007-08-27 |
| 164 | **Construction Phase** | 2007-08-31 → 2007-09-03 (+3d) |  |  |  | -109.3d → -110d |  |  |
| 165 | **Construction - Iteration 1** | 2007-08-31 → 2007-09-03 (+3d) |  |  |  | -109.3d → -110d |  |  |
| 166 | Project Management | 2007-08-31 → 2007-09-03 (+3d) |  |  |  | -69.3d → -70d |  |  |
| 167 | Requirements | 2007-08-31 → 2007-09-03 (+3d) |  |  |  | -69.3d → -70d |  |  |
| 168 | Analysis and Design | 2007-08-31 → 2007-09-03 (+3d) |  |  |  | -69.3d → -70d |  |  |
| 169 | Implementation | 2007-08-31 → 2007-09-03 (+3d) |  |  |  | -69.3d → -70d |  |  |
| 170 | Test | 2007-08-31 → 2007-09-03 (+3d) |  |  |  | -69.3d → -70d |  |  |
| 171 | Environment | 2007-08-31 → 2007-09-03 (+3d) |  |  |  | -69.3d → -70d |  |  |
| 172 | Configuration and Change Management | 2007-08-31 → 2007-09-03 (+3d) |  |  |  | 0d → -110d |  |  |
| 175 | Project Management | 2007-09-28 → 2007-10-01 (+3d) |  |  |  | 0d → -110d |  |  |
| 176 | Requirements | 2007-09-28 → 2007-10-01 (+3d) |  |  |  | 0d → -110d |  |  |
| 177 | Analysis and Design | 2007-09-28 → 2007-10-01 (+3d) |  |  |  | 0d → -110d |  |  |
| 178 | Implementation | 2007-09-28 → 2007-10-01 (+3d) |  |  |  | 0d → -110d |  |  |
| 179 | Test | 2007-09-28 → 2007-10-01 (+3d) |  |  |  | 0d → -110d |  |  |
| 180 | Environment | 2007-09-28 → 2007-10-01 (+3d) |  |  |  | 0d → -110d |  |  |
| 181 | Configuration and Change Management | 2007-09-28 → 2007-10-01 (+3d) |  |  |  | 0d → -110d |  |  |
| 183 | **Construction - Iteration 3** | 2007-10-26 → 2007-10-29 (+3d) |  |  |  | -109.3d → -110d |  |  |
| 184 | Project Management | 2007-10-26 → 2007-10-29 (+3d) |  |  |  | 0d → -110d |  |  |
| 185 | Requirements | 2007-10-26 → 2007-10-29 (+3d) |  |  |  | 0d → -110d |  |  |
| 186 | Analysis and Design | 2007-10-26 → 2007-10-29 (+3d) |  |  |  | 0d → -110d |  |  |
| 187 | Implementation | 2007-10-26 → 2007-10-29 (+3d) |  |  |  | 0d → -110d |  |  |
| 188 | Test | 2007-10-26 → 2007-10-29 (+3d) |  |  |  | 0d → -110d |  |  |
| 189 | Environment | 2007-10-26 → 2007-10-29 (+3d) |  |  |  | 0d → -110d |  |  |
| 190 | Configuration and Change Management | 2007-10-26 → 2007-10-29 (+3d) |  |  |  | 0d → -110d |  |  |
| 192 | **Transition Phase** | 2007-11-23 → 2007-11-26 (+3d) |  |  |  | -109.3d → -110d |  |  |
| 193 | **Transition - Iteration 1** | 2007-11-23 → 2007-11-26 (+3d) |  |  |  | -109.3d → -110d |  |  |
| 194 | Task | 2007-11-23 → 2007-11-26 (+3d) |  |  |  | 0d → -110d |  |  |

## Version 11 (saved 2007-07-27)

Note of the change: updated for E2 - assignments and C1 need to be done today

Last finish stays 2007-12-28. Complete tasks 79 → 83.

Added:

| ID | Task | Duration | Start | Finish | Predecessors | Constraint | Resources |
| --- | --- | --- | --- | --- | --- | --- | --- |
| 156 | Manage Project Permissions | 0.5d | 2007-07-27 | 2007-07-27 |  |  |  |
| 158 | Represent SNP Data (confirm no impact to current design) | 2d | 2007-07-27 | 2007-07-31 |  |  | etavela |
| 159 | Security -Permission Modeling | 2d | 2007-07-27 | 2007-07-31 |  |  | bmason |
| 160 | Asynchronous Import | 3d | 2007-07-31 | 2007-08-03 | 158 |  |  |
| 161 | Zip File Handling | 2d | 2007-07-27 | 2007-07-31 |  |  |  |
| 162 | Grid API | 5d | 2007-07-27 | 2007-08-03 |  |  | rsrinivasa |
| 165 | Manage Project Permissions UC | 5d | 2007-08-08 | 2007-08-15 | 164, 159 |  |  |
| 166 | Import Project Data | 10d | 2007-08-03 | 2007-08-17 |  |  |  |
| 167 | Submit Project Proposal | 5d | 2007-08-03 | 2007-08-10 |  |  |  |
| 168 | Acquire Project Data via API UC | 10d | 2007-08-03 | 2007-08-17 |  | start no earlier than 2007-07-30 | rsrinivasa |
| 169 | Manage Project Data Files UC | 10d | 2007-08-03 | 2007-08-17 |  |  |  |
| 170 | **Test** | 5d | 2007-07-27 | 2007-08-03 |  |  |  |
| 171 | Create Functional Test for targeted UC's | 5d | 2007-07-27 | 2007-08-03 |  |  |  |
| 172 | Incorporate Test Cases into Gforge | 2d | 2007-07-27 | 2007-07-31 |  |  |  |
| 173 | Manage Test Assets | 2d | 2007-07-27 | 2007-07-31 |  |  |  |
| 174 | **Finalize Deliverables** | 1d | 2007-07-27 | 2007-07-30 |  |  |  |
| 175 | Release Test Plan | 1d | 2007-07-27 | 2007-07-30 |  |  |  |
| 179 | Manage Gforge Content | 1d? | 2007-07-27 | 2007-07-30 |  |  |  |

Removed: 159 Test

Changed:

| ID | Task | Start | Finish | Duration | Complete | Total float | Predecessors | Other |
| --- | --- | --- | --- | --- | --- | --- | --- | --- |
| 1 | **caArray 2.0** |  |  | 195d → 195d? | 31% → 34% |  |  |  |
| 73 | **Elaboration Phase** |  |  | 54.7d → 54.7d? | 44% → 54% |  |  |  |
| 74 | **Elaboration - Iteration 1** |  |  |  | 68% → 78% |  |  |  |
| 105 | **Analysis and Design** |  |  |  | 45% → 70% |  |  |  |
| 108 | Grid Strategy |  |  |  | 25% → 75% | -63.83d → -6.16d |  |  |
| 109 | Parsing Strategy |  | 2007-07-19 A |  | 90% → 100% | 0d → none |  |  |
| 110 | Binary Storage |  | 2007-07-19 A |  | 75% → 100% | 0d → none |  |  |
| 114 | **Finalize Deliverables** |  |  |  | 10% → 50% |  |  |  |
| 115 | Update Software Architecture Document |  |  |  | 10% → 50% |  |  |  |
| 116 | **Implementation** |  |  |  | 57% → 83% |  |  |  |
| 117 | Implement UC Import Project Data |  |  |  | 60% → 90% | 0d → -83.3d |  |  |
| 118 | Implement UC Submit Project Proposal | 2007-07-23 A | 2007-07-24 A |  | 0% → 100% | -82d → none |  |  |
| 120 | Implement UC Acquire Project Data via API |  |  |  | 50% → 70% | 0d → -80.3d |  |  |
| 121 | Implement UC Manage Project Data Files (to support import) |  | 2007-07-24 → 2007-07-25 A (+1d) | 1.02d → 2d | 49% → 100% | 0d → none |  | resources rsrinavasa; etavela [90%]; tparnell → tparnell |
| 139 | **Elaboration - Iteration 2** |  |  | 25.7d → 25.7d? |  |  |  |  |
| 143 | Dev Team Iteration Plan | 2007-08-17 → 2007-07-31 (-17d) | 2007-08-20 → 2007-07-31 (-20d) |  |  | -100.5d → -87d | 142 → none | was named Plan Remainder of Initial Iteration; constraint none → start no earlier than 2007-07-31 |
| 150 | **Requirements** |  | 2007-08-10 → 2007-08-08 (-2d) | 10d → 8d |  | -94.3d → -92.3d |  |  |
| 153 | Create Wireframes for Targeted Ucs |  | 2007-08-01 → 2007-08-03 (+2d) | 3d → 5d |  | -87.3d → -92.3d |  | was named Update Wireframes |
| 154 | User Interface Design | 2007-07-27 → 2007-08-03 (+7d) | 2007-08-01 → 2007-08-08 (+7d) |  |  | -87.3d → -92.3d | none → 153 |  |
| 155 | **Detail E2 Use Cases** |  | 2007-08-10 → 2007-07-27 (-14d) | 10d → 0.5d |  | -94.3d → -84.8d |  |  |
| 157 | **Analysis and Design** |  | 2007-08-31 → 2007-08-03 (-28d) | 25d → 5d |  | -109.3d → -99.3d |  |  |
| 163 | **Implementation** | 2007-07-27 → 2007-08-03 (+7d) | 2007-08-03 → 2007-08-17 (+14d) | 5d → 10d |  | -89.3d → -99.3d | none → 157 |  |
| 164 | Login UC | 2007-07-27 → 2007-08-03 (+7d) | 2007-08-03 → 2007-08-08 (+5d) | 5d → 3d |  | -89.3d → -97.3d |  | was named Implement UC Report on Work Accomplished |
| 178 | **Configuration and Change Management** |  | 2007-08-31 → 2007-07-30 (-32d) | 25d → 1d? |  | -109.3d → -85.3d |  |  |
| 180 | Elaboration 2 Complete |  |  |  |  | -109.3d → -109d | 178 → none | constraint none → start no earlier than 2007-08-31 |

## Version 12 (saved 2007-08-01)

Note of the change: minor updates

Last finish 2007-12-28 → 2008-01-03 (+6d).

Added:

| ID | Task | Duration | Start | Finish | Predecessors | Constraint | Resources |
| --- | --- | --- | --- | --- | --- | --- | --- |
| 156 | Validate Project Data Files: Define Validation Rules | 1d | 2007-08-03 | 2007-08-03 |  | start no earlier than 2007-08-03 |  |
| 157 | Capture Special Requirements for SNPs | 1d | 2007-07-27 | 2007-07-30 |  |  |  |
| 160 | **Use-Case Design** | 5d | 2007-08-06 | 2007-08-10 |  |  |  |
| 161 | Manage Project Permissions | 3d | 2007-08-07 | 2007-08-09 | 209 | start no earlier than 2007-08-06 | etavela |
| 162 | Validate Project Data Files | 1d | 2007-08-10 | 2007-08-10 | 161 |  | etavela |
| 163 | Login | 1d | 2007-08-06 | 2007-08-06 |  | start no earlier than 2007-08-06 | jpike |
| 164 | Logical Model Final Draft | 2d | 2007-08-06 | 2007-08-07 | 181 |  | rsrinivasa |
| 165 | **Subsystem Design** | 8d | 2007-08-06 | 2007-08-15 |  |  |  |
| 166 | FileAccessService | 4d | 2007-08-07 | 2007-08-10 | 163 |  | jpike |
| 167 | MageTabParser: Validation | 4d | 2007-08-06 | 2007-08-09 | 180 |  | bmason |
| 168 | ArrayDataService: Validation | 2d | 2007-08-10 | 2007-08-13 | 167 |  | bmason |
| 169 | ArrayDesignService: Validation | 2d | 2007-08-14 | 2007-08-15 | 168 |  | bmason |
| 170 | Remote API Grid Implementation | 5d | 2007-08-08 | 2007-08-14 | 164 |  | rsrinivasa |
| 171 | PermissionsManagementService | 3d | 2007-08-07 | 2007-08-09 | 178 |  | tparnell |
| 172 | Authorization Mechanism | 4d | 2007-08-10 | 2007-08-15 | 171 |  | tparnell |
| 173 | External Review: Grid API | 1d | 2007-07-27 | 2007-07-30 |  |  |  |
| 174 | **Finalize Deliverables** | 2d | 2007-09-03 | 2007-09-04 |  |  |  |
| 175 | Update Software Architecture Document | 2d | 2007-09-03 | 2007-09-04 | 205 | start no earlier than 2007-08-29 | etavela |
| 177 | **E1 Completion** | 4d | 2007-08-01 | 2007-08-06 |  |  |  |
| 178 | Complete Hibernate Mappings | 4d | 2007-08-01 | 2007-08-06 |  | start no earlier than 2007-08-01 | rsrinivasa; tparnell |
| 179 | Remote Java API | 3d | 2007-08-01 | 2007-08-03 |  | start no earlier than 2007-08-01 | etavela; smatyas |
| 180 | Complete MAGE-TAB parsing | 3d | 2007-08-01 | 2007-08-03 |  | start no earlier than 2007-08-01 | bmason |
| 181 | Complete MAGE-TAB translation | 3d | 2007-08-01 | 2007-08-03 |  | start no earlier than 2007-08-01 | rsrinivasa |
| 182 | **Subsystem Implementation** | 19d? | 2007-08-13 | 2007-09-06 |  |  |  |
| 183 | FileAccessService | 5d | 2007-08-13 | 2007-08-17 | 166 |  | jpike |
| 184 | MageTabParser: Validation | 5d | 2007-08-16 | 2007-08-22 | 169 |  | bmason |
| 185 | ArrayDataService: Validation | 3d | 2007-08-23 | 2007-08-27 | 184 |  | bmason |
| 186 | ArrayDesignService: Validation | 2d | 2007-08-28 | 2007-08-29 | 185 |  | bmason |
| 187 | PermissionsManagement | 5d | 2007-08-16 | 2007-08-22 | 172 |  | tparnell |
| 188 | Object Access Authorization Mechanism | 1d? | 2007-08-23 | 2007-08-23 | 187 |  | tparnell |
| 189 | Remote API Grid Implementation | 10d | 2007-08-24 | 2007-09-06 | 188 |  | tparnell |
| 190 | **Implement Use Cases** | 5d? | 2007-08-15 | 2007-08-21 |  |  |  |
| 191 | Manage Project Permissions | 3d | 2007-08-15 | 2007-08-17 | 207 |  | etavela |
| 192 | Validate Project Data Files | 1d? | 2007-08-20 | 2007-08-20 | 191 |  | etavela |
| 193 | Login | 1d? | 2007-08-21 | 2007-08-21 | 192 |  | etavela |
| 194 | **Implement Additional Array Design Parsers** | 10d | 2007-08-20 | 2007-08-31 |  |  |  |
| 195 | Illumina | 3d | 2007-08-20 | 2007-08-22 | 183 |  | jpike |
| 196 | Affymetrix SNP | 2d | 2007-08-30 | 2007-08-31 | 186 |  | bmason |
| 197 | **Implement Additional Array Data Parsers** | 11d | 2007-08-23 | 2007-09-06 |  |  |  |
| 198 | Illumina | 4d | 2007-09-03 | 2007-09-06 | 196 |  | bmason |
| 199 | Affymetrix SNP | 2d | 2007-08-23 | 2007-08-24 | 195 |  | jpike |
| 200 | Affymetrix CHP | 2d | 2007-08-27 | 2007-08-28 | 199 |  | jpike |
| 202 | Validate Project Data Files Test Cases | 1d? | 2007-08-22 | 2007-08-22 | 193 |  | etavela |
| 203 | Manage Permission Test Cases | 1d? | 2007-08-23 | 2007-08-23 | 202 |  | etavela |
| 204 | Import Data Files Test Suite | 1d? | 2007-08-24 | 2007-08-24 | 203 |  | etavela |
| 205 | Remote Java API Test Suite | 5d | 2007-08-27 | 2007-08-31 | 204 |  | smatyas [50%]; etavela |
| 209 | Development Process "Quick Start" | 1d? | 2007-08-06 | 2007-08-06 | 179 |  | etavela |
| 211 | Incorporate Automated Deployment Process | 2d | 2007-07-27 | 2007-07-31 |  |  |  |

Removed: 158 Represent SNP Data (confirm no impact to current design); 159 Security -Permission Modeling; 160 Asynchronous Import; 161 Zip File Handling; 162 Grid API; 164 Login UC; 165 Manage Project Permissions UC; 166 Import Project Data; 167 Submit Project Proposal; 168 Acquire Project Data via API UC; 169 Manage Project Data Files UC; 171 Create Functional Test for targeted UC's; 172 Incorporate Test Cases into Gforge; 173 Manage Test Assets

Changed:

| ID | Task | Start | Finish | Duration | Complete | Total float | Predecessors | Other |
| --- | --- | --- | --- | --- | --- | --- | --- | --- |
| 1 | **caArray 2.0** |  | 2007-12-28 → 2008-01-03 (+6d) | 195d? → 199d? | 34% → 32% | -110d → -114d |  |  |
| 73 | **Elaboration Phase** |  | 2007-08-31 → 2007-09-06 (+6d) | 54.7d? → 58.7d? | 54% → 45% | -25d → -29d |  |  |
| 139 | **Elaboration - Iteration 2** |  | 2007-08-31 → 2007-09-06 (+6d) | 25.7d? → 29.7d? |  | -110d → -114d |  |  |
| 141 | E1 Assessment |  |  |  |  |  |  | was named E1 Post Mortem |
| 150 | **Requirements** |  | 2007-08-08 → 2007-08-28 (+20d) | 8d → 22.7d |  | -92.3d → -107d |  |  |
| 151 | Incorporate Stakeholder Feedback on Vision and Supp Spec | 2007-07-27 → 2007-08-01 (+5d) | 2007-07-31 → 2007-08-17 (+17d) | 2d → 13d |  | -89.3d → -103d |  | constraint none → start no earlier than 2007-08-01 |
| 152 | Incorporate Stakeholder Feedback on E1 Use Cases | 2007-07-31 → 2007-08-20 (+20d) | 2007-08-03 → 2007-08-22 (+19d) |  |  | -89.3d → -103d |  |  |
| 153 | Create Wireframes for Targeted UCs | 2007-07-27 → 2007-08-08 (+12d) | 2007-08-03 → 2007-08-14 (+11d) |  |  | -92.3d → -107d |  | was named Create Wireframes for Targeted Ucs; constraint none → start no earlier than 2007-08-08 |
| 154 | User Interface Design | 2007-08-03 → 2007-08-15 (+12d) | 2007-08-08 → 2007-08-28 (+20d) | 3d → 10d |  | -92.3d → -107d |  |  |
| 155 | **Detail E2 Use Cases** |  | 2007-07-27 → 2007-08-03 (+7d) | 0.5d → 5.7d |  | -84.8d → -90d |  |  |
| 158 | Manage Project Permissions | 2007-07-27 → 2007-08-02 (+6d) | 2007-07-27 → 2007-08-02 (+6d) |  |  | -84.8d → -88.5d |  | constraint none → start no earlier than 2007-08-02 |
| 159 | **Analysis and Design** |  | 2007-08-03 → 2007-09-04 (+32d) | 5d → 27.7d |  | -99.3d → -112d |  |  |
| 176 | **Implementation** | 2007-08-03 → 2007-08-01 (-2d) | 2007-08-17 → 2007-09-06 (+20d) | 10d → 27d? |  | -99.3d → -114d | 159 → none |  |
| 201 | **Test** | 2007-07-27 → 2007-08-13 (+17d) | 2007-08-03 → 2007-08-31 (+28d) | 5d → 15d? |  | -89.3d → -112d |  |  |
| 206 | **Finalize Deliverables** | 2007-07-27 → 2007-08-13 (+17d) | 2007-07-30 → 2007-08-14 (+15d) | 1d → 2d |  | -85.3d → -112d |  |  |
| 207 | Release Test Plan | 2007-07-27 → 2007-08-13 (+17d) | 2007-07-30 → 2007-08-14 (+15d) | 1d → 2d |  | -85.3d → -112d | none → 162 | resources none → etavela |
| 208 | **Environment** |  | 2007-08-01 → 2007-08-06 (+5d) | 3d → 6.7d? |  | -87.3d → -106.3d |  |  |
| 215 | **Construction Phase** | 2007-09-03 → 2007-09-07 (+4d) | 2007-11-23 → 2007-11-29 (+6d) |  |  | -110d → -114d |  |  |
| 216 | **Construction - Iteration 1** | 2007-09-03 → 2007-09-07 (+4d) | 2007-09-28 → 2007-10-04 (+6d) |  |  | -110d → -114d |  |  |
| 217 | Project Management | 2007-09-03 → 2007-09-07 (+4d) | 2007-09-28 → 2007-10-04 (+6d) |  |  | -70d → -74d |  |  |
| 218 | Requirements | 2007-09-03 → 2007-09-07 (+4d) | 2007-09-28 → 2007-10-04 (+6d) |  |  | -70d → -74d |  |  |
| 219 | Analysis and Design | 2007-09-03 → 2007-09-07 (+4d) | 2007-09-28 → 2007-10-04 (+6d) |  |  | -70d → -74d |  |  |
| 220 | Implementation | 2007-09-03 → 2007-09-07 (+4d) | 2007-09-28 → 2007-10-04 (+6d) |  |  | -70d → -74d |  |  |
| 221 | Test | 2007-09-03 → 2007-09-07 (+4d) | 2007-09-28 → 2007-10-04 (+6d) |  |  | -70d → -74d |  |  |
| 222 | Environment | 2007-09-03 → 2007-09-07 (+4d) | 2007-09-28 → 2007-10-04 (+6d) |  |  | -70d → -74d |  |  |
| 223 | Configuration and Change Management | 2007-09-03 → 2007-09-07 (+4d) | 2007-09-28 → 2007-10-04 (+6d) |  |  | -110d → -114d |  |  |
| 224 | Construction 1 Complete | 2007-09-28 → 2007-10-04 (+6d) | 2007-09-28 → 2007-10-04 (+6d) |  |  | -110d → -114d |  |  |
| 225 | **Construction - Iteration 2** | 2007-09-28 → 2007-10-04 (+6d) | 2007-10-26 → 2007-11-01 (+6d) |  |  | -110d → -114d |  |  |
| 226 | Project Management | 2007-10-01 → 2007-10-05 (+4d) | 2007-10-26 → 2007-11-01 (+6d) |  |  | -110d → -114d |  |  |
| 227 | Requirements | 2007-10-01 → 2007-10-05 (+4d) | 2007-10-26 → 2007-11-01 (+6d) |  |  | -110d → -114d |  |  |
| 228 | Analysis and Design | 2007-10-01 → 2007-10-05 (+4d) | 2007-10-26 → 2007-11-01 (+6d) |  |  | -110d → -114d |  |  |
| 229 | Implementation | 2007-10-01 → 2007-10-05 (+4d) | 2007-10-26 → 2007-11-01 (+6d) |  |  | -110d → -114d |  |  |
| 230 | Test | 2007-10-01 → 2007-10-05 (+4d) | 2007-10-26 → 2007-11-01 (+6d) |  |  | -110d → -114d |  |  |
| 231 | Environment | 2007-10-01 → 2007-10-05 (+4d) | 2007-10-26 → 2007-11-01 (+6d) |  |  | -110d → -114d |  |  |
| 232 | Configuration and Change Management | 2007-10-01 → 2007-10-05 (+4d) | 2007-10-26 → 2007-11-01 (+6d) |  |  | -110d → -114d |  |  |
| 233 | Construction 2 Complete | 2007-09-28 → 2007-10-04 (+6d) | 2007-09-28 → 2007-10-04 (+6d) |  |  | -90d → -94d |  |  |
| 234 | **Construction - Iteration 3** | 2007-10-29 → 2007-11-02 (+4d) | 2007-11-23 → 2007-11-29 (+6d) |  |  | -110d → -114d |  |  |
| 235 | Project Management | 2007-10-29 → 2007-11-02 (+4d) | 2007-11-23 → 2007-11-29 (+6d) |  |  | -110d → -114d |  |  |
| 236 | Requirements | 2007-10-29 → 2007-11-02 (+4d) | 2007-11-23 → 2007-11-29 (+6d) |  |  | -110d → -114d |  |  |
| 237 | Analysis and Design | 2007-10-29 → 2007-11-02 (+4d) | 2007-11-23 → 2007-11-29 (+6d) |  |  | -110d → -114d |  |  |
| 238 | Implementation | 2007-10-29 → 2007-11-02 (+4d) | 2007-11-23 → 2007-11-29 (+6d) |  |  | -110d → -114d |  |  |
| 239 | Test | 2007-10-29 → 2007-11-02 (+4d) | 2007-11-23 → 2007-11-29 (+6d) |  |  | -110d → -114d |  |  |
| 240 | Environment | 2007-10-29 → 2007-11-02 (+4d) | 2007-11-23 → 2007-11-29 (+6d) |  |  | -110d → -114d |  |  |
| 241 | Configuration and Change Management | 2007-10-29 → 2007-11-02 (+4d) | 2007-11-23 → 2007-11-29 (+6d) |  |  | -110d → -114d |  |  |
| 242 | Construction Iteration 3 Complete | 2007-11-23 → 2007-11-29 (+6d) | 2007-11-23 → 2007-11-29 (+6d) |  |  | -110d → -114d |  |  |
| 243 | **Transition Phase** | 2007-11-26 → 2007-11-30 (+4d) | 2007-12-28 → 2008-01-03 (+6d) |  |  | -110d → -114d |  |  |
| 244 | **Transition - Iteration 1** | 2007-11-26 → 2007-11-30 (+4d) | 2007-12-28 → 2008-01-03 (+6d) |  |  | -110d → -114d |  |  |
| 245 | Task | 2007-11-26 → 2007-11-30 (+4d) | 2007-12-28 → 2008-01-03 (+6d) |  |  | -110d → -114d |  |  |

## Version 13 (saved 2007-08-02)

Note of the change: E2 updated - length unintentionally extended - will be revisited

Last finish 2008-01-03 → 2008-01-09 (+6d). Complete tasks 83 → 94.

Added:

| ID | Task | Duration | Start | Finish | Predecessors | Constraint | Resources |
| --- | --- | --- | --- | --- | --- | --- | --- |
| 145 | Hold Dev to QA Handoff | 2d | 2007-08-16 | 2007-08-17 |  | start no earlier than 2007-08-16 | bgendleman [80%]; smatyas [50%]; etavela [90%]; pduvall |
| 150 | Establish Plan for Alpha and Beta Releases | 17d? | 2007-08-03 | 2007-08-27 |  | start no earlier than 2007-08-03 | bgendleman [80%]; etavela [90%] |
| 156 | UI Mockups for Prioritized Use Cases | 5d | 2007-08-09 | 2007-08-15 | 155 |  | mrehfus |
| 159 | UC Download Project Data (from E1 deferred) | 0.5d | 2007-08-03 | 2007-08-03 |  | start no earlier than 2007-08-03 | bgendleman |
| 160 | UC Manage Users | 0.5d | 2007-08-03 | 2007-08-03 | 159 |  | bgendleman |
| 214 | Review Build and Deploy Plan with SCM Initiative | 0.4d | 2007-08-01 A | 2007-08-01 A |  | start no earlier than 2007-08-01 | aglover; pduvall |
| 215 | Review and Demonstration Meetings (Eng + Prod / QA / Systems | 1d? | 2007-07-27 | 2007-07-30 |  |  |  |
| 216 | Complete Acquisition of DEV and QA Environment | 1d | 2007-08-02 A | 2007-08-02 |  | finish no earlier than 2007-08-02 |  |

Changed:

| ID | Task | Start | Finish | Duration | Complete | Total float | Predecessors | Other |
| --- | --- | --- | --- | --- | --- | --- | --- | --- |
| 1 | **caArray 2.0** |  | 2008-01-03 → 2008-01-09 (+6d) | 199d? → 203d? |  |  |  |  |
| 2 | **Inception Phase** |  | 2007-05-17 A → 2007-05-16 A (-1d) | 33.3d → 33d |  |  |  |  |
| 3 | **Inception Iteration 1** |  | 2007-05-17 A → 2007-05-16 A (-1d) | 33.3d → 33d |  |  |  |  |
| 32 | **Analysis and Design** |  | 2007-05-17 A → 2007-05-16 A (-1d) | 33.3d → 33d |  |  |  |  |
| 38 | **Finalize Deliverables** |  | 2007-05-17 A → 2007-05-16 A (-1d) | 3.3d → 3d |  |  |  |  |
| 39 | Release Candidate Software Architecture Document |  | 2007-05-17 A → 2007-05-16 A (-1d) |  |  |  |  |  |
| 73 | **Elaboration Phase** |  | 2007-09-06 → 2007-09-12 (+6d) | 58.7d? → 62.7d? | 45% → 42% |  |  |  |
| 74 | **Elaboration - Iteration 1** |  |  |  | 78% → 84% |  |  |  |
| 75 | **Project Management** |  | 2007-07-27 A |  | 95% → 100% | 0d → none |  |  |
| 79 | Plan for Next Iteration |  | 2007-07-26 A |  | 25% → 100% | -84d → none |  |  |
| 80 | **Finalize Deliverables** |  | 2007-07-27 A |  | 98% → 100% | 0d → none |  |  |
| 83 | Update Risk List |  | 2007-07-27 A |  | 50% → 100% | 0d → none |  |  |
| 85 | **Requirements** |  |  |  | 86% → 89% |  |  |  |
| 86 | Update Draft Documents |  | 2007-06-21 A |  | 75% → 100% | -58.3d → none |  |  |
| 90 | **Finalize Deliverables** |  |  |  | 76% → 79% |  |  |  |
| 92 | Update Supplemental Specification |  | 2007-06-22 A |  | 50% → 100% | -59.3d → none |  |  |
| 108 | Grid Strategy - Deferred |  |  |  |  |  |  | was named Grid Strategy |
| 112 | Security - Deferred |  |  |  |  |  |  | was named Security |
| 126 | Incorporate Test Cases into Gforge (Deferred) |  |  |  |  |  |  | was named Incorporate Test Cases into Gforge |
| 127 | Manage Test Assets (Deferred) |  |  |  |  | -111.3d → -84.3d |  | was named Manage Test Assets |
| 129 | Release Test Plan (Deferred) |  |  |  |  | -111.3d → -84.3d |  | was named Release Test Plan |
| 130 | **Environment** |  |  |  | 83% → 93% |  |  |  |
| 132 | Work with Systems to Establish Dev and QA Boxes |  | 2007-07-27 A |  | 50% → 100% | 0d → none |  |  |
| 134 | Integrate Automation Scripts to Support Dev to QA Builds |  | 2007-06-25 A |  | 50% → 100% | -60.3d → none |  |  |
| 136 | **Configuration and Change Management** |  | 2007-07-27 A |  | 75% → 100% | 0d → none |  |  |
| 137 | Manage Gforge Content |  | 2007-07-27 A |  | 75% → 100% | 0d → none |  |  |
| 138 | Elaboration 1 Complete | 2007-07-27 A | 2007-07-27 A |  | 0% → 100% | -111.3d → none |  |  |
| 139 | **Elaboration - Iteration 2** | 2007-07-27 A | 2007-09-06 → 2007-09-12 (+6d) | 29.7d? → 33.7d? | 0% → 1% | -114d → -29d |  |  |
| 140 | **Project Management** | 2007-07-27 → 2007-07-30 A (+3d) |  | 25.7d → 25d? | 0% → 3% | -110d → -23d |  |  |
| 141 | Dev Team Iteration Plan | 2007-07-31 A | 2007-07-31 A |  | 0% → 100% | -87d → none |  | resources bgendleman → bgendleman; etavela [90%]; smatyas [50%]; bmason; tparnell |
| 142 | E1 Assessment | 2007-07-27 → 2007-07-30 A (+3d) | 2007-07-30 A | 1d → 0.5d | 0% → 100% | -85.3d → none |  | resources bgendleman → bgendleman; etavela [90%] |
| 143 | E2 Review | 2007-08-17 → 2007-08-13 (-4d) | 2007-08-17 → 2007-08-13 (-4d) | 0.5d → 1d |  | -99.5d → -96d |  | constraint start no earlier than 2007-08-17 → start no earlier than 2007-08-13 |
| 146 | Plan for Next Iteration | 2007-07-27 → 2007-08-24 (+28d) | 2007-07-30 → 2007-08-27 (+28d) | 1d → 2d |  | -85.3d → -106d |  | constraint none → start no earlier than 2007-08-24 |
| 147 | **Finalize Deliverables** | 2007-07-27 → 2007-07-30 (+3d) |  | 21.7d → 21d? |  |  |  |  |
| 148 | Update Risk List | 2007-07-27 → 2007-07-30 (+3d) | 2007-07-30 → 2007-08-10 (+11d) | 1d → 10d |  | -85.3d → -95d |  | constraint none → finish no earlier than 2007-08-10 |
| 149 | Finalize C1 Iteration Plans | 2007-08-27 → 2007-08-03 (-24d) |  | 1d → 17d |  |  |  | constraint finish no earlier than 2007-08-27 → start no earlier than 2007-08-03 |
| 152 | **Requirements** |  | 2007-08-28 → 2007-08-22 (-6d) | 22.7d → 18.7d |  | -107d → -103d |  |  |
| 153 | Incorporate Stakeholder Feedback on Vision and Supp Spec |  | 2007-08-17 → 2007-08-22 (+5d) | 13d → 16d |  |  |  |  |
| 154 | Incorporate Stakeholder Feedback on E1 Use Cases | 2007-08-20 → 2007-07-27 (-24d) | 2007-08-22 → 2007-08-01 (-21d) |  |  | -103d → -87.3d | 153 → none |  |
| 155 | UX Modeling/Wireframes (from E1 deferred) | 2007-08-08 → 2007-08-02 (-6d) | 2007-08-14 → 2007-08-08 (-6d) |  |  | -107d → -103d |  | was named Create Wireframes for Targeted UCs; constraint start no earlier than 2007-08-08 → start no earlier than 2007-08-02; resources none → mrehfus |
| 157 | Stylesheet Framework (from E1 deferred) | 2007-08-15 → 2007-08-16 (+1d) | 2007-08-28 → 2007-08-22 (-6d) | 10d → 5d |  | -107d → -103d | 155 → 156 | was named User Interface Design; resources bgendleman [80%] → bgendleman [80%]; mrehfus; lpower |
| 158 | **Detail E2 Use Cases** | 2007-07-27 → 2007-08-02 (+6d) | 2007-08-03 → 2007-08-08 (+5d) | 5.7d → 5d |  | -90d → -93d |  |  |
| 161 | UC Manage Project Permissions | 2007-08-02 → 2007-08-06 (+4d) | 2007-08-02 → 2007-08-06 (+4d) | 0.5d → 1d |  | -88.5d → -91d | none → 160 | was named Manage Project Permissions; resources none → bgendleman |
| 162 | Capture Special Requirements for SNPs | 2007-07-27 → 2007-08-02 (+6d) | 2007-07-30 → 2007-08-08 (+9d) | 1d → 5d |  | -85.3d → -93d |  | constraint none → start no earlier than 2007-08-02; resources none → bgendleman |
| 163 | Validate Project Data Files: Define Validation Rules |  |  |  |  |  |  | resources none → bgendleman |
| 169 | Logical Model Final Draft |  |  |  |  |  |  | resources rsrinivasa → none |
| 170 | **Subsystem Design** |  | 2007-08-15 → 2007-08-21 (+6d) | 8d → 12d |  |  |  |  |
| 175 | Remote API Grid Implementation |  |  |  |  |  |  | resources rsrinivasa → none |
| 176 | PermissionsManagementService | 2007-08-07 → 2007-08-13 (+6d) | 2007-08-09 → 2007-08-15 (+6d) |  |  | -98d → -118d |  |  |
| 177 | Authorization Mechanism | 2007-08-10 → 2007-08-16 (+6d) | 2007-08-15 → 2007-08-21 (+6d) |  |  | -98d → -118d |  |  |
| 181 | **Implementation** |  | 2007-09-06 → 2007-09-12 (+6d) | 27d? → 31d? |  | -114d → -118d |  |  |
| 182 | **E1 Completion** |  | 2007-08-06 → 2007-08-10 (+4d) | 4d → 8d |  | -114d → -118d |  |  |
| 183 | Complete Hibernate Mappings |  | 2007-08-06 → 2007-08-10 (+4d) | 4d → 8d |  | -114d → -118d |  | resources rsrinivasa; tparnell → tparnell |
| 186 | Complete MAGE-TAB translation |  |  |  |  |  |  | resources rsrinivasa → bmason |
| 187 | **Subsystem Implementation** |  | 2007-09-06 → 2007-09-12 (+6d) | 19d? → 23d? |  | -114d → -118d |  |  |
| 192 | PermissionsManagement | 2007-08-16 → 2007-08-22 (+6d) | 2007-08-22 → 2007-08-28 (+6d) |  |  | -114d → -118d |  |  |
| 193 | Object Access Authorization Mechanism | 2007-08-23 → 2007-08-29 (+6d) | 2007-08-23 → 2007-08-29 (+6d) |  |  | -114d → -118d |  |  |
| 194 | Remote API Grid Implementation | 2007-08-24 → 2007-08-30 (+6d) | 2007-09-06 → 2007-09-12 (+6d) |  |  | -114d → -118d |  |  |
| 206 | **Test** |  |  | 15d? → 15d |  |  |  |  |
| 207 | Validate Project Data Files Test Cases |  |  | 1d? → 1d |  |  |  |  |
| 208 | Manage Permission Test Cases |  |  | 1d? → 1d |  |  |  |  |
| 209 | Import Data Files Test Suite |  |  | 1d? → 1d |  |  |  |  |
| 213 | **Environment** | 2007-07-27 A | 2007-08-06 → 2007-08-07 (+1d) | 6.7d? → 7.7d? | 0% → 11% | -106.3d → -3d |  |  |
| 217 | Development Process "Quick Start" |  |  | 1d? → 1d |  |  |  |  |
| 218 | Complete DEV to QA Integration | 2007-07-27 → 2007-08-03 (+7d) | 2007-08-01 → 2007-08-07 (+6d) |  |  | -87.3d → -92d | none → 216 |  |
| 224 | **Construction Phase** | 2007-09-07 → 2007-09-13 (+6d) | 2007-11-29 → 2007-12-05 (+6d) |  |  | -114d → -118d |  |  |
| 225 | **Construction - Iteration 1** | 2007-09-07 → 2007-09-13 (+6d) | 2007-10-04 → 2007-10-10 (+6d) |  |  | -114d → -118d |  |  |
| 226 | Project Management | 2007-09-07 → 2007-09-13 (+6d) | 2007-10-04 → 2007-10-10 (+6d) |  |  | -74d → -78d |  |  |
| 227 | Requirements | 2007-09-07 → 2007-09-13 (+6d) | 2007-10-04 → 2007-10-10 (+6d) |  |  | -74d → -78d |  |  |
| 228 | Analysis and Design | 2007-09-07 → 2007-09-13 (+6d) | 2007-10-04 → 2007-10-10 (+6d) |  |  | -74d → -78d |  |  |

| ID | Task | Start | Finish | Total float |
| --- | --- | --- | --- | --- |
| 229 | Implementation | 2007-09-07 → 2007-09-13 (+6d) | 2007-10-04 → 2007-10-10 (+6d) | -74d → -78d |
| 230 | Test | 2007-09-07 → 2007-09-13 (+6d) | 2007-10-04 → 2007-10-10 (+6d) | -74d → -78d |
| 231 | Environment | 2007-09-07 → 2007-09-13 (+6d) | 2007-10-04 → 2007-10-10 (+6d) | -74d → -78d |
| 232 | Configuration and Change Management | 2007-09-07 → 2007-09-13 (+6d) | 2007-10-04 → 2007-10-10 (+6d) | -114d → -118d |
| 233 | Construction 1 Complete | 2007-10-04 → 2007-10-10 (+6d) | 2007-10-04 → 2007-10-10 (+6d) | -114d → -118d |
| 234 | **Construction - Iteration 2** | 2007-10-04 → 2007-10-10 (+6d) | 2007-11-01 → 2007-11-07 (+6d) | -114d → -118d |
| 235 | Project Management | 2007-10-05 → 2007-10-11 (+6d) | 2007-11-01 → 2007-11-07 (+6d) | -114d → -118d |
| 236 | Requirements | 2007-10-05 → 2007-10-11 (+6d) | 2007-11-01 → 2007-11-07 (+6d) | -114d → -118d |
| 237 | Analysis and Design | 2007-10-05 → 2007-10-11 (+6d) | 2007-11-01 → 2007-11-07 (+6d) | -114d → -118d |
| 238 | Implementation | 2007-10-05 → 2007-10-11 (+6d) | 2007-11-01 → 2007-11-07 (+6d) | -114d → -118d |
| 239 | Test | 2007-10-05 → 2007-10-11 (+6d) | 2007-11-01 → 2007-11-07 (+6d) | -114d → -118d |
| 240 | Environment | 2007-10-05 → 2007-10-11 (+6d) | 2007-11-01 → 2007-11-07 (+6d) | -114d → -118d |
| 241 | Configuration and Change Management | 2007-10-05 → 2007-10-11 (+6d) | 2007-11-01 → 2007-11-07 (+6d) | -114d → -118d |
| 242 | Construction 2 Complete | 2007-10-04 → 2007-10-10 (+6d) | 2007-10-04 → 2007-10-10 (+6d) | -94d → -98d |
| 243 | **Construction - Iteration 3** | 2007-11-02 → 2007-11-08 (+6d) | 2007-11-29 → 2007-12-05 (+6d) | -114d → -118d |
| 244 | Project Management | 2007-11-02 → 2007-11-08 (+6d) | 2007-11-29 → 2007-12-05 (+6d) | -114d → -118d |
| 245 | Requirements | 2007-11-02 → 2007-11-08 (+6d) | 2007-11-29 → 2007-12-05 (+6d) | -114d → -118d |
| 246 | Analysis and Design | 2007-11-02 → 2007-11-08 (+6d) | 2007-11-29 → 2007-12-05 (+6d) | -114d → -118d |
| 247 | Implementation | 2007-11-02 → 2007-11-08 (+6d) | 2007-11-29 → 2007-12-05 (+6d) | -114d → -118d |
| 248 | Test | 2007-11-02 → 2007-11-08 (+6d) | 2007-11-29 → 2007-12-05 (+6d) | -114d → -118d |
| 249 | Environment | 2007-11-02 → 2007-11-08 (+6d) | 2007-11-29 → 2007-12-05 (+6d) | -114d → -118d |
| 250 | Configuration and Change Management | 2007-11-02 → 2007-11-08 (+6d) | 2007-11-29 → 2007-12-05 (+6d) | -114d → -118d |
| 251 | Construction Iteration 3 Complete | 2007-11-29 → 2007-12-05 (+6d) | 2007-11-29 → 2007-12-05 (+6d) | -114d → -118d |
| 252 | **Transition Phase** | 2007-11-30 → 2007-12-06 (+6d) | 2008-01-03 → 2008-01-09 (+6d) | -114d → -118d |
| 253 | **Transition - Iteration 1** | 2007-11-30 → 2007-12-06 (+6d) | 2008-01-03 → 2008-01-09 (+6d) | -114d → -118d |
| 254 | Task | 2007-11-30 → 2007-12-06 (+6d) | 2008-01-03 → 2008-01-09 (+6d) | -114d → -118d |

## Version 14 (saved 2007-08-03)

Note of the change: e2 updated fully - c1, 2, 3 next

Last finish 2008-01-09 → 2008-01-03 (-6d). Complete tasks 94 → 95.

Added:

| ID | Task | Duration | Start | Finish | Predecessors | Constraint | Resources |
| --- | --- | --- | --- | --- | --- | --- | --- |
| 148 | Deliver E2 Plan | 3d | 2007-07-27 A | 2007-08-01 |  |  | bgendleman |
| 227 | Weekly Status Meetings | 20d | 2007-09-07 | 2007-10-04 |  |  |  |
| 228 | Dev Team Iteration Plan | 1d | 2007-09-07 | 2007-09-07 |  |  |  |
| 229 | E2 Assessment | 1d | 2007-09-10 | 2007-09-10 | 228 |  |  |
| 230 | C1 Review | 1d | 2007-09-28 | 2007-09-28 |  | start no earlier than 2007-09-28 |  |
| 231 | Plan for Next Iteration | 2d | 2007-10-01 | 2007-10-02 |  | start no earlier than 2007-10-01 |  |
| 232 | **Finalize Deliverables** | 17d | 2007-09-07 | 2007-10-01 |  |  |  |
| 233 | Deliver C1 Plan | 3d | 2007-09-07 | 2007-09-11 |  |  | bgendleman |
| 234 | Update Risk List | 10d | 2007-09-07 | 2007-09-20 |  | finish no earlier than 2007-08-10 | bgendleman |
| 235 | Update Alpha and Beta Release Plan | 17d | 2007-09-07 | 2007-10-01 |  | start no earlier than 2007-08-03 | bgendleman [80%]; etavela [90%] |
| 236 | August Status Report | 0.5d | 2007-09-07 | 2007-09-07 |  | finish no earlier than 2007-08-17 | bgendleman |
| 237 | Finalize C2 Iteration Plans | 17d | 2007-09-07 | 2007-10-01 |  | start no earlier than 2007-08-03 | bgendleman |
| 238 | **Requirements** | 16d | 2007-09-07 | 2007-09-28 |  |  |  |
| 239 | Incorporate Stakeholder Feedback on Vision and Supp Spec | 16d | 2007-09-07 | 2007-09-28 |  | start no earlier than 2007-08-01 | bgendleman |
| 240 | Incorporate Stakeholder Feedback on E2 Use Cases | 16d | 2007-09-07 | 2007-09-28 |  |  | bgendleman |
| 241 | Incorporate Stakeholder Feedback on UI Mockups | 16d | 2007-09-07 | 2007-09-28 |  |  | bgendleman |
| 242 | Create Search Wireframes and Mockups | 3d | 2007-09-07 | 2007-09-11 |  |  | mrehfuss |
| 270 | T1 Complete Release Candidate 1 | 1d? | 2007-11-30 | 2007-11-30 |  |  |  |
| 272 | Transition - Iteration 2 | 1d? | 2007-11-30 | 2007-11-30 |  |  |  |
| 273 | Bundle Release Available | 1d? | 2007-11-30 | 2007-11-30 |  |  |  |

Removed: 227 Requirements

Changed:

| ID | Task | Start | Finish | Duration | Complete | Total float | Predecessors | Other |
| --- | --- | --- | --- | --- | --- | --- | --- | --- |
| 1 | **caArray 2.0** |  | 2008-01-09 → 2008-01-03 (-6d) | 203d? → 199d? | 32% → 29% | -114d → -86d |  |  |
| 73 | **Elaboration Phase** |  | 2007-09-12 → 2007-09-06 (-6d) | 62.7d? → 58.7d | 42% → 41% | -29d → -1d |  |  |
| 139 | **Elaboration - Iteration 2** |  | 2007-09-12 → 2007-09-06 (-6d) | 33.7d? → 29.7d | 1% → 4% | -29d → -1d |  |  |
| 140 | **Project Management** | 2007-07-30 A → 2007-07-27 A (-3d) | 2007-08-31 → 2007-09-05 (+5d) | 25d? → 28.7d | 3% → 9% | -23d → 0d |  |  |
| 144 | Weekly Status Meetings | 2007-08-30 → 2007-09-03 A (+4d) | 2007-08-31 → 2007-09-05 (+5d) | 1.5d → 3d | 0% → 20% | -110d → 0d |  | constraint finish no earlier than 2007-08-31 → finish no earlier than 2007-09-05 |
| 146 | Plan for Next Iteration | 2007-08-24 A |  |  | 0% → 25% |  |  |  |
| 147 | **Finalize Deliverables** | 2007-07-30 → 2007-07-27 A (-3d) |  | 21d? → 21.7d | 0% → 5% | -106d → -18.7d |  |  |
| 150 | Establish Plan for Alpha and Beta Releases |  |  | 17d? → 17d |  |  |  |  |
| 153 | **Requirements** | 2007-07-27 A | 2007-08-22 → 2007-08-27 (+5d) | 18.7d → 21.48d | 0% → 2% | -103d → -12.78d |  |  |
| 156 | UX Modeling/Wireframes (from E1 deferred) |  |  |  |  | -103d → -105.78d |  | resources mrehfus → none |
| 157 | UI Mockups for Prioritized Use Cases |  |  |  |  | -103d → -105.78d |  | resources mrehfus → none |
| 158 | Stylesheet Framework (from E1 deferred) |  | 2007-08-22 → 2007-08-27 (+5d) | 5d → 7.78d |  | -103d → -105.78d |  | resources bgendleman [80%]; mrehfus; lpower → bgendleman [80%]; lpower |
| 159 | **Detail E2 Use Cases** | 2007-08-02 A |  |  | 0% → 13% | -93d → 0d |  |  |
| 163 | Capture Special Requirements for SNPs | 2007-08-02 A |  |  | 0% → 20% |  |  |  |
| 165 | **Analysis and Design** | 2007-07-27 → 2007-08-06 (+10d) |  | 27.7d → 22d |  | -112d → -114d |  |  |
| 170 | Logical Model Final Draft |  |  |  |  | -97d → -95.5d |  | resources none → rsrinavasa |
| 171 | **Subsystem Design** |  | 2007-08-21 → 2007-08-15 (-6d) | 12d → 8d |  |  |  |  |
| 176 | Remote API Grid Implementation |  | 2007-08-14 → 2007-08-10 (-4d) | 5d → 2.5d |  | -97d → -95.5d |  | resources none → rsrinavasa; tparnell |
| 177 | PermissionsManagementService | 2007-08-13 → 2007-08-06 (-7d) | 2007-08-15 → 2007-08-08 (-7d) |  |  | -118d → -104d |  |  |
| 178 | Authorization Mechanism | 2007-08-16 → 2007-08-09 (-7d) | 2007-08-21 → 2007-08-14 (-7d) |  |  | -118d → -104d |  |  |
| 179 | External Review: Grid API | 2007-07-27 → 2007-08-10 (+14d) | 2007-07-30 → 2007-08-13 (+14d) |  |  | -85.3d → -95.5d | none → 176 | resources none → etavela; jpike |
| 182 | **Implementation** | 2007-08-01 A | 2007-09-12 → 2007-09-06 (-6d) | 31d? → 27d | 0% → 5% | -118d → -24d |  |  |
| 183 | **E1 Completion** | 2007-08-01 A | 2007-08-10 → 2007-08-03 (-7d) | 8d → 3d | 0% → 25% | -118d → 0d |  |  |
| 184 | Complete Hibernate Mappings | 2007-08-01 A | 2007-08-10 → 2007-08-03 A (-7d) | 8d → 3d | 0% → 100% | -118d → none |  |  |
| 188 | **Subsystem Implementation** |  | 2007-09-12 → 2007-09-04 (-8d) | 23d? → 17d |  | -118d → -112d |  |  |
| 193 | PermissionsManagement | 2007-08-22 → 2007-08-15 (-7d) | 2007-08-28 → 2007-08-21 (-7d) |  |  | -118d → -104d |  |  |
| 194 | Object Access Authorization Mechanism | 2007-08-29 → 2007-08-22 (-7d) | 2007-08-29 → 2007-08-23 (-6d) | 1d? → 2d |  | -118d → -104d |  |  |
| 195 | Remote API Grid Implementation | 2007-08-30 → 2007-08-29 (-1d) | 2007-09-12 → 2007-09-04 (-8d) | 10d → 5d |  | -118d → -112d | 194 → 206 | constraint none → start no earlier than 2007-08-27 |
| 196 | **Implement Use Cases** |  |  | 5d? → 5d |  |  |  |  |
| 198 | Validate Project Data Files |  |  | 1d? → 1d |  |  |  |  |
| 199 | Login |  |  | 1d? → 1d |  |  |  |  |
| 214 | **Environment** | 2007-07-27 A → 2007-08-01 A (+5d) | 2007-08-07 → 2007-08-16 (+9d) | 7.7d? → 12d | 11% → 12% | -3d → -9d |  |  |
| 216 | Review and Demonstration Meetings (Eng + Prod / QA / Systems | 2007-07-27 → 2007-08-01 (+5d) | 2007-07-30 → 2007-08-06 (+7d) | 1d? → 3d |  | -85.3d → -90.4d | none → 215 |  |
| 217 | Complete Acquisition of DEV and QA Environment |  | 2007-08-02 → 2007-08-03 (+1d) | 1d → 2d |  | 0d → -1d |  |  |
| 219 | Complete DEV to QA Integration | 2007-08-03 → 2007-08-06 (+3d) | 2007-08-07 → 2007-08-08 (+1d) |  |  | -92d → -95d |  |  |
| 220 | Incorporate Automated Deployment Process | 2007-07-27 → 2007-08-15 (+19d) | 2007-07-31 → 2007-08-16 (+16d) |  |  | -86.3d → -99d | none → 219 | constraint none → finish no earlier than 2007-08-16; resources none → smatyas [50%] |
| 221 | **Configuration and Change Management** |  | 2007-07-30 → 2007-08-31 (+32d) | 1d? → 25d |  | -85.3d → -109.3d |  |  |
| 222 | Manage Gforge Content |  | 2007-07-30 → 2007-08-31 (+32d) | 1d? → 25d |  | -85.3d → -109.3d |  | resources none → bgendleman |
| 223 | Elaboration 2 Complete | 2007-08-31 → 2007-09-06 (+6d) | 2007-08-31 → 2007-09-06 (+6d) |  |  | -109d → -114d | none → 195, 204 |  |
| 224 | **Construction Phase** | 2007-09-13 → 2007-09-07 (-6d) | 2007-12-05 → 2007-11-29 (-6d) |  |  | -118d → -114d |  |  |
| 225 | **Construction - Iteration 1** | 2007-09-13 → 2007-09-07 (-6d) | 2007-10-10 → 2007-10-04 (-6d) |  |  | -118d → -114d | none → 223 |  |
| 226 | **Project Management** | 2007-09-13 → 2007-09-07 (-6d) | 2007-10-10 → 2007-10-04 (-6d) |  |  | -78d → -74d |  |  |
| 243 | Analysis and Design | 2007-09-13 → 2007-09-07 (-6d) | 2007-10-10 → 2007-10-04 (-6d) |  |  | -78d → -74d |  |  |
| 244 | Implementation | 2007-09-13 → 2007-09-07 (-6d) | 2007-10-10 → 2007-10-04 (-6d) |  |  | -78d → -74d |  |  |
| 245 | Test | 2007-09-13 → 2007-09-07 (-6d) | 2007-10-10 → 2007-10-04 (-6d) |  |  | -78d → -74d |  |  |
| 246 | Environment | 2007-09-13 → 2007-09-07 (-6d) | 2007-10-10 → 2007-10-04 (-6d) |  |  | -78d → -74d |  |  |
| 247 | Configuration and Change Management | 2007-09-13 → 2007-09-07 (-6d) | 2007-10-10 → 2007-10-04 (-6d) |  |  | -118d → -114d |  |  |
| 248 | C1 Complete - Alpha Release 1 | 2007-10-10 → 2007-10-04 (-6d) | 2007-10-10 → 2007-10-04 (-6d) |  |  | -118d → -114d |  | was named Construction 1 Complete |
| 249 | **Construction - Iteration 2** | 2007-10-10 → 2007-10-05 (-5d) | 2007-11-07 → 2007-11-01 (-6d) |  |  | -118d → -114d |  |  |
| 250 | Project Management | 2007-10-11 → 2007-10-05 (-6d) | 2007-11-07 → 2007-11-01 (-6d) |  |  | -118d → -114d |  |  |
| 251 | Requirements | 2007-10-11 → 2007-10-05 (-6d) | 2007-11-07 → 2007-11-01 (-6d) |  |  | -118d → -114d |  |  |
| 252 | Analysis and Design | 2007-10-11 → 2007-10-05 (-6d) | 2007-11-07 → 2007-11-01 (-6d) |  |  | -118d → -114d |  |  |
| 253 | Implementation | 2007-10-11 → 2007-10-05 (-6d) | 2007-11-07 → 2007-11-01 (-6d) |  |  | -118d → -114d |  |  |
| 254 | Test | 2007-10-11 → 2007-10-05 (-6d) | 2007-11-07 → 2007-11-01 (-6d) |  |  | -118d → -114d |  |  |
| 255 | Environment | 2007-10-11 → 2007-10-05 (-6d) | 2007-11-07 → 2007-11-01 (-6d) |  |  | -118d → -114d |  |  |
| 256 | Configuration and Change Management | 2007-10-11 → 2007-10-05 (-6d) | 2007-11-07 → 2007-11-01 (-6d) |  |  | -118d → -114d |  |  |
| 257 | C2 Complete Beta Release 1 | 2007-10-10 → 2007-11-01 (+22d) | 2007-10-10 → 2007-11-01 (+22d) |  |  | -98d → -114d | none → 254 | was named Construction 2 Complete |
| 258 | **Construction - Iteration 3** | 2007-11-08 → 2007-11-02 (-6d) | 2007-12-05 → 2007-11-29 (-6d) |  |  | -118d → -114d |  |  |
| 259 | Project Management | 2007-11-08 → 2007-11-02 (-6d) | 2007-12-05 → 2007-11-29 (-6d) |  |  | -118d → -114d |  |  |
| 260 | Requirements | 2007-11-08 → 2007-11-02 (-6d) | 2007-12-05 → 2007-11-29 (-6d) |  |  | -118d → -114d |  |  |
| 261 | Analysis and Design | 2007-11-08 → 2007-11-02 (-6d) | 2007-12-05 → 2007-11-29 (-6d) |  |  | -118d → -114d |  |  |
| 262 | Implementation | 2007-11-08 → 2007-11-02 (-6d) | 2007-12-05 → 2007-11-29 (-6d) |  |  | -118d → -114d |  |  |
| 263 | Test | 2007-11-08 → 2007-11-02 (-6d) | 2007-12-05 → 2007-11-29 (-6d) |  |  | -118d → -114d |  |  |
| 264 | Environment | 2007-11-08 → 2007-11-02 (-6d) | 2007-12-05 → 2007-11-29 (-6d) |  |  | -118d → -114d |  |  |
| 265 | Configuration and Change Management | 2007-11-08 → 2007-11-02 (-6d) | 2007-12-05 → 2007-11-29 (-6d) |  |  | -118d → -114d |  |  |
| 266 | C3 Complete Beta Release 2 | 2007-12-05 → 2007-11-29 (-6d) | 2007-12-05 → 2007-11-29 (-6d) |  |  | -118d → -114d |  | was named Construction Iteration 3 Complete |
| 267 | **Transition Phase** | 2007-12-06 → 2007-11-30 (-6d) | 2008-01-09 → 2008-01-03 (-6d) | 25d → 25d? |  | -118d → -114d |  |  |
| 268 | **Transition - Iteration 1** | 2007-12-06 → 2007-11-30 (-6d) | 2008-01-09 → 2008-01-03 (-6d) | 25d → 25d? |  | -118d → -114d |  |  |
| 269 | Task | 2007-12-06 → 2007-11-30 (-6d) | 2008-01-09 → 2008-01-03 (-6d) |  |  | -118d → -114d |  |  |

## Version 15 (saved 2007-08-06)

Last finish stays 2008-01-03.

Changed:

| ID | Task | Start | Finish | Duration | Total float | Predecessors | Other |
| --- | --- | --- | --- | --- | --- | --- | --- |
| 165 | **Analysis and Design** |  | 2007-09-04 → 2007-08-17 (-18d) | 22d → 10d |  |  |  |
| 180 | **Finalize Deliverables** | 2007-09-03 → 2007-08-16 (-18d) | 2007-09-04 → 2007-08-17 (-18d) |  | -112d → -100d |  |  |
| 181 | Update Software Architecture Document | 2007-09-03 → 2007-08-16 (-18d) | 2007-09-04 → 2007-08-17 (-18d) |  | -112d → -100d | 211 → 175, 211 | constraint start no earlier than 2007-08-29 → start no earlier than 2007-08-16 |
| 196 | **Implement Use Cases** | 2007-08-15 → 2007-08-22 (+7d) | 2007-08-21 → 2007-08-28 (+7d) |  | -112d → -114d |  |  |
| 197 | Manage Project Permissions | 2007-08-15 → 2007-08-22 (+7d) | 2007-08-17 → 2007-08-24 (+7d) |  | -112d → -114d | 213 → 213, 193 |  |
| 198 | Validate Project Data Files | 2007-08-20 → 2007-08-27 (+7d) | 2007-08-20 → 2007-08-27 (+7d) |  | -112d → -114d |  |  |
| 199 | Login | 2007-08-21 → 2007-08-28 (+7d) | 2007-08-21 → 2007-08-28 (+7d) |  | -112d → -114d |  |  |
| 207 | **Test** |  | 2007-08-31 → 2007-09-06 (+6d) | 15d → 19d | -112d → -114d |  |  |
| 208 | Validate Project Data Files Test Cases | 2007-08-22 → 2007-08-29 (+7d) | 2007-08-22 → 2007-08-29 (+7d) |  | -112d → -114d |  |  |
| 209 | Manage Permission Test Cases | 2007-08-23 → 2007-08-30 (+7d) | 2007-08-23 → 2007-08-30 (+7d) |  | -112d → -114d |  |  |
| 210 | Import Data Files Test Suite | 2007-08-24 → 2007-08-31 (+7d) | 2007-08-24 → 2007-08-31 (+7d) |  | -112d → -114d |  |  |
| 211 | Remote Java API Test Suite | 2007-08-27 → 2007-09-03 (+7d) | 2007-08-31 → 2007-09-06 (+6d) | 5d → 4d | -112d → -114d |  |  |

## Version 16 (saved 2007-08-07)

Note of the change: added use cases for search and navigation and edited the e2 schedule - still needs before and after use cases and goals

Last finish stays 2008-01-03.

Added:

| ID | Task | Duration | Start | Finish | Predecessors |
| --- | --- | --- | --- | --- | --- |
| 164 | UC Search | 2d | 2007-08-08 | 2007-08-09 | 163 |
| 166 | **Detail C1 Use Cases** | 3d | 2007-08-10 | 2007-08-14 | 159 |
| 167 | UC Navigate Repository | 1d | 2007-08-10 | 2007-08-10 |  |
| 168 | UC Search Repository | 1d | 2007-08-13 | 2007-08-13 | 167 |
| 169 | UC Search Using Filters | 1d | 2007-08-14 | 2007-08-14 | 168 |

Changed:

| ID | Task | Start | Finish | Duration | Complete | Total float | Predecessors | Other |
| --- | --- | --- | --- | --- | --- | --- | --- | --- |
| 144 | Weekly Status Meetings | 2007-09-03 A → 2007-08-01 A (-33d) |  |  |  |  |  |  |
| 147 | **Finalize Deliverables** |  | 2007-08-27 → 2007-08-28 (+1d) | 21.7d → 22.7d |  | -18.7d → -19.7d |  |  |
| 150 | Establish Plan for Alpha and Beta Releases | 2007-08-03 → 2007-08-06 (+3d) | 2007-08-27 → 2007-08-28 (+1d) |  |  | -106d → -107d |  | constraint start no earlier than 2007-08-03 → start no earlier than 2007-08-06 |
| 153 | **Requirements** |  | 2007-08-27 → 2007-09-03 (+7d) | 21.48d → 26.7d |  | -12.78d → -18d |  |  |
| 156 | UX Modeling/Wireframes (from E1 deferred) | 2007-08-02 → 2007-08-10 (+8d) | 2007-08-08 → 2007-08-16 (+8d) |  |  | -105.78d → -111d | none → 159 | constraint start no earlier than 2007-08-02 → none; resources none → bgendleman [50%]; mrehuss |
| 157 | UI Mockups for Prioritized Use Cases | 2007-08-09 → 2007-08-17 (+8d) | 2007-08-15 → 2007-08-27 (+12d) | 5d → 7d |  | -105.78d → -111d |  | resources none → bgendleman [50%]; mrehuss |
| 158 | Stylesheet Framework (from E1 deferred) | 2007-08-16 → 2007-08-28 (+12d) | 2007-08-27 → 2007-09-03 (+7d) | 7.78d → 5d |  | -105.78d → -111d |  |  |
| 159 | **Detail E2 Use Cases** |  | 2007-08-08 → 2007-08-09 (+1d) | 5d → 6d | 13% → 10% | 0d → -1d |  |  |
| 162 | Validate Project Data Files: Define Validation Rules | 2007-08-03 → 2007-08-06 (+3d) | 2007-08-03 → 2007-08-06 (+3d) |  |  | -90d → -111d | none → 161 |  |
| 163 | UC Manage Project Permissions | 2007-08-06 → 2007-08-07 (+1d) | 2007-08-06 → 2007-08-07 (+1d) |  |  | -91d → -111d | 161 → 162 |  |
| 186 | Update Software Architecture Document |  |  |  |  |  | 180, 216 → 180 |  |
| 199 | Object Access Authorization Mechanism |  |  |  |  |  |  | resources tparnell → jpike; tparnell |
| 204 | Login |  |  |  |  |  |  | resources etavela → jpike |

## Version 17 (saved 2007-08-08)

Note of the change: updated through T1 for 2.0

Last finish 2008-01-03 → 2007-12-14 (-20d). Complete tasks 95 → 110.

Added:

| ID | Task | Duration | Start | Finish | Predecessors | Constraint | Resources |
| --- | --- | --- | --- | --- | --- | --- | --- |
| 102 | UC Manage Institutional Groups (deferred) | 1d | 2007-07-10 A | 2007-07-11 A | 101 |  | bgendleman |
| 120 | Implement UC Acquire Project Data via API (incomplete) | 10d | 2007-07-09 A | 2007-07-23 A | 119 |  | etavela [90%]; rsrinavasa |
| 218 | Release Build E2A | 0d | 2007-08-17 | 2007-08-17 |  | start no earlier than 2007-08-17 |  |
| 219 | Release Build E2B | 0d | 2007-08-31 | 2007-08-31 |  | start no earlier than 2007-08-31 |  |
| 235 | Meet with Documentation to support UC Transition | 1d | 2007-09-10 | 2007-09-10 | 234 |  |  |
| 236 | Meet with App Support to Validate UC's and Overall Product Releases | 1d | 2007-09-11 | 2007-09-11 | 235 |  |  |
| 252 | UC Update Project Proposal | 0.5d | 2007-09-10 | 2007-09-10 | 251 |  |  |
| 253 | UC Register For An Account | 1d | 2007-09-10 | 2007-09-11 | 252 |  |  |
| 254 | UC Manage Collaborators | 1d | 2007-09-11 | 2007-09-12 | 253 |  |  |
| 256 | **Detail 2.x Use Cases** | 6d | 2007-09-07 | 2007-09-14 |  |  |  |
| 258 | UC Approve Project | 0.5d | 2007-09-11 | 2007-09-11 | 257 |  |  |
| 259 | UC Assign Project | 0.5d | 2007-09-11 | 2007-09-11 | 258 |  |  |
| 260 | UC Search for Arrays Using Natural Text | 2d | 2007-09-12 | 2007-09-13 | 259 |  |  |
| 261 | UC Import Contextual Data | 1d | 2007-09-14 | 2007-09-14 | 260 |  |  |
| 262 | Create 2.x Wireframes and Mockups | 5d | 2007-09-17 | 2007-09-21 | 256 |  | mrefhuss; bgendleman [50%] |
| 263 | **Analysis and Design** | 17d | 2007-09-07 | 2007-10-01 |  |  |  |
| 264 | **Use Case Design** | 8d | 2007-09-10 | 2007-09-19 |  |  |  |
| 265 | Manage Institutional Groups | 1d | 2007-09-10 | 2007-09-10 | 251, 271 |  | jpike |
| 266 | Register for an Account | 1d | 2007-09-12 | 2007-09-12 | 253, 277 |  | tparnell |
| 267 | Manage Collaborators | 1d | 2007-09-13 | 2007-09-13 | 254, 266 |  | tparnell |
| 268 | Update Project Proposal | 1d | 2007-09-17 | 2007-09-17 |  | start no earlier than 2007-09-17 | etavela |
| 269 | Report on Work Accomplished | 2d | 2007-09-18 | 2007-09-19 | 268 | start no earlier than 2007-09-17 | etavela |
| 270 | **Finalize SubSystem Design** | 9d | 2007-09-07 | 2007-09-19 |  |  |  |
| 271 | FileAccessService | 1d | 2007-09-07 | 2007-09-07 |  |  | jpike |
| 273 | ArrayDataService: Validation | 1d | 2007-09-18 | 2007-09-18 | 272, 286 |  | bmason |
| 274 | ArrayDesignService: Validation | 1d | 2007-09-19 | 2007-09-19 | 273 |  | bmason |
| 275 | Remote API Grid Implementation | 1d | 2007-09-07 | 2007-09-07 |  |  | tparnell |
| 276 | PermissionsManagementService | 1d | 2007-09-10 | 2007-09-10 | 275 |  | tparnell |
| 278 | External Review: Revised Grid API | 0.5d | 2007-09-18 | 2007-09-18 |  | start no earlier than 2007-09-18 | etavela [90%]; tparnell |
| 279 | Sumbit Domain Object Model | 2d | 2007-09-19 | 2007-09-20 | 278 | start no earlier than 2007-09-19 | etavela |
| 280 | Update Software Architecture Document | 1d | 2007-10-01 | 2007-10-01 |  | start no earlier than 2007-10-01 | etavela [90%] |
| 281 | **Implementation** | 19d | 2007-09-07 | 2007-10-03 |  |  |  |
| 282 | Update Remote Java API | 3d | 2007-09-18 | 2007-09-21 | 278 |  |  |
| 283 | **Complete Elaboration Use Cases** | 17d | 2007-09-07 | 2007-10-01 |  |  |  |
| 284 | Implement UC Login | 1d | 2007-09-07 | 2007-09-07 |  |  | jpike |
| 286 | Implement UC Import Project Data | 3d | 2007-09-13 | 2007-09-17 |  | start no earlier than 2007-09-13 | bmason |
| 287 | Implement UC Manage Project Permissions | 2d | 2007-09-07 | 2007-09-10 |  |  | tparnell |
| 288 | Implement Validate Project Data | 1d | 2007-09-10 | 2007-09-10 |  | start no earlier than 2007-09-10 | bmason |
| 289 | Integrate Stylesheet Throughout | 5d | 2007-09-20 | 2007-09-26 | 270, 293 |  | jpike; bmason; tparnell; etavela [80%] |
| 290 | Implement UC Manage Project Data Files (to support sample to file allocation) | 3d | 2007-09-27 | 2007-10-01 | 289 |  | jpike |
| 291 | Implement UC Submit Project Proposal | 3d | 2007-09-24 | 2007-09-26 |  | start no earlier than 2007-09-24 | etavela |
| 292 | **Begin C1 Use Cases** | 16d | 2007-09-11 | 2007-10-02 |  |  |  |
| 293 | Manage Institutional Groups | 2d | 2007-09-11 | 2007-09-12 | 265 |  | jpike |
| 294 | Manage Collaborators | 2d | 2007-09-19 | 2007-09-20 | 295, 267 |  | tparnell |
| 295 | Register for an Account | 2d | 2007-09-17 | 2007-09-18 |  | start no earlier than 2007-09-17 | tparnell |
| 296 | Report on Work Accomplished | 4d | 2007-09-27 | 2007-10-02 | 269, 291 |  | etavela [90%] |
| 297 | **Complete Subsystem Implementation** | 19d | 2007-09-07 | 2007-10-03 |  |  |  |
| 298 | FileAccessService | 2d | 2007-10-02 | 2007-10-03 | 290 |  | jpike |
| 299 | MageTabParser: Validation | 2d | 2007-09-18 | 2007-09-19 | 286 |  | bmason |
| 300 | ArrayDataService: Validation | 2d | 2007-09-20 | 2007-09-21 | 299 |  | bmason |
| 301 | ArrayDesignService: Validation | 2d | 2007-09-24 | 2007-09-25 | 300 |  | bmason |
| 302 | PermissionsManagement | 2d | 2007-09-07 | 2007-09-10 |  |  | tparnell |
| 303 | Object Access Authorization Mechanism | 2d | 2007-09-07 | 2007-09-10 |  |  | tparnell |
| 304 | Remote API Grid Implementation | 5d | 2007-09-07 | 2007-09-13 |  |  | tparnell |
| 305 | **Test** | 18d | 2007-09-07 | 2007-10-02 |  |  |  |
| 306 | Project Data Files Test Suite | 1d | 2007-09-07 | 2007-09-07 |  |  | jpike |
| 307 | Validation Test Suite | 1d | 2007-09-07 | 2007-09-07 |  |  | bmason |
| 308 | Update Elaboration Test Suite | 3d | 2007-09-28 | 2007-10-02 |  | start no earlier than 2007-09-28 | etavela [90%] |
| 309 | Release QA Build C1A | 0d | 2007-09-14 | 2007-09-14 |  | start no earlier than 2007-09-14 | smatyas [50%] |
| 310 | Release QA Build C1B | 0d | 2007-09-28 | 2007-09-28 |  | start no earlier than 2007-09-28 | smatyas [50%] |
| 311 | **Environment** | 12d | 2007-09-10 | 2007-09-25 |  |  |  |
| 312 | Acquire STAGE Environment | 0.5d | 2007-09-10 | 2007-09-10 |  | start no earlier than 2007-09-10 | smatyas [50%]; bgendleman [50%] |
| 313 | Initiate DEV to QA to STAGE Deployment | 10d | 2007-09-10 | 2007-09-24 | 312 |  | smatyas [50%] |
| 314 | Update Build and Deploy Plan with SCM Initiative | 1d | 2007-09-24 | 2007-09-25 | 313 |  | etavela [80%]; smatyas [50%]; bgendleman [50%] |
| 315 | Update ARC Document | 0.5d | 2007-09-25 | 2007-09-25 | 314 |  | bgendleman [50%] |
| 317 | Manage G-Forge Content | 20d | 2007-09-07 | 2007-10-04 |  | start no earlier than 2007-09-07 |  |
| 321 | Weekly Status Meetings | 20d | 2007-10-05 | 2007-11-01 |  |  | bgendleman |
| 322 | Dev Team Iteration Plan | 1d | 2007-10-05 | 2007-10-05 |  |  | etavela [90%] |
| 323 | Prepare Alpha Release Plan and Organization | 1.67d | 2007-10-10 | 2007-10-11 |  | start no earlier than 2007-10-10 | bgendleman; etavela [80%] |
| 324 | Organize Feedback from Alpha Testers | 3.33d | 2007-10-15 | 2007-10-18 |  | start no earlier than 2007-10-15 | etavela [90%] |
| 325 | Evolve RMP to support QA Process | 3d | 2007-10-05 | 2007-10-09 |  |  | bgendleman |
| 326 | C1 Assessment | 2.22d | 2007-10-05 | 2007-10-09 |  |  | etavela [90%] |
| 327 | C2 Review | 1d | 2007-10-18 | 2007-10-18 |  | start no earlier than 2007-10-18 | bgendleman [50%] |
| 328 | Plan for Next Iteration | 1d | 2007-10-19 | 2007-10-19 | 327 |  | bgendleman [50%] |
| 329 | **Finalize Deliverables** | 17d | 2007-10-05 | 2007-10-29 |  |  |  |
| 330 | Deliver C2 Plan | 1d | 2007-10-05 | 2007-10-05 |  |  | etavela [90%] |
| 331 | Update Beta Release Plan | 1d | 2007-10-19 | 2007-10-19 | 327 |  | bgendleman [50%]; etavela [80%] |
| 332 | September Status Report | 1d | 2007-10-15 | 2007-10-15 |  | start no earlier than 2007-10-15 | bgendleman [50%] |
| 333 | Finalize C3 Iteration Plans | 1d | 2007-10-26 | 2007-10-26 | 331 | start no earlier than 2007-10-26 |  |
| 334 | Update Risk List | 1d | 2007-10-29 | 2007-10-29 | 333 |  |  |
| 335 | **Requirements** | 17d | 2007-10-05 | 2007-10-29 |  |  |  |
| 336 | Incorporate Stakeholder Feedback on Vision and Supp Spec | 16d | 2007-10-05 | 2007-10-26 |  | start no earlier than 2007-08-01 | bgendleman |
| 337 | Incorporate Stakeholder Feedback on C1 Use Cases | 16d | 2007-10-05 | 2007-10-26 |  |  | bgendleman |
| 338 | Incorporate Stakeholder Feedback on C1 UI Mockups | 10d | 2007-10-05 | 2007-10-18 |  | start no earlier than 2007-09-21 | bgendleman [50%]; mrehfuss |
| 339 | Incorporate Stakeholder Feedback on 2.x Mockups | 2d | 2007-10-19 | 2007-10-22 | 338 |  | bgendleman [50%] |
| 340 | Collaborate with Documentation to Support Online Help, User Guides | 5d | 2007-10-23 | 2007-10-29 | 339 |  | bgendleman [50%] |
| 341 | **Update 2.x Use Cases** | 3.5d | 2007-10-05 | 2007-10-10 |  |  |  |
| 342 | UC Manage Institutional Groups | 1d | 2007-10-05 | 2007-10-05 |  |  |  |
| 343 | UC Update Project Proposal | 0.5d | 2007-10-08 | 2007-10-08 | 342 |  |  |
| 344 | UC Register For An Account | 1d | 2007-10-08 | 2007-10-09 | 343 |  |  |
| 345 | UC Manage Collaborators | 1d | 2007-10-09 | 2007-10-10 | 344 |  |  |
| 346 | **Analysis and Design** | 18d | 2007-10-05 | 2007-10-30 |  |  |  |
| 347 | Complete C1 Use Case Designs | 5d | 2007-10-05 | 2007-10-11 |  |  |  |
| 348 | Revise Domain Object (Logical) Model as Needed | 2d | 2007-10-12 | 2007-10-15 | 347 |  |  |
| 349 | Support Analysis Services Integration as Needed | 11d | 2007-10-16 | 2007-10-30 | 348 |  |  |
| 351 | **Implementation** | 17d | 2007-10-05 | 2007-10-29 |  |  |  |
| 352 | **Complete C1 Use Cases** | 15d | 2007-10-05 | 2007-10-25 |  |  |  |
| 353 | Manage Institutional Groups | 3d | 2007-10-05 | 2007-10-09 |  |  | jpike |
| 354 | Manage Collaborators | 3d | 2007-10-05 | 2007-10-09 |  |  | tparnell |
| 355 | Register for an Account | 3d | 2007-10-05 | 2007-10-09 |  |  | tparnell |
| 356 | Report on Work Accomplished | 15d | 2007-10-05 | 2007-10-25 |  |  | etavela [80%]; rsrinavasa |
| 357 | Fix Defects Found in Alpha Release | 12d | 2007-10-12 | 2007-10-29 | 359 |  | etavela [80%]; jpike; rsrinavasa; tparnell; bmason |
| 359 | Release QA Build C2A - Alpha 1 | 0d | 2007-10-12 | 2007-10-12 |  | start no earlier than 2007-10-12 |  |
| 360 | Release QA Build C2B | 0d | 2007-10-26 | 2007-10-26 |  | finish no earlier than 2007-10-26 |  |
| 361 | Load 1.x Data to DEV | 1.15d | 2007-10-05 | 2007-10-08 |  |  | smatyas [50%]; etavela [80%] |
| 363 | Update Build and Deploy Plan with SCM Initiative | 1d | 2007-10-05 | 2007-10-05 |  |  |  |
| 365 | Manage Gforge Content | 1d | 2007-10-05 | 2007-10-05 |  |  |  |
| 366 | Prioritize 2.0 Defects and UC for 2.x | 1d | 2007-10-29 | 2007-10-29 | 360 |  |  |
| 370 | Weekly Status Meetings | 20d | 2007-11-02 | 2007-11-29 |  |  |  |
| 371 | Dev Team Iteration Plan | 1d | 2007-11-02 | 2007-11-02 |  |  |  |
| 372 | Prepare Beta Release Plan | 2d | 2007-11-02 | 2007-11-05 |  |  |  |
| 373 | Organize Feedback from Beta Testers | 1d | 2007-11-02 | 2007-11-02 |  |  |  |
| 374 | C2 Assessment | 1d | 2007-11-02 | 2007-11-02 |  |  |  |
| 375 | C3 Review | 1d | 2007-11-19 | 2007-11-19 |  | start no earlier than 2007-11-19 |  |
| 376 | Plan for Next Iteration | 1d | 2007-11-02 | 2007-11-02 |  |  |  |
| 377 | **Finalize Deliverables** | 10d | 2007-11-02 | 2007-11-15 |  |  |  |
| 378 | Deliver C3 Plan | 3d | 2007-11-02 | 2007-11-06 |  |  |  |
| 379 | Update Beta Release Plan | 1d | 2007-11-07 | 2007-11-07 | 378 |  |  |
| 380 | October Status Report | 1d | 2007-11-15 | 2007-11-15 |  | start no earlier than 2007-11-15 |  |
| 381 | Finalize T1 Iteration Plan | 2d | 2007-11-08 | 2007-11-09 | 379 |  |  |
| 383 | **Requirements** | 18d | 2007-11-02 | 2007-11-27 |  |  |  |
| 384 | Update Vision and UC Summary with 2.x Priorities | 2d | 2007-11-02 | 2007-11-05 |  |  | bgendleman [50%] |
| 385 | Incorporate Stakeholder Feedback on C2 Use Cases | 2d | 2007-11-06 | 2007-11-07 | 384 |  | bgendleman [50%] |
| 386 | Incorporate Stakeholder Feedback on C2 UI Mockups | 1d | 2007-11-08 | 2007-11-08 | 385 |  | bgendleman [50%] |
| 387 | Incorporate Stakeholder Feedback on 2.x Mockups | 3d | 2007-11-09 | 2007-11-13 | 386 |  | bgendleman [50%] |
| 388 | Collaborate with Documentation to Support Online Help, User Guides | 7d | 2007-11-19 | 2007-11-27 |  | start no earlier than 2007-11-19 | bgendleman [50%] |
| 389 | **Detail Additional 2.x Use Cases** | 6d | 2007-11-02 | 2007-11-09 |  |  |  |
| 390 | UC Organize Workspace | 2d | 2007-11-02 | 2007-11-05 |  |  |  |
| 391 | UC Search for Arrays Using Natural Text | 2d | 2007-11-06 | 2007-11-07 | 390 |  |  |
| 392 | UC Import Contextual Data | 2d | 2007-11-08 | 2007-11-09 | 391 |  |  |
| 393 | **Analysis and Design** | 4d | 2007-11-02 | 2007-11-07 |  |  |  |
| 394 | Review 2.0 Use Case Designs with 2.x in mind | 2d | 2007-11-02 | 2007-11-05 |  |  | etavela [90%] |
| 395 | Revise Domain Object (Logical) Model as Needed | 1d | 2007-11-02 | 2007-11-02 |  |  | rsrinavasa |
| 396 | Support Analysis Services Integration as Needed | 3d | 2007-11-02 | 2007-11-06 |  |  |  |
| 397 | Update Software Architecture Document | 2d | 2007-11-06 | 2007-11-07 | 394 |  | etavela [90%] |
| 398 | **Implementation** | 17d | 2007-11-01 | 2007-11-26 |  |  |  |
| 399 | Fix Defects Found in Alpha Release | 10d | 2007-11-01 | 2007-11-15 |  |  | etavela [80%]; jpike; rsrinavasa; bmason; tparnell |
| 400 | Fix Defects Found in Beta Release | 12d | 2007-11-08 | 2007-11-26 | 401 |  | etavela [80%]; jpike; rsrinavasa; bmason; tparnell |
| 401 | Create caArray 2.0 Installer + Data Migrator | 5d | 2007-11-02 | 2007-11-08 |  |  | smatyas [50%] |
| 403 | Release QA Build C3A - Beta 1 | 0d | 2007-11-09 | 2007-11-09 |  | start no earlier than 2007-11-09 |  |
| 407 | Update Build and Deploy Plan with SCM Initiative | 1d | 2007-11-23 | 2007-11-23 | 404 |  |  |
| 409 | Manage Gforge Content | 20d | 2007-11-02 | 2007-11-29 |  |  |  |
| 410 | Prioritize 2.0 Defects and UC for 2.x | 1d | 2007-11-23 | 2007-11-23 | 404 |  |  |
| 411 | Prepare Download Center Material, Release Notes | 2d | 2007-11-26 | 2007-11-27 | 410 |  |  |
| 415 | **Project Management** | 10d | 2007-11-30 | 2007-12-13 |  |  |  |
| 416 | Weekly Status Meetings | 10d | 2007-11-30 | 2007-12-13 |  |  |  |
| 417 | Dev Team Iteration Plan | 1d | 2007-11-30 | 2007-11-30 |  |  |  |
| 418 | Prepare GA Release Plan | 2d | 2007-11-30 | 2007-12-03 |  |  |  |
| 419 | Organize Feedback from Beta Testers | 1d | 2007-11-30 | 2007-11-30 |  |  |  |
| 420 | C3 Assessment | 1d | 2007-11-30 | 2007-11-30 |  |  |  |
| 421 | T1 Review | 1d | 2007-11-30 | 2007-11-30 |  | start no earlier than 2007-11-19 |  |
| 422 | Plan for Next Iteration | 1d | 2007-11-30 | 2007-11-30 |  |  |  |
| 423 | **Finalize Deliverables** | 7d | 2007-11-30 | 2007-12-10 |  |  |  |
| 424 | Deliver T1 Plan | 3d | 2007-11-30 | 2007-12-04 |  |  |  |
| 425 | Prepare GA Release Plan | 1d | 2007-12-05 | 2007-12-05 | 424 |  |  |
| 426 | November Status Report | 1d | 2007-11-30 | 2007-11-30 |  | start no earlier than 2007-11-15 |  |
| 427 | Finalize T1 Iteration Plan | 2d | 2007-12-06 | 2007-12-07 | 425 |  |  |
| 428 | Update Risk List | 1d | 2007-12-10 | 2007-12-10 | 427 |  |  |
| 429 | **Requirements** | 5d | 2007-11-30 | 2007-12-06 |  |  |  |
| 430 | Finalize Documentation for GA Release | 5d | 2007-11-30 | 2007-12-06 |  |  |  |
| 431 | **Analysis and Design** | 1d | 2007-11-30 | 2007-11-30 |  |  |  |
| 432 | Model Manipulation as needed | 1d | 2007-11-30 | 2007-11-30 |  |  |  |
| 433 | **Implementation** | 10d | 2007-11-29 | 2007-12-13 |  |  |  |
| 434 | Complete Targeted Defects for GA | 10d | 2007-11-29 | 2007-12-13 |  |  | etavela [80%]; jpike; rsrinavasa; bmason; tparnell |
| 435 | Complete caArray 2.0 Installer + Data Migrator | 10d | 2007-11-30 | 2007-12-13 |  |  | smatyas [50%] |
| 436 | **Test** | 10d | 2007-11-30 | 2007-12-14 |  |  |  |
| 437 | Release QA Build T1A | 0d | 2007-12-07 | 2007-12-07 |  | start no earlier than 2007-12-07 |  |
| 438 | Release QA Build T1B - GA (Bundle) | 0d | 2007-12-14 | 2007-12-14 |  | start no earlier than 2007-12-14 |  |
| 439 | Load 1.x Data from DEV to QA to STAGE to PROD | 10d | 2007-11-30 | 2007-12-13 |  |  |  |
| 440 | **Environment** | 1d | 2007-12-12 | 2007-12-12 |  |  |  |
| 441 | Update Build and Deploy Plan with SCM Initiative | 1d | 2007-12-12 | 2007-12-12 |  | start no earlier than 2007-12-12 |  |
| 442 | **Configuration and Change Management** | 11d | 2007-11-30 | 2007-12-14 |  |  |  |
| 443 | Manage Gforge Content | 10d | 2007-11-30 | 2007-12-13 |  |  |  |
| 444 | Prioritize 2.0 Defects and UC for 2.x | 1d | 2007-12-14 | 2007-12-14 | 443 |  |  |
| 445 | Release Download Center Material, Release Notes | 2d | 2007-12-07 | 2007-12-10 | 437 |  |  |
| 446 | T1 Complete | 0d | 2007-12-14 | 2007-12-14 | 444 |  |  |

Removed: 164 UC Search; 256 Requirements; 258 Implementation; 274 Task; 275 T1 Complete Release Candidate 1; 277 Transition - Iteration 2; 278 Bundle Release Available

Changed:

| ID | Task | Start | Finish | Duration | Complete | Total float | Predecessors |
| --- | --- | --- | --- | --- | --- | --- | --- |
| 1 | **caArray 2.0** |  | 2008-01-03 → 2007-12-14 (-20d) | 199d? → 185d | 29% → 34% | -86d → -72d |  |
| 73 | **Elaboration Phase** |  |  |  | 41% → 56% |  |  |
| 74 | **Elaboration - Iteration 1** |  | 2007-07-27 A |  | 84% → 100% | 0d → none |  |
| 85 | **Requirements** |  | 2007-07-25 A |  | 89% → 100% | 0d → none |  |
| 90 | **Finalize Deliverables** |  | 2007-07-24 A |  | 79% → 100% | -2d → none |  |
| 103 | UX Modeling/Wireframes (deferred) |  | 2007-07-20 A |  | 10% → 100% | -82d → none | 251 → 102 |
| 104 | Stylesheet Framework (deferred) | 2007-07-23 A | 2007-07-24 A |  | 0% → 100% | -82d → none |  |
| 105 | **Analysis and Design** |  | 2007-07-27 A |  | 70% → 100% | 0d → none |  |
| 108 | Grid Strategy - Deferred |  | 2007-06-28 A |  | 75% → 100% | -6.16d → none |  |
| 112 | Security - Deferred |  | 2007-07-19 A |  | 20% → 100% | -78.3d → none |  |
| 113 | 1.6 Data Migration Strategy |  | 2007-07-18 A |  | 20% → 100% | -77.3d → none |  |
| 114 | **Finalize Deliverables** |  | 2007-07-27 A |  | 50% → 100% | 0d → none |  |
| 115 | Update Software Architecture Document |  | 2007-07-27 A |  | 50% → 100% | 0d → none |  |
| 116 | **Implementation** |  | 2007-07-27 A |  | 83% → 100% | -1.34d → none |  |
| 117 | Implement UC Import Project Data |  | 2007-07-26 A |  | 90% → 100% | -83.3d → none |  |
| 121 | Implement UC Manage Project Data Files (to support import) |  |  |  |  |  | 285 → 120 |
| 122 | **Finalize Deliverables** | 2007-07-27 A | 2007-07-27 A |  | 0% → 100% | -84.64d → none |  |
| 123 | Release Final E1 Development Build | 2007-07-27 A | 2007-07-27 A |  | 0% → 100% | -84.64d → none |  |
| 124 | **Test** |  | 2007-07-27 A |  | 50% → 100% | -4d → none |  |
| 126 | Incorporate Test Cases into Gforge (Deferred) | 2007-07-25 A | 2007-07-25 A |  | 0% → 100% | -83d → none |  |
| 127 | Manage Test Assets (Deferred) | 2007-07-23 A | 2007-07-25 A |  | 0% → 100% | -84.3d → none |  |
| 128 | **Finalize Deliverables** | 2007-07-25 A | 2007-07-27 A |  | 0% → 100% | -84.3d → none |  |
| 129 | Release Test Plan (Deferred) | 2007-07-25 A | 2007-07-27 A |  | 0% → 100% | -84.3d → none |  |
| 130 | **Environment** |  | 2007-07-27 A |  | 93% → 100% | 0d → none |  |
| 135 | Integrate Test Suite into Gforge (deferred) | 2007-07-25 A | 2007-07-27 A |  | 0% → 100% | -84.3d → none |  |
| 139 | **Elaboration - Iteration 2** |  |  |  | 4% → 20% |  |  |
| 140 | **Project Management** |  |  |  | 9% → 48% |  |  |
| 147 | **Finalize Deliverables** |  |  |  | 5% → 53% | -19.7d → 0d |  |
| 148 | Deliver E2 Plan |  | 2007-08-01 A |  | 75% → 100% | -87.3d → none |  |
| 149 | Update Risk List | 2007-07-30 A |  |  | 0% → 50% | -95d → 0d |  |
| 150 | Establish Plan for Alpha and Beta Releases | 2007-08-06 A |  |  | 0% → 50% |  |  |
| 152 | Finalize C1 Iteration Plans | 2007-08-03 A |  |  | 0% → 50% |  |  |
| 153 | **Requirements** |  | 2007-09-03 → 2007-08-30 (-4d) | 26.7d → 24.7d | 2% → 15% | -18d → -6d |  |
| 154 | Incorporate Stakeholder Feedback on Vision and Supp Spec | 2007-08-01 A |  |  | 0% → 20% |  |  |
| 155 | Incorporate Stakeholder Feedback on E1 Use Cases | 2007-07-27 A |  |  | 0% → 20% |  |  |
| 156 | UX Modeling/Wireframes (from E1 deferred) | 2007-08-10 → 2007-08-08 (-2d) | 2007-08-16 → 2007-08-14 (-2d) |  |  | -111d → -109d |  |
| 157 | UI Mockups for Prioritized Use Cases | 2007-08-17 → 2007-08-15 (-2d) | 2007-08-27 → 2007-08-23 (-4d) |  |  | -111d → -109d |  |
| 158 | Stylesheet Framework (from E1 deferred) | 2007-08-28 → 2007-08-24 (-4d) | 2007-09-03 → 2007-08-30 (-4d) |  |  | -111d → -109d |  |
| 160 | **Detail E2 Use Cases** | 2007-08-02 A → 2007-08-03 A (+1d) | 2007-08-09 → 2007-08-07 (-2d) | 6d → 3d | 10% → 73% | -1d → 0d |  |
| 161 | UC Download Project Data (from E1 deferred) | 2007-08-03 A |  |  | 0% → 20% | -111d → -106.5d |  |
| 162 | UC Manage Users | 2007-08-03 A |  |  | 0% → 20% | -111d → -107d |  |
| 163 | Validate Project Data Files: Define Validation Rules | 2007-08-06 A | 2007-08-06 A |  | 0% → 100% | -111d → none |  |
| 164 | UC Manage Project Permissions | 2007-08-07 A | 2007-08-07 A |  | 0% → 100% | -111d → none |  |
| 165 | **Detail C1 Use Cases** | 2007-08-10 → 2007-08-08 (-2d) | 2007-08-14 → 2007-08-10 (-4d) |  |  | -97d → -81d |  |
| 166 | UC Navigate Repository | 2007-08-10 → 2007-08-08 (-2d) | 2007-08-10 → 2007-08-08 (-2d) |  |  | -97d → -95d |  |
| 167 | UC Search Repository | 2007-08-13 → 2007-08-09 (-4d) | 2007-08-13 → 2007-08-09 (-4d) |  |  | -97d → -95d |  |
| 168 | UC Search Using Filters | 2007-08-14 → 2007-08-10 (-4d) | 2007-08-14 → 2007-08-10 (-4d) |  |  | -97d → -95d |  |
| 169 | **Analysis and Design** | 2007-08-06 → 2007-07-27 A (-10d) |  | 10d → 15.7d | 0% → 3% | -114d → -8d |  |
| 174 | Logical Model Final Draft | 2007-08-06 A |  |  | 0% → 50% |  |  |
| 175 | **Subsystem Design** | 2007-08-06 → 2007-07-27 (-10d) |  | 8d → 13.7d |  | -114d → -94.3d |  |
| 181 | PermissionsManagementService | 2007-08-06 → 2007-07-27 (-10d) | 2007-08-08 → 2007-08-01 (-7d) |  |  | -114d → -108.3d | 188 → none |
| 182 | Authorization Mechanism | 2007-08-09 → 2007-08-01 (-8d) | 2007-08-14 → 2007-08-07 (-7d) |  |  | -114d → -108.3d |  |
| 186 | **Implementation** |  |  |  | 5% → 14% | -24d → -17d |  |
| 187 | **E1 Completion** |  | 2007-08-03 → 2007-08-14 (+11d) | 3d → 10d | 25% → 47% |  |  |
| 188 | Complete Hibernate Mappings |  | 2007-08-03 A → 2007-08-14 (+11d) | 3d → 10d | 100% → 90% | none → -97d |  |
| 192 | **Subsystem Implementation** | 2007-08-13 → 2007-08-07 (-6d) |  | 17d → 20.7d |  | -112d → -98d |  |
| 197 | PermissionsManagement | 2007-08-15 → 2007-08-07 (-8d) | 2007-08-21 → 2007-08-14 (-7d) |  |  | -114d → -108.3d |  |
| 198 | Object Access Authorization Mechanism | 2007-08-22 → 2007-08-14 (-8d) | 2007-08-23 → 2007-08-16 (-7d) |  |  | -104d → -98.3d |  |
| 200 | **Implement Use Cases** | 2007-08-22 → 2007-08-15 (-7d) | 2007-08-28 → 2007-08-21 (-7d) |  |  | -114d → -95d |  |
| 201 | Manage Project Permissions | 2007-08-22 → 2007-08-15 (-7d) | 2007-08-24 → 2007-08-17 (-7d) |  |  | -114d → -109d |  |
| 202 | Validate Project Data Files | 2007-08-27 → 2007-08-20 (-7d) | 2007-08-27 → 2007-08-20 (-7d) |  |  | -114d → -109d |  |
| 203 | Login | 2007-08-28 → 2007-08-21 (-7d) | 2007-08-28 → 2007-08-21 (-7d) |  |  | -114d → -109d |  |
| 211 | **Test** |  | 2007-09-06 → 2007-08-31 (-6d) | 19d → 14d |  | -114d → -95d |  |
| 212 | Validate Project Data Files Test Cases | 2007-08-29 → 2007-08-22 (-7d) | 2007-08-29 → 2007-08-22 (-7d) |  |  | -114d → -109d |  |
| 213 | Manage Permission Test Cases | 2007-08-30 → 2007-08-23 (-7d) | 2007-08-30 → 2007-08-23 (-7d) |  |  | -114d → -109d |  |
| 214 | Import Data Files Test Suite | 2007-08-31 → 2007-08-24 (-7d) | 2007-08-31 → 2007-08-24 (-7d) |  |  | -114d → -109d |  |
| 215 | Remote Java API Test Suite | 2007-09-03 → 2007-08-27 (-7d) | 2007-09-06 → 2007-08-30 (-7d) |  |  | -114d → -109d |  |
| 216 | **Finalize Deliverables** |  | 2007-08-14 → 2007-08-31 (+17d) | 2d → 14d |  | -109d → -95d |  |
| 220 | **Environment** |  |  |  | 12% → 28% | -9d → -5d |  |
| 222 | Review and Demonstration Meetings (Eng + Prod / QA / Systems | 2007-08-01 A |  |  | 0% → 25% |  |  |

| ID | Task | Start | Finish | Duration | Complete | Total float | Predecessors | Other |
| --- | --- | --- | --- | --- | --- | --- | --- | --- |
| 225 | Complete DEV to QA Integration | 2007-08-06 → 2007-08-07 A (+1d) | 2007-08-08 → 2007-08-09 (+1d) |  | 0% → 35% | -95d → 0d |  | constraint none → finish no earlier than 2007-08-09 |
| 237 | E2 Assessment | 2007-09-10 → 2007-09-12 (+2d) | 2007-09-10 → 2007-09-12 (+2d) |  |  | -56d → -58d | 234 → 236 |  |
| 238 | C1 Review | 2007-09-28 → 2007-09-21 (-7d) | 2007-09-28 → 2007-09-21 (-7d) |  |  | -70d → -65d |  | constraint start no earlier than 2007-09-28 → start no earlier than 2007-09-21 |
| 242 | Update Risk List | 2007-09-07 → 2007-09-20 (+13d) |  | 10d → 1d |  | -64d → -50d |  | constraint finish no earlier than 2007-08-10 → finish no earlier than 2007-09-20 |
| 246 | **Requirements** |  | 2007-09-28 → 2007-10-04 (+6d) | 16d → 20d |  | -70d → -60d |  |  |
| 249 | Incorporate Stakeholder Feedback on UI Mockups | 2007-09-07 → 2007-09-21 (+14d) | 2007-09-28 → 2007-10-04 (+6d) | 16d → 10d |  | -70d → -74d |  | constraint none → start no earlier than 2007-09-21; resources bgendleman → bgendleman [50%]; mrehfuss |
| 250 | **Detail C1 Use Cases** |  | 2007-10-04 → 2007-09-12 (-22d) | 20d → 3.5d |  | -74d → -54d |  | was named Analysis and Design |
| 251 | UC Manage Institutional Groups | 2007-07-10 A → 2007-09-07 (+59d) | 2007-07-11 A → 2007-09-07 (+58d) |  | 100% → 0% | none → -68d | 101 → none | resources bgendleman → none |
| 255 | Create C1 Wireframes and Mockups | 2007-09-07 → 2007-09-12 (+5d) | 2007-09-11 → 2007-09-17 (+6d) |  |  | -57d → -60.5d | none → 250 | was named Create Search Wireframes and Mockups |
| 257 | UC Organize Workspace |  | 2007-10-04 → 2007-09-10 (-24d) | 20d → 2d |  | -74d → -65d |  | was named Implementation |
| 272 | MageTabParser: Validation |  | 2007-10-04 → 2007-09-07 (-27d) | 20d → 1d |  | -74d → -67d |  | was named Test; resources none → bmason |
| 277 | Authorization Mechanism | 2007-09-07 → 2007-09-11 (+4d) | 2007-10-04 → 2007-09-11 (-23d) | 20d → 1d |  | -74d → -67d | none → 276 | was named Environment; resources none → tparnell |
| 285 | Implement UC Acquire Project Data via API | 2007-07-09 A → 2007-09-07 (+60d) | 2007-07-23 → 2007-09-07 (+46d) | 10d → 1d | 70% → 0% | -80.3d → -55d | 119 → none | resources etavela [90%]; rsrinavasa → tparnell |
| 318 | C1 Complete |  |  |  |  |  | 316 → 317 | was named C1 Complete - Alpha Release 1 |
| 350 | Update Software Architecture Document | 2007-10-05 → 2007-10-16 (+11d) | 2007-11-01 → 2007-10-22 (-10d) | 20d → 5d |  | -114d → -91d | none → 348 | was named Analysis and Design |
| 358 | **Test** |  | 2007-11-01 → 2007-10-26 (-6d) | 20d → 16d |  | -114d → -96d |  |  |
| 362 | **Environment** |  | 2007-11-01 → 2007-10-05 (-27d) | 20d → 1d |  | -114d → -81d |  |  |
| 364 | **Configuration and Change Management** |  | 2007-11-01 → 2007-10-29 (-3d) | 20d → 17d |  | -114d → -97d |  |  |
| 367 | C2 Complete | 2007-11-01 → 2007-10-26 (-6d) | 2007-11-01 → 2007-10-26 (-6d) |  |  | -114d → -96d |  | was named C2 Complete Beta Release 1 |
| 368 | **Construction - Iteration 3** | 2007-11-02 → 2007-11-01 (-1d) |  |  |  | -114d → -100d |  |  |
| 382 | Update Risk List | 2007-11-02 → 2007-11-12 (+10d) | 2007-11-29 → 2007-11-12 (-17d) | 20d → 1d |  | -114d → -86d | none → 381 | was named Requirements |
| 402 | **Test** |  |  |  |  | -114d → -100d |  | was named Analysis and Design |
| 404 | Release QA Build C3B - Beta 2 | 2007-11-02 → 2007-11-23 (+21d) | 2007-11-29 → 2007-11-23 (-6d) | 20d → 0d |  | -114d → -98d |  | was named Implementation; constraint none → start no earlier than 2007-11-23 |
| 405 | Load 1.x Data from DEV to QA to STAGE |  |  |  |  | -114d → -100d |  | was named Test |
| 406 | **Environment** | 2007-11-02 → 2007-11-23 (+21d) | 2007-11-29 → 2007-11-23 (-6d) | 20d → 1d |  | -114d → -96d |  |  |
| 412 | C3 Complete |  |  |  |  | -114d → -100d | 408 → 410, 409 | was named C3 Complete Beta Release 2 |
| 413 | **Transition Phase** | 2007-11-30 → 2007-11-29 (-1d) | 2008-01-03 → 2007-12-14 (-20d) | 25d? → 11d |  | -114d → -100d |  |  |
| 414 | **Transition - Iteration 1** | 2007-11-30 → 2007-11-29 (-1d) | 2008-01-03 → 2007-12-14 (-20d) | 25d? → 11d |  | -114d → -100d |  |  |

## Version 18 (saved 2007-08-10)

Note of the change: updated use case, pm and some a&d tasks with progress

Last finish stays 2007-12-14. Complete tasks 110 → 113.

Changed:

| ID | Task | Start | Finish | Duration | Complete | Total float | Other |
| --- | --- | --- | --- | --- | --- | --- | --- |
| 73 | **Elaboration Phase** |  |  |  | 56% → 58% |  |  |
| 139 | **Elaboration - Iteration 2** |  |  |  | 20% → 23% |  |  |
| 140 | **Project Management** |  |  |  | 48% → 51% |  |  |
| 145 | Hold Dev to QA Handoff | 2007-08-16 A |  |  | 0% → 50% | -100d → -86d |  |
| 146 | Plan for Next Iteration |  |  |  | 25% → 50% | -106d → -92d |  |
| 153 | **Requirements** |  |  |  | 15% → 17% |  |  |
| 160 | **Detail E2 Use Cases** |  | 2007-08-07 A |  | 73% → 100% | 0d → none |  |
| 161 | UC Download Project Data (from E1 deferred) |  | 2007-08-03 A |  | 20% → 100% | -106.5d → none |  |
| 162 | UC Manage Users |  | 2007-08-03 A |  | 20% → 100% | -107d → none |  |
| 165 | **Detail C1 Use Cases** | 2007-08-08 A |  |  | 0% → 7% | -81d → -2d |  |
| 166 | UC Navigate Repository | 2007-08-08 A |  |  | 0% → 20% |  |  |
| 169 | **Analysis and Design** |  |  |  | 3% → 17% | -8d → -4d |  |
| 170 | **Use-Case Design** |  | 2007-08-10 → 2007-08-14 (+4d) | 5d → 6.2d |  | -98d → -112d |  |
| 171 | Manage Project Permissions | 2007-08-07 → 2007-08-08 (+1d) | 2007-08-09 → 2007-08-13 (+4d) |  |  | -109d → -88.2d |  |
| 172 | Validate Project Data Files | 2007-08-10 → 2007-08-13 (+3d) | 2007-08-10 → 2007-08-14 (+4d) |  |  | -109d → -88.2d |  |
| 174 | Logical Model Final Draft |  | 2007-08-07 A |  | 50% → 100% | -95.5d → none |  |
| 175 | **Subsystem Design** | 2007-07-27 A |  |  | 0% → 16% | -94.3d → -2d |  |
| 177 | MageTabParser: Validation | 2007-08-06 A |  |  | 0% → 50% |  |  |
| 180 | Remote API Grid Implementation | 2007-08-08 A | 2007-08-10 → 2007-08-13 (+3d) | 2.5d → 4d | 0% → 25% | -95.5d → -97d |  |
| 181 | PermissionsManagementService | 2007-07-27 A |  |  | 0% → 25% |  |  |
| 183 | External Review: Grid API | 2007-08-10 → 2007-08-14 (+4d) | 2007-08-13 → 2007-08-14 (+1d) |  |  | -95.5d → -97d |  |
| 186 | **Implementation** |  |  |  | 14% → 18% | -17d → -10.8d |  |
| 187 | **E1 Completion** |  |  |  | 47% → 56% |  |  |
| 189 | Remote Java API | 2007-08-01 A | 2007-08-03 → 2007-08-07 (+4d) | 3d → 4.2d | 0% → 57% | -109d → -88.2d | resources etavela; smatyas → etavela; tparnell |
| 200 | **Implement Use Cases** | 2007-08-15 → 2007-08-16 A (+1d) | 2007-08-21 → 2007-08-23 (+2d) |  | 0% → 10% | -95d → 0d |  |
| 201 | Manage Project Permissions | 2007-08-15 → 2007-08-16 (+1d) | 2007-08-17 → 2007-08-21 (+4d) |  |  | -109d → -88.2d |  |
| 202 | Validate Project Data Files | 2007-08-20 → 2007-08-21 (+1d) | 2007-08-20 → 2007-08-22 (+2d) |  |  | -109d → -88.2d |  |
| 203 | Login | 2007-08-21 → 2007-08-22 A (+1d) | 2007-08-21 → 2007-08-23 (+2d) |  | 0% → 50% | -109d → -110.2d |  |
| 211 | **Test** | 2007-08-13 → 2007-08-14 (+1d) | 2007-08-31 → 2007-09-03 (+3d) |  |  | -95d → -103.2d |  |
| 212 | Validate Project Data Files Test Cases | 2007-08-22 → 2007-08-23 (+1d) | 2007-08-22 → 2007-08-24 (+2d) |  |  | -109d → -110.2d |  |
| 213 | Manage Permission Test Cases | 2007-08-23 → 2007-08-24 (+1d) | 2007-08-23 → 2007-08-27 (+4d) |  |  | -109d → -110.2d |  |
| 214 | Import Data Files Test Suite | 2007-08-24 → 2007-08-27 (+3d) | 2007-08-24 → 2007-08-28 (+4d) |  |  | -109d → -110.2d |  |
| 215 | Remote Java API Test Suite | 2007-08-27 → 2007-08-28 (+1d) | 2007-08-30 → 2007-09-03 (+4d) |  |  | -109d → -110.2d |  |
| 216 | **Finalize Deliverables** | 2007-08-13 → 2007-08-14 (+1d) |  | 14d → 12.8d |  | -95d → -99d |  |
| 217 | Release Test Plan | 2007-08-13 → 2007-08-14 (+1d) | 2007-08-14 → 2007-08-16 (+2d) |  |  | -109d → -88.2d |  |
| 224 | Development Process "Quick Start" | 2007-08-06 → 2007-08-07 (+1d) | 2007-08-06 → 2007-08-08 (+2d) |  |  | -109d → -88.2d |  |

## Version 19 (saved 2007-08-15)

Note of the change: updated Requirements (UI schedule), added harmonization, still need updates from dev and reorganize based on John leaving

Last finish stays 2007-12-14. Complete tasks 113 → 116.

Added:

| ID | Task | Duration | Start | Finish | Predecessors | Resources |
| --- | --- | --- | --- | --- | --- | --- |
| 171 | Harmonization of Model with caBIG | 20d | 2007-08-08 | 2007-09-04 | 170 | etavela [80%] |

Changed:

| ID | Task | Start | Finish | Duration | Complete | Total float | Other |
| --- | --- | --- | --- | --- | --- | --- | --- |
| 1 | **caArray 2.0** |  |  |  | 34% → 35% |  |  |
| 139 | **Elaboration - Iteration 2** |  |  |  | 23% → 28% |  |  |
| 140 | **Project Management** |  |  |  | 51% → 52% |  |  |
| 144 | Weekly Status Meetings |  |  |  | 20% → 40% |  |  |
| 153 | **Requirements** |  | 2007-08-30 → 2007-09-04 (+5d) | 24.7d → 27.7d | 17% → 24% | -6d → -2d |  |
| 154 | Incorporate Stakeholder Feedback on Vision and Supp Spec |  |  |  | 20% → 40% | -103d → -89d |  |
| 155 | Incorporate Stakeholder Feedback on E1 Use Cases |  | 2007-08-01 → 2007-08-31 (+30d) | 3d → 25.7d |  | -87.3d → 0d | constraint none → finish no earlier than 2007-08-31 |
| 156 | UX Modeling/Wireframes (from E1 deferred) | 2007-08-08 → 2007-08-13 A (+5d) | 2007-08-14 → 2007-08-17 (+3d) |  | 0% → 10% | -109d → -98d |  |
| 157 | UI Mockups for Prioritized Use Cases | 2007-08-15 → 2007-08-20 (+5d) | 2007-08-23 → 2007-08-28 (+5d) |  |  | -109d → -98d |  |
| 158 | Stylesheet Framework (from E1 deferred) | 2007-08-24 → 2007-08-29 (+5d) | 2007-08-30 → 2007-09-04 (+5d) |  |  | -109d → -98d |  |
| 165 | **Detail C1 Use Cases** |  |  |  | 7% → 33% | -2d → -1d |  |
| 166 | UC Navigate Repository |  |  |  | 20% → 50% | -95d → -79d |  |
| 167 | UC Search Repository | 2007-08-09 A |  |  | 0% → 50% | -95d → -81d |  |
| 169 | **Analysis and Design** |  | 2007-08-17 → 2007-09-04 (+18d) | 15.7d → 27.7d | 17% → 18% | -4d → -14d |  |
| 176 | **Subsystem Design** |  |  |  | 16% → 33% | -2d → 0d |  |
| 177 | FileAccessService | 2007-08-07 A |  |  | 0% → 20% | -112d → -98d |  |
| 179 | ArrayDataService: Validation | 2007-08-10 A |  |  | 0% → 50% | -114d → -82d |  |
| 180 | ArrayDesignService: Validation | 2007-08-14 A |  |  | 0% → 50% | -114d → 0d |  |
| 181 | Remote API Grid Implementation |  |  |  | 25% → 50% | -97d → 0d |  |
| 212 | **Test** | 2007-08-14 A |  |  | 0% → 2% | -103.2d → -12d |  |
| 217 | **Finalize Deliverables** | 2007-08-14 A |  |  | 0% → 10% | -99d → -10.8d |  |
| 218 | Release Test Plan | 2007-08-14 A |  |  | 0% → 10% | -88.2d → 0d |  |
| 221 | **Environment** |  |  |  | 28% → 89% | -5d → 0d |  |
| 223 | Review and Demonstration Meetings (Eng + Prod / QA / Systems |  | 2007-08-06 A |  | 25% → 100% | -90.4d → none |  |
| 224 | Complete Acquisition of DEV and QA Environment |  | 2007-08-03 A |  | 50% → 100% | -1d → none |  |
| 225 | Development Process "Quick Start" | 2007-08-07 A |  |  | 0% → 50% | -88.2d → -82.2d |  |
| 226 | Complete DEV to QA Integration |  |  |  | 35% → 75% |  |  |
| 227 | Incorporate Automated Deployment Process | 2007-08-15 A | 2007-08-16 A |  | 0% → 100% | -85d → none |  |
| 228 | **Configuration and Change Management** | 2007-07-27 A |  |  | 0% → 10% | -95.3d → 0d |  |
| 229 | Manage Gforge Content | 2007-07-27 A |  |  | 0% → 10% | -109.3d → -95.3d |  |

## Version 20 (saved 2007-08-16)

Note of the change: updated with developer input, planning around John Pike departure while still meeting deadline. Functionality loss is expected to be Illumina data file parsing, risk is manage project permissions

Last finish stays 2007-12-14. Complete tasks 116 → 124.

Changed:

| ID | Task | Start | Finish | Duration | Complete | Total float | Predecessors | Other |
| --- | --- | --- | --- | --- | --- | --- | --- | --- |
| 1 | **caArray 2.0** |  |  |  | 35% → 37% |  |  |  |
| 73 | **Elaboration Phase** |  |  |  | 58% → 63% |  |  |  |
| 139 | **Elaboration - Iteration 2** |  |  |  | 28% → 37% |  |  |  |
| 169 | **Analysis and Design** |  |  |  | 18% → 37% | -14d → 0d |  |  |
| 171 | Harmonization of Model with caBIG | 2007-08-08 A |  |  | 0% → 10% |  |  |  |
| 172 | **Use-Case Design** | 2007-08-06 A |  |  | 0% → 44% | -82.2d → 0d |  |  |
| 173 | Manage Project Permissions | 2007-08-08 A |  |  | 0% → 33% | -82.2d → -81.2d |  |  |
| 174 | Validate Project Data Files | 2007-08-13 A | 2007-08-14 A |  | 0% → 100% | -82.2d → none |  |  |
| 175 | Login |  |  | 1d → 0.56d |  | -77d → -76.56d |  | resources jpike → etavela [80%]; tparnell |
| 176 | **Subsystem Design** |  |  |  | 33% → 59% |  |  |  |
| 177 | FileAccessService |  | 2007-08-10 → 2007-08-09 (-1d) | 4d → 2.58d | 20% → 31% | -98d → -79.58d |  | resources jpike → jpike; etavela [80%] |
| 178 | MageTabParser: Validation |  | 2007-08-09 A |  | 50% → 100% | -80d → none |  |  |
| 179 | ArrayDataService: Validation |  | 2007-08-13 A |  | 50% → 100% | -82d → none |  |  |
| 180 | ArrayDesignService: Validation |  | 2007-08-15 A |  | 50% → 100% | 0d → none |  |  |
| 181 | Remote API Grid Implementation |  |  |  | 50% → 80% | 0d → -83d |  |  |
| 185 | **Finalize Deliverables** | 2007-08-16 → 2007-08-29 (+13d) | 2007-08-17 → 2007-08-30 (+13d) |  |  | -86d → -95d |  |  |
| 186 | Update Software Architecture Document | 2007-08-16 → 2007-08-29 (+13d) | 2007-08-17 → 2007-08-30 (+13d) |  |  | -86d → -95d |  | constraint start no earlier than 2007-08-16 → start no earlier than 2007-08-29 |
| 187 | **Implementation** |  |  |  | 18% → 42% | -10.8d → -14d |  |  |
| 188 | **E1 Completion** |  | 2007-08-14 A |  | 56% → 100% | 0d → none |  |  |
| 189 | Complete Hibernate Mappings |  | 2007-08-14 A |  | 90% → 100% | -83d → none |  |  |
| 190 | Remote Java API |  | 2007-08-07 A |  | 57% → 100% | -77.2d → none |  |  |
| 191 | Complete MAGE-TAB parsing | 2007-08-01 A | 2007-08-03 A |  | 0% → 100% | -76d → none |  |  |
| 192 | Complete MAGE-TAB translation | 2007-08-01 A | 2007-08-03 A |  | 0% → 100% | -76d → none |  |  |
| 193 | **Subsystem Implementation** | 2007-08-07 → 2007-08-13 A (+6d) | 2007-09-04 → 2007-08-29 (-6d) | 20.7d → 13d | 0% → 17% | -98d → -8d |  |  |
| 194 | FileAccessService | 2007-08-13 → 2007-08-21 (+8d) | 2007-08-17 → 2007-08-21 (+4d) | 5d → 1d |  | -98d → -94d | 177 → none | constraint none → start no earlier than 2007-08-21; resources jpike → etavela [80%] |
| 198 | PermissionsManagement | 2007-08-07 → 2007-08-20 (+13d) | 2007-08-14 → 2007-08-24 (+10d) |  |  | -86.3d → -100d |  | constraint none → start no earlier than 2007-08-20 |
| 199 | Object Access Authorization Mechanism | 2007-08-14 → 2007-08-27 (+13d) | 2007-08-16 → 2007-08-28 (+12d) |  |  | -84.3d → -93d |  | resources jpike; tparnell → tparnell; etavela |
| 200 | Remote API Grid Implementation | 2007-08-29 → 2007-08-13 A (-16d) | 2007-09-04 → 2007-08-17 (-18d) |  | 0% → 80% | -98d → -86d | 211 → none | constraint start no earlier than 2007-08-27 → start no earlier than 2007-08-13 |
| 201 | **Implement Use Cases** | 2007-08-16 A → 2007-08-20 (+4d) | 2007-08-23 → 2007-08-31 (+8d) | 5d → 10d | 10% → 0% | 0d → -96d |  |  |
| 202 | Manage Project Permissions | 2007-08-16 → 2007-08-27 (+11d) | 2007-08-21 → 2007-08-30 (+9d) | 3d → 4d |  | -88.2d → -100d |  | resources etavela → bmason |
| 203 | Validate Project Data Files | 2007-08-21 → 2007-08-31 (+10d) | 2007-08-22 → 2007-08-31 (+9d) |  |  | -88.2d → -96d |  |  |
| 204 | Login | 2007-08-22 A → 2007-08-20 (-2d) | 2007-08-23 → 2007-08-20 (-3d) |  | 50% → 0% | 0d → -94d | 203 → none | constraint none → start no earlier than 2007-08-20; resources jpike → tparnell; etavela [80%] |
| 205 | **Implement Additional Array Design Parsers** | 2007-08-20 → 2007-08-22 (+2d) | 2007-08-31 → 2007-09-03 (+3d) | 10d → 9d |  |  |  |  |
| 206 | Illumina (deferred) | 2007-08-20 → 2007-08-22 (+2d) | 2007-08-22 → 2007-08-24 (+2d) |  |  | -98d → -94d |  | was named Illumina; resources jpike → none |
| 207 | Affymetrix SNP | 2007-08-30 → 2007-08-31 (+1d) | 2007-08-31 → 2007-09-03 (+3d) |  |  |  | 197 → 197, 202 |  |
| 208 | **Implement Additional Array Data Parsers** | 2007-08-23 → 2007-09-03 (+11d) |  | 11d → 3d |  |  |  |  |
| 209 | Illumina (deferred) |  | 2007-09-06 → 2007-09-03 (-3d) | 4d → 0d |  | -100d → -97d |  | was named Illumina; resources bmason → none |
| 210 | Affymetrix SNP | 2007-08-23 → 2007-09-04 (+12d) | 2007-08-24 → 2007-09-05 (+12d) |  |  | -98d → -100d | 206 → 206, 207 | resources jpike → bmason |
| 211 | Affymetrix CHP | 2007-08-27 → 2007-09-06 (+10d) | 2007-08-28 → 2007-09-06 (+9d) | 2d → 1d |  | -98d → -100d |  | resources jpike → bmason |
| 212 | **Test** |  | 2007-09-03 → 2007-08-31 (-3d) | 14d → 12.8d |  | -12d → -10.8d |  |  |
| 213 | Validate Project Data Files Test Cases | 2007-08-23 → 2007-08-21 (-2d) | 2007-08-24 → 2007-08-21 (-3d) |  |  | -96.2d → -94d |  |  |
| 214 | Manage Permission Test Cases | 2007-08-24 → 2007-08-22 (-2d) | 2007-08-27 → 2007-08-22 (-5d) |  |  | -96.2d → -94d |  |  |
| 215 | Import Data Files Test Suite | 2007-08-27 → 2007-08-23 (-4d) | 2007-08-28 → 2007-08-23 (-5d) |  |  | -96.2d → -94d |  |  |
| 216 | Remote Java API Test Suite | 2007-08-28 → 2007-08-24 (-4d) | 2007-09-03 → 2007-08-29 (-5d) |  |  | -96.2d → -94d |  |  |
| 230 | Elaboration 2 Complete |  |  |  |  | -100d → -99d |  | constraint start no earlier than 2007-08-31 → start no earlier than 2007-09-06 |
| 284 | **Complete Elaboration Use Cases** | 2007-09-07 → 2007-09-10 (+3d) |  | 17d → 16d |  |  |  |  |
| 285 | Implement UC Login | 2007-09-07 → 2007-09-10 (+3d) | 2007-09-07 → 2007-09-10 (+3d) |  |  | -41d → -42d |  |  |
| 286 | Implement UC Acquire Project Data via API | 2007-09-07 → 2007-09-10 (+3d) | 2007-09-07 → 2007-09-10 (+3d) |  |  | -41d → -42d |  |  |
| 288 | Implement UC Manage Project Permissions | 2007-09-07 → 2007-09-10 (+3d) | 2007-09-10 → 2007-09-11 (+1d) |  |  | -42d → -43d |  |  |
| 352 | **Implementation** | 2007-10-05 → 2007-10-08 (+3d) |  | 17d → 16d |  |  |  |  |
| 353 | **Complete C1 Use Cases** | 2007-10-05 → 2007-10-08 (+3d) | 2007-10-25 → 2007-10-26 (+1d) |  |  | -95d → -96d |  |  |
| 354 | Manage Institutional Groups | 2007-10-05 → 2007-10-08 (+3d) | 2007-10-09 → 2007-10-10 (+1d) |  |  | -83d → -84d |  |  |
| 355 | Manage Collaborators | 2007-10-05 → 2007-10-08 (+3d) | 2007-10-09 → 2007-10-10 (+1d) |  |  | -83d → -84d |  |  |
| 356 | Register for an Account | 2007-10-05 → 2007-10-08 (+3d) | 2007-10-09 → 2007-10-10 (+1d) |  |  | -83d → -84d |  |  |
| 357 | Report on Work Accomplished | 2007-10-05 → 2007-10-08 (+3d) | 2007-10-25 → 2007-10-26 (+1d) |  |  | -95d → -96d |  |  |

## Version 21 (saved 2007-08-20)

Note of the change: included development team updates

Last finish 2007-12-14 → 2007-12-20 (+6d). Complete tasks 124 → 126.

Changed:

| ID | Task | Start | Finish | Duration | Complete | Total float | Predecessors | Other |
| --- | --- | --- | --- | --- | --- | --- | --- | --- |
| 1 | **caArray 2.0** |  | 2007-12-14 → 2007-12-20 (+6d) | 185d → 189d | 37% → 38% | -72d → -76d |  |  |
| 73 | **Elaboration Phase** |  | 2007-09-06 → 2007-09-12 (+6d) | 58.7d → 62.7d | 63% → 64% | -1d → -5d |  |  |
| 139 | **Elaboration - Iteration 2** |  | 2007-09-06 → 2007-09-12 (+6d) | 29.7d → 33.7d | 37% → 39% | -1d → -5d |  |  |
| 140 | **Project Management** |  |  |  | 52% → 53% |  |  |  |
| 147 | **Finalize Deliverables** |  |  |  | 53% → 54% |  |  |  |
| 151 | July Status Report | 2007-08-17 A | 2007-08-17 A |  | 0% → 100% | -86d → none |  |  |
| 153 | **Requirements** |  |  |  | 24% → 25% |  |  |  |
| 165 | **Detail C1 Use Cases** |  |  |  | 33% → 50% |  |  |  |
| 167 | UC Search Repository |  | 2007-08-09 A |  | 50% → 100% | -81d → none |  |  |
| 169 | **Analysis and Design** |  |  |  | 37% → 41% |  |  |  |
| 171 | Harmonization of Model with caBIG |  |  |  | 10% → 20% |  |  |  |
| 176 | **Subsystem Design** |  | 2007-08-15 → 2007-08-23 (+8d) | 13.7d → 19.7d | 59% → 61% | 0d → -6d |  |  |
| 181 | Remote API Grid Implementation |  |  |  | 80% → 90% |  |  |  |
| 183 | Authorization Mechanism | 2007-08-01 → 2007-08-20 (+19d) | 2007-08-07 → 2007-08-23 (+16d) |  |  | -91.3d → -104d | 182 → none | constraint none → start no earlier than 2007-08-20 |
| 187 | **Implementation** |  | 2007-09-06 → 2007-09-12 (+6d) | 27d → 31d | 42% → 47% | -14d → -15d |  |  |
| 193 | **Subsystem Implementation** |  | 2007-08-29 → 2007-09-03 (+5d) | 13d → 16d | 17% → 28% |  |  |  |
| 195 | MageTabParser: Validation | 2007-08-16 A |  |  | 0% → 50% |  |  |  |
| 198 | PermissionsManagement | 2007-08-20 → 2007-08-24 (+4d) | 2007-08-24 → 2007-08-30 (+6d) |  |  | -100d → -104d |  |  |
| 199 | Object Access Authorization Mechanism | 2007-08-27 → 2007-08-31 (+4d) | 2007-08-28 → 2007-09-03 (+6d) |  |  | -93d → -97d |  |  |
| 201 | **Implement Use Cases** |  | 2007-08-31 → 2007-09-06 (+6d) | 10d → 14d |  | -96d → -100d |  |  |
| 202 | Manage Project Permissions | 2007-08-27 → 2007-08-31 (+4d) | 2007-08-30 → 2007-09-05 (+6d) |  |  | -100d → -104d |  |  |
| 203 | Validate Project Data Files | 2007-08-31 → 2007-09-06 (+6d) | 2007-08-31 → 2007-09-06 (+6d) |  |  | -96d → -100d |  |  |
| 205 | **Implement Additional Array Design Parsers** |  | 2007-09-03 → 2007-09-07 (+4d) | 9d → 13d |  | -100d → -104d |  |  |
| 207 | Affymetrix SNP | 2007-08-31 → 2007-09-06 (+6d) | 2007-09-03 → 2007-09-07 (+4d) |  |  | -100d → -104d |  |  |
| 208 | **Implement Additional Array Data Parsers** | 2007-09-03 → 2007-09-07 (+4d) | 2007-09-06 → 2007-09-12 (+6d) |  |  | -100d → -104d |  |  |
| 209 | Illumina (deferred) | 2007-09-03 → 2007-09-07 (+4d) | 2007-09-03 → 2007-09-07 (+4d) |  |  | -97d → -101d |  |  |
| 210 | Affymetrix SNP | 2007-09-04 → 2007-09-10 (+6d) | 2007-09-05 → 2007-09-11 (+6d) |  |  | -100d → -104d |  |  |
| 211 | Affymetrix CHP | 2007-09-06 → 2007-09-12 (+6d) | 2007-09-06 → 2007-09-12 (+6d) |  |  | -100d → -104d |  |  |
| 230 | Elaboration 2 Complete | 2007-09-06 → 2007-09-07 (+1d) | 2007-09-06 → 2007-09-07 (+1d) |  |  | -99d → -101d |  |  |
| 231 | **Construction Phase** | 2007-09-07 → 2007-09-10 (+3d) | 2007-11-29 → 2007-12-05 (+6d) | 60d → 63d |  | -100d → -104d |  |  |
| 232 | **Construction - Iteration 1** | 2007-09-07 → 2007-09-10 (+3d) | 2007-10-04 → 2007-10-10 (+6d) | 20d → 23d |  | -100d → -101d |  |  |
| 233 | **Project Management** | 2007-09-07 → 2007-09-13 (+6d) | 2007-10-04 → 2007-10-10 (+6d) |  |  | -60d → -64d |  |  |
| 234 | Weekly Status Meetings | 2007-09-07 → 2007-09-13 (+6d) | 2007-10-04 → 2007-10-10 (+6d) |  |  | -60d → -64d |  |  |
| 235 | Dev Team Iteration Plan | 2007-09-07 → 2007-09-13 (+6d) | 2007-09-07 → 2007-09-13 (+6d) |  |  | -44d → -48d |  |  |
| 236 | Meet with Documentation to support UC Transition | 2007-09-10 → 2007-09-14 (+4d) | 2007-09-10 → 2007-09-14 (+4d) |  |  | -44d → -48d |  |  |
| 237 | Meet with App Support to Validate UC's and Overall Product Releases | 2007-09-11 → 2007-09-17 (+6d) | 2007-09-11 → 2007-09-17 (+6d) |  |  | -44d → -48d |  |  |
| 238 | E2 Assessment | 2007-09-12 → 2007-09-18 (+6d) | 2007-09-12 → 2007-09-18 (+6d) |  |  | -44d → -48d |  |  |
| 241 | **Finalize Deliverables** | 2007-09-07 → 2007-09-13 (+6d) | 2007-10-01 → 2007-10-05 (+4d) |  |  | -57d → -61d |  |  |
| 242 | Deliver C1 Plan | 2007-09-07 → 2007-09-13 (+6d) | 2007-09-11 → 2007-09-17 (+6d) |  |  | -43d → -47d |  |  |
| 244 | Update Alpha and Beta Release Plan | 2007-09-07 → 2007-09-13 (+6d) | 2007-10-01 → 2007-10-05 (+4d) |  |  | -57d → -61d |  |  |
| 245 | August Status Report | 2007-09-07 → 2007-09-13 (+6d) | 2007-09-07 → 2007-09-13 (+6d) |  |  | -40.5d → -44.5d |  |  |
| 246 | Finalize C2 Iteration Plans | 2007-09-07 → 2007-09-13 (+6d) | 2007-10-01 → 2007-10-05 (+4d) |  |  | -57d → -61d |  |  |
| 247 | **Requirements** | 2007-09-07 → 2007-09-13 (+6d) |  | 20d → 16d |  |  |  |  |
| 248 | Incorporate Stakeholder Feedback on Vision and Supp Spec | 2007-09-07 → 2007-09-13 (+6d) | 2007-09-28 → 2007-10-04 (+6d) |  |  | -56d → -60d |  |  |
| 249 | Incorporate Stakeholder Feedback on E2 Use Cases | 2007-09-07 → 2007-09-13 (+6d) | 2007-09-28 → 2007-10-04 (+6d) |  |  | -56d → -60d |  |  |
| 251 | **Detail C1 Use Cases** | 2007-09-07 → 2007-09-13 (+6d) | 2007-09-12 → 2007-09-18 (+6d) |  |  | -54d → -58d |  |  |
| 252 | UC Manage Institutional Groups | 2007-09-07 → 2007-09-13 (+6d) | 2007-09-07 → 2007-09-13 (+6d) |  |  | -54d → -58d |  |  |
| 253 | UC Update Project Proposal | 2007-09-10 → 2007-09-14 (+4d) | 2007-09-10 → 2007-09-14 (+4d) |  |  | -46.5d → -50.5d |  |  |
| 254 | UC Register For An Account | 2007-09-10 → 2007-09-14 (+4d) | 2007-09-11 → 2007-09-17 (+6d) |  |  | -46.5d → -50.5d |  |  |
| 255 | UC Manage Collaborators | 2007-09-11 → 2007-09-17 (+6d) | 2007-09-12 → 2007-09-18 (+6d) |  |  | -46.5d → -50.5d |  |  |
| 256 | Create C1 Wireframes and Mockups | 2007-09-12 → 2007-09-18 (+6d) | 2007-09-17 → 2007-09-21 (+4d) |  |  | -46.5d → -50.5d |  |  |
| 257 | **Detail 2.x Use Cases** | 2007-09-07 → 2007-09-13 (+6d) | 2007-09-14 → 2007-09-20 (+6d) |  |  | -51d → -55d |  |  |
| 258 | UC Organize Workspace | 2007-09-07 → 2007-09-13 (+6d) | 2007-09-10 → 2007-09-14 (+4d) |  |  | -51d → -55d |  |  |
| 259 | UC Approve Project | 2007-09-11 → 2007-09-17 (+6d) | 2007-09-11 → 2007-09-17 (+6d) |  |  | -51d → -55d |  |  |
| 260 | UC Assign Project | 2007-09-11 → 2007-09-17 (+6d) | 2007-09-11 → 2007-09-17 (+6d) |  |  | -51d → -55d |  |  |
| 261 | UC Search for Arrays Using Natural Text | 2007-09-12 → 2007-09-18 (+6d) | 2007-09-13 → 2007-09-19 (+6d) |  |  | -51d → -55d |  |  |
| 262 | UC Import Contextual Data | 2007-09-14 → 2007-09-20 (+6d) | 2007-09-14 → 2007-09-20 (+6d) |  |  | -51d → -55d |  |  |
| 263 | Create 2.x Wireframes and Mockups | 2007-09-17 → 2007-09-21 (+4d) | 2007-09-21 → 2007-09-27 (+6d) |  |  | -51d → -55d |  |  |
| 264 | **Analysis and Design** | 2007-09-07 → 2007-09-13 (+6d) |  | 17d → 13d |  | -57d → -58d |  |  |
| 265 | **Use Case Design** | 2007-09-10 → 2007-09-14 (+4d) |  | 8d → 4d |  | -54d → -58d |  |  |
| 266 | Manage Institutional Groups | 2007-09-10 → 2007-09-14 (+4d) | 2007-09-10 → 2007-09-14 (+4d) |  |  | -54d → -58d |  |  |
| 267 | Register for an Account | 2007-09-12 → 2007-09-18 (+6d) | 2007-09-12 → 2007-09-18 (+6d) |  |  | -47d → -51d |  |  |
| 268 | Manage Collaborators | 2007-09-13 → 2007-09-19 (+6d) | 2007-09-13 → 2007-09-19 (+6d) |  |  | -47d → -51d |  |  |
| 271 | **Finalize SubSystem Design** | 2007-09-07 → 2007-09-13 (+6d) |  | 9d → 5d |  |  |  |  |
| 272 | FileAccessService | 2007-09-07 → 2007-09-13 (+6d) | 2007-09-07 → 2007-09-13 (+6d) |  |  | -54d → -58d |  |  |
| 273 | MageTabParser: Validation | 2007-09-07 → 2007-09-13 (+6d) | 2007-09-07 → 2007-09-13 (+6d) |  |  | -53d → -57d |  |  |
| 276 | Remote API Grid Implementation | 2007-09-07 → 2007-09-13 (+6d) | 2007-09-07 → 2007-09-13 (+6d) |  |  | -53d → -57d |  |  |
| 277 | PermissionsManagementService | 2007-09-10 → 2007-09-14 (+4d) | 2007-09-10 → 2007-09-14 (+4d) |  |  | -53d → -57d |  |  |
| 278 | Authorization Mechanism | 2007-09-11 → 2007-09-17 (+6d) | 2007-09-11 → 2007-09-17 (+6d) |  |  | -53d → -57d |  |  |
| 282 | **Implementation** | 2007-09-07 → 2007-09-10 (+3d) |  | 19d → 18d |  |  |  |  |

| ID | Task | Start | Finish | Duration | Total float |
| --- | --- | --- | --- | --- | --- |
| 293 | **Begin C1 Use Cases** | 2007-09-11 → 2007-09-17 (+6d) |  | 16d → 12d |  |
| 294 | Manage Institutional Groups | 2007-09-11 → 2007-09-17 (+6d) | 2007-09-12 → 2007-09-18 (+6d) |  | -54d → -58d |
| 295 | Manage Collaborators | 2007-09-19 → 2007-09-20 (+1d) | 2007-09-20 → 2007-09-21 (+1d) |  | -50d → -51d |
| 298 | **Complete Subsystem Implementation** | 2007-09-07 → 2007-09-13 (+6d) |  | 19d → 15d |  |
| 303 | PermissionsManagement | 2007-09-07 → 2007-09-13 (+6d) | 2007-09-10 → 2007-09-14 (+4d) |  | -42d → -46d |
| 304 | Object Access Authorization Mechanism | 2007-09-07 → 2007-09-13 (+6d) | 2007-09-10 → 2007-09-14 (+4d) |  | -42d → -46d |
| 305 | Remote API Grid Implementation | 2007-09-07 → 2007-09-13 (+6d) | 2007-09-13 → 2007-09-19 (+6d) |  | -45d → -49d |
| 306 | **Test** | 2007-09-07 → 2007-09-13 (+6d) |  | 18d → 14d |  |
| 307 | Project Data Files Test Suite | 2007-09-07 → 2007-09-13 (+6d) | 2007-09-07 → 2007-09-13 (+6d) |  | -41d → -45d |
| 308 | Validation Test Suite | 2007-09-07 → 2007-09-13 (+6d) | 2007-09-07 → 2007-09-13 (+6d) |  | -41d → -45d |
| 312 | **Environment** | 2007-09-10 → 2007-09-13 (+3d) | 2007-09-25 → 2007-09-28 (+3d) |  | -53d → -56d |
| 313 | Acquire STAGE Environment | 2007-09-10 → 2007-09-13 (+3d) | 2007-09-10 → 2007-09-13 (+3d) |  | -53d → -56d |
| 314 | Initiate DEV to QA to STAGE Deployment | 2007-09-10 → 2007-09-13 (+3d) | 2007-09-24 → 2007-09-27 (+3d) |  | -53d → -56d |
| 315 | Update Build and Deploy Plan with SCM Initiative | 2007-09-24 → 2007-09-27 (+3d) | 2007-09-25 → 2007-09-28 (+3d) |  | -53d → -56d |
| 316 | Update ARC Document | 2007-09-25 → 2007-09-28 (+3d) | 2007-09-25 → 2007-09-28 (+3d) |  | -53d → -56d |
| 317 | **Configuration and Change Management** | 2007-09-07 → 2007-09-13 (+6d) | 2007-10-04 → 2007-10-10 (+6d) |  | -100d → -104d |
| 318 | Manage G-Forge Content | 2007-09-07 → 2007-09-13 (+6d) | 2007-10-04 → 2007-10-10 (+6d) |  | -100d → -104d |
| 319 | C1 Complete | 2007-10-04 → 2007-10-10 (+6d) | 2007-10-04 → 2007-10-10 (+6d) |  | -100d → -104d |
| 320 | **Construction - Iteration 2** | 2007-10-05 → 2007-10-08 (+3d) | 2007-11-01 → 2007-11-07 (+6d) | 20d → 23d | -100d → -104d |
| 321 | **Project Management** | 2007-10-05 → 2007-10-11 (+6d) | 2007-11-01 → 2007-11-07 (+6d) |  | -100d → -104d |
| 322 | Weekly Status Meetings | 2007-10-05 → 2007-10-11 (+6d) | 2007-11-01 → 2007-11-07 (+6d) |  | -100d → -104d |
| 323 | Dev Team Iteration Plan | 2007-10-05 → 2007-10-11 (+6d) | 2007-10-05 → 2007-10-11 (+6d) |  | -81d → -85d |
| 324 | Prepare Alpha Release Plan and Organization | 2007-10-10 → 2007-10-11 (+1d) | 2007-10-11 → 2007-10-12 (+1d) |  | -84.67d → -85.67d |
| 326 | Evolve RMP to support QA Process | 2007-10-05 → 2007-10-11 (+6d) | 2007-10-09 → 2007-10-15 (+6d) |  | -83d → -87d |
| 327 | C1 Assessment | 2007-10-05 → 2007-10-11 (+6d) | 2007-10-09 → 2007-10-15 (+6d) |  | -82.22d → -86.22d |
| 330 | **Finalize Deliverables** | 2007-10-05 → 2007-10-11 (+6d) |  | 17d → 13d |  |
| 331 | Deliver C2 Plan | 2007-10-05 → 2007-10-11 (+6d) | 2007-10-05 → 2007-10-11 (+6d) |  | -81d → -85d |
| 336 | **Requirements** | 2007-10-05 → 2007-10-11 (+6d) | 2007-10-29 → 2007-11-02 (+4d) |  | -97d → -101d |
| 337 | Incorporate Stakeholder Feedback on Vision and Supp Spec | 2007-10-05 → 2007-10-11 (+6d) | 2007-10-26 → 2007-11-01 (+6d) |  | -96d → -100d |
| 338 | Incorporate Stakeholder Feedback on C1 Use Cases | 2007-10-05 → 2007-10-11 (+6d) | 2007-10-26 → 2007-11-01 (+6d) |  | -96d → -100d |
| 339 | Incorporate Stakeholder Feedback on C1 UI Mockups | 2007-10-05 → 2007-10-11 (+6d) | 2007-10-18 → 2007-10-24 (+6d) |  | -97d → -101d |
| 340 | Incorporate Stakeholder Feedback on 2.x Mockups | 2007-10-19 → 2007-10-25 (+6d) | 2007-10-22 → 2007-10-26 (+4d) |  | -97d → -101d |
| 341 | Collaborate with Documentation to Support Online Help, User Guides | 2007-10-23 → 2007-10-29 (+6d) | 2007-10-29 → 2007-11-02 (+4d) |  | -97d → -101d |
| 342 | **Update 2.x Use Cases** | 2007-10-05 → 2007-10-11 (+6d) | 2007-10-10 → 2007-10-16 (+6d) |  | -83.5d → -87.5d |
| 343 | UC Manage Institutional Groups | 2007-10-05 → 2007-10-11 (+6d) | 2007-10-05 → 2007-10-11 (+6d) |  | -83.5d → -87.5d |
| 344 | UC Update Project Proposal | 2007-10-08 → 2007-10-12 (+4d) | 2007-10-08 → 2007-10-12 (+4d) |  | -83.5d → -87.5d |
| 345 | UC Register For An Account | 2007-10-08 → 2007-10-12 (+4d) | 2007-10-09 → 2007-10-15 (+6d) |  | -83.5d → -87.5d |
| 346 | UC Manage Collaborators | 2007-10-09 → 2007-10-15 (+6d) | 2007-10-10 → 2007-10-16 (+6d) |  | -83.5d → -87.5d |
| 347 | **Analysis and Design** | 2007-10-05 → 2007-10-11 (+6d) | 2007-10-30 → 2007-11-05 (+6d) |  | -98d → -102d |
| 348 | Complete C1 Use Case Designs | 2007-10-05 → 2007-10-11 (+6d) | 2007-10-11 → 2007-10-17 (+6d) |  | -98d → -102d |
| 349 | Revise Domain Object (Logical) Model as Needed | 2007-10-12 → 2007-10-18 (+6d) | 2007-10-15 → 2007-10-19 (+4d) |  | -98d → -102d |
| 350 | Support Analysis Services Integration as Needed | 2007-10-16 → 2007-10-22 (+6d) | 2007-10-30 → 2007-11-05 (+6d) |  | -98d → -102d |
| 351 | Update Software Architecture Document | 2007-10-16 → 2007-10-22 (+6d) | 2007-10-22 → 2007-10-26 (+4d) |  | -92d → -96d |
| 359 | **Test** | 2007-10-05 → 2007-10-11 (+6d) |  | 16d → 12d |  |
| 362 | Load 1.x Data to DEV | 2007-10-05 → 2007-10-11 (+6d) | 2007-10-08 → 2007-10-12 (+4d) |  | -81.15d → -85.15d |
| 363 | **Environment** | 2007-10-05 → 2007-10-11 (+6d) | 2007-10-05 → 2007-10-11 (+6d) |  | -81d → -85d |
| 364 | Update Build and Deploy Plan with SCM Initiative | 2007-10-05 → 2007-10-11 (+6d) | 2007-10-05 → 2007-10-11 (+6d) |  | -81d → -85d |
| 365 | **Configuration and Change Management** | 2007-10-05 → 2007-10-11 (+6d) |  | 17d → 13d |  |
| 366 | Manage Gforge Content | 2007-10-05 → 2007-10-11 (+6d) | 2007-10-05 → 2007-10-11 (+6d) |  | -81d → -85d |
| 369 | **Construction - Iteration 3** | 2007-11-01 → 2007-11-07 (+6d) | 2007-11-29 → 2007-12-05 (+6d) |  | -100d → -104d |
| 370 | **Project Management** | 2007-11-02 → 2007-11-08 (+6d) | 2007-11-29 → 2007-12-05 (+6d) |  | -100d → -104d |
| 371 | Weekly Status Meetings | 2007-11-02 → 2007-11-08 (+6d) | 2007-11-29 → 2007-12-05 (+6d) |  | -100d → -104d |
| 372 | Dev Team Iteration Plan | 2007-11-02 → 2007-11-08 (+6d) | 2007-11-02 → 2007-11-08 (+6d) |  | -81d → -85d |
| 373 | Prepare Beta Release Plan | 2007-11-02 → 2007-11-08 (+6d) | 2007-11-05 → 2007-11-09 (+4d) |  | -82d → -86d |
| 374 | Organize Feedback from Beta Testers | 2007-11-02 → 2007-11-08 (+6d) | 2007-11-02 → 2007-11-08 (+6d) |  | -81d → -85d |
| 375 | C2 Assessment | 2007-11-02 → 2007-11-08 (+6d) | 2007-11-02 → 2007-11-08 (+6d) |  | -81d → -85d |
| 377 | Plan for Next Iteration | 2007-11-02 → 2007-11-08 (+6d) | 2007-11-02 → 2007-11-08 (+6d) |  | -81d → -85d |
| 378 | **Finalize Deliverables** | 2007-11-02 → 2007-11-08 (+6d) | 2007-11-15 → 2007-11-16 (+1d) | 10d → 7d | -90d → -91d |
| 379 | Deliver C3 Plan | 2007-11-02 → 2007-11-08 (+6d) | 2007-11-06 → 2007-11-12 (+6d) |  | -87d → -91d |
| 380 | Update Beta Release Plan | 2007-11-07 → 2007-11-13 (+6d) | 2007-11-07 → 2007-11-13 (+6d) |  | -87d → -91d |
| 382 | Finalize T1 Iteration Plan | 2007-11-08 → 2007-11-14 (+6d) | 2007-11-09 → 2007-11-15 (+6d) |  | -87d → -91d |
| 383 | Update Risk List | 2007-11-12 → 2007-11-16 (+4d) | 2007-11-12 → 2007-11-16 (+4d) |  | -87d → -91d |
| 384 | **Requirements** | 2007-11-02 → 2007-11-08 (+6d) |  | 18d → 14d |  |
| 385 | Update Vision and UC Summary with 2.x Priorities | 2007-11-02 → 2007-11-08 (+6d) | 2007-11-05 → 2007-11-09 (+4d) |  | -88d → -92d |
| 386 | Incorporate Stakeholder Feedback on C2 Use Cases | 2007-11-06 → 2007-11-12 (+6d) | 2007-11-07 → 2007-11-13 (+6d) |  | -88d → -92d |
| 387 | Incorporate Stakeholder Feedback on C2 UI Mockups | 2007-11-08 → 2007-11-14 (+6d) | 2007-11-08 → 2007-11-14 (+6d) |  | -88d → -92d |
| 388 | Incorporate Stakeholder Feedback on 2.x Mockups | 2007-11-09 → 2007-11-15 (+6d) | 2007-11-13 → 2007-11-19 (+6d) |  | -88d → -92d |
| 390 | **Detail Additional 2.x Use Cases** | 2007-11-02 → 2007-11-08 (+6d) | 2007-11-09 → 2007-11-15 (+6d) |  | -86d → -90d |
| 391 | UC Organize Workspace | 2007-11-02 → 2007-11-08 (+6d) | 2007-11-05 → 2007-11-09 (+4d) |  | -86d → -90d |
| 392 | UC Search for Arrays Using Natural Text | 2007-11-06 → 2007-11-12 (+6d) | 2007-11-07 → 2007-11-13 (+6d) |  | -86d → -90d |

| ID | Task | Start | Finish | Total float |
| --- | --- | --- | --- | --- |
| 393 | UC Import Contextual Data | 2007-11-08 → 2007-11-14 (+6d) | 2007-11-09 → 2007-11-15 (+6d) | -86d → -90d |
| 394 | **Analysis and Design** | 2007-11-02 → 2007-11-08 (+6d) | 2007-11-07 → 2007-11-13 (+6d) | -84d → -88d |
| 395 | Review 2.0 Use Case Designs with 2.x in mind | 2007-11-02 → 2007-11-08 (+6d) | 2007-11-05 → 2007-11-09 (+4d) | -84d → -88d |
| 396 | Revise Domain Object (Logical) Model as Needed | 2007-11-02 → 2007-11-08 (+6d) | 2007-11-02 → 2007-11-08 (+6d) | -81d → -85d |
| 397 | Support Analysis Services Integration as Needed | 2007-11-02 → 2007-11-08 (+6d) | 2007-11-06 → 2007-11-12 (+6d) | -83d → -87d |
| 398 | Update Software Architecture Document | 2007-11-06 → 2007-11-12 (+6d) | 2007-11-07 → 2007-11-13 (+6d) | -84d → -88d |
| 399 | **Implementation** | 2007-11-01 → 2007-11-07 (+6d) | 2007-11-26 → 2007-11-30 (+4d) | -97d → -101d |
| 400 | Fix Defects Found in Alpha Release | 2007-11-01 → 2007-11-07 (+6d) | 2007-11-15 → 2007-11-21 (+6d) | -90d → -94d |
| 401 | Fix Defects Found in Beta Release | 2007-11-08 → 2007-11-14 (+6d) | 2007-11-26 → 2007-11-30 (+4d) | -97d → -101d |
| 402 | Create caArray 2.0 Installer + Data Migrator | 2007-11-02 → 2007-11-08 (+6d) | 2007-11-08 → 2007-11-14 (+6d) | -97d → -101d |
| 403 | **Test** | 2007-11-02 → 2007-11-08 (+6d) | 2007-11-29 → 2007-12-05 (+6d) | -100d → -104d |
| 406 | Load 1.x Data from DEV to QA to STAGE | 2007-11-02 → 2007-11-08 (+6d) | 2007-11-29 → 2007-12-05 (+6d) | -100d → -104d |
| 409 | **Configuration and Change Management** | 2007-11-02 → 2007-11-08 (+6d) | 2007-11-29 → 2007-12-05 (+6d) | -100d → -104d |
| 410 | Manage Gforge Content | 2007-11-02 → 2007-11-08 (+6d) | 2007-11-29 → 2007-12-05 (+6d) | -100d → -104d |
| 413 | C3 Complete | 2007-11-29 → 2007-12-05 (+6d) | 2007-11-29 → 2007-12-05 (+6d) | -100d → -104d |
| 414 | **Transition Phase** | 2007-11-29 → 2007-12-05 (+6d) | 2007-12-14 → 2007-12-20 (+6d) | -100d → -104d |
| 415 | **Transition - Iteration 1** | 2007-11-29 → 2007-12-05 (+6d) | 2007-12-14 → 2007-12-20 (+6d) | -100d → -104d |
| 416 | **Project Management** | 2007-11-30 → 2007-12-06 (+6d) | 2007-12-13 → 2007-12-19 (+6d) | -99d → -103d |
| 417 | Weekly Status Meetings | 2007-11-30 → 2007-12-06 (+6d) | 2007-12-13 → 2007-12-19 (+6d) | -99d → -103d |
| 418 | Dev Team Iteration Plan | 2007-11-30 → 2007-12-06 (+6d) | 2007-11-30 → 2007-12-06 (+6d) | -90d → -94d |
| 419 | Prepare GA Release Plan | 2007-11-30 → 2007-12-06 (+6d) | 2007-12-03 → 2007-12-07 (+4d) | -91d → -95d |
| 420 | Organize Feedback from Beta Testers | 2007-11-30 → 2007-12-06 (+6d) | 2007-11-30 → 2007-12-06 (+6d) | -90d → -94d |
| 421 | C3 Assessment | 2007-11-30 → 2007-12-06 (+6d) | 2007-11-30 → 2007-12-06 (+6d) | -90d → -94d |
| 422 | T1 Review | 2007-11-30 → 2007-12-06 (+6d) | 2007-11-30 → 2007-12-06 (+6d) | -90d → -94d |
| 423 | Plan for Next Iteration | 2007-11-30 → 2007-12-06 (+6d) | 2007-11-30 → 2007-12-06 (+6d) | -90d → -94d |
| 424 | **Finalize Deliverables** | 2007-11-30 → 2007-12-06 (+6d) | 2007-12-10 → 2007-12-14 (+4d) | -96d → -100d |
| 425 | Deliver T1 Plan | 2007-11-30 → 2007-12-06 (+6d) | 2007-12-04 → 2007-12-10 (+6d) | -96d → -100d |
| 426 | Prepare GA Release Plan | 2007-12-05 → 2007-12-11 (+6d) | 2007-12-05 → 2007-12-11 (+6d) | -96d → -100d |
| 427 | November Status Report | 2007-11-30 → 2007-12-06 (+6d) | 2007-11-30 → 2007-12-06 (+6d) | -90d → -94d |
| 428 | Finalize T1 Iteration Plan | 2007-12-06 → 2007-12-12 (+6d) | 2007-12-07 → 2007-12-13 (+6d) | -96d → -100d |
| 429 | Update Risk List | 2007-12-10 → 2007-12-14 (+4d) | 2007-12-10 → 2007-12-14 (+4d) | -96d → -100d |
| 430 | **Requirements** | 2007-11-30 → 2007-12-06 (+6d) | 2007-12-06 → 2007-12-12 (+6d) | -94d → -98d |
| 431 | Finalize Documentation for GA Release | 2007-11-30 → 2007-12-06 (+6d) | 2007-12-06 → 2007-12-12 (+6d) | -94d → -98d |
| 432 | **Analysis and Design** | 2007-11-30 → 2007-12-06 (+6d) | 2007-11-30 → 2007-12-06 (+6d) | -90d → -94d |
| 433 | Model Manipulation as needed | 2007-11-30 → 2007-12-06 (+6d) | 2007-11-30 → 2007-12-06 (+6d) | -90d → -94d |
| 434 | **Implementation** | 2007-11-29 → 2007-12-05 (+6d) | 2007-12-13 → 2007-12-19 (+6d) | -99d → -103d |
| 435 | Complete Targeted Defects for GA | 2007-11-29 → 2007-12-05 (+6d) | 2007-12-13 → 2007-12-19 (+6d) | -99d → -103d |
| 436 | Complete caArray 2.0 Installer + Data Migrator | 2007-11-30 → 2007-12-06 (+6d) | 2007-12-13 → 2007-12-19 (+6d) | -99d → -103d |
| 437 | **Test** | 2007-11-30 → 2007-12-06 (+6d) | 2007-12-14 → 2007-12-19 (+5d) | -99d → -103d |
| 440 | Load 1.x Data from DEV to QA to STAGE to PROD | 2007-11-30 → 2007-12-06 (+6d) | 2007-12-13 → 2007-12-19 (+6d) | -99d → -103d |
| 443 | **Configuration and Change Management** | 2007-11-30 → 2007-12-06 (+6d) | 2007-12-14 → 2007-12-20 (+6d) | -100d → -104d |
| 444 | Manage Gforge Content | 2007-11-30 → 2007-12-06 (+6d) | 2007-12-13 → 2007-12-19 (+6d) | -100d → -104d |
| 445 | Prioritize 2.0 Defects and UC for 2.x | 2007-12-14 → 2007-12-20 (+6d) | 2007-12-14 → 2007-12-20 (+6d) | -100d → -104d |
| 447 | T1 Complete | 2007-12-14 → 2007-12-20 (+6d) | 2007-12-14 → 2007-12-20 (+6d) | -100d → -104d |

## Version 22 (saved 2007-08-22)

Note of the change: updated through 8-21

Last finish 2007-12-20 → 2007-12-14 (-6d). Complete tasks 126 → 135.

Changed:

| ID | Task | Start | Finish | Duration | Complete | Total float | Predecessors | Other |
| --- | --- | --- | --- | --- | --- | --- | --- | --- |
| 1 | **caArray 2.0** |  | 2007-12-20 → 2007-12-14 (-6d) | 189d → 185d | 38% → 42% | -76d → -72d |  |  |
| 73 | **Elaboration Phase** |  | 2007-09-12 → 2007-09-06 (-6d) | 62.7d → 58.7d | 64% → 75% | -5d → -1d |  |  |
| 139 | **Elaboration - Iteration 2** |  | 2007-09-12 → 2007-09-06 (-6d) | 33.7d → 29.7d | 39% → 57% | -5d → -1d |  |  |
| 140 | **Project Management** |  |  |  | 53% → 61% |  |  |  |
| 143 | E2 Review | 2007-08-13 → 2007-08-24 (+11d) | 2007-08-13 → 2007-08-24 (+11d) |  |  | -82d → -91d |  | constraint start no earlier than 2007-08-13 → start no earlier than 2007-08-24 |
| 144 | Weekly Status Meetings |  |  |  | 40% → 60% |  |  |  |
| 145 | Hold Dev to QA Handoff |  | 2007-08-17 A |  | 50% → 100% | -86d → none |  |  |
| 147 | **Finalize Deliverables** |  |  |  | 54% → 60% |  |  |  |
| 149 | Update Risk List |  |  |  | 50% → 80% |  |  |  |
| 153 | **Requirements** |  | 2007-09-04 → 2007-09-06 (+2d) | 27.7d → 29.7d | 25% → 48% | -2d → -4d |  |  |
| 154 | Incorporate Stakeholder Feedback on Vision and Supp Spec |  |  |  | 40% → 80% |  |  |  |
| 155 | Incorporate Stakeholder Feedback on E1 Use Cases |  |  |  | 20% → 50% |  |  |  |
| 156 | UX Modeling/Wireframes (from E1 deferred) |  | 2007-08-17 → 2007-08-24 (+7d) | 5d → 10d |  | -98d → -100d |  |  |
| 157 | UI Mockups for Prioritized Use Cases | 2007-08-20 → 2007-08-27 (+7d) | 2007-08-28 → 2007-08-30 (+2d) | 7d → 4d |  | -98d → -100d |  |  |
| 158 | Stylesheet Framework (from E1 deferred) | 2007-08-29 → 2007-08-31 (+2d) | 2007-09-04 → 2007-09-06 (+2d) |  |  | -98d → -100d |  |  |
| 159 | Capture Special Requirements for SNPs |  |  |  | 20% → 50% |  |  |  |
| 165 | **Detail C1 Use Cases** |  |  |  | 50% → 67% | -1d → 0d |  |  |
| 168 | UC Search Using Filters | 2007-08-10 A |  |  | 0% → 50% |  |  |  |
| 169 | **Analysis and Design** |  |  |  | 41% → 67% |  |  |  |
| 171 | Harmonization of Model with caBIG |  |  |  | 20% → 80% |  |  |  |
| 172 | **Use-Case Design** |  |  |  | 44% → 41% |  |  |  |
| 173 | Manage Project Permissions |  |  |  | 33% → 10% |  |  |  |
| 175 | Login | 2007-08-06 A | 2007-08-06 A |  | 0% → 100% | -76.56d → none |  |  |
| 176 | **Subsystem Design** |  |  |  | 61% → 63% |  |  |  |
| 177 | FileAccessService |  |  |  | 31% → 50% |  |  |  |
| 184 | External Review: Grid API | 2007-08-14 A | 2007-08-14 A |  | 0% → 100% | -83d → none |  |  |
| 187 | **Implementation** |  | 2007-09-12 → 2007-09-06 (-6d) | 31d → 27d | 47% → 68% | -15d → -1d |  |  |
| 193 | **Subsystem Implementation** |  |  |  | 28% → 65% | -8d → -5d |  |  |
| 194 | FileAccessService | 2007-08-21 A |  |  | 0% → 50% | -94d → -88d |  |  |
| 195 | MageTabParser: Validation |  | 2007-08-22 A |  | 50% → 100% | -99d → none |  |  |
| 196 | ArrayDataService: Validation | 2007-08-23 A | 2007-08-27 A |  | 0% → 100% | -99d → none |  |  |
| 197 | ArrayDesignService: Validation | 2007-08-28 → 2007-08-15 A (-13d) | 2007-08-29 → 2007-08-16 A (-13d) |  | 0% → 100% | -99d → none |  |  |
| 200 | Remote API Grid Implementation |  |  |  | 80% → 90% |  |  |  |
| 201 | **Implement Use Cases** | 2007-08-20 A | 2007-09-06 → 2007-09-05 (-1d) | 14d → 13d | 0% → 18% | -100d → -12d |  |  |
| 202 | Manage Project Permissions |  | 2007-09-05 → 2007-09-04 (-1d) | 4d → 3d |  | -104d → -100d |  | constraint none → start no earlier than 2007-08-28 |
| 203 | Validate Project Data Files | 2007-09-06 → 2007-09-05 (-1d) | 2007-09-06 → 2007-09-05 (-1d) |  |  | -100d → -99d |  |  |
| 204 | Login | 2007-08-20 A |  |  | 0% → 90% | -94d → -89d |  |  |
| 205 | **Implement Additional Array Design Parsers** | 2007-08-22 → 2007-08-31 A (+9d) | 2007-09-07 → 2007-09-06 (-1d) | 13d → 5d |  | -104d → -5d |  |  |
| 206 | Illumina (deferred) | 2007-08-22 → 2007-08-31 A (+9d) | 2007-08-24 → 2007-08-31 A (+7d) | 3d → 0d | 0% → 100% | -94d → none |  |  |
| 207 | Affymetrix SNP | 2007-09-06 → 2007-09-05 (-1d) | 2007-09-07 → 2007-09-06 (-1d) |  |  | -104d → -100d |  | constraint none → start no earlier than 2007-08-27 |
| 208 | **Implement Additional Array Data Parsers** | 2007-09-07 → 2007-08-27 A (-11d) | 2007-09-12 → 2007-09-06 (-6d) | 3d → 8d |  | -104d → 0d |  |  |
| 209 | Illumina (deferred) | 2007-09-07 → 2007-09-06 A (-1d) | 2007-09-07 → 2007-09-06 A (-1d) |  | 0% → 100% | -101d → none |  | constraint none → start no earlier than 2007-08-22 |
| 210 | Affymetrix SNP | 2007-09-10 → 2007-09-03 (-7d) | 2007-09-11 → 2007-09-04 (-7d) |  |  | -104d → -98d | 206, 207 → 207 | constraint none → start no earlier than 2007-09-03 |
| 211 | Affymetrix CHP | 2007-09-12 → 2007-08-27 (-16d) | 2007-09-12 → 2007-08-27 (-16d) |  |  | -104d → -92d | 210 → none | constraint none → start no earlier than 2007-08-27 |
| 212 | **Test** | 2007-08-14 A → 2007-08-17 A (+3d) |  | 12.8d → 10d | 2% → 16% | -10.8d → -5d |  |  |
| 215 | Import Data Files Test Suite | 2007-08-23 A |  |  | 0% → 40% |  |  |  |
| 217 | **Finalize Deliverables** | 2007-08-14 A → 2007-08-17 A (+3d) |  | 12.8d → 10d | 10% → 50% | -10.8d → -5d |  |  |
| 218 | Release Test Plan | 2007-08-14 A → 2007-08-22 A (+8d) | 2007-08-16 → 2007-08-23 (+7d) |  | 10% → 50% | -93.2d → -95d |  |  |
| 219 | Release Build R2_0_0_QA1 | 2007-08-17 A | 2007-08-17 A |  | 0% → 100% | -85d → none |  | was named Release Build E2A |
| 220 | Release Build R2_0_0_QA2 |  |  |  |  |  |  | was named Release Build E2B |
| 228 | **Configuration and Change Management** |  |  |  | 10% → 25% |  |  |  |
| 229 | Manage Gforge Content |  |  |  | 10% → 25% |  |  |  |
| 230 | Elaboration 2 Complete | 2007-09-07 → 2007-09-06 (-1d) | 2007-09-07 → 2007-09-06 (-1d) |  |  | -101d → -99d |  |  |
| 231 | **Construction Phase** | 2007-09-10 → 2007-09-07 (-3d) | 2007-12-05 → 2007-11-29 (-6d) | 63d → 60d |  | -104d → -100d |  |  |
| 232 | **Construction - Iteration 1** | 2007-09-10 → 2007-09-07 (-3d) | 2007-10-10 → 2007-10-04 (-6d) | 23d → 20d |  | -101d → -100d |  |  |
| 233 | **Project Management** | 2007-09-13 → 2007-09-07 (-6d) | 2007-10-10 → 2007-10-04 (-6d) |  |  | -64d → -60d |  |  |
| 234 | Weekly Status Meetings | 2007-09-13 → 2007-09-07 (-6d) | 2007-10-10 → 2007-10-04 (-6d) |  |  | -64d → -60d |  |  |
| 235 | Dev Team Iteration Plan | 2007-09-13 → 2007-09-07 (-6d) | 2007-09-13 → 2007-09-07 (-6d) |  |  | -48d → -44d |  |  |
| 236 | Meet with Documentation to support UC Transition | 2007-09-14 → 2007-09-10 (-4d) | 2007-09-14 → 2007-09-10 (-4d) |  |  | -48d → -44d |  |  |
| 237 | Meet with App Support to Validate UC's and Overall Product Releases | 2007-09-17 → 2007-09-11 (-6d) | 2007-09-17 → 2007-09-11 (-6d) |  |  | -48d → -44d |  |  |
| 238 | E2 Assessment | 2007-09-18 → 2007-09-12 (-6d) | 2007-09-18 → 2007-09-12 (-6d) |  |  | -48d → -44d |  |  |
| 241 | **Finalize Deliverables** | 2007-09-13 → 2007-09-07 (-6d) | 2007-10-05 → 2007-10-01 (-4d) |  |  | -61d → -57d |  |  |
| 242 | Deliver C1 Plan | 2007-09-13 → 2007-09-07 (-6d) | 2007-09-17 → 2007-09-11 (-6d) |  |  | -47d → -43d |  |  |
| 244 | Update Alpha and Beta Release Plan | 2007-09-13 → 2007-09-07 (-6d) | 2007-10-05 → 2007-10-01 (-4d) |  |  | -61d → -57d |  |  |
| 245 | August Status Report | 2007-09-13 → 2007-09-07 (-6d) | 2007-09-13 → 2007-09-07 (-6d) |  |  | -44.5d → -40.5d |  |  |
| 246 | Finalize C2 Iteration Plans | 2007-09-13 → 2007-09-07 (-6d) | 2007-10-05 → 2007-10-01 (-4d) |  |  | -61d → -57d |  |  |
| 247 | **Requirements** | 2007-09-13 → 2007-09-07 (-6d) |  | 16d → 20d |  |  |  |  |
| 248 | Incorporate Stakeholder Feedback on Vision and Supp Spec | 2007-09-13 → 2007-09-07 (-6d) | 2007-10-04 → 2007-09-28 (-6d) |  |  | -60d → -56d |  |  |
| 249 | Incorporate Stakeholder Feedback on E2 Use Cases | 2007-09-13 → 2007-09-07 (-6d) | 2007-10-04 → 2007-09-28 (-6d) |  |  | -60d → -56d |  |  |
| 251 | **Detail C1 Use Cases** | 2007-09-13 → 2007-09-07 (-6d) | 2007-09-18 → 2007-09-12 (-6d) |  |  | -58d → -54d |  |  |

| ID | Task | Start | Finish | Duration | Total float |
| --- | --- | --- | --- | --- | --- |
| 252 | UC Manage Institutional Groups | 2007-09-13 → 2007-09-07 (-6d) | 2007-09-13 → 2007-09-07 (-6d) |  | -58d → -54d |
| 253 | UC Update Project Proposal | 2007-09-14 → 2007-09-10 (-4d) | 2007-09-14 → 2007-09-10 (-4d) |  | -50.5d → -46.5d |
| 254 | UC Register For An Account | 2007-09-14 → 2007-09-10 (-4d) | 2007-09-17 → 2007-09-11 (-6d) |  | -50.5d → -46.5d |
| 255 | UC Manage Collaborators | 2007-09-17 → 2007-09-11 (-6d) | 2007-09-18 → 2007-09-12 (-6d) |  | -50.5d → -46.5d |
| 256 | Create C1 Wireframes and Mockups | 2007-09-18 → 2007-09-12 (-6d) | 2007-09-21 → 2007-09-17 (-4d) |  | -50.5d → -46.5d |
| 257 | **Detail 2.x Use Cases** | 2007-09-13 → 2007-09-07 (-6d) | 2007-09-20 → 2007-09-14 (-6d) |  | -55d → -51d |
| 258 | UC Organize Workspace | 2007-09-13 → 2007-09-07 (-6d) | 2007-09-14 → 2007-09-10 (-4d) |  | -55d → -51d |
| 259 | UC Approve Project | 2007-09-17 → 2007-09-11 (-6d) | 2007-09-17 → 2007-09-11 (-6d) |  | -55d → -51d |
| 260 | UC Assign Project | 2007-09-17 → 2007-09-11 (-6d) | 2007-09-17 → 2007-09-11 (-6d) |  | -55d → -51d |
| 261 | UC Search for Arrays Using Natural Text | 2007-09-18 → 2007-09-12 (-6d) | 2007-09-19 → 2007-09-13 (-6d) |  | -55d → -51d |
| 262 | UC Import Contextual Data | 2007-09-20 → 2007-09-14 (-6d) | 2007-09-20 → 2007-09-14 (-6d) |  | -55d → -51d |
| 263 | Create 2.x Wireframes and Mockups | 2007-09-21 → 2007-09-17 (-4d) | 2007-09-27 → 2007-09-21 (-6d) |  | -55d → -51d |
| 264 | **Analysis and Design** | 2007-09-13 → 2007-09-07 (-6d) |  | 13d → 17d | -58d → -57d |
| 265 | **Use Case Design** | 2007-09-14 → 2007-09-10 (-4d) |  | 4d → 8d | -58d → -54d |
| 266 | Manage Institutional Groups | 2007-09-14 → 2007-09-10 (-4d) | 2007-09-14 → 2007-09-10 (-4d) |  | -58d → -54d |
| 267 | Register for an Account | 2007-09-18 → 2007-09-12 (-6d) | 2007-09-18 → 2007-09-12 (-6d) |  | -51d → -47d |
| 268 | Manage Collaborators | 2007-09-19 → 2007-09-13 (-6d) | 2007-09-19 → 2007-09-13 (-6d) |  | -51d → -47d |
| 271 | **Finalize SubSystem Design** | 2007-09-13 → 2007-09-07 (-6d) |  | 5d → 9d |  |
| 272 | FileAccessService | 2007-09-13 → 2007-09-07 (-6d) | 2007-09-13 → 2007-09-07 (-6d) |  | -58d → -54d |
| 273 | MageTabParser: Validation | 2007-09-13 → 2007-09-07 (-6d) | 2007-09-13 → 2007-09-07 (-6d) |  | -57d → -53d |
| 276 | Remote API Grid Implementation | 2007-09-13 → 2007-09-07 (-6d) | 2007-09-13 → 2007-09-07 (-6d) |  | -57d → -53d |
| 277 | PermissionsManagementService | 2007-09-14 → 2007-09-10 (-4d) | 2007-09-14 → 2007-09-10 (-4d) |  | -57d → -53d |
| 278 | Authorization Mechanism | 2007-09-17 → 2007-09-11 (-6d) | 2007-09-17 → 2007-09-11 (-6d) |  | -57d → -53d |
| 282 | **Implementation** | 2007-09-10 → 2007-09-07 (-3d) |  | 18d → 19d |  |
| 284 | **Complete Elaboration Use Cases** | 2007-09-10 → 2007-09-13 (+3d) |  | 16d → 13d | -57d → -59d |
| 285 | Implement UC Login | 2007-09-10 → 2007-09-13 (+3d) | 2007-09-10 → 2007-09-13 (+3d) |  | -42d → -45d |
| 286 | Implement UC Acquire Project Data via API | 2007-09-10 → 2007-09-13 (+3d) | 2007-09-10 → 2007-09-13 (+3d) |  | -42d → -45d |
| 288 | Implement UC Manage Project Permissions | 2007-09-10 → 2007-09-13 (+3d) | 2007-09-11 → 2007-09-14 (+3d) |  | -43d → -46d |
| 289 | Implement Validate Project Data | 2007-09-10 → 2007-09-13 (+3d) | 2007-09-10 → 2007-09-13 (+3d) |  | -42d → -45d |
| 293 | **Begin C1 Use Cases** | 2007-09-17 → 2007-09-11 (-6d) |  | 12d → 16d |  |
| 294 | Manage Institutional Groups | 2007-09-17 → 2007-09-11 (-6d) | 2007-09-18 → 2007-09-12 (-6d) |  | -58d → -54d |
| 295 | Manage Collaborators | 2007-09-20 → 2007-09-19 (-1d) | 2007-09-21 → 2007-09-20 (-1d) |  | -51d → -50d |
| 298 | **Complete Subsystem Implementation** | 2007-09-13 → 2007-09-07 (-6d) |  | 15d → 19d |  |
| 303 | PermissionsManagement | 2007-09-13 → 2007-09-07 (-6d) | 2007-09-14 → 2007-09-10 (-4d) |  | -46d → -42d |
| 304 | Object Access Authorization Mechanism | 2007-09-13 → 2007-09-07 (-6d) | 2007-09-14 → 2007-09-10 (-4d) |  | -46d → -42d |
| 305 | Remote API Grid Implementation | 2007-09-13 → 2007-09-07 (-6d) | 2007-09-19 → 2007-09-13 (-6d) |  | -49d → -45d |
| 306 | **Test** | 2007-09-13 → 2007-09-07 (-6d) |  | 14d → 18d |  |
| 307 | Project Data Files Test Suite | 2007-09-13 → 2007-09-07 (-6d) | 2007-09-13 → 2007-09-07 (-6d) |  | -45d → -41d |
| 308 | Validation Test Suite | 2007-09-13 → 2007-09-07 (-6d) | 2007-09-13 → 2007-09-07 (-6d) |  | -45d → -41d |
| 312 | **Environment** | 2007-09-13 → 2007-09-10 (-3d) | 2007-09-28 → 2007-09-25 (-3d) |  | -56d → -53d |
| 313 | Acquire STAGE Environment | 2007-09-13 → 2007-09-10 (-3d) | 2007-09-13 → 2007-09-10 (-3d) |  | -56d → -53d |
| 314 | Initiate DEV to QA to STAGE Deployment | 2007-09-13 → 2007-09-10 (-3d) | 2007-09-27 → 2007-09-24 (-3d) |  | -56d → -53d |
| 315 | Update Build and Deploy Plan with SCM Initiative | 2007-09-27 → 2007-09-24 (-3d) | 2007-09-28 → 2007-09-25 (-3d) |  | -56d → -53d |
| 316 | Update ARC Document | 2007-09-28 → 2007-09-25 (-3d) | 2007-09-28 → 2007-09-25 (-3d) |  | -56d → -53d |
| 317 | **Configuration and Change Management** | 2007-09-13 → 2007-09-07 (-6d) | 2007-10-10 → 2007-10-04 (-6d) |  | -104d → -100d |
| 318 | Manage G-Forge Content | 2007-09-13 → 2007-09-07 (-6d) | 2007-10-10 → 2007-10-04 (-6d) |  | -104d → -100d |
| 319 | C1 Complete | 2007-10-10 → 2007-10-04 (-6d) | 2007-10-10 → 2007-10-04 (-6d) |  | -104d → -100d |
| 320 | **Construction - Iteration 2** | 2007-10-08 → 2007-10-05 (-3d) | 2007-11-07 → 2007-11-01 (-6d) | 23d → 20d | -104d → -100d |
| 321 | **Project Management** | 2007-10-11 → 2007-10-05 (-6d) | 2007-11-07 → 2007-11-01 (-6d) |  | -104d → -100d |
| 322 | Weekly Status Meetings | 2007-10-11 → 2007-10-05 (-6d) | 2007-11-07 → 2007-11-01 (-6d) |  | -104d → -100d |
| 323 | Dev Team Iteration Plan | 2007-10-11 → 2007-10-05 (-6d) | 2007-10-11 → 2007-10-05 (-6d) |  | -85d → -81d |
| 324 | Prepare Alpha Release Plan and Organization | 2007-10-11 → 2007-10-10 (-1d) | 2007-10-12 → 2007-10-11 (-1d) |  | -85.67d → -84.67d |
| 326 | Evolve RMP to support QA Process | 2007-10-11 → 2007-10-05 (-6d) | 2007-10-15 → 2007-10-09 (-6d) |  | -87d → -83d |
| 327 | C1 Assessment | 2007-10-11 → 2007-10-05 (-6d) | 2007-10-15 → 2007-10-09 (-6d) |  | -86.22d → -82.22d |
| 330 | **Finalize Deliverables** | 2007-10-11 → 2007-10-05 (-6d) |  | 13d → 17d |  |
| 331 | Deliver C2 Plan | 2007-10-11 → 2007-10-05 (-6d) | 2007-10-11 → 2007-10-05 (-6d) |  | -85d → -81d |
| 336 | **Requirements** | 2007-10-11 → 2007-10-05 (-6d) | 2007-11-02 → 2007-10-29 (-4d) |  | -101d → -97d |
| 337 | Incorporate Stakeholder Feedback on Vision and Supp Spec | 2007-10-11 → 2007-10-05 (-6d) | 2007-11-01 → 2007-10-26 (-6d) |  | -100d → -96d |
| 338 | Incorporate Stakeholder Feedback on C1 Use Cases | 2007-10-11 → 2007-10-05 (-6d) | 2007-11-01 → 2007-10-26 (-6d) |  | -100d → -96d |
| 339 | Incorporate Stakeholder Feedback on C1 UI Mockups | 2007-10-11 → 2007-10-05 (-6d) | 2007-10-24 → 2007-10-18 (-6d) |  | -101d → -97d |
| 340 | Incorporate Stakeholder Feedback on 2.x Mockups | 2007-10-25 → 2007-10-19 (-6d) | 2007-10-26 → 2007-10-22 (-4d) |  | -101d → -97d |
| 341 | Collaborate with Documentation to Support Online Help, User Guides | 2007-10-29 → 2007-10-23 (-6d) | 2007-11-02 → 2007-10-29 (-4d) |  | -101d → -97d |
| 342 | **Update 2.x Use Cases** | 2007-10-11 → 2007-10-05 (-6d) | 2007-10-16 → 2007-10-10 (-6d) |  | -87.5d → -83.5d |
| 343 | UC Manage Institutional Groups | 2007-10-11 → 2007-10-05 (-6d) | 2007-10-11 → 2007-10-05 (-6d) |  | -87.5d → -83.5d |
| 344 | UC Update Project Proposal | 2007-10-12 → 2007-10-08 (-4d) | 2007-10-12 → 2007-10-08 (-4d) |  | -87.5d → -83.5d |
| 345 | UC Register For An Account | 2007-10-12 → 2007-10-08 (-4d) | 2007-10-15 → 2007-10-09 (-6d) |  | -87.5d → -83.5d |
| 346 | UC Manage Collaborators | 2007-10-15 → 2007-10-09 (-6d) | 2007-10-16 → 2007-10-10 (-6d) |  | -87.5d → -83.5d |
| 347 | **Analysis and Design** | 2007-10-11 → 2007-10-05 (-6d) | 2007-11-05 → 2007-10-30 (-6d) |  | -102d → -98d |
| 348 | Complete C1 Use Case Designs | 2007-10-11 → 2007-10-05 (-6d) | 2007-10-17 → 2007-10-11 (-6d) |  | -102d → -98d |
| 349 | Revise Domain Object (Logical) Model as Needed | 2007-10-18 → 2007-10-12 (-6d) | 2007-10-19 → 2007-10-15 (-4d) |  | -102d → -98d |

| ID | Task | Start | Finish | Duration | Total float |
| --- | --- | --- | --- | --- | --- |
| 350 | Support Analysis Services Integration as Needed | 2007-10-22 → 2007-10-16 (-6d) | 2007-11-05 → 2007-10-30 (-6d) |  | -102d → -98d |
| 351 | Update Software Architecture Document | 2007-10-22 → 2007-10-16 (-6d) | 2007-10-26 → 2007-10-22 (-4d) |  | -96d → -92d |
| 352 | **Implementation** | 2007-10-08 → 2007-10-11 (+3d) | 2007-10-29 → 2007-10-31 (+2d) | 16d → 15d | -97d → -99d |
| 353 | **Complete C1 Use Cases** | 2007-10-08 → 2007-10-11 (+3d) | 2007-10-26 → 2007-10-31 (+5d) |  | -96d → -99d |
| 354 | Manage Institutional Groups | 2007-10-08 → 2007-10-11 (+3d) | 2007-10-10 → 2007-10-15 (+5d) |  | -84d → -87d |
| 355 | Manage Collaborators | 2007-10-08 → 2007-10-11 (+3d) | 2007-10-10 → 2007-10-15 (+5d) |  | -84d → -87d |
| 356 | Register for an Account | 2007-10-08 → 2007-10-11 (+3d) | 2007-10-10 → 2007-10-15 (+5d) |  | -84d → -87d |
| 357 | Report on Work Accomplished | 2007-10-08 → 2007-10-11 (+3d) | 2007-10-26 → 2007-10-31 (+5d) |  | -96d → -99d |
| 359 | **Test** | 2007-10-11 → 2007-10-05 (-6d) |  | 12d → 16d |  |
| 362 | Load 1.x Data to DEV | 2007-10-11 → 2007-10-05 (-6d) | 2007-10-12 → 2007-10-08 (-4d) |  | -85.15d → -81.15d |
| 363 | **Environment** | 2007-10-11 → 2007-10-05 (-6d) | 2007-10-11 → 2007-10-05 (-6d) |  | -85d → -81d |
| 364 | Update Build and Deploy Plan with SCM Initiative | 2007-10-11 → 2007-10-05 (-6d) | 2007-10-11 → 2007-10-05 (-6d) |  | -85d → -81d |
| 365 | **Configuration and Change Management** | 2007-10-11 → 2007-10-05 (-6d) |  | 13d → 17d |  |
| 366 | Manage Gforge Content | 2007-10-11 → 2007-10-05 (-6d) | 2007-10-11 → 2007-10-05 (-6d) |  | -85d → -81d |
| 369 | **Construction - Iteration 3** | 2007-11-07 → 2007-11-01 (-6d) | 2007-12-05 → 2007-11-29 (-6d) |  | -104d → -100d |
| 370 | **Project Management** | 2007-11-08 → 2007-11-02 (-6d) | 2007-12-05 → 2007-11-29 (-6d) |  | -104d → -100d |
| 371 | Weekly Status Meetings | 2007-11-08 → 2007-11-02 (-6d) | 2007-12-05 → 2007-11-29 (-6d) |  | -104d → -100d |
| 372 | Dev Team Iteration Plan | 2007-11-08 → 2007-11-02 (-6d) | 2007-11-08 → 2007-11-02 (-6d) |  | -85d → -81d |
| 373 | Prepare Beta Release Plan | 2007-11-08 → 2007-11-02 (-6d) | 2007-11-09 → 2007-11-05 (-4d) |  | -86d → -82d |
| 374 | Organize Feedback from Beta Testers | 2007-11-08 → 2007-11-02 (-6d) | 2007-11-08 → 2007-11-02 (-6d) |  | -85d → -81d |
| 375 | C2 Assessment | 2007-11-08 → 2007-11-02 (-6d) | 2007-11-08 → 2007-11-02 (-6d) |  | -85d → -81d |
| 377 | Plan for Next Iteration | 2007-11-08 → 2007-11-02 (-6d) | 2007-11-08 → 2007-11-02 (-6d) |  | -85d → -81d |
| 378 | **Finalize Deliverables** | 2007-11-08 → 2007-11-02 (-6d) | 2007-11-16 → 2007-11-15 (-1d) | 7d → 10d | -91d → -90d |
| 379 | Deliver C3 Plan | 2007-11-08 → 2007-11-02 (-6d) | 2007-11-12 → 2007-11-06 (-6d) |  | -91d → -87d |
| 380 | Update Beta Release Plan | 2007-11-13 → 2007-11-07 (-6d) | 2007-11-13 → 2007-11-07 (-6d) |  | -91d → -87d |
| 382 | Finalize T1 Iteration Plan | 2007-11-14 → 2007-11-08 (-6d) | 2007-11-15 → 2007-11-09 (-6d) |  | -91d → -87d |
| 383 | Update Risk List | 2007-11-16 → 2007-11-12 (-4d) | 2007-11-16 → 2007-11-12 (-4d) |  | -91d → -87d |
| 384 | **Requirements** | 2007-11-08 → 2007-11-02 (-6d) |  | 14d → 18d |  |
| 385 | Update Vision and UC Summary with 2.x Priorities | 2007-11-08 → 2007-11-02 (-6d) | 2007-11-09 → 2007-11-05 (-4d) |  | -92d → -88d |
| 386 | Incorporate Stakeholder Feedback on C2 Use Cases | 2007-11-12 → 2007-11-06 (-6d) | 2007-11-13 → 2007-11-07 (-6d) |  | -92d → -88d |
| 387 | Incorporate Stakeholder Feedback on C2 UI Mockups | 2007-11-14 → 2007-11-08 (-6d) | 2007-11-14 → 2007-11-08 (-6d) |  | -92d → -88d |
| 388 | Incorporate Stakeholder Feedback on 2.x Mockups | 2007-11-15 → 2007-11-09 (-6d) | 2007-11-19 → 2007-11-13 (-6d) |  | -92d → -88d |
| 390 | **Detail Additional 2.x Use Cases** | 2007-11-08 → 2007-11-02 (-6d) | 2007-11-15 → 2007-11-09 (-6d) |  | -90d → -86d |
| 391 | UC Organize Workspace | 2007-11-08 → 2007-11-02 (-6d) | 2007-11-09 → 2007-11-05 (-4d) |  | -90d → -86d |
| 392 | UC Search for Arrays Using Natural Text | 2007-11-12 → 2007-11-06 (-6d) | 2007-11-13 → 2007-11-07 (-6d) |  | -90d → -86d |
| 393 | UC Import Contextual Data | 2007-11-14 → 2007-11-08 (-6d) | 2007-11-15 → 2007-11-09 (-6d) |  | -90d → -86d |
| 394 | **Analysis and Design** | 2007-11-08 → 2007-11-02 (-6d) | 2007-11-13 → 2007-11-07 (-6d) |  | -88d → -84d |
| 395 | Review 2.0 Use Case Designs with 2.x in mind | 2007-11-08 → 2007-11-02 (-6d) | 2007-11-09 → 2007-11-05 (-4d) |  | -88d → -84d |
| 396 | Revise Domain Object (Logical) Model as Needed | 2007-11-08 → 2007-11-02 (-6d) | 2007-11-08 → 2007-11-02 (-6d) |  | -85d → -81d |
| 397 | Support Analysis Services Integration as Needed | 2007-11-08 → 2007-11-02 (-6d) | 2007-11-12 → 2007-11-06 (-6d) |  | -87d → -83d |
| 398 | Update Software Architecture Document | 2007-11-12 → 2007-11-06 (-6d) | 2007-11-13 → 2007-11-07 (-6d) |  | -88d → -84d |
| 399 | **Implementation** | 2007-11-07 → 2007-11-01 (-6d) | 2007-11-30 → 2007-11-26 (-4d) |  | -101d → -97d |
| 400 | Fix Defects Found in Alpha Release | 2007-11-07 → 2007-11-01 (-6d) | 2007-11-21 → 2007-11-15 (-6d) |  | -94d → -90d |
| 401 | Fix Defects Found in Beta Release | 2007-11-14 → 2007-11-08 (-6d) | 2007-11-30 → 2007-11-26 (-4d) |  | -101d → -97d |
| 402 | Create caArray 2.0 Installer + Data Migrator | 2007-11-08 → 2007-11-02 (-6d) | 2007-11-14 → 2007-11-08 (-6d) |  | -101d → -97d |
| 403 | **Test** | 2007-11-08 → 2007-11-02 (-6d) | 2007-12-05 → 2007-11-29 (-6d) |  | -104d → -100d |
| 406 | Load 1.x Data from DEV to QA to STAGE | 2007-11-08 → 2007-11-02 (-6d) | 2007-12-05 → 2007-11-29 (-6d) |  | -104d → -100d |
| 409 | **Configuration and Change Management** | 2007-11-08 → 2007-11-02 (-6d) | 2007-12-05 → 2007-11-29 (-6d) |  | -104d → -100d |
| 410 | Manage Gforge Content | 2007-11-08 → 2007-11-02 (-6d) | 2007-12-05 → 2007-11-29 (-6d) |  | -104d → -100d |
| 413 | C3 Complete | 2007-12-05 → 2007-11-29 (-6d) | 2007-12-05 → 2007-11-29 (-6d) |  | -104d → -100d |
| 414 | **Transition Phase** | 2007-12-05 → 2007-11-29 (-6d) | 2007-12-20 → 2007-12-14 (-6d) |  | -104d → -100d |
| 415 | **Transition - Iteration 1** | 2007-12-05 → 2007-11-29 (-6d) | 2007-12-20 → 2007-12-14 (-6d) |  | -104d → -100d |
| 416 | **Project Management** | 2007-12-06 → 2007-11-30 (-6d) | 2007-12-19 → 2007-12-13 (-6d) |  | -103d → -99d |
| 417 | Weekly Status Meetings | 2007-12-06 → 2007-11-30 (-6d) | 2007-12-19 → 2007-12-13 (-6d) |  | -103d → -99d |
| 418 | Dev Team Iteration Plan | 2007-12-06 → 2007-11-30 (-6d) | 2007-12-06 → 2007-11-30 (-6d) |  | -94d → -90d |
| 419 | Prepare GA Release Plan | 2007-12-06 → 2007-11-30 (-6d) | 2007-12-07 → 2007-12-03 (-4d) |  | -95d → -91d |
| 420 | Organize Feedback from Beta Testers | 2007-12-06 → 2007-11-30 (-6d) | 2007-12-06 → 2007-11-30 (-6d) |  | -94d → -90d |
| 421 | C3 Assessment | 2007-12-06 → 2007-11-30 (-6d) | 2007-12-06 → 2007-11-30 (-6d) |  | -94d → -90d |
| 422 | T1 Review | 2007-12-06 → 2007-11-30 (-6d) | 2007-12-06 → 2007-11-30 (-6d) |  | -94d → -90d |
| 423 | Plan for Next Iteration | 2007-12-06 → 2007-11-30 (-6d) | 2007-12-06 → 2007-11-30 (-6d) |  | -94d → -90d |
| 424 | **Finalize Deliverables** | 2007-12-06 → 2007-11-30 (-6d) | 2007-12-14 → 2007-12-10 (-4d) |  | -100d → -96d |
| 425 | Deliver T1 Plan | 2007-12-06 → 2007-11-30 (-6d) | 2007-12-10 → 2007-12-04 (-6d) |  | -100d → -96d |
| 426 | Prepare GA Release Plan | 2007-12-11 → 2007-12-05 (-6d) | 2007-12-11 → 2007-12-05 (-6d) |  | -100d → -96d |
| 427 | November Status Report | 2007-12-06 → 2007-11-30 (-6d) | 2007-12-06 → 2007-11-30 (-6d) |  | -94d → -90d |
| 428 | Finalize T1 Iteration Plan | 2007-12-12 → 2007-12-06 (-6d) | 2007-12-13 → 2007-12-07 (-6d) |  | -100d → -96d |
| 429 | Update Risk List | 2007-12-14 → 2007-12-10 (-4d) | 2007-12-14 → 2007-12-10 (-4d) |  | -100d → -96d |
| 430 | **Requirements** | 2007-12-06 → 2007-11-30 (-6d) | 2007-12-12 → 2007-12-06 (-6d) |  | -98d → -94d |
| 431 | Finalize Documentation for GA Release | 2007-12-06 → 2007-11-30 (-6d) | 2007-12-12 → 2007-12-06 (-6d) |  | -98d → -94d |
| 432 | **Analysis and Design** | 2007-12-06 → 2007-11-30 (-6d) | 2007-12-06 → 2007-11-30 (-6d) |  | -94d → -90d |
| 433 | Model Manipulation as needed | 2007-12-06 → 2007-11-30 (-6d) | 2007-12-06 → 2007-11-30 (-6d) |  | -94d → -90d |

| ID | Task | Start | Finish | Total float |
| --- | --- | --- | --- | --- |
| 434 | **Implementation** | 2007-12-05 → 2007-11-29 (-6d) | 2007-12-19 → 2007-12-13 (-6d) | -103d → -99d |
| 435 | Complete Targeted Defects for GA | 2007-12-05 → 2007-11-29 (-6d) | 2007-12-19 → 2007-12-13 (-6d) | -103d → -99d |
| 436 | Complete caArray 2.0 Installer + Data Migrator | 2007-12-06 → 2007-11-30 (-6d) | 2007-12-19 → 2007-12-13 (-6d) | -103d → -99d |
| 437 | **Test** | 2007-12-06 → 2007-11-30 (-6d) | 2007-12-19 → 2007-12-14 (-5d) | -103d → -99d |
| 440 | Load 1.x Data from DEV to QA to STAGE to PROD | 2007-12-06 → 2007-11-30 (-6d) | 2007-12-19 → 2007-12-13 (-6d) | -103d → -99d |
| 443 | **Configuration and Change Management** | 2007-12-06 → 2007-11-30 (-6d) | 2007-12-20 → 2007-12-14 (-6d) | -104d → -100d |
| 444 | Manage Gforge Content | 2007-12-06 → 2007-11-30 (-6d) | 2007-12-19 → 2007-12-13 (-6d) | -104d → -100d |
| 445 | Prioritize 2.0 Defects and UC for 2.x | 2007-12-20 → 2007-12-14 (-6d) | 2007-12-20 → 2007-12-14 (-6d) | -104d → -100d |
| 447 | T1 Complete | 2007-12-20 → 2007-12-14 (-6d) | 2007-12-20 → 2007-12-14 (-6d) | -104d → -100d |

## Version 23 (saved 2007-08-29)

Note of the change: updated through tuesday

Last finish stays 2007-12-14. Complete tasks 135 → 142.

Added:

| ID | Task | Duration | Start | Finish | Constraint | Resources |
| --- | --- | --- | --- | --- | --- | --- |
| 187 | Create caArray GRID Document | 1d | 2007-08-30 | 2007-08-30 | start no earlier than 2007-08-30 | etavela [80%] |

Changed:

| ID | Task | Start | Finish | Duration | Complete | Total float | Other |
| --- | --- | --- | --- | --- | --- | --- | --- |
| 1 | **caArray 2.0** |  |  |  | 42% → 44% |  |  |
| 73 | **Elaboration Phase** |  |  |  | 75% → 80% |  |  |
| 139 | **Elaboration - Iteration 2** |  |  |  | 57% → 65% |  |  |
| 140 | **Project Management** |  |  |  | 61% → 62% |  |  |
| 144 | Weekly Status Meetings |  |  |  | 60% → 80% |  |  |
| 153 | **Requirements** |  |  |  | 48% → 67% |  |  |
| 154 | Incorporate Stakeholder Feedback on Vision and Supp Spec |  |  |  | 80% → 90% |  |  |
| 155 | Incorporate Stakeholder Feedback on E1 Use Cases |  |  |  | 50% → 75% |  |  |
| 156 | UX Modeling/Wireframes (from E1 deferred) |  |  |  | 10% → 50% | -100d → -91d |  |
| 157 | UI Mockups for Prioritized Use Cases | 2007-08-27 A |  |  | 0% → 25% |  |  |
| 165 | **Detail C1 Use Cases** |  | 2007-08-10 A |  | 67% → 100% | 0d → none |  |
| 166 | UC Navigate Repository |  | 2007-08-08 A |  | 50% → 100% | -79d → none |  |
| 168 | UC Search Using Filters |  | 2007-08-10 A |  | 50% → 100% | -81d → none |  |
| 169 | **Analysis and Design** |  |  |  | 67% → 69% |  |  |
| 177 | **Subsystem Design** |  |  |  | 63% → 69% |  |  |
| 178 | FileAccessService |  | 2007-08-09 A |  | 50% → 100% | -79.58d → none |  |
| 188 | **Implementation** |  |  |  | 68% → 71% |  |  |
| 194 | **Subsystem Implementation** |  |  |  | 65% → 68% |  |  |
| 195 | FileAccessService |  | 2007-08-21 A |  | 50% → 100% | -88d → none |  |
| 201 | Remote API Grid Implementation |  |  | 5d → 4.83d | 90% → 93% | -86d → -85.83d | resources tparnell → tparnell; smatyas [50%] |
| 202 | **Implement Use Cases** |  |  |  | 18% → 38% | -12d → 0d |  |
| 204 | Validate Project Data Files | 2007-09-05 A | 2007-09-05 A |  | 0% → 100% | -99d → none |  |
| 208 | Affymetrix SNP (CEL & CHP) |  |  |  |  |  | was named Affymetrix SNP |
| 211 | Affymetrix SNP (CEL & CHP) |  |  |  |  |  | was named Affymetrix SNP |
| 212 | Affymetrix Gene Expression CHP |  |  |  |  |  | was named Affymetrix CHP |
| 222 | **Environment** |  | 2007-08-16 A |  | 89% → 100% | 0d → none |  |
| 226 | Development Process "Quick Start" |  | 2007-08-08 A |  | 50% → 100% | -78.2d → none |  |
| 227 | Complete DEV to QA Integration |  | 2007-08-09 A |  | 75% → 100% | 0d → none |  |
| 229 | **Configuration and Change Management** |  |  |  | 25% → 50% |  |  |
| 230 | Manage Gforge Content |  |  |  | 25% → 50% |  |  |
| 285 | **Complete Elaboration Use Cases** | 2007-09-13 → 2007-09-07 (-6d) |  | 13d → 17d |  | -59d → -57d |  |
| 286 | Implement UC Login | 2007-09-13 → 2007-09-07 (-6d) | 2007-09-13 → 2007-09-07 (-6d) |  |  | -45d → -41d |  |
| 287 | Implement UC Acquire Project Data via API | 2007-09-13 → 2007-09-07 (-6d) | 2007-09-13 → 2007-09-07 (-6d) |  |  | -45d → -41d |  |
| 289 | Implement UC Manage Project Permissions | 2007-09-13 → 2007-09-07 (-6d) | 2007-09-14 → 2007-09-10 (-4d) |  |  | -46d → -42d |  |
| 290 | Implement Validate Project Data | 2007-09-13 → 2007-09-10 (-3d) | 2007-09-13 → 2007-09-10 (-3d) |  |  | -45d → -42d |  |
| 353 | **Implementation** | 2007-10-11 → 2007-10-05 (-6d) | 2007-10-31 → 2007-10-29 (-2d) | 15d → 17d |  | -99d → -97d |  |
| 354 | **Complete C1 Use Cases** | 2007-10-11 → 2007-10-05 (-6d) | 2007-10-31 → 2007-10-25 (-6d) |  |  | -99d → -95d |  |
| 355 | Manage Institutional Groups | 2007-10-11 → 2007-10-05 (-6d) | 2007-10-15 → 2007-10-09 (-6d) |  |  | -87d → -83d |  |
| 356 | Manage Collaborators | 2007-10-11 → 2007-10-05 (-6d) | 2007-10-15 → 2007-10-09 (-6d) |  |  | -87d → -83d |  |
| 357 | Register for an Account | 2007-10-11 → 2007-10-05 (-6d) | 2007-10-15 → 2007-10-09 (-6d) |  |  | -87d → -83d |  |
| 358 | Report on Work Accomplished | 2007-10-11 → 2007-10-05 (-6d) | 2007-10-31 → 2007-10-25 (-6d) |  |  | -99d → -95d |  |

## Version 24 (saved 2007-08-30)

Last finish stays 2007-12-14. Complete tasks 142 → 144.

Added:

| ID | Task | Duration | Start | Finish | Predecessors | Constraint | Resources |
| --- | --- | --- | --- | --- | --- | --- | --- |
| 203 | Manage Project Permissions (deferred) | 0d | 2007-09-03 | 2007-09-03 | 219, 199 | start no earlier than 2007-08-28 | bmason |
| 269 | Navigate Repository | 1d? | 2007-09-14 | 2007-09-14 | 268 |  | bmason |
| 270 | Search | 1d? | 2007-09-17 | 2007-09-17 | 269 |  | bmason |
| 277 | Revise and Document Grid API | 3d | 2007-09-07 | 2007-09-11 |  |  | etavela; tparnell |

Removed: 270 Update Project Proposal; 273 FileAccessService; 274 MageTabParser: Validation; 275 ArrayDataService: Validation; 276 ArrayDesignService: Validation; 277 Remote API Grid Implementation; 284 Update Remote Java API; 298 Report on Work Accomplished; 300 FileAccessService; 301 MageTabParser: Validation; 302 ArrayDataService: Validation; 303 ArrayDesignService: Validation

Changed:

| ID | Task | Start | Finish | Duration | Complete | Total float | Predecessors | Other |
| --- | --- | --- | --- | --- | --- | --- | --- | --- |
| 1 | **caArray 2.0** |  |  | 185d → 185d? | 44% → 46% | -72d → -71d |  |  |
| 73 | **Elaboration Phase** |  |  |  | 80% → 85% | -1d → 0d |  |  |
| 139 | **Elaboration - Iteration 2** |  |  |  | 65% → 75% | -1d → 0d |  |  |
| 140 | **Project Management** |  |  |  | 62% → 71% |  |  |  |
| 143 | E2 Review - formal review not executed | 2007-08-24 A |  |  | 0% → 50% |  |  | was named E2 Review |
| 146 | Plan for Next Iteration |  |  |  | 50% → 80% |  |  |  |
| 147 | **Finalize Deliverables** |  |  |  | 60% → 69% |  |  |  |
| 152 | Finalize C1 Iteration Plans |  |  |  | 50% → 75% |  |  |  |
| 153 | **Requirements** |  |  |  | 67% → 75% | -4d → 0d |  |  |
| 155 | Incorporate Stakeholder Feedback on E1 Use Cases |  |  |  | 75% → 90% |  |  |  |
| 158 | Stylesheet Framework (from E1 deferred) | 2007-08-31 A |  |  | 0% → 25% |  |  |  |
| 159 | Capture Special Requirements for SNPs | 2007-08-02 A → 2007-08-30 A (+28d) | 2007-08-08 → 2007-09-05 (+28d) | 5d → 4.17d | 50% → 60% | -79d → -98.17d |  | resources bgendleman → bgendleman; bmason |
| 169 | **Analysis and Design** |  |  |  | 69% → 72% |  |  |  |
| 171 | Harmonization of Model with caBIG |  |  |  | 80% → 90% |  |  |  |
| 188 | **Implementation** |  |  |  | 71% → 78% | -1d → 0d |  |  |
| 194 | **Subsystem Implementation** |  | 2007-09-03 → 2007-09-05 (+2d) | 16d → 18d | 68% → 71% | -5d → 0d |  |  |
| 199 | PermissionsManagement (deferred) |  |  |  |  | -100d → -97d |  | was named PermissionsManagement |
| 200 | Object Access Authorization Mechanism (deferred) |  |  |  |  |  |  | was named Object Access Authorization Mechanism |
| 201 | Remote API Grid Implementation (expanded scope) |  | 2007-08-17 → 2007-09-05 (+19d) | 4.83d → 18d | 93% → 80% | -85.83d → -99d |  | was named Remote API Grid Implementation |
| 202 | **Implement Use Cases** |  | 2007-09-05 → 2007-09-06 (+1d) | 13d → 14d | 38% → 99% |  |  |  |
| 204 | Validate Project Data Files |  | 2007-09-05 A → 2007-09-06 A (+1d) | 1d → 2d |  |  | 267 → 203 | resources etavela → etavela; bmason |
| 205 | Login |  | 2007-08-20 → 2007-08-21 A (+1d) | 1d → 2d | 90% → 100% | -89d → none |  |  |
| 206 | **Implement Additional Array Design Parsers** |  | 2007-09-06 → 2007-09-05 (-1d) | 5d → 3.5d | 0% → 50% | -5d → 0d |  |  |
| 208 | Affymetrix SNP (CEL & CHP -deferred) | 2007-09-05 → 2007-08-31 A (-5d) | 2007-09-06 → 2007-09-05 (-1d) | 2d → 3d | 0% → 50% | -100d → -98.5d | 198, 267 → 198, 203 | was named Affymetrix SNP (CEL & CHP) |
| 209 | **Implement Additional Array Data Parsers** | 2007-08-27 A → 2007-08-30 A (+3d) |  | 8d → 5d | 0% → 17% |  |  |  |
| 211 | Affymetrix SNP (CEL & CHP) - deferred |  |  |  |  |  |  | was named Affymetrix SNP (CEL & CHP) |
| 212 | Affymetrix Gene Expression CHP | 2007-08-27 → 2007-08-30 A (+3d) | 2007-08-27 → 2007-08-30 (+3d) |  | 0% → 50% | -92d → -95d |  | constraint start no earlier than 2007-08-27 → start no earlier than 2007-08-30; resources bmason → etavela [80%] |
| 213 | **Test** |  | 2007-08-31 → 2007-09-06 (+6d) | 10d → 15d | 16% → 36% | -5d → 0d |  |  |
| 214 | Validate Project Data Files Test Cases | 2007-08-21 → 2007-09-04 A (+14d) | 2007-08-21 → 2007-09-05 (+15d) | 1d → 2d | 0% → 10% | -89d → -99d |  | resources etavela → etavela; bmason |
| 215 | Manage Permission Test Cases (deferred) | 2007-08-22 → 2007-08-23 A (+1d) | 2007-08-22 → 2007-08-23 A (+1d) |  | 0% → 100% | -89d → none |  | was named Manage Permission Test Cases |
| 216 | Import Data Files Test Suite | 2007-08-23 A → 2007-08-31 A (+8d) | 2007-08-23 → 2007-09-03 (+11d) | 1d → 2d | 40% → 20% | -94d → -97d |  | resources etavela → etavela; bmason |
| 217 | Remote Java API Test Suite | 2007-08-24 → 2007-09-04 A (+11d) | 2007-08-29 → 2007-09-06 (+8d) | 4d → 3d | 0% → 33% | -94d → -100d |  | resources smatyas [50%]; etavela → smatyas [75%]; etavela [150%] |
| 218 | **Finalize Deliverables** |  | 2007-08-31 → 2007-09-03 (+3d) | 10d → 12d |  | -5d → 0d |  |  |
| 219 | Release Test Plan | 2007-08-22 A → 2007-08-31 A (+9d) | 2007-08-23 → 2007-09-03 (+11d) |  |  | -95d → -97d |  | resources etavela → etavela; bgendleman [50%]; bmason; tparnell |
| 229 | **Configuration and Change Management** |  |  |  | 50% → 80% |  |  |  |
| 230 | Manage Gforge Content |  |  |  | 50% → 80% |  |  |  |
| 232 | **Construction Phase** |  |  | 60d → 60d? |  |  |  |  |
| 233 | **Construction - Iteration 1** |  |  | 20d → 20d? |  |  |  |  |
| 265 | **Analysis and Design** |  |  | 17d → 17d? |  |  |  |  |
| 266 | **Use Case Design** |  | 2007-09-19 → 2007-09-18 (-1d) | 8d → 7d? |  | -54d → -52d |  |  |
| 267 | Manage Project Permissions | 2007-08-31 → 2007-09-10 (+10d) | 2007-09-04 → 2007-09-12 (+8d) |  |  | -100d → -44d | 219, 199 → none | constraint start no earlier than 2007-08-28 → start no earlier than 2007-09-10; resources bmason → tparnell; bmason |
| 268 | Register for an Account | 2007-09-12 → 2007-09-13 (+1d) | 2007-09-12 → 2007-09-13 (+1d) |  |  | -47d → -50d |  |  |
| 271 | Manage Collaborators | 2007-09-13 → 2007-09-18 (+5d) | 2007-09-13 → 2007-09-18 (+5d) |  |  | -47d → -50d | 256, 268 → 256, 270 |  |
| 272 | Manage Institutional Groups |  |  |  |  | -54d → -52d | 253, FileAccessService → 253 |  |
| 273 | Manage Users | 2007-09-18 → 2007-09-17 (-1d) | 2007-09-19 → 2007-09-18 (-1d) |  |  | -53d → -48d | Update Project Proposal → none | was named Report on Work Accomplished |
| 274 | **Finalize SubSystem Design** |  | 2007-09-19 → 2007-09-12 (-7d) | 9d → 4d |  | -59d → -52d |  |  |
| 275 | PermissionsManagementService | 2007-09-10 → 2007-09-07 (-3d) | 2007-09-10 → 2007-09-11 (+1d) | 1d → 3d |  | -53d → -52d | Remote API Grid Implementation → none |  |
| 276 | Authorization Mechanism | 2007-09-11 → 2007-09-12 (+1d) | 2007-09-11 → 2007-09-12 (+1d) |  |  | -53d → -52d |  |  |
| 278 | External Review: Revised Grid API | 2007-09-18 → 2007-09-24 (+6d) | 2007-09-18 → 2007-09-24 (+6d) |  |  | -50.5d → -54.5d |  | constraint start no earlier than 2007-09-18 → start no earlier than 2007-09-24 |
| 279 | Revise Domain Object Model w/Mentor | 2007-09-19 → 2007-09-24 (+5d) | 2007-09-20 → 2007-09-27 (+7d) | 2d → 3d |  | -50d → -54.5d |  | was named Sumbit Domain Object Model |
| 281 | **Implementation** |  | 2007-10-03 → 2007-09-26 (-7d) | 19d → 14d |  | -59d → -54d |  |  |
| 282 | **Complete Elaboration Use Cases** |  | 2007-10-01 → 2007-09-26 (-5d) | 17d → 14d |  | -57d → -54d |  |  |
| 283 | Implement UC Login |  |  |  |  |  |  | resources jpike → jhedden |
| 284 | Implement UC Acquire Project Data via API |  | 2007-09-07 → 2007-09-10 (+3d) | 1d → 2d |  | -41d → -42d |  | resources tparnell → tparnell [50%] |
| 288 | Integrate Stylesheet Throughout | 2007-09-20 → 2007-09-13 (-7d) | 2007-09-26 → 2007-09-19 (-7d) |  |  | -59d → -52d |  |  |
| 289 | Implement UC Manage Project Data Files (to support sample to file allocation) | 2007-09-27 → 2007-09-20 (-7d) | 2007-10-01 → 2007-09-24 (-7d) |  |  | -59d → -52d |  |  |
| 291 | **Begin C1 Use Cases** |  | 2007-10-02 → 2007-09-20 (-12d) | 16d → 8d |  | -58d → -52d |  |  |
| 292 | Manage Institutional Groups |  |  |  |  | -54d → -52d |  | resources jpike → tparnell |
| 295 | **Complete Subsystem Implementation** |  | 2007-10-03 → 2007-09-13 (-20d) | 19d → 5d |  | -59d → -45d |  |  |

## Version 25 (saved 2007-08-31)

Note of the change: updates from today - more to come once C1 is finalized with resource allocation

Last finish stays 2007-12-14.

Added:

| ID | Task | Duration | Start | Finish |
| --- | --- | --- | --- | --- |
| 188 | Update Supplemental Specification | 1d? | 2007-07-27 | 2007-07-30 |

Changed:

| ID | Task | Start | Duration | Complete |
| --- | --- | --- | --- | --- |
| 73 | **Elaboration Phase** |  | 58.7d → 58.7d? |  |
| 139 | **Elaboration - Iteration 2** |  | 29.7d → 29.7d? | 75% → 74% |
| 169 | **Analysis and Design** |  | 27.7d → 27.7d? | 72% → 71% |
| 185 | **Finalize Deliverables** | 2007-08-29 → 2007-07-27 (-33d) | 2d → 24.7d? |  |

## Version 26 (saved 2007-09-11)

Note of the change: status updated through today, c1 established, c2 - t1 updated with release dates on friday

Last finish stays 2007-12-14. Complete tasks 144 → 179.

Added:

| ID | Task | Duration | Start | Finish | Resources |
| --- | --- | --- | --- | --- | --- |
| 281 | Complete Transition from JSF to Struts 2 | 5d | 2007-09-07 A | 2007-09-13 | jhedden |
| 311 | Incorporate Defect Tracking Specifics | 5d | 2007-09-07 | 2007-09-13 |  |

Removed: 241 C1 Review; 265 Create 2.x Wireframes and Mockups

Changed:

| ID | Task | Start | Finish | Duration | Complete | Total float | Predecessors | Other |
| --- | --- | --- | --- | --- | --- | --- | --- | --- |
| 1 | **caArray 2.0** |  |  | 185d? → 185d | 46% → 52% | -71d → -50d |  |  |
| 73 | **Elaboration Phase** |  | 2007-09-06 A | 58.7d? → 58.7d | 85% → 100% | 0d → none |  |  |
| 139 | **Elaboration - Iteration 2** |  | 2007-09-06 A | 29.7d? → 29.7d | 74% → 100% | 0d → none |  |  |
| 140 | **Project Management** |  | 2007-09-05 A |  | 71% → 100% | 0d → none |  |  |
| 143 | E2 Review - formal review not executed |  | 2007-08-24 A |  | 50% → 100% | -91d → none |  |  |
| 144 | Weekly Status Meetings |  | 2007-09-05 A |  | 80% → 100% | 0d → none |  |  |
| 146 | Plan for Next Iteration |  | 2007-08-27 A |  | 80% → 100% | -92d → none |  |  |
| 147 | **Finalize Deliverables** |  | 2007-08-28 A |  | 69% → 100% | 0d → none |  |  |
| 149 | Update Risk List |  | 2007-08-10 A |  | 80% → 100% | 0d → none |  |  |
| 150 | Establish Plan for Alpha and Beta Releases |  | 2007-08-28 A |  | 50% → 100% | -93d → none |  |  |
| 152 | Finalize C1 Iteration Plans |  | 2007-08-27 A |  | 75% → 100% | -92d → none |  |  |
| 153 | **Requirements** |  | 2007-09-06 A |  | 75% → 100% | 0d → none |  |  |
| 154 | Incorporate Stakeholder Feedback on Vision and Supp Spec |  | 2007-08-22 A |  | 90% → 100% | -89d → none |  |  |
| 155 | Incorporate Stakeholder Feedback on E1 Use Cases |  | 2007-08-31 A |  | 90% → 100% | 0d → none |  |  |
| 156 | UX Modeling/Wireframes (from E1 deferred) |  | 2007-08-24 A |  | 50% → 100% | -91d → none |  |  |
| 157 | UI Mockups for Prioritized Use Cases |  | 2007-08-30 A |  | 25% → 100% | -95d → none |  |  |
| 158 | Stylesheet Framework (from E1 deferred) |  | 2007-09-06 A |  | 25% → 100% | -100d → none |  |  |
| 159 | Capture Special Requirements for SNPs |  | 2007-09-05 A |  | 60% → 100% | -98.17d → none |  |  |
| 169 | **Analysis and Design** |  | 2007-09-04 A | 27.7d? → 27.7d | 71% → 100% | 0d → none |  |  |
| 171 | Harmonization of Model with caBIG |  | 2007-09-04 A |  | 90% → 100% | -98d → none |  |  |
| 173 | **Use-Case Design** |  | 2007-08-14 A |  | 41% → 100% | 0d → none |  |  |
| 174 | Manage Project Permissions (Deferred) |  | 2007-08-13 A |  | 10% → 100% | -81.2d → none |  | was named Manage Project Permissions |
| 177 | **Subsystem Design** |  | 2007-08-23 A |  | 69% → 100% | -6d → none |  |  |
| 182 | Remote API Grid Implementation (90% Complete) |  | 2007-08-13 A |  | 90% → 100% | -82d → none |  | was named Remote API Grid Implementation |
| 183 | PermissionsManagementService (Deferred) |  | 2007-08-01 A |  | 25% → 100% | -73.3d → none |  | was named PermissionsManagementService |
| 184 | Authorization Mechanism (Deferred) | 2007-08-20 A | 2007-08-23 A |  | 0% → 100% | -97d → none |  | was named Authorization Mechanism |
| 185 | **Finalize Deliverables** | 2007-07-27 A | 2007-08-30 A | 24.7d? → 24.7d | 0% → 100% | -95d → none |  |  |
| 186 | Update Software Architecture Document (Deferred to C1) | 2007-08-29 A | 2007-08-30 A |  | 0% → 100% | -95d → none |  | was named Update Software Architecture Document |
| 187 | Create caArray GRID Document (Deferred to C1) | 2007-08-30 A | 2007-08-30 A |  | 0% → 100% | -95d → none |  | was named Create caArray GRID Document |
| 188 | Update Supplemental Specification (Partial) | 2007-07-27 A | 2007-07-30 A | 1d? → 1d | 0% → 100% | -71.3d → none |  | was named Update Supplemental Specification |
| 189 | **Implementation** |  | 2007-09-06 A |  | 78% → 100% | 0d → none |  |  |
| 195 | **Subsystem Implementation** |  | 2007-09-05 A |  | 71% → 100% | 0d → none |  |  |
| 200 | PermissionsManagement (deferred) | 2007-08-24 A | 2007-08-30 A |  | 0% → 100% | -97d → none |  |  |
| 201 | Object Access Authorization Mechanism (deferred) | 2007-08-31 A | 2007-09-03 A |  | 0% → 100% | -97d → none |  |  |
| 202 | Remote API Grid Implementation (expanded scope) |  | 2007-09-05 A |  | 80% → 100% | -99d → none |  |  |
| 203 | **Implement Use Cases** |  | 2007-09-06 A |  | 99% → 100% | 0d → none |  |  |
| 204 | Manage Project Permissions (deferred) | 2007-09-03 A | 2007-09-03 A |  | 0% → 100% | -97d → none |  |  |
| 207 | **Implement Additional Array Design Parsers** |  | 2007-09-05 A |  | 50% → 100% | 0d → none |  |  |
| 209 | Affymetrix SNP (CEL & CHP -deferred) |  | 2007-09-05 A |  | 50% → 100% | -98.5d → none |  |  |
| 210 | **Implement Additional Array Data Parsers** |  | 2007-09-06 A |  | 17% → 100% | 0d → none |  |  |
| 212 | Affymetrix SNP (CEL & CHP) - deferred | 2007-09-03 A | 2007-09-04 A |  | 0% → 100% | -98d → none |  |  |
| 213 | Affymetrix Gene Expression CHP |  | 2007-08-30 A |  | 50% → 100% | -95d → none |  |  |
| 214 | **Test** |  | 2007-09-06 A |  | 36% → 100% | 0d → none |  |  |
| 215 | Validate Project Data Files Test Cases |  | 2007-09-05 A |  | 10% → 100% | -99d → none |  |  |
| 217 | Import Data Files Test Suite |  | 2007-09-03 A |  | 20% → 100% | -97d → none |  |  |
| 218 | Remote Java API Test Suite (deferred) |  | 2007-09-06 A |  | 33% → 100% | -100d → none |  | was named Remote Java API Test Suite |
| 219 | **Finalize Deliverables** |  | 2007-09-03 A |  | 50% → 100% | 0d → none |  |  |
| 220 | Release Test Plan |  | 2007-09-03 A |  | 50% → 100% | -97d → none |  |  |
| 222 | Release Build R2_0_0_QA2 | 2007-08-31 A | 2007-08-31 A |  | 0% → 100% | -95d → none |  |  |
| 230 | **Configuration and Change Management** |  | 2007-08-31 A |  | 80% → 100% | 0d → none |  |  |
| 231 | Manage Gforge Content |  | 2007-08-31 A |  | 80% → 100% | -95.3d → none |  |  |
| 232 | Elaboration 2 Complete | 2007-09-06 A | 2007-09-06 A |  | 0% → 100% | -99d → none |  |  |
| 233 | **Construction Phase** | 2007-09-07 A | 2007-11-29 → 2007-11-30 (+1d) | 60d? → 61d | 0% → 2% | -100d → -40d |  |  |
| 234 | **Construction - Iteration 1** | 2007-09-07 A | 2007-10-04 → 2007-10-05 (+1d) | 20d? → 21d | 0% → 4% | -100d → 0d |  |  |
| 235 | **Project Management** | 2007-09-07 A | 2007-10-04 → 2007-10-05 (+1d) | 20d → 21d | 0% → 8% | -60d → 0d |  |  |
| 236 | Weekly Status Meetings | 2007-09-07 A | 2007-10-04 → 2007-10-05 (+1d) | 20d → 21d | 0% → 10% | -60d → -82d |  | resources none → bgendleman [50%]; bmason; etavela [80%] |
| 237 | Dev Team Iteration Plan | 2007-09-07 → 2007-09-14 A (+7d) | 2007-09-07 → 2007-09-14 (+7d) |  | 0% → 50% | -44d → 0d |  | constraint none → finish no earlier than 2007-09-14; resources none → bgendleman [50%]; bmason |
| 238 | Meet with Documentation to support UC Transition | 2007-09-10 → 2007-09-19 (+9d) | 2007-09-10 → 2007-09-19 (+9d) |  |  | -44d → -71.5d |  | constraint none → start no earlier than 2007-09-19; resources none → bgendleman [50%] |
| 239 | Meet with App Support to Validate UC's and Overall Product Releases | 2007-09-11 → 2007-09-20 (+9d) | 2007-09-11 → 2007-09-20 (+9d) |  |  | -44d → -71.5d |  | resources none → bgendleman [50%] |
| 240 | E2 Assessment/C1 Review | 2007-09-12 → 2007-09-21 (+9d) | 2007-09-12 → 2007-09-21 (+9d) | 1d → 0.5d |  | -44d → -71.5d |  | was named E2 Assessment; resources none → bgendleman [50%]; bmason; etavela [80%] |
| 241 | Plan for Next Iteration | 2007-10-01 A |  |  | 0% → 10% | -58d → -79d |  |  |
| 242 | **Finalize Deliverables** | 2007-09-07 A |  |  | 0% → 6% | -57d → -13d |  |  |
| 243 | Deliver C1 Plan | 2007-09-07 A | 2007-09-11 → 2007-09-12 (+1d) | 3d → 4d | 0% → 50% | -43d → -65d |  | resources bgendleman → bgendleman; bmason |
| 246 | August Status Report | 2007-09-07 → 2007-09-17 (+10d) | 2007-09-07 → 2007-09-17 (+10d) |  |  | -40.5d → -67.5d |  | constraint finish no earlier than 2007-08-17 → start no earlier than 2007-09-17 |
| 247 | Finalize C2 Iteration Plans |  | 2007-10-01 → 2007-09-19 (-12d) | 17d → 8.5d |  | -57d → -69.5d |  | resources bgendleman → bgendleman; bmason |
| 248 | **Requirements** | 2007-09-07 A |  |  |  | -60d → -18.5d |  |  |
| 252 | Update and Create C1 + C2 Wireframes and Mockups | 2007-09-12 → 2007-09-07 (-5d) | 2007-09-17 → 2007-09-27 (+10d) | 3d → 15d |  | -46.5d → -76d | 253 → none | was named Create C1 Wireframes and Mockups |
| 253 | **Detail C1 Use Cases** | 2007-09-07 A |  |  | 0% → 7% | -52d → -2d |  |  |
| 255 | UC Update Project Proposal | 2007-09-10 A |  |  | 0% → 50% | -48.5d → -73.5d |  |  |
| 258 | **Detail 2.x Use Cases** | 2007-09-07 → 2007-09-12 (+5d) | 2007-09-14 → 2007-09-25 (+11d) | 6d → 9d |  | -51d → -73.5d | none → 253 |  |

| ID | Task | Start | Finish | Duration | Complete | Total float | Predecessors | Other |
| --- | --- | --- | --- | --- | --- | --- | --- | --- |
| 259 | UC Organize Workspace | 2007-09-07 → 2007-09-12 (+5d) | 2007-09-10 → 2007-09-19 (+9d) | 2d → 5d |  | -51d → -73.5d |  |  |
| 260 | UC Approve Project | 2007-09-11 → 2007-09-19 (+8d) | 2007-09-11 → 2007-09-19 (+8d) |  |  | -51d → -73.5d |  |  |
| 261 | UC Assign Project | 2007-09-11 → 2007-09-20 (+9d) | 2007-09-11 → 2007-09-20 (+9d) |  |  | -51d → -73.5d |  |  |
| 262 | UC Search for Arrays Using Natural Text | 2007-09-12 → 2007-09-20 (+8d) | 2007-09-13 → 2007-09-24 (+11d) |  |  | -51d → -73.5d |  |  |
| 263 | UC Import Contextual Data | 2007-09-14 → 2007-09-24 (+10d) | 2007-09-14 → 2007-09-25 (+11d) |  |  | -51d → -73.5d |  |  |
| 264 | **Analysis and Design** |  |  | 17d? → 17d |  | -57d → -78d |  |  |
| 265 | **Use Case Design** |  |  | 7d? → 7d |  | -52d → -69d |  |  |
| 268 | Navigate Repository |  |  | 1d? → 1d |  | -50d → -71d |  |  |
| 269 | Search |  |  | 1d? → 1d |  | -50d → -71d |  |  |
| 271 | Manage Institutional Groups |  |  |  |  | -52d → -63d |  | resources jpike → jhedden |
| 280 | **Implementation** | 2007-09-07 A | 2007-09-26 → 2007-09-27 (+1d) | 14d → 15d | 0% → 9% | -54d → -10d |  |  |
| 282 | **Complete Elaboration Use Cases** | 2007-09-07 A | 2007-09-26 → 2007-09-27 (+1d) | 14d → 15d | 0% → 10% | -54d → -13d |  |  |
| 284 | Implement UC Acquire Project Data via API | 2007-09-07 A | 2007-09-10 A |  | 0% → 100% | -42d → none |  |  |
| 286 | Implement UC Manage Project Permissions | 2007-09-07 → 2007-09-11 (+4d) | 2007-09-10 → 2007-09-13 (+3d) | 2d → 3d |  | -42d → -66d |  | constraint none → start no earlier than 2007-09-11; resources tparnell → tparnell; dkokotov |
| 288 | Integrate Stylesheet Throughout | 2007-09-13 → 2007-09-18 (+5d) | 2007-09-19 → 2007-09-24 (+5d) |  |  | -52d → -76d |  | resources jpike; bmason; tparnell; etavela [80%] → bmason; tparnell; etavela [80%]; jhedden |
| 289 | Implement UC Manage Project Data Files (to support sample to file allocation) | 2007-09-20 → 2007-09-25 (+5d) | 2007-09-24 → 2007-09-27 (+3d) |  |  | -52d → -76d |  | resources jpike → jhedden |
| 291 | **Begin C1 Use Cases** | 2007-09-11 → 2007-09-14 (+3d) |  | 8d → 5d |  | -52d → -76d |  |  |
| 292 | Manage Institutional Groups | 2007-09-11 → 2007-09-14 (+3d) | 2007-09-12 → 2007-09-17 (+5d) |  |  | -52d → -76d | 271 → none | constraint none → start no earlier than 2007-09-14 |
| 299 | **Test** | 2007-09-07 → 2007-09-14 (+7d) | 2007-10-02 → 2007-10-05 (+3d) | 18d → 15d |  | -58d → -81d |  |  |
| 300 | Validation Test Suite | 2007-09-07 → 2007-09-14 (+7d) | 2007-09-07 → 2007-09-14 (+7d) |  |  | -41d → -67d |  | constraint none → start no earlier than 2007-09-14 |
| 301 | Project Data Files Test Suite | 2007-09-07 → 2007-09-21 (+14d) | 2007-09-07 → 2007-09-21 (+14d) |  |  | -41d → -72d |  | constraint none → start no earlier than 2007-09-21; resources jpike → etavela |
| 303 | Release QA Build C1A | 2007-09-14 → 2007-09-21 (+7d) | 2007-09-14 → 2007-09-21 (+7d) |  |  | -45d → -71d |  | constraint start no earlier than 2007-09-14 → start no earlier than 2007-09-21 |
| 304 | Release QA Build C1B | 2007-09-28 → 2007-10-05 (+7d) | 2007-09-28 → 2007-10-05 (+7d) |  |  | -55d → -81d |  | constraint start no earlier than 2007-09-28 → start no earlier than 2007-10-05 |
| 305 | **Environment** | 2007-09-10 A | 2007-09-25 → 2007-10-02 (+7d) | 12d → 16.5d |  | -53d → -11d |  |  |
| 306 | Acquire STAGE Environment |  | 2007-09-10 → 2007-09-14 (+4d) | 0.5d → 5d |  | -53d → -67d |  |  |
| 307 | Update ARC Document | 2007-09-25 → 2007-09-17 A (-8d) | 2007-09-25 → 2007-09-17 (-8d) |  | 0% → 10% | -53d → -78.5d | 309 → 306 |  |
| 308 | Initiate DEV to QA to STAGE Deployment | 2007-09-10 → 2007-09-17 (+7d) | 2007-09-24 → 2007-10-01 (+7d) |  |  | -53d → -78.5d | 306 → 307 |  |
| 309 | Update Build and Deploy Plan with SCM Initiative | 2007-09-24 → 2007-10-01 (+7d) | 2007-09-25 → 2007-10-02 (+7d) |  |  | -53d → -78.5d |  |  |
| 310 | **Configuration and Change Management** | 2007-09-07 A |  |  | 0% → 8% | -100d → 0d |  |  |
| 312 | Manage G-Forge Content | 2007-09-07 A |  |  | 0% → 10% | -100d → -81d |  |  |
| 313 | C1 Complete | 2007-10-04 → 2007-10-05 (+1d) | 2007-10-04 → 2007-10-05 (+1d) |  |  | -100d → -81d |  | constraint none → start no earlier than 2007-10-05 |
| 314 | **Construction - Iteration 2** | 2007-10-05 → 2007-10-08 (+3d) | 2007-11-01 → 2007-11-02 (+1d) |  |  | -100d → -82d | 313 → 313, 234 |  |
| 315 | **Project Management** | 2007-10-05 → 2007-10-08 (+3d) | 2007-11-01 → 2007-11-02 (+1d) |  |  | -100d → -80d |  |  |
| 316 | Weekly Status Meetings | 2007-10-05 → 2007-10-08 (+3d) | 2007-11-01 → 2007-11-02 (+1d) |  |  | -100d → -80d |  |  |
| 317 | Dev Team Iteration Plan | 2007-10-05 → 2007-10-08 (+3d) | 2007-10-05 → 2007-10-08 (+3d) |  |  | -81d → -61d |  |  |
| 320 | Evolve RMP to support QA Process | 2007-10-05 → 2007-10-08 (+3d) | 2007-10-09 → 2007-10-10 (+1d) |  |  | -83d → -63d |  |  |
| 321 | C1 Assessment | 2007-10-05 → 2007-10-08 (+3d) | 2007-10-09 → 2007-10-10 (+1d) |  |  | -82.22d → -62.22d |  |  |
| 324 | **Finalize Deliverables** | 2007-10-05 → 2007-10-08 (+3d) |  | 17d → 16d |  | -97d → -76d |  |  |
| 325 | Deliver C2 Plan | 2007-10-05 → 2007-10-08 (+3d) | 2007-10-05 → 2007-10-08 (+3d) |  |  | -81d → -61d |  |  |
| 330 | **Requirements** | 2007-10-05 → 2007-10-08 (+3d) | 2007-10-29 → 2007-10-30 (+1d) |  |  | -97d → -77d |  |  |
| 331 | Incorporate Stakeholder Feedback on Vision and Supp Spec | 2007-10-05 → 2007-10-08 (+3d) | 2007-10-26 → 2007-10-29 (+3d) |  |  | -96d → -76d |  |  |
| 332 | Incorporate Stakeholder Feedback on C1 Use Cases | 2007-10-05 → 2007-10-08 (+3d) | 2007-10-26 → 2007-10-29 (+3d) |  |  | -96d → -76d |  |  |
| 333 | Incorporate Stakeholder Feedback on C1 UI Mockups | 2007-10-05 → 2007-10-08 (+3d) | 2007-10-18 → 2007-10-19 (+1d) |  |  | -97d → -77d |  |  |
| 334 | Incorporate Stakeholder Feedback on 2.x Mockups | 2007-10-19 → 2007-10-22 (+3d) | 2007-10-22 → 2007-10-23 (+1d) |  |  | -97d → -77d |  |  |
| 335 | Collaborate with Documentation to Support Online Help, User Guides | 2007-10-23 → 2007-10-24 (+1d) | 2007-10-29 → 2007-10-30 (+1d) |  |  | -97d → -77d |  |  |
| 336 | **Update 2.x Use Cases** | 2007-10-05 → 2007-10-08 (+3d) | 2007-10-10 → 2007-10-11 (+1d) |  |  | -83.5d → -63.5d |  |  |
| 337 | UC Manage Institutional Groups | 2007-10-05 → 2007-10-08 (+3d) | 2007-10-05 → 2007-10-08 (+3d) |  |  | -83.5d → -63.5d |  |  |
| 338 | UC Update Project Proposal | 2007-10-08 → 2007-10-09 (+1d) | 2007-10-08 → 2007-10-09 (+1d) |  |  | -83.5d → -63.5d |  |  |
| 339 | UC Register For An Account | 2007-10-08 → 2007-10-09 (+1d) | 2007-10-09 → 2007-10-10 (+1d) |  |  | -83.5d → -63.5d |  |  |
| 340 | UC Manage Collaborators | 2007-10-09 → 2007-10-10 (+1d) | 2007-10-10 → 2007-10-11 (+1d) |  |  | -83.5d → -63.5d |  |  |
| 341 | **Analysis and Design** | 2007-10-05 → 2007-10-08 (+3d) | 2007-10-30 → 2007-10-31 (+1d) |  |  | -98d → -78d |  |  |
| 342 | Complete C1 Use Case Designs | 2007-10-05 → 2007-10-08 (+3d) | 2007-10-11 → 2007-10-12 (+1d) |  |  | -98d → -78d |  |  |
| 343 | Revise Domain Object (Logical) Model as Needed | 2007-10-12 → 2007-10-15 (+3d) | 2007-10-15 → 2007-10-16 (+1d) |  |  | -98d → -78d |  |  |
| 344 | Support Analysis Services Integration as Needed | 2007-10-16 → 2007-10-17 (+1d) | 2007-10-30 → 2007-10-31 (+1d) |  |  | -98d → -78d |  |  |
| 345 | Update Software Architecture Document | 2007-10-16 → 2007-10-17 (+1d) | 2007-10-22 → 2007-10-23 (+1d) |  |  | -92d → -72d |  |  |
| 346 | **Implementation** | 2007-10-05 → 2007-10-08 (+3d) | 2007-10-29 → 2007-11-02 (+4d) | 17d → 20d |  | -97d → -80d |  |  |
| 347 | **Complete C1 Use Cases** | 2007-10-05 → 2007-10-08 (+3d) | 2007-10-25 → 2007-10-26 (+1d) |  |  | -95d → -75d |  |  |
| 348 | Manage Institutional Groups | 2007-10-05 → 2007-10-08 (+3d) | 2007-10-09 → 2007-10-10 (+1d) |  |  | -83d → -63d |  |  |
| 349 | Manage Collaborators | 2007-10-05 → 2007-10-08 (+3d) | 2007-10-09 → 2007-10-10 (+1d) |  |  | -83d → -63d |  |  |
| 350 | Register for an Account | 2007-10-05 → 2007-10-08 (+3d) | 2007-10-09 → 2007-10-10 (+1d) |  |  | -83d → -63d |  |  |
| 351 | Report on Work Accomplished | 2007-10-05 → 2007-10-08 (+3d) | 2007-10-25 → 2007-10-26 (+1d) |  |  | -95d → -75d |  |  |
| 352 | Fix Defects Found in Alpha Release | 2007-10-12 → 2007-10-22 (+10d) | 2007-10-29 → 2007-11-02 (+4d) | 12d → 10d |  | -97d → -80d |  |  |
| 353 | **Test** | 2007-10-05 → 2007-10-19 (+14d) | 2007-10-26 → 2007-11-02 (+7d) | 16d → 10d |  | -96d → -100d |  |  |
| 354 | Release QA Build C2A - Alpha 1 | 2007-10-12 → 2007-10-19 (+7d) | 2007-10-12 → 2007-10-19 (+7d) |  |  | -97d → -90d |  | constraint start no earlier than 2007-10-12 → finish no earlier than 2007-10-19 |
| 355 | Release QA Build C2B | 2007-10-26 → 2007-11-02 (+7d) | 2007-10-26 → 2007-11-02 (+7d) |  |  | -97d → -100d |  | constraint finish no earlier than 2007-10-26 → finish no earlier than 2007-11-02 |
| 356 | Load 1.x Data to DEV | 2007-10-05 → 2007-10-24 (+19d) | 2007-10-08 → 2007-10-25 (+17d) | 1.15d → 2d |  | -81.15d → -94d |  | constraint none → start no earlier than 2007-10-24 |
| 357 | **Environment** | 2007-10-05 → 2007-10-08 (+3d) | 2007-10-05 → 2007-10-08 (+3d) |  |  | -81d → -61d |  |  |
| 358 | Update Build and Deploy Plan with SCM Initiative | 2007-10-05 → 2007-10-08 (+3d) | 2007-10-05 → 2007-10-08 (+3d) |  |  | -81d → -61d |  |  |
| 359 | **Configuration and Change Management** | 2007-10-05 → 2007-10-08 (+3d) | 2007-10-29 → 2007-11-02 (+4d) | 17d → 20d |  | -97d → -80d |  |  |
| 360 | Manage Gforge Content | 2007-10-05 → 2007-10-08 (+3d) | 2007-10-05 → 2007-10-08 (+3d) |  |  | -81d → -61d |  |  |

| ID | Task | Start | Finish | Duration | Total float | Predecessors | Other |
| --- | --- | --- | --- | --- | --- | --- | --- |
| 361 | Prioritize 2.0 Defects and UC for 2.x | 2007-10-29 → 2007-11-02 (+4d) | 2007-10-29 → 2007-11-02 (+4d) |  | -97d → -80d |  | constraint none → start no earlier than 2007-11-02 |
| 362 | C2 Complete | 2007-10-26 → 2007-11-02 (+7d) | 2007-10-26 → 2007-11-02 (+7d) |  | -96d → -100d |  |  |
| 363 | **Construction - Iteration 3** | 2007-11-01 → 2007-11-05 (+4d) | 2007-11-29 → 2007-11-30 (+1d) |  |  | 362, 314 → 362 |  |
| 364 | **Project Management** | 2007-11-02 → 2007-11-05 (+3d) | 2007-11-29 → 2007-11-30 (+1d) |  |  |  |  |
| 365 | Weekly Status Meetings | 2007-11-02 → 2007-11-05 (+3d) | 2007-11-29 → 2007-11-30 (+1d) |  |  |  | constraint none → start no earlier than 2007-11-05 |
| 366 | Dev Team Iteration Plan | 2007-11-02 → 2007-11-05 (+3d) | 2007-11-02 → 2007-11-05 (+3d) |  |  |  |  |
| 367 | Prepare Beta Release Plan | 2007-11-02 → 2007-11-05 (+3d) | 2007-11-05 → 2007-11-06 (+1d) |  |  |  |  |
| 368 | Organize Feedback from Beta Testers | 2007-11-02 → 2007-11-05 (+3d) | 2007-11-02 → 2007-11-05 (+3d) |  |  |  |  |
| 369 | C2 Assessment | 2007-11-02 → 2007-11-05 (+3d) | 2007-11-02 → 2007-11-05 (+3d) |  |  |  |  |
| 371 | Plan for Next Iteration | 2007-11-02 → 2007-11-05 (+3d) | 2007-11-02 → 2007-11-05 (+3d) |  |  |  |  |
| 372 | **Finalize Deliverables** | 2007-11-02 → 2007-11-05 (+3d) |  | 10d → 9d | -90d → -89d |  |  |
| 373 | Deliver C3 Plan | 2007-11-02 → 2007-11-05 (+3d) | 2007-11-06 → 2007-11-07 (+1d) |  |  |  |  |
| 374 | Update Beta Release Plan | 2007-11-07 → 2007-11-08 (+1d) | 2007-11-07 → 2007-11-08 (+1d) |  |  |  |  |
| 376 | Finalize T1 Iteration Plan | 2007-11-08 → 2007-11-09 (+1d) | 2007-11-09 → 2007-11-12 (+3d) |  |  |  |  |
| 377 | Update Risk List | 2007-11-12 → 2007-11-13 (+1d) | 2007-11-12 → 2007-11-13 (+1d) |  |  |  |  |
| 378 | **Requirements** | 2007-11-02 → 2007-11-05 (+3d) |  | 18d → 17d | -98d → -97d |  |  |
| 379 | Update Vision and UC Summary with 2.x Priorities | 2007-11-02 → 2007-11-05 (+3d) | 2007-11-05 → 2007-11-06 (+1d) |  |  |  |  |
| 380 | Incorporate Stakeholder Feedback on C2 Use Cases | 2007-11-06 → 2007-11-07 (+1d) | 2007-11-07 → 2007-11-08 (+1d) |  |  |  |  |
| 381 | Incorporate Stakeholder Feedback on C2 UI Mockups | 2007-11-08 → 2007-11-09 (+1d) | 2007-11-08 → 2007-11-09 (+1d) |  |  |  |  |
| 382 | Incorporate Stakeholder Feedback on 2.x Mockups | 2007-11-09 → 2007-11-12 (+3d) | 2007-11-13 → 2007-11-14 (+1d) |  |  |  |  |
| 384 | **Detail Additional 2.x Use Cases** | 2007-11-02 → 2007-11-05 (+3d) | 2007-11-09 → 2007-11-12 (+3d) |  |  |  |  |
| 385 | UC Organize Workspace | 2007-11-02 → 2007-11-05 (+3d) | 2007-11-05 → 2007-11-06 (+1d) |  |  |  |  |
| 386 | UC Search for Arrays Using Natural Text | 2007-11-06 → 2007-11-07 (+1d) | 2007-11-07 → 2007-11-08 (+1d) |  |  |  |  |
| 387 | UC Import Contextual Data | 2007-11-08 → 2007-11-09 (+1d) | 2007-11-09 → 2007-11-12 (+3d) |  |  |  |  |
| 388 | **Analysis and Design** | 2007-11-02 → 2007-11-05 (+3d) | 2007-11-07 → 2007-11-08 (+1d) |  |  |  |  |
| 389 | Review 2.0 Use Case Designs with 2.x in mind | 2007-11-02 → 2007-11-05 (+3d) | 2007-11-05 → 2007-11-06 (+1d) |  |  |  |  |
| 390 | Revise Domain Object (Logical) Model as Needed | 2007-11-02 → 2007-11-05 (+3d) | 2007-11-02 → 2007-11-05 (+3d) |  |  |  |  |
| 391 | Support Analysis Services Integration as Needed | 2007-11-02 → 2007-11-05 (+3d) | 2007-11-06 → 2007-11-07 (+1d) |  |  |  |  |
| 392 | Update Software Architecture Document | 2007-11-06 → 2007-11-07 (+1d) | 2007-11-07 → 2007-11-08 (+1d) |  |  |  |  |
| 393 | **Implementation** | 2007-11-01 → 2007-11-05 (+4d) | 2007-11-26 → 2007-11-27 (+1d) |  |  |  |  |
| 394 | Fix Defects Found in Alpha Release | 2007-11-01 → 2007-11-05 (+4d) | 2007-11-15 → 2007-11-16 (+1d) |  |  |  | constraint none → start no earlier than 2007-11-05 |
| 395 | Fix Defects Found in Beta Release | 2007-11-08 → 2007-11-09 (+1d) | 2007-11-26 → 2007-11-27 (+1d) |  |  |  |  |
| 396 | Create caArray 2.0 Installer + Data Migrator | 2007-11-02 → 2007-11-05 (+3d) | 2007-11-08 → 2007-11-09 (+1d) |  |  |  |  |
| 397 | **Test** | 2007-11-02 → 2007-11-05 (+3d) | 2007-11-29 → 2007-11-30 (+1d) |  |  |  |  |
| 398 | Release QA Build C3A - Beta 1 | 2007-11-09 → 2007-11-16 (+7d) | 2007-11-09 → 2007-11-16 (+7d) |  | -85d → -90d |  | constraint start no earlier than 2007-11-09 → finish no earlier than 2007-11-16 |
| 399 | Release QA Build C3B - Beta 2 |  | 2007-11-23 → 2007-11-30 (+7d) | 0d → 6d | -98d → -100d |  | constraint start no earlier than 2007-11-23 → finish no earlier than 2007-11-30 |
| 400 | Load 1.x Data from DEV to QA to STAGE | 2007-11-02 → 2007-11-05 (+3d) | 2007-11-29 → 2007-11-30 (+1d) |  |  |  |  |
| 401 | **Environment** | 2007-11-23 → 2007-11-29 (+6d) | 2007-11-23 → 2007-11-29 (+6d) |  | -96d → -99d |  |  |
| 402 | Update Build and Deploy Plan with SCM Initiative | 2007-11-23 → 2007-11-29 (+6d) | 2007-11-23 → 2007-11-29 (+6d) |  | -96d → -99d |  | constraint none → start no earlier than 2007-11-29 |
| 403 | **Configuration and Change Management** | 2007-11-02 → 2007-11-05 (+3d) | 2007-11-29 → 2007-11-30 (+1d) |  |  |  |  |
| 404 | Manage Gforge Content | 2007-11-02 → 2007-11-05 (+3d) | 2007-11-29 → 2007-11-30 (+1d) |  |  |  |  |
| 405 | Prioritize 2.0 Defects and UC for 2.x | 2007-11-23 → 2007-11-05 (-18d) | 2007-11-23 → 2007-11-30 (+7d) | 1d → 20d | -98d → -100d |  |  |
| 406 | Prepare Download Center Material, Release Notes |  |  |  | -98d → -97d |  | constraint none → start no earlier than 2007-11-26 |
| 407 | C3 Complete | 2007-11-29 → 2007-11-30 (+1d) | 2007-11-29 → 2007-11-30 (+1d) |  |  |  |  |
| 408 | **Transition Phase** | 2007-11-29 → 2007-12-03 (+4d) |  | 11d → 10d |  |  |  |
| 409 | **Transition - Iteration 1** | 2007-11-29 → 2007-12-03 (+4d) |  | 11d → 10d |  |  |  |
| 410 | **Project Management** | 2007-11-30 → 2007-12-03 (+3d) | 2007-12-13 → 2007-12-14 (+1d) |  | -99d → -100d |  |  |
| 411 | Weekly Status Meetings | 2007-11-30 → 2007-12-03 (+3d) | 2007-12-13 → 2007-12-14 (+1d) |  | -99d → -100d |  |  |
| 412 | Dev Team Iteration Plan | 2007-11-30 → 2007-12-03 (+3d) | 2007-11-30 → 2007-12-03 (+3d) |  | -90d → -91d |  |  |
| 413 | Prepare GA Release Plan | 2007-11-30 → 2007-12-03 (+3d) | 2007-12-03 → 2007-12-04 (+1d) |  | -91d → -92d |  |  |
| 414 | Organize Feedback from Beta Testers | 2007-11-30 → 2007-12-03 (+3d) | 2007-11-30 → 2007-12-03 (+3d) |  | -90d → -91d |  |  |
| 415 | C3 Assessment | 2007-11-30 → 2007-12-03 (+3d) | 2007-11-30 → 2007-12-03 (+3d) |  | -90d → -91d |  |  |
| 416 | T1 Review | 2007-11-30 → 2007-12-03 (+3d) | 2007-11-30 → 2007-12-03 (+3d) |  | -90d → -91d |  |  |
| 417 | Plan for Next Iteration | 2007-11-30 → 2007-12-03 (+3d) | 2007-11-30 → 2007-12-03 (+3d) |  | -90d → -91d |  |  |
| 418 | **Finalize Deliverables** | 2007-11-30 → 2007-12-03 (+3d) | 2007-12-10 → 2007-12-11 (+1d) |  | -96d → -97d |  |  |
| 419 | Deliver T1 Plan | 2007-11-30 → 2007-12-03 (+3d) | 2007-12-04 → 2007-12-05 (+1d) |  | -96d → -97d |  |  |
| 420 | Prepare GA Release Plan | 2007-12-05 → 2007-12-06 (+1d) | 2007-12-05 → 2007-12-06 (+1d) |  | -96d → -97d |  |  |
| 421 | November Status Report | 2007-11-30 → 2007-12-03 (+3d) | 2007-11-30 → 2007-12-03 (+3d) |  | -90d → -91d |  |  |
| 422 | Finalize T1 Iteration Plan | 2007-12-06 → 2007-12-07 (+1d) | 2007-12-07 → 2007-12-10 (+3d) |  | -96d → -97d |  |  |
| 423 | Update Risk List | 2007-12-10 → 2007-12-11 (+1d) | 2007-12-10 → 2007-12-11 (+1d) |  | -96d → -97d |  |  |
| 424 | **Requirements** | 2007-11-30 → 2007-12-03 (+3d) | 2007-12-06 → 2007-12-07 (+1d) |  | -94d → -95d |  |  |
| 425 | Finalize Documentation for GA Release | 2007-11-30 → 2007-12-03 (+3d) | 2007-12-06 → 2007-12-07 (+1d) |  | -94d → -95d |  |  |
| 426 | **Analysis and Design** | 2007-11-30 → 2007-12-03 (+3d) | 2007-11-30 → 2007-12-03 (+3d) |  | -90d → -91d |  |  |
| 427 | Model Manipulation as needed | 2007-11-30 → 2007-12-03 (+3d) | 2007-11-30 → 2007-12-03 (+3d) |  | -90d → -91d |  |  |
| 428 | **Implementation** | 2007-11-29 → 2007-12-03 (+4d) | 2007-12-13 → 2007-12-14 (+1d) |  | -99d → -100d |  |  |
| 429 | Complete Targeted Defects for GA | 2007-11-29 → 2007-12-03 (+4d) | 2007-12-13 → 2007-12-11 (-2d) | 10d → 7d | -99d → -97d |  | resources etavela [80%]; jpike; rsrinavasa; bmason; tparnell → etavela [80%]; rsrinavasa; bmason; tparnell; dkokotov; jhedden |
| 430 | Complete caArray 2.0 Installer + Data Migrator | 2007-11-30 → 2007-12-03 (+3d) | 2007-12-13 → 2007-12-14 (+1d) |  | -99d → -100d |  |  |
| 431 | **Test** | 2007-11-30 → 2007-12-03 (+3d) |  |  | -99d → -100d |  |  |
| 434 | Load 1.x Data from DEV to QA to STAGE to PROD | 2007-11-30 → 2007-12-03 (+3d) | 2007-12-13 → 2007-12-14 (+1d) |  | -99d → -100d |  |  |
| 437 | **Configuration and Change Management** | 2007-11-30 → 2007-12-03 (+3d) |  | 11d → 10d |  |  |  |

| ID | Task | Start | Finish | Total float | Other |
| --- | --- | --- | --- | --- | --- |
| 438 | Manage Gforge Content | 2007-11-30 → 2007-12-03 (+3d) | 2007-12-13 → 2007-12-14 (+1d) |  |  |
| 439 | Prioritize 2.0 Defects and UC for 2.x | 2007-12-14 → 2007-12-03 (-11d) | 2007-12-14 → 2007-12-03 (-11d) | -100d → -91d |  |
| 441 | T1 Complete |  |  | -100d → -99d | constraint none → start no earlier than 2007-12-14 |

## Version 27 (saved 2007-09-12)

Note of the change: updates on the doc still needed

Last finish stays 2007-12-14.

Added:

| ID | Task | Duration | Start | Finish | Constraint | Resources |
| --- | --- | --- | --- | --- | --- | --- |
| 253 | Capture Special Requirements for SNPs | 4.17d | 2007-09-07 | 2007-09-13 | start no earlier than 2007-08-02 | bgendleman; bmason |
| 254 | 2.0 Scope Document | 1d? | 2007-09-07 | 2007-09-07 |  |  |
| 260 | UC Manage Institutions | 1d | 2007-09-12 | 2007-09-13 |  |  |
| 293 | Manage Experiment Permissions | 5d | 2007-09-10 | 2007-09-14 | start no earlier than 2007-09-10 | dkokotov; tparnell [20%] |

Removed: 254 UC Manage Institutional Groups; 271 Manage Institutional Groups

Changed:

| ID | Task | Start | Finish | Duration | Complete | Total float | Predecessors | Other |
| --- | --- | --- | --- | --- | --- | --- | --- | --- |
| 1 | **caArray 2.0** |  |  | 185d → 185d? | 52% → 51% |  |  |  |
| 233 | **Construction Phase** |  |  | 61d → 61d? | 2% → 3% |  |  |  |
| 234 | **Construction - Iteration 1** |  |  | 21d → 21d? | 4% → 6% |  |  |  |
| 248 | **Requirements** |  |  | 20d → 20d? |  |  |  |  |
| 255 | **Detail C1 Use Cases** | 2007-09-07 A → 2007-09-10 A (+3d) |  | 3.5d → 2.5d | 7% → 10% |  |  |  |
| 256 | UC Update Project Proposal |  |  |  |  |  | UC Manage Institutional Groups → none |  |
| 268 | Manage Experiment Permissions |  |  | 3d → 2.14d |  | -65d → -64.14d |  | was named Manage Project Permissions; resources tparnell; bmason → tparnell; dkokotov; etavela [80%] |
| 281 | **Implementation** |  |  |  | 9% → 16% |  |  |  |
| 283 | **Complete Elaboration Use Cases** |  |  |  | 10% → 9% |  |  |  |
| 285 | Implement UC Acquire Experiment Data via API |  |  |  |  |  |  | was named Implement UC Acquire Project Data via API |
| 286 | Implement UC Import Experiment Data |  |  |  |  |  |  | was named Implement UC Import Project Data |
| 288 | Implement Validate Experiment Data | 2007-09-10 → 2007-09-24 (+14d) | 2007-09-10 → 2007-09-25 (+15d) | 1d → 2d |  | -63d → -74d |  | was named Implement Validate Project Data; constraint start no earlier than 2007-09-10 → start no earlier than 2007-09-24; resources bmason → bmason [50%] |
| 292 | **Begin C1 Use Cases** | 2007-09-14 → 2007-09-10 (-4d) |  | 5d → 9d |  | -76d → -72d |  |  |
| 294 | Manage Users |  |  |  |  |  |  | was named Manage Institutional Groups |
| 297 | **Complete Subsystem Implementation** | 2007-09-07 A |  |  | 0% → 44% | -66d → 0d |  |  |
| 298 | PermissionsManagement | 2007-09-07 → 2007-09-10 A (+3d) | 2007-09-10 → 2007-09-11 (+1d) |  | 0% → 25% | -63d → -64d |  | constraint none → start no earlier than 2007-09-10; resources tparnell → tparnell; dkokotov |
| 299 | Object Access Authorization Mechanism | 2007-09-07 A |  |  | 0% → 50% |  |  |  |
| 300 | Remote API Grid Implementation | 2007-09-07 A |  |  | 0% → 50% |  |  |  |
| 301 | **Test** | 2007-09-14 → 2007-09-10 (-4d) |  | 15d → 19d |  |  |  |  |
| 303 | Validation Test Suite | 2007-09-14 → 2007-09-10 (-4d) | 2007-09-14 → 2007-09-28 (+14d) | 1d → 15d |  | -67d → -77d |  | constraint start no earlier than 2007-09-14 → finish no earlier than 2007-09-28 |
| 305 | Release QA Build C1A |  |  |  |  |  |  | resources smatyas [50%] → bmason |
| 306 | Release QA Build C1B |  |  |  |  |  |  | resources smatyas [50%] → bmason |
| 308 | Acquire STAGE Environment |  |  |  |  |  |  | resources smatyas [50%]; bgendleman [50%] → bgendleman [50%] |

## Version 28 (saved 2007-09-17)

Last finish stays 2007-12-14.

Changed:

| ID | Task | Start | Complete | Total float |
| --- | --- | --- | --- | --- |
| 234 | **Construction - Iteration 1** |  | 6% → 7% |  |
| 266 | **Analysis and Design** | 2007-09-07 A | 0% → 8% | -78d → -10d |
| 267 | **Use Case Design** | 2007-09-10 A | 0% → 19% | -69d → -1d |
| 268 | Manage Experiment Permissions | 2007-09-10 A | 0% → 25% |  |
| 270 | Navigate Repository | 2007-09-14 A | 0% → 50% | -71d → -67d |
| 271 | Search | 2007-09-17 A | 0% → 50% |  |
| 281 | **Implementation** |  | 16% → 22% |  |
| 282 | Complete Transition from JSF to Struts 2 |  | 30% → 90% |  |

## Version 29 (saved 2007-09-20)

Last finish stays 2007-12-14.

Added:

| ID | Task | Duration | Start | Finish | Constraint | Resources |
| --- | --- | --- | --- | --- | --- | --- |
| 305 | Dev Collaborating with QA on Testing | 2d | 2007-09-24 | 2007-09-25 | start no earlier than 2007-09-24 | bmason |

Changed:

| ID | Task | Start | Finish | Duration | Complete | Total float | Other |
| --- | --- | --- | --- | --- | --- | --- | --- |
| 1 | **caArray 2.0** |  |  |  | 51% → 52% |  |  |
| 233 | **Construction Phase** |  |  |  | 3% → 4% |  |  |
| 234 | **Construction - Iteration 1** |  |  |  | 7% → 9% |  |  |
| 281 | **Implementation** |  |  |  | 22% → 26% | -10d → -3d |  |
| 282 | Complete Transition from JSF to Struts 2 (task has doubled) |  | 2007-09-13 → 2007-09-20 (+7d) | 5d → 10d | 90% → 45% | -66d → -71d | was named Complete Transition from JSF to Struts 2 |
| 283 | **Complete Elaboration Use Cases** |  |  |  | 9% → 24% | -13d → -3d |  |
| 287 | Implement UC Manage Project Permissions | 2007-09-11 A |  |  | 0% → 25% |  |  |
| 289 | Integrate Stylesheet Throughout | 2007-09-18 A |  |  | 0% → 50% |  |  |
| 308 | **Environment** |  |  |  | 0% → 17% | -11d → 0d |  |
| 309 | Acquire STAGE Environment | 2007-09-10 A |  |  | 0% → 50% |  |  |
| 312 | Update Build and Deploy Plan with SCM Initiative | 2007-10-01 A |  |  | 0% → 25% |  |  |

## Version 30 (saved 2007-10-01)

Note of the change: updated in prep for status meeting today

Last finish stays 2007-12-14. Complete tasks 179 → 200.

Changed:

| ID | Task | Start | Finish | Duration | Complete | Total float | Other |
| --- | --- | --- | --- | --- | --- | --- | --- |
| 1 | **caArray 2.0** |  |  | 185d? → 185d | 52% → 64% |  |  |
| 233 | **Construction Phase** |  |  | 61d? → 61d | 4% → 32% |  |  |
| 234 | **Construction - Iteration 1** |  |  | 21d? → 21d | 9% → 69% |  |  |
| 235 | **Project Management** |  |  |  | 8% → 83% |  |  |
| 236 | Weekly Status Meetings |  |  |  | 10% → 75% |  |  |
| 237 | Dev Team Iteration Plan |  | 2007-09-14 A |  | 50% → 100% | 0d → none |  |
| 238 | Meet with Documentation to support UC Transition | 2007-09-19 A |  |  | 0% → 50% | -71.5d → -70d |  |
| 239 | Meet with App Support to Validate UC's and Overall Product Releases | 2007-09-20 A |  |  | 0% → 50% |  |  |
| 241 | Plan for Next Iteration |  |  |  | 10% → 50% |  |  |
| 242 | **Finalize Deliverables** |  |  |  | 6% → 93% | -13d → 0d |  |
| 243 | Deliver C1 Plan |  | 2007-09-12 A |  | 50% → 100% | -65d → none |  |
| 244 | Update Risk List | 2007-09-20 A | 2007-09-20 A |  | 0% → 100% | -71d → none |  |
| 245 | Update Alpha and Beta Release Plan | 2007-09-07 A | 2007-10-01 A |  | 0% → 100% | -78d → none |  |
| 246 | August Status Report | 2007-09-17 A | 2007-09-17 A |  | 0% → 100% | -67.5d → none |  |
| 247 | Finalize C2 Iteration Plans | 2007-09-07 A |  |  | 0% → 75% |  |  |
| 248 | **Requirements** |  |  | 20d? → 20d | 0% → 68% | -18.5d → 0d |  |
| 249 | Incorporate Stakeholder Feedback on Vision and Supp Spec | 2007-09-07 A |  |  | 0% → 80% |  |  |
| 250 | Incorporate Stakeholder Feedback on E2 Use Cases | 2007-09-07 A |  |  | 0% → 80% |  |  |
| 251 | Incorporate Stakeholder Feedback on UI Mockups | 2007-09-21 A |  |  | 0% → 90% | -81d → -5d |  |
| 252 | Update and Create C1 + C2 Wireframes and Mockups | 2007-09-07 A |  |  | 0% → 80% |  |  |
| 253 | Capture Special Requirements for SNPs | 2007-09-07 A |  |  | 0% → 50% |  |  |
| 254 | 2.0 Scope Document | 2007-09-07 → 2007-09-21 A (+14d) | 2007-09-07 → 2007-09-24 (+17d) | 1d? → 2d | 0% → 50% | -62d → -73d | constraint none → start no earlier than 2007-09-21 |
| 255 | **Detail C1 Use Cases** |  |  |  | 10% → 60% | -2d → 0d |  |
| 256 | UC Update Project Proposal |  | 2007-09-10 A |  | 50% → 100% | -73.5d → none |  |
| 257 | UC Register For An Account | 2007-09-10 A |  |  | 0% → 50% | -73.5d → -72.5d |  |
| 258 | UC Manage Collaborators | 2007-09-11 A |  |  | 0% → 50% |  |  |
| 266 | **Analysis and Design** |  | 2007-10-01 → 2007-09-27 (-4d) | 17d → 14.5d | 8% → 64% | -10d → -1.5d |  |
| 267 | **Use Case Design** |  |  |  | 19% → 44% | -1d → 0d |  |
| 268 | Manage Experiment Permissions |  |  |  | 25% → 50% |  |  |
| 270 | Navigate Repository |  | 2007-09-14 A |  | 50% → 100% | -67d → none |  |
| 271 | Search |  | 2007-09-17 A |  | 50% → 100% | -71d → none |  |
| 272 | Manage Collaborators | 2007-09-18 A |  |  | 0% → 50% | -71d → 0d |  |
| 274 | **Finalize SubSystem Design** | 2007-09-07 A | 2007-09-12 A |  | 0% → 100% | -66d → none |  |
| 275 | PermissionsManagementService | 2007-09-07 A | 2007-09-11 A |  | 0% → 100% | -73d → none |  |
| 276 | Authorization Mechanism | 2007-09-12 A | 2007-09-12 A |  | 0% → 100% | -73d → none |  |
| 277 | Revise and Document Grid API | 2007-09-07 A | 2007-09-11 A |  | 0% → 100% | -64d → none |  |
| 280 | Update Software Architecture Document | 2007-10-01 → 2007-09-19 A (-12d) | 2007-10-01 → 2007-09-25 (-6d) | 1d → 5d | 0% → 90% | -78d → -74d | constraint start no earlier than 2007-10-01 → start no earlier than 2007-09-19 |
| 281 | **Implementation** |  |  |  | 26% → 62% | -3d → -2d |  |
| 282 | Complete Transition from JSF to Struts 2 (task has doubled) |  | 2007-09-20 A |  | 45% → 100% | -71d → none |  |
| 283 | **Complete Elaboration Use Cases** |  |  |  | 24% → 55% | -3d → -2d |  |
| 286 | Implement UC Import Experiment Data | 2007-09-13 A |  |  | 0% → 80% |  |  |
| 288 | Implement Validate Experiment Data | 2007-09-24 A | 2007-09-25 A |  | 0% → 100% | -74d → none |  |
| 289 | Integrate Stylesheet Throughout |  | 2007-09-24 A |  | 50% → 100% | -76d → none |  |
| 292 | **Begin C1 Use Cases** | 2007-09-10 A |  |  | 0% → 11% | -71d → -4d |  |
| 293 | Manage Experiment Permissions | 2007-09-10 A |  |  | 0% → 25% |  |  |
| 297 | **Complete Subsystem Implementation** |  | 2007-09-13 A |  | 44% → 100% | 0d → none |  |
| 298 | PermissionsManagement |  | 2007-09-11 A |  | 25% → 100% | -64d → none |  |
| 299 | Object Access Authorization Mechanism |  | 2007-09-10 A |  | 50% → 100% | -63d → none |  |
| 300 | Remote API Grid Implementation |  | 2007-09-13 A |  | 50% → 100% | -66d → none |  |
| 301 | **Test** | 2007-09-10 A |  |  | 0% → 52% | -81d → -2d |  |
| 303 | Validation Test Suite | 2007-09-10 A |  |  | 0% → 50% | -77d → 0d |  |
| 304 | Update Elaboration Test Suite | 2007-09-28 A |  |  | 0% → 50% |  |  |
| 305 | Dev Collaborating with QA on Testing | 2007-09-24 A | 2007-09-25 A |  | 0% → 100% | -74d → none |  |
| 306 | Release QA Build C1A | 2007-09-21 A | 2007-09-21 A |  | 0% → 100% | -71d → none |  |
| 308 | **Environment** |  |  |  | 17% → 83% |  |  |
| 310 | Update ARC Document |  |  |  | 10% → 50% | -77.5d → -67.5d |  |
| 311 | Initiate DEV to QA to STAGE Deployment | 2007-09-17 A | 2007-10-01 A |  | 0% → 100% | -77.5d → none |  |
| 312 | Update Build and Deploy Plan with SCM Initiative |  | 2007-10-02 A |  | 25% → 100% | -78.5d → none |  |
| 313 | **Configuration and Change Management** |  |  |  | 8% → 69% |  |  |
| 314 | Incorporate Defect Tracking Specifics | 2007-09-07 A |  |  | 0% → 25% |  |  |
| 315 | Manage G-Forge Content |  |  |  | 10% → 80% |  |  |

## Version 31 (saved 2007-10-03)

Note of the change: minor updates from this am

Last finish stays 2007-12-14. Complete tasks 200 → 207.

Changed:

| ID | Task | Start | Finish | Duration | Complete | Total float | Other |
| --- | --- | --- | --- | --- | --- | --- | --- |
| 1 | **caArray 2.0** |  |  |  | 64% → 66% |  |  |
| 233 | **Construction Phase** |  |  |  | 32% → 37% |  |  |
| 234 | **Construction - Iteration 1** |  |  |  | 69% → 77% |  |  |
| 248 | **Requirements** |  |  |  | 68% → 71% |  |  |
| 253 | Capture Special Requirements for SNPs |  |  |  | 50% → 80% |  |  |
| 255 | **Detail C1 Use Cases** |  |  |  | 60% → 80% |  |  |
| 257 | UC Register For An Account |  | 2007-09-11 A |  | 50% → 100% | -72.5d → none |  |
| 259 | **Detail 2.x Use Cases** | 2007-09-12 A |  |  | 0% → 5% | -73.5d → -3d |  |
| 262 | UC Approve Experiment |  |  |  |  | -73.5d → -70d | was named UC Approve Project |
| 263 | UC Assign Experiment | 2007-09-20 A | 2007-09-20 A |  | 0% → 100% | -73.5d → none | was named UC Assign Project |
| 266 | **Analysis and Design** |  | 2007-09-27 → 2007-10-03 (+6d) | 14.5d → 19d | 64% → 85% | -1.5d → 0d |  |
| 278 | External Review: Revised Grid API | 2007-09-24 A | 2007-09-24 A |  | 0% → 100% | -75.5d → none |  |
| 279 | Revise Domain Object Model w/Mentor | 2007-09-24 A | 2007-09-27 A |  | 0% → 100% | -75.5d → none |  |
| 280 | Update Software Architecture Document |  | 2007-09-25 → 2007-10-03 A (+8d) | 5d → 11d | 90% → 100% | -74d → none |  |
| 281 | **Implementation** |  |  |  | 62% → 73% | -2d → 0d |  |
| 282 | Complete Transition from JSF to Struts 2 (task doubled) |  | 2007-09-20 A → 2007-09-27 A (+7d) | 10d → 15d |  |  | was named Complete Transition from JSF to Struts 2 (task has doubled) |
| 283 | **Complete Elaboration Use Cases** |  |  |  | 55% → 63% |  |  |
| 284 | Implement UC Login | 2007-09-07 A | 2007-09-07 A |  | 0% → 100% | -62d → none |  |
| 287 | Implement UC Manage Project Permissions |  |  |  | 25% → 50% |  |  |
| 292 | **Begin C1 Use Cases** |  |  |  | 11% → 34% |  |  |
| 293 | Manage Experiment Permissions |  |  |  | 25% → 75% |  |  |
| 301 | **Test** |  |  |  | 52% → 74% |  |  |
| 303 | Validation Test Suite |  |  |  | 50% → 80% |  |  |
| 313 | **Configuration and Change Management** |  |  |  | 69% → 84% |  |  |
| 314 | Incorporate Defect Tracking Specifics |  | 2007-09-13 A |  | 25% → 100% | -66d → none |  |

## Version 32 (saved 2007-10-05)

Note of the change: still updating second half of C2

Last finish stays 2007-12-14. Complete tasks 207 → 211.

Added:

| ID | Task | Duration | Start | Finish | Predecessors | Constraint | Resources |
| --- | --- | --- | --- | --- | --- | --- | --- |
| 343 | Manage Permissions | 2d | 2007-10-05 | 2007-10-09 |  |  | tparnell; bmason |
| 344 | Manage Collaborators | 1d | 2007-10-10 | 2007-10-10 | 343 |  | bmason; tparnell |
| 345 | Register | 1d? | 2007-10-11 | 2007-10-11 | 344 |  |  |
| 346 | Manage Users | 1d? | 2007-10-12 | 2007-10-12 | 345 |  |  |
| 347 | Import Array Designs | 1d? | 2007-10-15 | 2007-10-15 | 346 |  | etavela [90%] |
| 352 | **Complete Targeted Alpha Use Cases** | 8d | 2007-10-08 | 2007-10-17 |  |  |  |
| 353 | Login Use Case (lock out not included) | 1d | 2007-10-08 | 2007-10-08 |  |  | jhedden |
| 354 | Acquire Experiment Data via Java API | 0.5d | 2007-10-08 | 2007-10-08 |  | start no earlier than 2007-10-05 | etavela [90%] |
| 355 | Acquire Experiment Data via API - Grid | 2.5d | 2007-10-08 | 2007-10-10 | 354 |  | tparnell |
| 356 | Register | 3d | 2007-10-09 | 2007-10-11 | 353 |  | jhedden; smiller [20%] |
| 357 | Upload Experiment Data Files - Multi available not .zip presentation | 3d | 2007-10-12 | 2007-10-16 | 356 |  | jhedden; etavela [25%] |
| 358 | Import Experiment Data Files - MAGE-TAB, GE + SNP forAffy, Illumina | 3d | 2007-10-08 | 2007-10-10 |  |  | etavela [90%] |
| 359 | Manage Experiment Data Files - Change Type + Delete | 2d | 2007-10-08 | 2007-10-09 |  |  | bmason |
| 360 | Validate Experiment Data Files | 2d | 2007-10-11 | 2007-10-12 | 358 |  | bmason; etavela [25%] |
| 361 | Sumbit Experiment Proposal - Required Annotation, Save as Drfat | 5d | 2007-10-08 | 2007-10-12 |  |  | dkokotov |
| 362 | Update Experiment Proposal - Update Draft + Submit | 3d | 2007-10-15 | 2007-10-17 | 361 |  | dkokotov |
| 363 | Manage Permissions - public/private flag | 2d | 2007-10-11 | 2007-10-12 | 355 |  | tparnell |
| 364 | Download Data | 3d | 2007-10-15 | 2007-10-17 | 363 |  | tparnell |
| 369 | **Add Data Parsers for GenePix** | 2d | 2007-10-11 | 2007-10-12 | 358 |  | etavela [90%] |
| 370 | Release Build R2_0_0_QA6 | 0d |  |  | 355 |  |  |
| 371 | Complete Alpha Use Cases | 1d? | 2007-10-08 | 2007-10-08 |  |  |  |
| 373 | Establish Performance Benchmarks | 5d | 2007-10-11 | 2007-10-17 |  | finish no earlier than 2007-10-17 | bmason |

Removed: 287 Implement UC Manage Project Permissions; 325 C2 Review; 337 Incorporate Stakeholder Feedback on 2.x Mockups; 351 Manage Institutional Groups; 353 Register for an Account

Changed:

| ID | Task | Start | Finish | Duration | Complete | Total float | Predecessors | Other |
| --- | --- | --- | --- | --- | --- | --- | --- | --- |
| 1 | **caArray 2.0** |  |  | 185d → 185d? | 66% → 67% |  |  |  |
| 233 | **Construction Phase** |  |  | 61d → 61d? | 37% → 40% |  |  |  |
| 234 | **Construction - Iteration 1** |  |  |  | 77% → 85% |  |  |  |
| 235 | **Project Management** |  |  |  | 83% → 97% |  |  |  |
| 236 | Weekly Status Meetings |  | 2007-10-05 A |  | 75% → 100% | -82d → none |  |  |
| 241 | Plan for Next Iteration |  | 2007-10-02 A |  | 50% → 100% | -79d → none |  |  |
| 242 | **Finalize Deliverables** |  | 2007-10-01 A |  | 93% → 100% | 0d → none |  |  |
| 247 | Finalize C2 Iteration Plans |  | 2007-09-19 A |  | 75% → 100% | -69.5d → none |  |  |
| 248 | **Requirements** |  |  |  | 71% → 77% |  |  |  |
| 249 | Incorporate Stakeholder Feedback on Vision and Supp Spec |  | 2007-09-28 A |  | 80% → 100% | -77d → none |  |  |
| 251 | Incorporate Stakeholder Feedback on UI Mockups |  | 2007-10-04 A |  | 90% → 100% | -5d → none |  |  |
| 254 | 2.0 Scope Document |  | 2007-09-24 A |  | 50% → 100% | -73d → none |  |  |
| 266 | **Analysis and Design** |  | 2007-10-03 → 2007-10-05 (+2d) | 19d → 21d | 85% → 87% |  |  |  |
| 267 | **Use Case Design** |  |  |  | 44% → 57% |  |  |  |
| 268 | Manage Experiment Permissions |  | 2007-09-12 A |  | 50% → 100% | -64.14d → none |  |  |
| 278 | External Review: Revised Grid API | 2007-09-24 A → 2007-09-28 A (+4d) | 2007-09-24 A → 2007-10-05 (+11d) | 0.5d → 6d | 100% → 80% | none → -82d |  |  |
| 280 | Update Software Architecture Document |  | 2007-10-03 A → 2007-10-05 A (+2d) | 11d → 13d |  |  |  |  |
| 281 | **Implementation** |  | 2007-09-27 → 2007-10-05 (+8d) | 15d → 21d | 73% → 77% |  |  |  |
| 283 | **Complete Elaboration Use Cases** |  |  |  | 63% → 62% |  |  |  |
| 285 | Implement UC Acquire Experiment Data via API |  | 2007-09-10 A → 2007-09-10 |  | 100% → 90% | none → -63d |  |  |
| 286 | Implement UC Import Experiment Data |  | 2007-09-17 A |  | 80% → 100% | -68d → none |  |  |
| 288 | Integrate Stylesheet Throughout |  | 2007-09-24 A → 2007-09-24 |  | 100% → 80% | none → -76d |  |  |
| 291 | **Begin C1 Use Cases** |  | 2007-09-20 → 2007-10-05 (+15d) | 9d → 20d | 34% → 77% | -4d → 0d |  |  |
| 292 | Manage Experiment Permissions |  | 2007-09-14 → 2007-10-05 A (+21d) | 5d → 20d | 75% → 100% | -67d → none |  | constraint start no earlier than 2007-09-10 → finish no earlier than 2007-10-05 |
| 296 | **Complete Subsystem Implementation** |  | 2007-09-13 A → 2007-09-13 |  | 100% → 73% | none → 0d |  |  |
| 297 | PermissionsManagement |  | 2007-09-11 A → 2007-09-11 |  | 100% → 90% | none → -64d |  |  |
| 298 | Object Access Authorization Mechanism |  | 2007-09-10 A → 2007-09-10 |  | 100% → 90% | none → -63d |  |  |
| 299 | Remote API Grid Implementation |  | 2007-09-13 A → 2007-09-13 |  | 100% → 60% | none → -66d |  |  |
| 300 | **Test** |  |  |  | 74% → 75% |  |  |  |
| 301 | Project Data Files Test Suite | 2007-09-21 A |  |  | 0% → 25% |  |  |  |
| 307 | **Environment** |  | 2007-10-02 → 2007-10-04 (+2d) | 16.5d → 18.5d | 83% → 85% |  |  |  |
| 311 | Update Build and Deploy Plan with SCM Initiative |  | 2007-10-02 A → 2007-10-04 A (+2d) | 1d → 3d |  |  |  | resources etavela [80%]; smatyas [50%]; bgendleman [50%] → etavela [80%]; smatyas [50%]; bgendleman [50%]; pduvall [50%]; lgurses |
| 312 | **Configuration and Change Management** |  | 2007-10-04 A |  | 84% → 100% | 0d → none |  |  |
| 314 | Manage G-Forge Content |  | 2007-10-04 A |  | 80% → 100% | -81d → none |  |  |
| 316 | **Construction - Iteration 2** | 2007-10-08 → 2007-10-05 (-3d) |  | 20d → 20d? |  | -82d → -85d |  |  |
| 320 | Prepare Alpha Release Plan and Organization | 2007-10-10 → 2007-10-17 (+7d) | 2007-10-11 → 2007-10-18 (+7d) |  |  | -63.67d → -68.67d |  | constraint start no earlier than 2007-10-10 → start no earlier than 2007-10-17; resources bgendleman; etavela [80%] → bgendleman; bmason [80%] |
| 321 | Organize Feedback from Alpha Testers | 2007-10-15 → 2007-10-09 (-6d) | 2007-10-18 → 2007-10-12 (-6d) |  |  | -68.33d → -64.33d | none → 324 | constraint start no earlier than 2007-10-15 → none |
| 323 | C1 Assessment | 2007-10-08 → 2007-10-15 (+7d) | 2007-10-10 → 2007-10-15 (+5d) | 2.22d → 1d |  | -62.22d → -66d |  | constraint none → start no earlier than 2007-10-15; resources etavela [90%] → etavela [90%]; bmason; bgendleman; tparnell |
| 324 | Plan for Next Iteration | 2007-10-19 → 2007-10-08 (-11d) | 2007-10-19 → 2007-10-08 (-11d) |  |  | -70d → -64.33d | C2 Review → none |  |
| 325 | **Finalize Deliverables** |  | 2007-10-29 → 2007-10-31 (+2d) | 16d → 18d |  | -76d → -78d |  |  |
| 327 | Update Beta Release Plan | 2007-10-19 → 2007-10-26 (+7d) | 2007-10-19 → 2007-10-26 (+7d) |  |  | -72d → -77d | C2 Review → none | constraint none → start no earlier than 2007-10-26 |
| 328 | October Status Report | 2007-10-15 → 2007-10-31 (+16d) | 2007-10-15 → 2007-10-31 (+16d) |  |  | -66d → -78d |  | was named September Status Report; constraint start no earlier than 2007-10-15 → start no earlier than 2007-10-31 |
| 329 | Finalize C3 Iteration Plans | 2007-10-26 → 2007-10-29 (+3d) | 2007-10-26 → 2007-10-29 (+3d) |  |  | -76d → -77d |  |  |
| 330 | Update Risk List | 2007-10-29 → 2007-10-30 (+1d) | 2007-10-29 → 2007-10-30 (+1d) |  |  | -76d → -77d |  |  |
| 331 | **Requirements** |  | 2007-10-30 → 2007-10-29 (-1d) | 17d → 16d |  | -77d → -76d |  |  |
| 333 | Collaborate with Documentation Team on User Guides and Help |  |  |  |  |  |  | was named Incorporate Stakeholder Feedback on C1 Use Cases |
| 334 | Complete HTML based on Wireframe Feedback |  |  |  |  | -77d → -75d |  | was named Incorporate Stakeholder Feedback on C1 UI Mockups |
| 335 | Collaborate with Documentation to Support Online Help, User Guides | 2007-10-24 → 2007-10-22 (-2d) | 2007-10-30 → 2007-10-26 (-4d) |  |  | -77d → -75d | Incorporate Stakeholder Feedback on 2.x Mockups → 334 |  |
| 341 | **Analysis and Design** | 2007-10-08 → 2007-10-05 (-3d) | 2007-10-31 → 2007-11-01 (+1d) | 18d → 19d? |  | -78d → -79d |  |  |
| 342 | **Complete C1 Use Case Designs** | 2007-10-08 → 2007-10-05 (-3d) | 2007-10-12 → 2007-10-15 (+3d) | 5d → 6d? |  | -78d → -79d |  |  |
| 348 | Revise Domain Object (Logical) Model as Needed | 2007-10-15 → 2007-10-16 (+1d) | 2007-10-16 → 2007-10-17 (+1d) |  |  | -78d → -79d | 342 → 347 |  |
| 349 | Support Analysis Services Integration as Needed | 2007-10-17 → 2007-10-18 (+1d) | 2007-10-31 → 2007-11-01 (+1d) |  |  | -78d → -79d |  |  |
| 350 | Update Software Architecture Document | 2007-10-17 → 2007-10-26 (+9d) | 2007-10-23 → 2007-10-26 (+3d) | 5d → 1d |  | -72d → -75d |  | constraint none → start no earlier than 2007-10-26 |
| 351 | **Implementation** |  | 2007-11-02 → 2007-10-31 (-2d) | 20d → 18d? |  | -80d → -83d |  |  |
| 365 | **Start C2 Use Cases** |  | 2007-10-26 → 2007-10-31 (+5d) | 15d → 18d |  | -75d → -78d |  | was named Complete C1 Use Cases |
| 367 | Report on Work Accomplished | 2007-10-08 → 2007-10-17 (+9d) | 2007-10-26 → 2007-10-31 (+5d) | 15d → 11d |  | -75d → -78d | none → 357 | resources etavela [80%]; rsrinavasa → etavela [80%] |
| 368 | Fix Defects Found in Alpha Release | 2007-10-22 → 2007-10-08 (-14d) | 2007-11-02 → 2007-10-18 (-15d) | 10d → 9d |  | -80d → -69d | 374 → none |  |
| 372 | **Test** | 2007-10-19 → 2007-10-10 (-9d) |  | 10d → 17d |  |  |  |  |
| 374 | Release Build R2_0_0_Alpha1 |  |  |  |  |  |  | was named Release QA Build C2A - Alpha 1 |
| 375 | Release Build R2_0_0_QA7 |  |  |  |  |  |  | was named Release QA Build C2B |

## Version 33 (saved 2007-10-07)

Note of the change: draft for C2 almost complete - worth a look

Last finish stays 2007-12-14. Complete tasks 211 → 213.

Added:

| ID | Task | Duration | Start | Finish | Predecessors | Constraint | Resources |
| --- | --- | --- | --- | --- | --- | --- | --- |
| 342 | Search Repository | 1d | 2007-10-16 | 2007-10-16 | 341 |  | bmason; etavela [90%]; tparnell |
| 348 | Incorporate All Requested Changes into Domain Model | 1d | 2007-10-08 | 2007-10-08 |  | start no earlier than 2007-10-05 | etavela [90%] |
| 365 | **Data Management** | 14d | 2007-10-08 | 2007-10-25 |  |  |  |
| 368 | Start 1.x Migration Scripts | 3d | 2007-10-08 | 2007-10-10 |  |  | smatyas [50%] |
| 373 | Create, Execute and Report on Jmeter Performance Test Cases | 10d | 2007-10-17 | 2007-10-31 | 357 |  | bmason [60%]; rsrinavasa [30%] |
| 374 | Create, Execute and Report on Selenium User Interface Test Cases | 10d | 2007-10-17 | 2007-10-30 |  | start no earlier than 2007-10-17 | rsrinivasa [90%] |
| 379 | Provide Command Line Support for Linux | 3d | 2007-10-08 | 2007-10-10 |  |  | pduvall [33%]; lgurses [33%] |
| 380 | Run Unit, Functional, Performance Tests in All Environments | 18d | 2007-10-08 | 2007-10-31 |  |  | pduvall [10%]; lgurses [10%] |
| 381 | Support GLOBUS in All Environments | 2d | 2007-10-11 | 2007-10-12 | 379 |  | pduvall [5%]; lgurses [5%]; tparnell [5%] |
| 382 | Enable CruiseControl to Run Unit, Functional, Performance Tests in Dev | 2d | 2007-10-08 | 2007-10-09 |  |  | pduvall [50%]; lgurses [50%] |
| 384 | Begin Installer | 1d? | 2007-10-08 | 2007-10-08 |  |  |  |

Changed:

| ID | Task | Start | Finish | Duration | Complete | Total float | Predecessors | Other |
| --- | --- | --- | --- | --- | --- | --- | --- | --- |
| 1 | **caArray 2.0** |  |  |  | 67% → 64% | -50d → -48d |  |  |
| 212 | Affymetrix SNP (CEL & CHP) - deferred |  |  |  |  |  | 209 → none |  |
| 233 | **Construction Phase** |  |  |  | 40% → 38% | -40d → -38d |  |  |
| 234 | **Construction - Iteration 1** |  |  |  | 85% → 86% |  |  |  |
| 248 | **Requirements** |  |  |  | 77% → 82% |  |  |  |
| 250 | Incorporate Stakeholder Feedback on E2 Use Cases |  | 2007-09-28 A |  | 80% → 100% | -77d → none |  |  |
| 255 | **Detail C1 Use Cases** |  | 2007-09-12 A |  | 80% → 100% | 0d → none |  |  |
| 258 | UC Manage Collaborators |  | 2007-09-12 A |  | 50% → 100% | -70d → none |  |  |
| 316 | **Construction - Iteration 2** | 2007-10-05 A |  |  |  | -85d → -18d |  |  |
| 321 | Organize Feedback from Alpha Testers | 2007-10-09 → 2007-10-23 (+14d) | 2007-10-12 → 2007-10-26 (+14d) |  |  | -64.33d → -74.33d |  |  |
| 322 | Evolve RMP to support QA Process |  | 2007-10-10 → 2007-10-08 (-2d) | 3d → 1d |  | -63d → -61d |  |  |
| 324 | Plan for Next Iteration | 2007-10-08 → 2007-10-22 (+14d) | 2007-10-08 → 2007-10-22 (+14d) |  |  | -64.33d → -74.33d |  | constraint none → start no earlier than 2007-10-22 |
| 336 | **Analysis and Design** | 2007-10-05 A | 2007-11-01 → 2007-10-26 (-6d) | 19d? → 15d | 0% → 5% | -79d → -13d |  |  |
| 337 | **Complete C1 Use Case Designs** | 2007-10-05 A | 2007-10-15 → 2007-10-17 (+2d) | 6d? → 8d | 0% → 6% | -79d → -6d |  |  |
| 338 | Manage Permissions | 2007-10-05 A |  |  | 0% → 25% | -79d → -96d |  |  |
| 340 | Register |  |  | 1d? → 1d |  | -79d → -75d |  | resources none → jhedden; smiller [25%] |
| 341 | Manage Users |  | 2007-10-12 → 2007-10-15 (+3d) | 1d? → 2d |  | -79d → -75d |  | resources none → jhedden; smiller [25%] |
| 343 | Import Array Designs | 2007-10-15 → 2007-10-17 (+2d) | 2007-10-15 → 2007-10-17 (+2d) | 1d? → 1d |  | -79d → -68d | 341 → 342 |  |
| 344 | Review Updated Model with Mentors and Stakeholders | 2007-10-16 → 2007-10-09 (-7d) | 2007-10-17 → 2007-10-09 (-8d) | 2d → 0.5d |  | -79d → -97.5d | 343 → 348 | was named Revise Domain Object (Logical) Model as Needed; constraint none → start no earlier than 2007-10-09; resources none → etavela [90%] |
| 345 | Update Model Dependent Upon Mentor and Stakeholder Review | 2007-10-18 → 2007-10-09 (-9d) | 2007-11-01 → 2007-10-09 (-23d) | 11d → 0.5d |  | -79d → -97.5d |  | was named Support Analysis Services Integration as Needed; resources none → etavela [90%]; tparnell |
| 346 | Update Software Architecture Document |  |  |  |  |  |  | resources none → etavela [90%]; bmason; tparnell; jhedden |
| 347 | **Implementation** |  |  | 18d? → 18d |  | -83d → -97.5d |  |  |
| 349 | **Targeted Alpha Use Cases** |  |  |  |  | -83d → -95.5d |  | was named Complete Targeted Alpha Use Cases |
| 351 | Acquire Experiment Data via Java API | 2007-10-08 → 2007-10-10 (+2d) | 2007-10-08 → 2007-10-10 (+2d) |  |  | -83d → -97.5d | none → 345 |  |
| 352 | Acquire Experiment Data via API - Grid | 2007-10-08 → 2007-10-10 (+2d) | 2007-10-10 → 2007-10-11 (+1d) | 2.5d → 2d |  | -83d → -84d | 351 → 345 |  |
| 353 | Upload Experiment Data Files - Multi available not .zip presentation | 2007-10-12 → 2007-10-09 (-3d) | 2007-10-16 → 2007-10-11 (-5d) |  |  | -78d → -72d | 354 → 350 |  |
| 354 | Register | 2007-10-09 → 2007-10-12 (+3d) | 2007-10-11 → 2007-10-16 (+5d) |  |  | -78d → -67d | 350 → 350, 353 |  |
| 355 | Import Experiment Data Files - MAGE-TAB, GE + SNP forAffy, Illumina | 2007-10-08 → 2007-10-10 (+2d) | 2007-10-10 → 2007-10-15 (+5d) |  |  | -65d → -97.5d | none → 351 |  |
| 356 | Manage Experiment Data Files - Change Type + Delete | 2007-10-08 → 2007-10-10 (+2d) | 2007-10-09 → 2007-10-11 (+2d) |  |  | -62d → -96d | none → 338 |  |
| 357 | Validate Experiment Data Files | 2007-10-11 → 2007-10-15 (+4d) | 2007-10-12 → 2007-10-17 (+5d) |  |  | -65d → -97.5d | 355 → 355, 356 |  |
| 360 | Manage Permissions - public/private flag | 2007-10-11 → 2007-10-08 (-3d) | 2007-10-12 → 2007-10-09 (-3d) |  |  | -68d → -62d | 352 → none | constraint none → start no earlier than 2007-10-08 |
| 361 | Download Data | 2007-10-15 → 2007-10-12 (-3d) | 2007-10-17 → 2007-10-16 (-1d) |  |  | -68d → -72d | 360 → 352 |  |
| 362 | **Start C2 UC's Not Targeted for A1** | 2007-10-08 → 2007-10-17 (+9d) | 2007-10-31 → 2007-10-29 (-2d) | 18d → 9d |  | -78d → -76d |  | was named Start C2 Use Cases |
| 363 | Manage Collaborators | 2007-10-08 → 2007-10-17 (+9d) | 2007-10-10 → 2007-10-23 (+13d) | 3d → 5d |  | -63d → -72d | none → 352, 361 |  |
| 364 | Search Repository | 2007-10-17 → 2007-10-18 (+1d) | 2007-10-31 → 2007-10-29 (-2d) | 11d → 8d |  | -78d → -76d | 353 → 353, 342, 372 | was named Report on Work Accomplished; resources etavela [80%] → etavela [10%]; bmason |
| 366 | Add Data Parsers for GenePix | 2007-10-11 → 2007-10-17 (+6d) | 2007-10-12 → 2007-10-19 (+7d) |  |  | -65d → -71.5d | 355 → 355, 357 |  |
| 367 | Add Data Parsers for Agilent | 2007-10-08 → 2007-10-19 (+11d) | 2007-10-08 → 2007-10-23 (+15d) | 1d? → 2d |  | -61d → -71.5d | none → 366 | was named Complete Alpha Use Cases; resources none → etavela [90%] |
| 369 | Plan and Acquire Initial 1.x Test Data to DEV |  |  |  |  | -94d → -74d | none → 368 | was named Load 1.x Data to DEV |
| 370 | Fix Defects Found in Alpha Release | 2007-10-08 → 2007-10-23 (+15d) | 2007-10-18 → 2007-10-31 (+13d) | 9d → 7d |  | -69d → -78d |  | constraint none → start no earlier than 2007-10-23; resources etavela [80%]; jpike; rsrinavasa; tparnell; bmason → etavela [80%]; dkokotov; jhedden; tparnell; bmason; smiller [60%]; rsrinivasa |
| 371 | **Test** | 2007-10-10 → 2007-10-11 (+1d) |  |  |  |  |  |  |
| 375 | Release Build R2_0_0_QA6 | none → 2007-10-11 | none → 2007-10-11 |  |  | none → -84d |  |  |
| 378 | **Environment** |  | 2007-10-08 → 2007-10-31 (+23d) | 1d → 18d? |  | -61d → -78d |  |  |
| 386 | Manage Gforge Content |  | 2007-10-08 → 2007-11-02 (+25d) | 1d → 20d |  | -61d → -80d |  | resources none → bgendleman [25%]; bmason [25%] |
| 431 | Prioritize 2.0 Defects and UC for 2.x |  |  |  |  |  | 425 → none |  |
| 432 | Prepare Download Center Material, Release Notes |  |  |  |  |  | 431 → none |  |
| 452 | **Write 2.x Use Cases** | 2007-10-08 → 2007-12-03 (+56d) | 2007-10-11 → 2007-12-06 (+56d) |  |  | -63.5d → -93.5d |  | was named Update 2.x Use Cases |
| 453 | UC Manage Institutional Groups | 2007-10-08 → 2007-12-03 (+56d) | 2007-10-08 → 2007-12-03 (+56d) |  |  | -63.5d → -93.5d |  |  |
| 454 | Update UC Search Repository | 2007-10-09 → 2007-12-04 (+56d) | 2007-10-09 → 2007-12-04 (+56d) |  |  | -63.5d → -93.5d |  | was named UC Update Project Proposal |
| 455 | UC Register For An Account | 2007-10-09 → 2007-12-04 (+56d) | 2007-10-10 → 2007-12-05 (+56d) |  |  | -63.5d → -93.5d |  |  |
| 456 | UC Manage Collaborators | 2007-10-10 → 2007-12-05 (+56d) | 2007-10-11 → 2007-12-06 (+56d) |  |  | -63.5d → -93.5d |  |  |

## Version 34 (saved 2007-10-12)

Note of the change: updated through 10.11

Last finish stays 2007-12-14. Complete tasks 213 → 223.

Removed: 384 Begin Installer

Changed:

| ID | Task | Start | Finish | Duration | Complete | Total float | Predecessors | Other |
| --- | --- | --- | --- | --- | --- | --- | --- | --- |
| 1 | **caArray 2.0** |  |  | 185d? → 185d | 64% → 66% | -48d → -30d |  |  |
| 233 | **Construction Phase** |  |  | 61d? → 61d | 38% → 42% | -38d → -20d |  |  |
| 316 | **Construction - Iteration 2** |  |  | 20d? → 20d | 0% → 12% | -18d → 0d |  |  |
| 317 | **Project Management** | 2007-10-08 A |  |  | 0% → 24% | -80d → 0d |  |  |
| 318 | Weekly Status Meetings | 2007-10-08 A |  |  | 0% → 25% |  |  |  |
| 319 | Dev Team Iteration Plan | 2007-10-08 A | 2007-10-08 A |  | 0% → 100% | -61d → none |  |  |
| 322 | Evolve RMP to support QA Process | 2007-10-08 A | 2007-10-08 A |  | 0% → 100% | -61d → none |  |  |
| 325 | **Finalize Deliverables** | 2007-10-08 A |  |  | 0% → 22% | -78d → -1d |  |  |
| 326 | Deliver C2 Plan | 2007-10-08 A | 2007-10-08 A |  | 0% → 100% | -61d → none |  |  |
| 330 | Update Risk List | 2007-10-30 A |  |  | 0% → 10% |  |  |  |
| 336 | **Analysis and Design** |  |  |  | 5% → 20% |  |  |  |
| 337 | **Complete C1 Use Case Designs** |  |  |  | 6% → 25% |  |  |  |
| 338 | Manage Permissions |  | 2007-10-09 A |  | 25% → 100% | -96d → none |  |  |
| 347 | **Implementation** | 2007-10-08 A |  |  | 0% → 24% | -97.5d → -13d |  |  |
| 348 | Incorporate All Requested Changes into Domain Model | 2007-10-08 A | 2007-10-08 A |  | 0% → 100% | -97.5d → none |  |  |
| 349 | **Targeted Alpha Use Cases** | 2007-10-08 A |  |  | 0% → 44% | -95.5d → -3d |  |  |
| 350 | Login Use Case (lock out not included) | 2007-10-08 A | 2007-10-08 A |  | 0% → 100% | -72d → none |  |  |
| 351 | Acquire Experiment Data via Java API | 2007-10-10 A | 2007-10-10 A |  | 0% → 100% | -97.5d → none |  |  |
| 352 | Acquire Experiment Data via API - Grid | 2007-10-10 A |  |  | 0% → 80% |  |  |  |
| 353 | Upload Experiment Data Files - Multi available not .zip presentation | 2007-10-09 A | 2007-10-11 A |  | 0% → 100% | -72d → none |  |  |
| 356 | Manage Experiment Data Files - Change Type + Delete | 2007-10-10 A | 2007-10-11 A |  | 0% → 100% | -96d → none |  |  |
| 358 | Sumbit Experiment Proposal - Required Annotation, Save as Drfat | 2007-10-08 A |  |  | 0% → 60% |  |  |  |
| 360 | Manage Permissions - public/private flag | 2007-10-08 A | 2007-10-09 A |  | 0% → 100% | -62d → none |  |  |
| 368 | Start 1.x Migration Scripts |  | 2007-10-10 → 2007-10-09 (-1d) | 3d → 1.67d |  | -65d → -63.67d |  | resources smatyas [50%] → etavela [90%] |
| 371 | **Test** | 2007-10-11 A |  |  | 0% → 4% | -100d → -12d |  |  |
| 372 | Establish Performance Benchmarks | 2007-10-11 A |  |  | 0% → 20% | -88d → 0d |  | resources bmason → bmason; etavela [90%] |
| 378 | **Environment** |  |  | 18d? → 18d |  |  |  |  |
| 382 | Enable CruiseControl to Run Unit, Functional, Performance Tests in Dev | 2007-10-08 → 2007-10-15 (+7d) | 2007-10-09 → 2007-10-16 (+7d) |  |  | -62d → -68d | none → 381 |  |
| 383 | Update Build and Deploy Plan with SCM Initiative | 2007-10-08 → 2007-10-17 (+9d) | 2007-10-08 → 2007-10-17 (+9d) |  |  | -61d → -68d | none → 382 |  |
| 384 | **Configuration and Change Management** | 2007-10-08 A |  |  | 0% → 10% | -80d → 0d |  |  |
| 385 | Manage Gforge Content | 2007-10-08 A |  |  | 0% → 10% |  |  |  |

## Version 35 (saved 2007-10-18)

Note of the change: updated post 10.18 meeting

Last finish stays 2007-12-14. Complete tasks 223 → 228.

Changed:

| ID | Task | Start | Finish | Duration | Complete | Total float | Predecessors | Other |
| --- | --- | --- | --- | --- | --- | --- | --- | --- |
| 1 | **caArray 2.0** |  |  |  | 66% → 71% |  |  |  |
| 233 | **Construction Phase** |  |  |  | 42% → 51% |  |  |  |
| 316 | **Construction - Iteration 2** |  |  |  | 12% → 39% |  |  |  |
| 317 | **Project Management** |  |  |  | 24% → 41% |  |  |  |
| 318 | Weekly Status Meetings |  |  |  | 25% → 50% |  |  |  |
| 320 | Prepare Alpha Release Plan and Organization | 2007-10-17 A |  |  | 0% → 50% |  |  |  |
| 323 | C1 Assessment | 2007-10-15 → 2007-10-22 (+7d) | 2007-10-15 → 2007-10-22 (+7d) |  |  | -66d → -71d |  | constraint start no earlier than 2007-10-15 → start no earlier than 2007-10-22 |
| 325 | **Finalize Deliverables** |  |  |  | 22% → 25% |  |  |  |
| 330 | Update Risk List |  |  |  | 10% → 25% |  |  |  |
| 331 | **Requirements** | 2007-10-08 A |  |  | 0% → 39% | -76d → 0d |  |  |
| 332 | Incorporate Stakeholder Feedback on Vision and Supp Spec | 2007-10-08 A |  |  | 0% → 50% |  |  |  |
| 333 | Collaborate with Documentation Team on User Guides and Help | 2007-10-08 A |  |  | 0% → 20% |  |  |  |
| 334 | Complete HTML based on Wireframe Feedback | 2007-10-08 A |  |  | 0% → 50% | -75d → -5d |  |  |
| 335 | Collaborate with App Support to Support Online Help, User Guides | 2007-10-22 A | 2007-10-26 → 2007-10-23 (-3d) | 5d → 2d | 0% → 50% | -75d → -72d |  | was named Collaborate with Documentation to Support Online Help, User Guides |
| 336 | **Analysis and Design** |  |  |  | 20% → 35% | -13d → -11d |  |  |
| 337 | **Complete C1 Use Case Designs** |  |  |  | 25% → 31% | -6d → -4d |  |  |
| 340 | Register | 2007-10-11 A |  |  | 0% → 50% |  |  |  |
| 344 | Review Updated Model with Mentors and Stakeholders | 2007-10-09 A | 2007-10-09 A |  | 0% → 100% | -62.5d → none |  |  |
| 345 | Update Model Dependent Upon Mentor and Stakeholder Review | 2007-10-09 A | 2007-10-09 A |  | 0% → 100% | -62d → none |  |  |
| 347 | **Implementation** |  |  |  | 24% → 45% | -13d → -10d |  |  |
| 349 | **Targeted Alpha Use Cases** |  |  |  | 44% → 86% | -3d → 0d |  |  |
| 352 | Acquire Experiment Data via API - Grid |  | 2007-10-11 A |  | 80% → 100% | -84d → none |  |  |
| 354 | Register | 2007-10-12 A |  |  | 0% → 90% |  |  |  |
| 355 | Import Experiment Data Files - MAGE-TAB, GE + SNP forAffy, Illumina | 2007-10-10 A |  |  | 0% → 50% | -97.5d → -67.5d |  |  |
| 357 | Validate Experiment Data Files | 2007-10-15 A | 2007-10-17 A |  | 0% → 100% | -97.5d → none |  |  |
| 358 | Sumbit Experiment Proposal - Required Annotation, Save as Drfat |  |  |  | 60% → 90% | -68d → -65d |  |  |
| 359 | Update Experiment Proposal - Update Draft + Submit | 2007-10-15 A |  |  | 0% → 90% |  |  |  |
| 361 | Download Data | 2007-10-12 A |  |  | 0% → 50% |  |  |  |
| 367 | Add Data Parsers for Agilent (Deferred) | 2007-10-19 → 2007-10-08 (-11d) | 2007-10-23 → 2007-10-09 (-14d) |  |  | -71.5d → -62d | 366 → none | was named Add Data Parsers for Agilent |
| 371 | **Test** |  |  |  | 4% → 28% | -12d → -2.5d |  |  |
| 372 | Establish Performance Benchmarks |  |  |  | 20% → 80% |  |  |  |
| 373 | Create, Execute and Report on Jmeter Performance Test Cases | 2007-10-17 A |  |  | 0% → 20% |  |  |  |
| 374 | Create, Execute and Report on Selenium User Interface Test Cases | 2007-10-17 A |  |  | 0% → 10% |  |  |  |
| 375 | Release Build R2_0_0_QA6 | 2007-10-11 A |  |  | 0% → 80% |  |  |  |
| 378 | **Environment** | 2007-10-08 A |  |  | 0% → 29% | -78d → 0d |  |  |
| 380 | Run Unit, Functional, Performance Tests in All Environments | 2007-10-08 A |  |  | 0% → 25% |  |  |  |
| 381 | Support GLOBUS in All Environments (Unexpected Environment Dependency) | 2007-10-11 A |  |  | 0% → 50% | -68d → -65d |  | was named Support GLOBUS in All Environments |
| 382 | Enable CruiseControl to Run Unit, Functional, Performance Tests in Dev | 2007-10-15 A |  |  | 0% → 50% | -68d → -67d |  |  |
| 383 | Update Build and Deploy Plan with SCM Initiative | 2007-10-17 A | 2007-10-17 A |  | 0% → 100% | -68d → none |  |  |
| 384 | **Configuration and Change Management** |  |  |  | 10% → 48% |  |  |  |
| 385 | Manage Gforge Content |  |  |  | 10% → 50% |  |  |  |

## Version 36 (saved 2007-10-19)

Note of the change: revised with register not available

Last finish stays 2007-12-14. Complete tasks 228 → 231.

Changed:

| ID | Task | Start | Finish | Duration | Complete | Total float | Other |
| --- | --- | --- | --- | --- | --- | --- | --- |
| 233 | **Construction Phase** |  |  |  | 51% → 52% |  |  |
| 316 | **Construction - Iteration 2** |  |  |  | 39% → 42% |  |  |
| 347 | **Implementation** |  |  |  | 45% → 46% |  |  |
| 349 | **Targeted Alpha Use Cases** |  |  |  | 86% → 88% |  |  |
| 354 | Register |  |  |  | 90% → 50% |  |  |
| 359 | Update Experiment Proposal - Update Draft + Submit |  | 2007-10-17 A |  | 90% → 100% | -68d → none |  |
| 361 | Download Data |  | 2007-10-16 A |  | 50% → 100% | -72d → none |  |
| 365 | **Data Management** |  | 2007-10-25 → 2007-10-31 (+6d) | 14d → 17.67d |  | -74d → -77.67d |  |
| 368 | Start 1.x Migration Scripts | 2007-10-08 → 2007-10-26 (+18d) | 2007-10-09 → 2007-10-29 (+20d) |  |  | -63.67d → -77.67d | constraint none → start no earlier than 2007-10-26 |
| 369 | Plan and Acquire Initial 1.x Test Data to DEV | 2007-10-24 → 2007-10-29 (+5d) | 2007-10-25 → 2007-10-31 (+6d) |  |  | -74d → -77.67d |  |
| 375 | Release Build R2_0_0_QA6 |  | 2007-10-11 A |  | 80% → 100% | -84d → none |  |
| 376 | Release Build R2_0_0_Alpha1 | 2007-10-19 A |  |  | 0% → 50% | -90d → 0d |  |
| 378 | **Environment** |  |  |  | 29% → 50% |  |  |
| 379 | Provide Command Line Support for Linux | 2007-10-08 A |  |  | 0% → 33% | -68d → -63d |  |
| 380 | Run Unit, Functional, Performance Tests in All Environments |  |  |  | 25% → 50% |  |  |

## Version 37 (saved 2007-10-25)

Note of the change: updates from Thursday 10 24

Last finish stays 2007-12-14. Complete tasks 231 → 234.

Changed:

| ID | Task | Start | Finish | Duration | Complete | Total float | Other |
| --- | --- | --- | --- | --- | --- | --- | --- |
| 1 | **caArray 2.0** |  |  |  | 71% → 73% |  |  |
| 233 | **Construction Phase** |  |  |  | 52% → 55% |  |  |
| 316 | **Construction - Iteration 2** |  |  |  | 42% → 52% |  |  |
| 331 | **Requirements** |  |  |  | 39% → 66% |  |  |
| 332 | Incorporate Stakeholder Feedback on Vision and Supp Spec |  |  |  | 50% → 75% |  |  |
| 333 | Collaborate with Documentation Team on User Guides and Help |  |  |  | 20% → 50% |  |  |
| 334 | Complete HTML based on Wireframe Feedback |  |  |  | 50% → 80% |  |  |
| 347 | **Implementation** |  |  |  | 46% → 49% |  |  |
| 349 | **Targeted Alpha Use Cases** |  |  |  | 88% → 93% |  |  |
| 355 | Import Experiment Data Files - MAGE-TAB, GE + SNP forAffy, Illumina |  |  |  | 50% → 80% | -67.5d → -69.5d |  |
| 358 | Sumbit Experiment Proposal - Required Annotation, Save as Drfat |  | 2007-10-12 A |  | 90% → 100% | -65d → none |  |
| 371 | **Test** |  |  | 17d → 16d | 28% → 60% | -2.5d → -1.5d |  |
| 373 | Create, Execute and Report on Jmeter Performance Test Cases |  | 2007-10-31 A |  | 20% → 100% | -97.5d → none |  |
| 376 | Release Build R2_0_0_Alpha1 | 2007-10-19 A → 2007-11-02 (+14d) | 2007-10-19 → 2007-11-02 (+14d) |  | 50% → 0% | 0d → -99d | constraint finish no earlier than 2007-10-19 → start no earlier than 2007-11-02 |
| 377 | Release Build R2_0_0_QA7 | 2007-11-02 → 2007-10-19 A (-14d) | 2007-11-02 → 2007-10-19 A (-14d) |  | 0% → 100% | -100d → none |  |
| 378 | **Environment** |  |  |  | 50% → 53% |  |  |
| 381 | Support GLOBUS in All Environments (Unexpected Environment Dependency) |  |  |  | 50% → 90% |  |  |
| 388 | **Construction - Iteration 3** | 2007-11-05 → 2007-11-02 (-3d) |  | 20d → 21d |  |  |  |
| 389 | **Project Management** | 2007-11-05 → 2007-11-02 (-3d) |  | 20d → 21d |  |  |  |
| 391 | Dev Team Iteration Plan | 2007-11-05 → 2007-11-02 (-3d) | 2007-11-05 → 2007-11-02 (-3d) |  |  | -81d → -80d |  |
| 392 | Prepare Beta Release Plan | 2007-11-05 → 2007-11-02 (-3d) | 2007-11-06 → 2007-11-05 (-1d) |  |  | -82d → -81d |  |
| 393 | Organize Feedback from Beta Testers | 2007-11-05 → 2007-11-02 (-3d) | 2007-11-05 → 2007-11-02 (-3d) |  |  | -81d → -80d |  |
| 394 | C2 Assessment | 2007-11-05 → 2007-11-02 (-3d) | 2007-11-05 → 2007-11-02 (-3d) |  |  | -81d → -80d |  |
| 396 | Plan for Next Iteration | 2007-11-05 → 2007-11-02 (-3d) | 2007-11-05 → 2007-11-02 (-3d) |  |  | -81d → -80d |  |
| 397 | **Finalize Deliverables** | 2007-11-05 → 2007-11-02 (-3d) |  | 9d → 10d |  |  |  |
| 398 | Deliver C3 Plan | 2007-11-05 → 2007-11-02 (-3d) | 2007-11-07 → 2007-11-06 (-1d) |  |  | -87d → -86d |  |
| 399 | Update Beta Release Plan | 2007-11-08 → 2007-11-07 (-1d) | 2007-11-08 → 2007-11-07 (-1d) |  |  | -87d → -86d |  |
| 401 | Finalize T1 Iteration Plan | 2007-11-09 → 2007-11-08 (-1d) | 2007-11-12 → 2007-11-09 (-3d) |  |  | -87d → -86d |  |
| 402 | Update Risk List | 2007-11-13 → 2007-11-12 (-1d) | 2007-11-13 → 2007-11-12 (-1d) |  |  | -87d → -86d |  |
| 403 | **Requirements** | 2007-11-05 → 2007-11-02 (-3d) |  | 17d → 18d |  |  |  |
| 404 | Update Vision and UC Summary with 2.x Priorities | 2007-11-05 → 2007-11-02 (-3d) | 2007-11-06 → 2007-11-05 (-1d) |  |  | -88d → -87d |  |
| 405 | Incorporate Stakeholder Feedback on C2 Use Cases | 2007-11-07 → 2007-11-06 (-1d) | 2007-11-08 → 2007-11-07 (-1d) |  |  | -88d → -87d |  |
| 406 | Incorporate Stakeholder Feedback on C2 UI Mockups | 2007-11-09 → 2007-11-08 (-1d) | 2007-11-09 → 2007-11-08 (-1d) |  |  | -88d → -87d |  |
| 407 | Incorporate Stakeholder Feedback on 2.x Mockups | 2007-11-12 → 2007-11-09 (-3d) | 2007-11-14 → 2007-11-13 (-1d) |  |  | -88d → -87d |  |
| 409 | **Detail Additional 2.x Use Cases** | 2007-11-05 → 2007-11-02 (-3d) | 2007-11-12 → 2007-11-09 (-3d) |  |  | -86d → -85d |  |
| 410 | UC Organize Workspace | 2007-11-05 → 2007-11-02 (-3d) | 2007-11-06 → 2007-11-05 (-1d) |  |  | -86d → -85d |  |
| 411 | UC Search for Arrays Using Natural Text | 2007-11-07 → 2007-11-06 (-1d) | 2007-11-08 → 2007-11-07 (-1d) |  |  | -86d → -85d |  |
| 412 | UC Import Contextual Data | 2007-11-09 → 2007-11-08 (-1d) | 2007-11-12 → 2007-11-09 (-3d) |  |  | -86d → -85d |  |
| 413 | **Analysis and Design** | 2007-11-05 → 2007-11-02 (-3d) | 2007-11-08 → 2007-11-07 (-1d) |  |  | -84d → -83d |  |
| 414 | Review 2.0 Use Case Designs with 2.x in mind | 2007-11-05 → 2007-11-02 (-3d) | 2007-11-06 → 2007-11-05 (-1d) |  |  | -84d → -83d |  |
| 415 | Revise Domain Object (Logical) Model as Needed | 2007-11-05 → 2007-11-02 (-3d) | 2007-11-05 → 2007-11-02 (-3d) |  |  | -81d → -80d |  |
| 416 | Support Analysis Services Integration as Needed | 2007-11-05 → 2007-11-02 (-3d) | 2007-11-07 → 2007-11-06 (-1d) |  |  | -83d → -82d |  |
| 417 | Update Software Architecture Document | 2007-11-07 → 2007-11-06 (-1d) | 2007-11-08 → 2007-11-07 (-1d) |  |  | -84d → -83d |  |
| 418 | **Implementation** | 2007-11-05 → 2007-11-02 (-3d) | 2007-11-27 → 2007-11-26 (-1d) |  |  | -97d → -96d |  |
| 420 | Fix Defects Found in Beta Release | 2007-11-09 → 2007-11-08 (-1d) | 2007-11-27 → 2007-11-26 (-1d) |  |  | -97d → -96d |  |
| 421 | Create caArray 2.0 Installer + Data Migrator | 2007-11-05 → 2007-11-02 (-3d) | 2007-11-09 → 2007-11-08 (-1d) |  |  | -97d → -96d |  |
| 422 | **Test** | 2007-11-05 → 2007-11-02 (-3d) |  | 20d → 21d |  |  |  |
| 425 | Load 1.x Data from DEV to QA to STAGE | 2007-11-05 → 2007-11-02 (-3d) | 2007-11-30 → 2007-11-29 (-1d) |  |  | -100d → -99d |  |
| 428 | **Configuration and Change Management** | 2007-11-05 → 2007-11-02 (-3d) | 2007-11-30 → 2007-11-29 (-1d) |  |  | -100d → -99d |  |
| 429 | Manage Gforge Content | 2007-11-05 → 2007-11-02 (-3d) | 2007-11-30 → 2007-11-29 (-1d) |  |  | -100d → -99d |  |
| 430 | Prioritize 2.0 Defects and UC for 2.x | 2007-11-05 → 2007-11-02 (-3d) | 2007-11-30 → 2007-11-29 (-1d) |  |  | -100d → -99d |  |
| 432 | C3 Complete | 2007-11-30 → 2007-11-29 (-1d) | 2007-11-30 → 2007-11-29 (-1d) |  |  | -100d → -99d |  |

## Version 38 (saved 2007-10-30)

Note of the change: checkign status

Last finish stays 2007-12-14. Complete tasks 234 → 235.

Changed:

| ID | Task | Start | Finish | Duration | Complete | Total float | Other |
| --- | --- | --- | --- | --- | --- | --- | --- |
| 1 | **caArray 2.0** |  |  |  | 73% → 74% |  |  |
| 233 | **Construction Phase** |  |  |  | 55% → 58% |  |  |
| 316 | **Construction - Iteration 2** |  |  |  | 52% → 61% |  |  |
| 317 | **Project Management** |  |  |  | 41% → 57% |  |  |
| 318 | Weekly Status Meetings |  |  |  | 50% → 75% |  |  |
| 325 | **Finalize Deliverables** |  |  |  | 25% → 30% |  |  |
| 330 | Update Risk List |  |  |  | 25% → 50% |  |  |
| 336 | **Analysis and Design** |  |  |  | 35% → 55% | -11d → -9d |  |
| 337 | **Complete C1 Use Case Designs** |  |  |  | 31% → 56% | -4d → -2d |  |
| 339 | Manage Collaborators | 2007-10-10 A |  |  | 0% → 50% | -75d → -63d |  |
| 340 | Register |  | 2007-10-11 A |  | 50% → 100% | -75d → none |  |
| 341 | Manage Users | 2007-10-12 A |  |  | 0% → 50% | -75d → 0d |  |
| 347 | **Implementation** |  |  |  | 49% → 60% | -10d → -4d |  |
| 349 | **Targeted Alpha Use Cases** |  | 2007-10-17 → 2007-10-25 (+8d) | 8d → 14d |  |  |  |
| 354 | Register |  | 2007-10-16 → 2007-10-25 (+9d) | 3d → 10d | 50% → 80% | -67d → -74d |  |
| 362 | **Start C2 UC's Not Targeted for A1** | 2007-10-17 A |  |  | 0% → 31% | -76d → -4d |  |
| 363 | Manage Collaborators | 2007-10-17 A |  |  | 0% → 80% |  |  |
| 371 | **Test** |  |  |  | 60% → 87% |  |  |
| 372 | Establish Performance Benchmarks |  |  |  | 80% → 90% |  |  |
| 374 | Create, Execute and Report on Selenium User Interface Test Cases |  | 2007-10-30 → 2007-10-26 (-4d) | 10d → 7.37d | 10% → 68% | -97d → -94.37d | resources rsrinivasa [90%] → rsrinivasa [90%]; bmason |

## Version 39 (saved 2007-10-31)

Note of the change: updated with latest status

Last finish stays 2007-12-14. Complete tasks 235 → 240.

Changed:

| ID | Task | Start | Finish | Complete | Total float | Other |
| --- | --- | --- | --- | --- | --- | --- |
| 1 | **caArray 2.0** |  |  | 74% → 75% |  |  |
| 233 | **Construction Phase** |  |  | 58% → 60% |  |  |
| 316 | **Construction - Iteration 2** |  |  | 61% → 68% |  |  |
| 317 | **Project Management** |  |  | 57% → 62% |  |  |
| 321 | Organize Feedback from Alpha Testers (Deferred) |  |  |  |  | was named Organize Feedback from Alpha Testers |
| 324 | Plan for Next Iteration | 2007-10-22 A |  | 0% → 50% |  |  |
| 325 | **Finalize Deliverables** |  |  | 30% → 56% | -1d → 0d |  |
| 328 | October Status Report | 2007-10-31 A | 2007-10-31 A | 0% → 100% | -78d → none |  |
| 330 | Update Risk List |  |  | 50% → 80% |  |  |
| 331 | **Requirements** |  |  | 66% → 82% |  |  |
| 333 | Collaborate with Documentation Team on User Guides and Help |  |  | 50% → 75% |  |  |
| 334 | Complete HTML based on Wireframe Feedback |  | 2007-10-19 A | 80% → 100% | -5d → none |  |
| 335 | Collaborate with App Support to Support Online Help, User Guides |  | 2007-10-23 A | 50% → 100% | -72d → none |  |
| 336 | **Analysis and Design** |  |  | 55% → 75% | -9d → -7d |  |
| 337 | **Complete C1 Use Case Designs** |  |  | 56% → 81% | -2d → 0d |  |
| 342 | Search Repository | 2007-10-16 A | 2007-10-16 A | 0% → 100% | -75d → none |  |
| 343 | Import Array Designs | 2007-10-17 A | 2007-10-17 A | 0% → 100% | -68d → none |  |
| 347 | **Implementation** |  |  | 60% → 64% |  |  |
| 349 | **Targeted Alpha Use Cases** |  |  | 93% → 97% |  |  |
| 354 | Register |  |  | 80% → 95% |  |  |
| 365 | **Data Management** | 2007-10-08 A |  | 0% → 13% | -77.67d → -8.17d |  |
| 366 | Add Data Parsers for GenePix | 2007-10-17 A |  | 0% → 50% | -71.5d → -69.5d |  |
| 371 | **Test** |  |  | 87% → 91% |  |  |
| 374 | Create, Execute and Report on Selenium User Interface Test Cases |  |  | 68% → 80% |  |  |
| 378 | **Environment** |  |  | 53% → 58% |  |  |
| 379 | Provide Command Line Support for Linux |  |  | 33% → 75% |  |  |

## Version 40 (saved 2007-11-02)

Note of the change: updated for C3

Last finish stays 2007-12-14. Complete tasks 240 → 252.

Added:

| ID | Task | Duration | Start | Finish | Predecessors | Constraint | Resources |
| --- | --- | --- | --- | --- | --- | --- | --- |
| 408 | Investigate EVS Methods for Vocabulary Retrieval | 1d | 2007-11-07 | 2007-11-07 |  | finish no earlier than 2007-11-07 | smiller |
| 409 | Design Migration Strategy for 1.x Experiments | 1d | 2007-11-02 | 2007-11-02 |  |  | etavela; smatyas [50%] |
| 412 | **Inroduce and Complete C3 UC's** | 12.91d | 2007-11-02 | 2007-11-20 |  |  |  |
| 413 | Search Repository UC | 5.45d | 2007-11-02 | 2007-11-09 |  |  | wcheng; tparnell [10%] |
| 414 | Navigate Repository UC | 5.45d | 2007-11-09 | 2007-11-16 | 413 |  | wcheng; tparnell [10%] |
| 415 | Import Array Design UC | 2d | 2007-11-16 | 2007-11-20 | 414 |  | wcheng; etavela [10%] |
| 416 | **Complete C2 UC's** | 14d | 2007-11-02 | 2007-11-21 |  |  |  |
| 417 | Manage Exp Data Files - Full UI (Add Filter, Associate File<->Sample, Progress Meter) | 8d | 2007-11-02 | 2007-11-13 |  |  | smiller |
| 418 | Download Exp. Data UC (Download Job) | 2d | 2007-11-02 | 2007-11-05 |  |  | tparnell |
| 419 | Manage Experiment Permissions UC - Complete Sample Level and TCGA Policy | 3d | 2007-11-02 | 2007-11-06 |  |  | dkokotov; tparnell |
| 420 | Manage Publications UC (edit, delete) | 1d | 2007-11-07 | 2007-11-07 | 419 |  | dkokotov |
| 421 | Submit Experiment Proposal (validation, draft, incorporate UCV) | 5d | 2007-11-08 | 2007-11-14 | 420 |  | dkokotov; smiller |
| 422 | Update Experiment Proposal (validation, across states, edit entity association) | 5d | 2007-11-15 | 2007-11-21 | 421 |  | dkokotov |
| 423 | Import Experiment Data (improve validation, add genepix, fix UI scheme for large file sets, auto-chain choice) | 4d | 2007-11-02 | 2007-11-07 |  |  | smiller |
| 424 | Manage Collaborators | 2d | 2007-11-02 | 2007-11-05 |  |  | tparnell |
| 425 | Manage Users (ensure UPT3.2 works) | 1d | 2007-11-02 | 2007-11-02 |  |  | tparnell |
| 426 | Validate Data Files (Add Illumina, GenePix Validation, Other File Skip Validation) | 1d | 2007-11-02 | 2007-11-02 |  |  | etavela |
| 427 | Acquire Experiment Data Via API (Convenience Queries and Response to Size Limit) | 3d | 2007-11-02 | 2007-11-06 |  |  | etavela |
| 428 | **Data Management** | 5d | 2007-11-02 | 2007-11-08 |  |  |  |
| 429 | Support MAGE-TAB Import (allow for .txt to be valid) | 1d | 2007-11-02 | 2007-11-02 |  |  | etavela |
| 430 | Annotate Model for caDSR Submission | 3d | 2007-11-06 | 2007-11-08 | 406 | start no earlier than 2007-11-05 | etavela |
| 431 | Add Data Parsers for GenePix | 0.5d | 2007-11-02 | 2007-11-02 |  |  | etavela |
| 432 | Import Experiment Data Files Gene Pix | 0.5d | 2007-11-02 | 2007-11-02 |  |  | etavela |
| 435 | Write, Execute and Record UI Test Cases in Selenium | 12d | 2007-11-02 | 2007-11-19 |  |  | bmason |
| 436 | Write, Execute and Record Performance Test Cases in Jmeter | 12d | 2007-11-02 | 2007-11-19 |  |  | rsrinivasa |
| 440 | Design and Create caArray 2.0 Installer | 10d | 2007-11-05 | 2007-11-16 |  | start no earlier than 2007-11-05 | pduvall; lgurses |
| 442 | Prepare Deployment to Bundle Environment | 1d | 2007-11-14 | 2007-11-14 |  | start no earlier than 2007-11-14 | lgurses |

Removed: 393 Organize Feedback from Beta Testers; 395 C3 Review; 400 October Status Report; 407 Incorporate Stakeholder Feedback on 2.x Mockups; 409 Detail Additional 2.x Use Cases; 410 UC Organize Workspace; 411 UC Search for Arrays Using Natural Text; 412 UC Import Contextual Data; 414 Review 2.0 Use Case Designs with 2.x in mind; 420 Fix Defects Found in Beta Release; 421 Create caArray 2.0 Installer + Data Migrator; 424 Release QA Build C3B - Beta 2

Changed:

| ID | Task | Start | Finish | Duration | Complete | Total float | Predecessors | Other |
| --- | --- | --- | --- | --- | --- | --- | --- | --- |
| 1 | **caArray 2.0** |  |  | 185d → 184d | 75% → 77% | -30d → -29d |  |  |
| 36 | Data Access Subsystem Design |  |  | 2.75d → 1d |  |  |  | resources rsrinavasa; etavela [25%] → etavela [25%] |
| 37 | MAGE-OM Façade |  |  | 4.5d → 3d |  |  |  | resources rsrinavasa; etavela [25%] → etavela [25%] |
| 43 | Implement Data Access |  |  |  |  |  |  | resources rsrinavasa → none |
| 44 | Implement Protocol Management |  |  | 2.2w → 1.6w |  |  |  | resources jpike; rsrinavasa; etavela [10%] → jpike; etavela [10%] |
| 45 | Implement Protocol User Interface (minimal) |  |  |  |  |  |  | resources rsrinavasa; jpike → jpike |
| 55 | Launch Development Process |  |  |  |  |  |  | resources smatyas; jpike; smiller; rsrinavasa → smatyas; jpike; smiller |
| 76 | Inception Post Mortem |  |  |  |  |  |  | resources smatyas; bgendleman [80%]; etavela [90%]; jpike; rsrinavasa → smatyas; bgendleman [80%]; etavela [90%]; jpike |
| 94 | UC Acquire Project Data via API |  |  |  |  |  |  | resources rsrinavasa → none |
| 95 | UC Manage Data Files |  |  |  |  |  |  | resources rsrinavasa; bgendleman [80%] → bgendleman [80%] |
| 106 | Targeted Use Case Analysis and Design |  |  |  |  |  |  | resources etavela [90%]; jpike; rsrinavasa → etavela [90%]; jpike |
| 107 | MIAME and MAGE-TAB Comparison |  |  |  |  |  |  | resources etavela [10%]; jpike; rsrinavasa → etavela [10%]; jpike |
| 108 | Grid Strategy - Deferred |  |  |  |  |  |  | resources etavela [25%]; rsrinavasa → etavela [25%] |
| 117 | Implement UC Import Project Data |  |  |  |  |  |  | resources bmason; rsrinavasa; jpike; etavela [90%] → bmason; jpike; etavela [90%] |
| 120 | Implement UC Acquire Project Data via API (incomplete) |  |  |  |  |  |  | resources etavela [90%]; rsrinavasa → etavela [90%] |
| 125 | Create Functional Test for targeted UC's |  |  |  |  |  |  | resources jpike; rsrinavasa; etavela [90%] → jpike; etavela [90%] |
| 156 | UX Modeling/Wireframes (from E1 deferred) |  |  |  |  |  |  | resources bgendleman [50%]; mrehuss → bgendleman [50%] |
| 157 | UI Mockups for Prioritized Use Cases |  |  |  |  |  |  | resources bgendleman [50%]; mrehuss → bgendleman [50%] |
| 158 | Stylesheet Framework (from E1 deferred) |  |  |  |  |  |  | resources bgendleman [80%]; lpower → bgendleman [80%] |
| 170 | Logical Model Final Draft |  |  |  |  |  |  | resources rsrinavasa → none |
| 182 | Remote API Grid Implementation (90% Complete) |  |  |  |  |  |  | resources rsrinavasa; tparnell → tparnell |
| 233 | **Construction Phase** |  | 2007-11-30 → 2007-11-21 (-9d) | 61d → 54d | 60% → 64% | -20d → -13d |  |  |
| 316 | **Construction - Iteration 2** |  |  |  | 68% → 84% |  |  |  |
| 317 | **Project Management** |  |  |  | 62% → 83% |  |  |  |
| 318 | Weekly Status Meetings |  | 2007-11-02 A |  | 75% → 100% | -80d → none |  |  |
| 320 | Prepare Alpha Release Plan and Organization |  |  |  | 50% → 75% |  |  |  |
| 324 | Plan for Next Iteration |  | 2007-10-22 A |  | 50% → 100% | -74.33d → none |  |  |
| 325 | **Finalize Deliverables** |  |  |  | 56% → 80% |  |  |  |
| 327 | Update Beta Release Plan (deferred) |  |  |  |  | -76d → -75d |  | was named Update Beta Release Plan |
| 329 | Finalize C3 Iteration Plans | 2007-10-29 A | 2007-10-29 A |  | 0% → 100% | -76d → none |  |  |
| 330 | Update Risk List |  | 2007-10-30 A |  | 80% → 100% | -77d → none |  |  |
| 331 | **Requirements** |  |  |  | 82% → 96% |  |  |  |
| 332 | Incorporate Stakeholder Feedback on Vision and Supp Spec |  |  |  | 75% → 90% |  |  |  |
| 333 | Collaborate with Documentation Team on User Guides and Help |  | 2007-10-29 A |  | 75% → 100% | -76d → none |  |  |
| 336 | **Analysis and Design** |  |  |  | 75% → 86% |  |  |  |
| 337 | **Complete C1 Use Case Designs** |  |  |  | 81% → 95% |  |  |  |
| 339 | Manage Collaborators |  | 2007-10-10 A |  | 50% → 100% | -63d → none |  |  |
| 341 | Manage Users (UPT 3.2) |  |  |  | 50% → 80% |  |  | was named Manage Users |
| 347 | **Implementation** |  |  |  | 64% → 81% | -4d → 0d |  |  |
| 349 | **Targeted Alpha Use Cases** |  | 2007-10-25 A |  | 97% → 100% | 0d → none |  |  |
| 354 | Register |  | 2007-10-25 A |  | 95% → 100% | -74d → none |  |  |
| 355 | Import Experiment Data Files - MAGE-TAB, GE + SNP forAffy, Illumina |  | 2007-10-15 A |  | 80% → 100% | -65.5d → none |  |  |
| 362 | **Start C2 UC's Not Targeted for A1** |  | 2007-10-29 → 2007-10-31 (+2d) | 9d → 11d | 31% → 54% | -4d → 0d |  |  |
| 363 | Manage Collaborators |  | 2007-10-23 A |  | 80% → 100% | -72d → none |  |  |
| 364 | Search Repository | 2007-10-18 A | 2007-10-29 → 2007-10-31 (+2d) |  | 0% → 25% | -76d → -78d |  | resources etavela [10%]; bmason → wcheng |
| 368 | Start 1.x Migration Scripts (deferred) |  |  |  |  |  |  | was named Start 1.x Migration Scripts |
| 370 | Fix Defects Found in Alpha Release (deferred but fixes have been done) | 2007-10-23 A | 2007-10-31 A |  | 0% → 100% | -78d → none |  | was named Fix Defects Found in Alpha Release |
| 373 | Create, Execute and Report on Jmeter Performance Test Cases |  |  |  |  |  |  | resources bmason [60%]; rsrinavasa [30%] → bmason [60%] |
| 378 | **Environment** |  |  |  | 58% → 61% |  |  |  |
| 379 | Provide Command Line Support for Linux |  | 2007-10-10 A |  | 75% → 100% | -63d → none |  |  |
| 384 | **Configuration and Change Management** |  |  |  | 48% → 95% |  |  |  |
| 385 | Manage Gforge Content |  | 2007-11-02 A |  | 50% → 100% | -80d → none |  |  |
| 388 | **Construction - Iteration 3** |  | 2007-11-30 → 2007-11-21 (-9d) | 21d → 14d |  | -100d → -93d |  |  |
| 389 | **Project Management** |  | 2007-11-30 → 2007-11-19 (-11d) | 21d → 12d |  | -100d → -91d |  |  |
| 390 | Weekly Status Meetings | 2007-11-05 → 2007-11-15 (+10d) | 2007-11-30 → 2007-11-19 (-11d) | 20d → 2.2d |  | -100d → -91d |  | constraint start no earlier than 2007-11-05 → finish no earlier than 2007-11-19; resources none → bgendleman [50%]; bmason; tparnell |
| 391 | Dev Team Iteration Plan | 2007-11-02 → 2007-11-05 (+3d) | 2007-11-02 → 2007-11-05 (+3d) |  |  | -80d → -83d |  | constraint none → start no earlier than 2007-11-05; resources none → bgendleman [50%] |
| 392 | Prepare Alpha Release Plan | 2007-11-02 → 2007-11-06 (+4d) | 2007-11-05 → 2007-11-07 (+2d) |  |  | -81d → -83d | none → 391 | was named Prepare Beta Release Plan; resources none → bgendleman [50%] |
| 393 | C2 Assessment/C3 Review | 2007-11-02 → 2007-11-12 (+10d) | 2007-11-02 → 2007-11-12 (+10d) |  |  | -80d → -86d |  | was named C2 Assessment; constraint none → start no earlier than 2007-11-12; resources none → bgendleman [50%] |
| 394 | Plan for Next Iteration |  |  |  |  |  |  | resources none → bgendleman [50%] |
| 395 | **Finalize Deliverables** |  | 2007-11-15 → 2007-11-12 (-3d) | 10d → 7d |  | -89d → -86d |  |  |
| 396 | Deliver C3 Plan |  |  |  |  |  |  | resources none → bgendleman [50%]; bmason; tparnell |
| 397 | Update Beta Release Plan |  |  |  |  |  |  | resources none → bgendleman [50%]; bmason; tparnell |
| 398 | Finalize T1 Iteration Plan |  |  |  |  |  |  | resources none → bgendleman [50%]; bmason; tparnell |
| 399 | Update Risk List |  |  |  |  |  |  | resources none → bgendleman [50%]; bmason; tparnell |
| 400 | **Requirements** |  | 2007-11-27 → 2007-11-21 (-6d) | 18d → 14d |  | -97d → -93d |  |  |
| 404 | Collaborate with Documentation to Support Online Help, User Guides | 2007-11-19 → 2007-11-05 (-14d) | 2007-11-27 → 2007-11-21 (-6d) | 7d → 13d |  | -97d → -93d |  | constraint start no earlier than 2007-11-19 → finish no earlier than 2007-11-21 |
| 406 | Revise Domain Object (Logical) Model with GeneID | 2007-11-02 → 2007-11-05 (+3d) | 2007-11-02 → 2007-11-05 (+3d) |  |  | -80d → -84d |  | was named Revise Domain Object (Logical) Model as Needed; constraint none → start no earlier than 2007-11-05; resources rsrinavasa → etavela |
| 407 | Support Analysis Services Integration as Needed |  |  |  |  |  |  | resources none → tparnell |
| 410 | Update Software Architecture Document | 2007-11-06 → 2007-11-02 (-4d) | 2007-11-07 → 2007-11-02 (-5d) | 2d → 1d |  | -83d → -80d | Review 2.0 Use Case Designs with 2.x in mind → none | resources etavela [90%] → tparnell; etavela |
| 411 | **Implementation** |  | 2007-11-26 → 2007-11-21 (-5d) | 17d → 14d |  | -96d → -93d |  |  |

| ID | Task | Start | Finish | Duration | Total float | Predecessors | Other |
| --- | --- | --- | --- | --- | --- | --- | --- |
| 433 | Fix Defects Found in QA7&8 |  | 2007-11-16 → 2007-11-20 (+4d) | 10d → 12d | -90d → -92d |  | was named Fix Defects Found in Alpha Release; constraint start no earlier than 2007-11-05 → finish no earlier than 2007-11-20; resources etavela [80%]; jpike; rsrinavasa; bmason; tparnell → etavela [80%]; bmason [10%]; tparnell; smiller; dkokotov; wcheng; rsrinivasa [10%] |
| 434 | **Test** |  | 2007-11-30 → 2007-11-21 (-9d) | 21d → 13d | -100d → -92d |  |  |
| 437 | Release QA Build C3A - Alpha 1 | 2007-11-16 → 2007-11-21 (+5d) | 2007-11-16 → 2007-11-21 (+5d) |  | -90d → -92d |  | was named Release QA Build C3A - Beta 1; constraint finish no earlier than 2007-11-16 → start no earlier than 2007-11-21 |
| 438 | Load 1.x Data from DEV to QA to STAGE |  | 2007-11-29 → 2007-11-05 (-24d) | 20d → 2d | -99d → -81d |  | resources none → bmason; rsrinivasa |
| 439 | **Environment** | 2007-11-29 → 2007-11-05 (-24d) | 2007-11-29 → 2007-11-21 (-8d) | 1d → 13d | -99d → -93d |  |  |
| 441 | Update Build and Deploy Plan with SCM Initiative | 2007-11-29 → 2007-11-21 (-8d) | 2007-11-29 → 2007-11-21 (-8d) |  | -99d → -93d | Release QA Build C3B - Beta 2 → none | constraint start no earlier than 2007-11-29 → start no earlier than 2007-11-21 |
| 443 | **Configuration and Change Management** |  | 2007-11-29 → 2007-11-21 (-8d) | 20d → 14d | -99d → -93d |  |  |
| 444 | Manage Gforge Content |  | 2007-11-29 → 2007-11-21 (-8d) | 20d → 14d | -99d → -93d |  |  |
| 445 | Prioritize 2.0 Defects |  | 2007-11-29 → 2007-11-21 (-8d) | 20d → 14d | -99d → -93d |  | was named Prioritize 2.0 Defects and UC for 2.x |
| 446 | Prepare Download Center Material, Release Notes | 2007-11-26 → 2007-11-19 (-7d) | 2007-11-27 → 2007-11-20 (-7d) |  | -97d → -92d |  | constraint start no earlier than 2007-11-26 → start no earlier than 2007-11-19 |
| 447 | C3 Complete | 2007-11-29 → 2007-11-21 (-8d) | 2007-11-29 → 2007-11-21 (-8d) |  | -99d → -93d |  | constraint none → start no earlier than 2007-11-21 |
| 448 | **Transition Phase** | 2007-12-03 → 2007-11-22 (-11d) |  | 10d → 16d | -100d → -99d |  |  |
| 449 | **Transition - Iteration 1** | 2007-12-03 → 2007-11-22 (-11d) |  | 10d → 16d | -100d → -99d |  |  |
| 450 | **Project Management** | 2007-12-03 → 2007-11-22 (-11d) | 2007-12-14 → 2007-12-05 (-9d) |  | -100d → -93d |  |  |
| 451 | Weekly Status Meetings | 2007-12-03 → 2007-11-22 (-11d) | 2007-12-14 → 2007-12-05 (-9d) |  | -100d → -93d |  |  |
| 452 | Dev Team Iteration Plan | 2007-12-03 → 2007-11-22 (-11d) | 2007-12-03 → 2007-11-22 (-11d) |  | -91d → -84d |  |  |
| 453 | Prepare GA Release Plan | 2007-12-03 → 2007-11-22 (-11d) | 2007-12-04 → 2007-11-23 (-11d) |  | -92d → -85d |  |  |
| 454 | Organize Feedback from Beta Testers | 2007-12-03 → 2007-11-22 (-11d) | 2007-12-03 → 2007-11-22 (-11d) |  | -91d → -84d |  |  |
| 455 | C3 Assessment | 2007-12-03 → 2007-11-22 (-11d) | 2007-12-03 → 2007-11-22 (-11d) |  | -91d → -84d |  |  |
| 456 | T1 Review | 2007-12-03 → 2007-11-22 (-11d) | 2007-12-03 → 2007-11-22 (-11d) |  | -91d → -84d |  |  |
| 457 | Plan for Next Iteration | 2007-12-03 → 2007-11-22 (-11d) | 2007-12-03 → 2007-11-22 (-11d) |  | -91d → -84d |  |  |
| 458 | **Finalize Deliverables** | 2007-12-03 → 2007-11-22 (-11d) | 2007-12-11 → 2007-11-30 (-11d) |  | -97d → -90d |  |  |
| 459 | Deliver T1 Plan | 2007-12-03 → 2007-11-22 (-11d) | 2007-12-05 → 2007-11-26 (-9d) |  | -97d → -90d |  |  |
| 460 | Prepare GA Release Plan | 2007-12-06 → 2007-11-27 (-9d) | 2007-12-06 → 2007-11-27 (-9d) |  | -97d → -90d |  |  |
| 461 | November Status Report | 2007-12-03 → 2007-11-22 (-11d) | 2007-12-03 → 2007-11-22 (-11d) |  | -91d → -84d |  |  |
| 462 | Finalize T1 Iteration Plan | 2007-12-07 → 2007-11-28 (-9d) | 2007-12-10 → 2007-11-29 (-11d) |  | -97d → -90d |  |  |
| 463 | Update Risk List | 2007-12-11 → 2007-11-30 (-11d) | 2007-12-11 → 2007-11-30 (-11d) |  | -97d → -90d |  |  |
| 464 | **Requirements** | 2007-12-03 → 2007-11-22 (-11d) | 2007-12-07 → 2007-11-28 (-9d) |  | -95d → -88d |  |  |
| 465 | Finalize Documentation for GA Release | 2007-12-03 → 2007-11-22 (-11d) | 2007-12-07 → 2007-11-28 (-9d) |  | -95d → -88d |  |  |
| 466 | **Write 2.x Use Cases** | 2007-12-03 → 2007-11-22 (-11d) | 2007-12-06 → 2007-11-27 (-9d) |  | -93.5d → -86.5d |  |  |
| 467 | UC Manage Institutional Groups | 2007-12-03 → 2007-11-22 (-11d) | 2007-12-03 → 2007-11-22 (-11d) |  | -93.5d → -86.5d |  |  |
| 468 | Update UC Search Repository | 2007-12-04 → 2007-11-23 (-11d) | 2007-12-04 → 2007-11-23 (-11d) |  | -93.5d → -86.5d |  |  |
| 469 | UC Register For An Account | 2007-12-04 → 2007-11-23 (-11d) | 2007-12-05 → 2007-11-26 (-9d) |  | -93.5d → -86.5d |  |  |
| 470 | UC Manage Collaborators | 2007-12-05 → 2007-11-26 (-9d) | 2007-12-06 → 2007-11-27 (-9d) |  | -93.5d → -86.5d |  |  |
| 471 | **Analysis and Design** | 2007-12-03 → 2007-11-22 (-11d) | 2007-12-03 → 2007-11-22 (-11d) |  | -91d → -84d |  |  |
| 472 | Model Manipulation as needed | 2007-12-03 → 2007-11-22 (-11d) | 2007-12-03 → 2007-11-22 (-11d) |  | -91d → -84d |  |  |
| 473 | **Implementation** | 2007-12-03 → 2007-11-22 (-11d) | 2007-12-14 → 2007-12-05 (-9d) |  | -100d → -93d |  |  |
| 474 | Complete Targeted Defects for GA | 2007-12-03 → 2007-11-22 (-11d) | 2007-12-11 → 2007-12-04 (-7d) | 7d → 8.46d | -97d → -91.46d |  | resources etavela [80%]; rsrinavasa; bmason; tparnell; dkokotov; jhedden → etavela [80%]; bmason; tparnell; dkokotov; jhedden |
| 475 | Complete caArray 2.0 Installer + Data Migrator | 2007-12-03 → 2007-11-22 (-11d) | 2007-12-14 → 2007-12-05 (-9d) |  | -100d → -93d |  |  |
| 476 | **Test** | 2007-12-03 → 2007-11-22 (-11d) |  | 10d → 16d | -100d → -99d |  |  |
| 477 | Release QA Build Beta 1 |  |  |  |  |  | was named Release QA Build T1A |
| 479 | Load 1.x Data from DEV to QA to STAGE to PROD | 2007-12-03 → 2007-11-22 (-11d) | 2007-12-14 → 2007-12-05 (-9d) |  | -100d → -93d |  |  |
| 482 | **Configuration and Change Management** | 2007-12-03 → 2007-11-22 (-11d) | 2007-12-14 → 2007-12-10 (-4d) | 10d → 13d | -100d → -96d |  |  |
| 483 | Manage Gforge Content | 2007-12-03 → 2007-11-22 (-11d) | 2007-12-14 → 2007-12-05 (-9d) |  | -100d → -93d |  |  |
| 484 | Prioritize 2.0 Defects and UC for 2.x | 2007-12-03 → 2007-11-22 (-11d) | 2007-12-03 → 2007-11-22 (-11d) |  | -91d → -84d |  |  |

## Version 41 (saved 2007-11-03)

Note of the change: revised some dates, durations and dependencies but still finishing on Nov 21; added Transition 2 to handle Bundle preparation and potentially defects found in RC1 on the 14th; put a place holder for 2.x

Last finish 2007-12-14 → 2008-01-18 (+35d).

Added:

| ID | Task | Duration | Start | Finish | Predecessors | Constraint | Resources |
| --- | --- | --- | --- | --- | --- | --- | --- |
| 432 | Create Initial 1.x Migration Scripts | 1d | 2007-11-14 | 2007-11-14 | 408, 431 |  | smatyas [50%]; etavela |
| 487 | **Transition - Iteration 2** | 26d | 2007-12-14 | 2008-01-18 | 486 |  |  |
| 488 | Address Functional Defects in RC1 | 26d | 2007-12-14 | 2008-01-18 |  |  |  |
| 489 | Address LSD Bundle Environment Defects | 26d | 2007-12-14 | 2008-01-18 |  |  |  |
| 490 | Address LSDBundle Deployment Documentation | 26d | 2007-12-14 | 2008-01-18 |  |  |  |
| 491 | Ensure Installation Integrates with LSD Bundle | 3d | 2007-12-14 | 2007-12-18 |  |  |  |
| 492 | GA Bundle Release | 0d | 2008-01-18 | 2008-01-18 |  | finish no earlier than 2008-01-18 |  |
| 493 | **caArray 2.0.x** | 20d | 2007-12-14 | 2008-01-10 | 486 |  |  |
| 494 | TBD | 20d | 2007-12-14 | 2008-01-10 |  |  |  |
| 495 | TBD | 20d | 2007-12-14 | 2008-01-10 |  |  |  |
| 496 | TBD | 20d | 2007-12-14 | 2008-01-10 |  |  |  |

Removed: 403 Incorporate Stakeholder Feedback on C2 UI Mockups

Changed:

| ID | Task | Start | Finish | Duration | Complete | Total float | Predecessors | Other |
| --- | --- | --- | --- | --- | --- | --- | --- | --- |
| 1 | **caArray 2.0** |  | 2007-12-14 → 2008-01-18 (+35d) | 184d → 210d | 77% → 73% | -29d → -42d |  |  |
| 386 | Prioritize 2.0 Defects and UC for 2.x |  |  |  |  |  | 377 → none |  |
| 388 | **Construction - Iteration 3** | 2007-11-02 A |  |  | 0% → 1% | -93d → 0d |  |  |
| 390 | Weekly Status Meetings | 2007-11-15 → 2007-11-19 (+4d) |  | 2.2d → 1d |  | -91d → -107d |  |  |
| 392 | Prepare External Release Plan |  |  |  |  | -83d → -99d |  | was named Prepare Alpha Release Plan |
| 393 | C2 Assessment/C3 Review | 2007-11-12 → 2007-11-13 (+1d) | 2007-11-12 → 2007-11-13 (+1d) |  |  | -86d → -103d |  | constraint start no earlier than 2007-11-12 → start no earlier than 2007-11-13 |
| 400 | **Requirements** | 2007-11-02 → 2007-11-05 (+3d) |  | 14d → 13d |  | -93d → -109d |  |  |
| 401 | Finalize Vision, Scope, UC Summary, Supplemental Spec | 2007-11-02 → 2007-11-15 (+13d) | 2007-11-05 → 2007-11-19 (+14d) | 2d → 3d |  | -84d → -109d |  | was named Update Vision and UC Summary with 2.x Priorities; constraint none → finish no earlier than 2007-11-19 |
| 402 | Incorporate Stakeholder Feedback on C2 Use Cases | 2007-11-06 → 2007-11-20 (+14d) | 2007-11-07 → 2007-11-21 (+14d) |  |  | -84d → -109d |  |  |
| 404 | **Analysis and Design** |  | 2007-11-07 → 2007-11-19 (+12d) | 4d → 12d |  | -83d → -107d |  |  |
| 408 | Design Migration Strategy for 1.x Experiments | 2007-11-02 → 2007-11-08 (+6d) | 2007-11-02 → 2007-11-08 (+6d) |  |  | -80d → -101d |  | constraint none → start no earlier than 2007-11-08 |
| 409 | Update Software Architecture Document | 2007-11-02 → 2007-11-19 (+17d) | 2007-11-02 → 2007-11-19 (+17d) |  |  | -80d → -107d |  | constraint none → start no earlier than 2007-11-19 |
| 425 | Validate Data Files (Add Illumina, GenePix Validation, Other File Skip Validation) | 2007-11-02 → 2007-11-05 (+3d) | 2007-11-02 → 2007-11-05 (+3d) |  |  | -80d → -104d | none → 429 |  |
| 426 | Acquire Experiment Data Via API (Convenience Queries and Response to Size Limit) | 2007-11-02 → 2007-11-06 (+4d) | 2007-11-06 → 2007-11-08 (+2d) |  |  | -82d → -104d | none → 425 |  |
| 427 | **Data Management** |  | 2007-11-08 → 2007-11-14 (+6d) | 5d → 9d |  | -84d → -104d |  |  |
| 429 | Import Experiment Data Files Gene Pix |  |  |  |  | -79.5d → -104d | none → 428 |  |
| 430 | Support MAGE-TAB Import (allow for .txt to be valid) | 2007-11-02 → 2007-11-05 (+3d) | 2007-11-02 → 2007-11-05 (+3d) |  |  | -80d → -101d | none → 429 |  |
| 431 | Annotate Model for caDSR Submission | 2007-11-06 → 2007-11-09 (+3d) | 2007-11-08 → 2007-11-13 (+5d) |  |  | -84d → -104d | 405 → 405, 430, 426 |  |
| 437 | Release QA Build C3A - External 1 |  |  |  |  | -92d → -108d |  | was named Release QA Build C3A - Alpha 1; resources none → bmason |
| 438 | Load 1.x Data from DEV to QA to STAGE | 2007-11-02 → 2007-11-19 (+17d) | 2007-11-05 → 2007-11-20 (+15d) |  |  | -81d → -108d |  | constraint none → start no earlier than 2007-11-19 |
| 441 | Update Build and Deploy Plan with SCM Initiative |  |  |  |  | -93d → -109d |  | resources none → pduvall |
| 443 | **Configuration and Change Management** | 2007-11-02 A |  |  | 0% → 5% | -93d → 0d |  |  |
| 444 | Manage Gforge Content | 2007-11-02 A |  |  | 0% → 5% | -93d → -109d |  | resources none → bgendleman; bmason; rsrinivasa |
| 445 | Prioritize 2.0 Defects | 2007-11-02 A |  |  | 0% → 5% | -93d → -109d |  | resources none → bgendleman [50%] |
| 446 | Prepare Download Center Material, Release Notes |  |  |  |  | -92d → -108d |  | resources none → bgendleman [50%] |
| 448 | **Transition Phase** |  | 2007-12-14 → 2008-01-18 (+35d) | 16d → 42d |  | -99d → -125d |  |  |
| 476 | **Test** | 2007-11-22 → 2007-11-26 (+4d) |  | 16d → 14d |  |  |  |  |
| 477 | Release QA Build Beta 1 | 2007-12-07 → 2007-11-30 (-7d) | 2007-12-07 → 2007-11-30 (-7d) |  |  | -96d → -91d |  | constraint start no earlier than 2007-12-07 → start no earlier than 2007-11-30 |
| 478 | Release QA Build T1B - RC1 (Bundle) |  |  |  |  |  |  | was named Release QA Build T1B - GA (Bundle) |
| 479 | Load 1.x Data from DEV to QA to STAGE to PROD | 2007-11-22 → 2007-11-26 (+4d) | 2007-12-05 → 2007-12-07 (+2d) |  |  | -93d → -95d |  | constraint none → start no earlier than 2007-11-26 |
| 482 | **Configuration and Change Management** |  | 2007-12-10 → 2007-12-05 (-5d) | 13d → 10d |  | -96d → -93d |  |  |
| 485 | Release Download Center Material, Release Notes | 2007-12-07 → 2007-11-30 (-7d) | 2007-12-10 → 2007-12-03 (-7d) |  |  | -96d → -91d |  |  |

## Version 42 (saved 2007-11-08)

Note of the change: updated through thr

Last finish stays 2008-01-18. Complete tasks 252 → 255.

Changed:

| ID | Task | Start | Finish | Complete | Total float | Other |
| --- | --- | --- | --- | --- | --- | --- |
| 1 | **caArray 2.0** |  |  | 73% → 75% |  |  |
| 233 | **Construction Phase** |  |  | 64% → 68% |  |  |
| 388 | **Construction - Iteration 3** |  |  | 1% → 16% |  |  |
| 410 | **Implementation** | 2007-11-02 A |  | 0% → 30% | -109d → 0d |  |
| 411 | **Inroduce and Complete C3 UC's** | 2007-11-02 A |  | 0% → 42% | -107.91d → -2d |  |
| 412 | Search Repository UC | 2007-11-02 A |  | 0% → 75% | -107.91d → -100.45d |  |
| 413 | Navigate Repository UC | 2007-11-09 A |  | 0% → 25% |  |  |
| 415 | **Complete C2 UC's** | 2007-11-02 A |  | 0% → 34% | -109d → 0d |  |
| 416 | Manage Exp Data Files - Full UI (Add Filter, Associate File<->Sample) | 2007-11-02 A |  | 0% → 50% |  | was named Manage Exp Data Files - Full UI (Add Filter, Associate File<->Sample, Progress Meter) |
| 417 | Download Exp. Data UC (Download Job) | 2007-11-02 A |  | 0% → 50% |  |  |
| 419 | Manage Publications UC (edit, delete) | 2007-11-07 A | 2007-11-07 A | 0% → 100% | -109d → none |  |
| 420 | Submit Experiment Proposal (validation, draft, incorporate UCV) | 2007-11-08 A |  | 0% → 25% | -109d → 0d |  |
| 421 | Update Experiment Proposal (validation, across states, edit entity association) | 2007-11-15 A |  | 0% → 25% |  |  |
| 422 | Import Experiment Data (improve validation, add genepix, fix UI scheme for large file sets, auto-chain choice) | 2007-11-02 A |  | 0% → 25% |  |  |
| 423 | Manage Collaborators | 2007-11-02 A |  | 0% → 80% |  |  |
| 424 | Manage Users (ensure UPT3.2 works) | 2007-11-02 A |  | 0% → 25% |  |  |
| 425 | Validate Data Files (Add Illumina, GenePix Validation, Other File Skip Validation) | 2007-11-05 A |  | 0% → 25% | -104d → -97d |  |
| 426 | Acquire Experiment Data Via API (Convenience Queries and Response to Size Limit) | 2007-11-06 A |  | 0% → 10% | -104d → 0d |  |
| 427 | **Data Management** | 2007-11-02 A |  | 0% → 25% | -104d → -7d |  |
| 428 | Add Data Parsers for GenePix | 2007-11-02 A | 2007-11-02 A | 0% → 100% | -104d → none |  |
| 429 | Import Experiment Data Files Gene Pix | 2007-11-02 A | 2007-11-02 A | 0% → 100% | -104d → none |  |
| 430 | Support MAGE-TAB Import (allow for .txt to be valid) | 2007-11-05 A |  | 0% → 50% |  |  |
| 433 | Fix Defects Found in QA7&8 | 2007-11-05 A |  | 0% → 10% | -108d → 0d |  |
| 434 | **Test** | 2007-11-02 A |  | 0% → 23% | -108d → -1d |  |
| 435 | Write, Execute and Record UI Test Cases in Selenium | 2007-11-02 A |  | 0% → 25% |  |  |
| 436 | Write, Execute and Record Performance Test Cases in Jmeter | 2007-11-02 A |  | 0% → 25% |  |  |

## Version 43 (saved 2007-11-12)

Note of the change: updated post dev meeting

Last finish stays 2008-01-18. Complete tasks 255 → 261.

Changed:

| ID | Task | Start | Finish | Duration | Complete | Total float |
| --- | --- | --- | --- | --- | --- | --- |
| 1 | **caArray 2.0** |  |  |  | 75% → 77% |  |
| 233 | **Construction Phase** |  |  |  | 68% → 73% |  |
| 388 | **Construction - Iteration 3** |  |  |  | 16% → 34% |  |
| 389 | **Project Management** | 2007-11-02 A |  |  | 0% → 42% | -107d → 0d |
| 390 | Weekly Status Meetings | 2007-11-19 A |  |  | 0% → 50% | -107d → 0d |
| 391 | Dev Team Iteration Plan | 2007-11-05 A | 2007-11-05 A |  | 0% → 100% | -99d → none |
| 392 | Prepare External Release Plan | 2007-11-06 A |  |  | 0% → 25% |  |
| 395 | **Finalize Deliverables** | 2007-11-02 A |  |  | 0% → 50% | -102d → 0d |
| 396 | Deliver C3 Plan | 2007-11-02 A | 2007-11-06 A |  | 0% → 100% | -102d → none |
| 399 | Update Risk List | 2007-11-12 A |  |  | 0% → 50% |  |
| 400 | **Requirements** | 2007-11-05 A |  |  | 0% → 14% | -109d → 0d |
| 401 | Finalize Vision, Scope, UC Summary, Supplemental Spec | 2007-11-15 A |  |  | 0% → 25% | -109d → 0d |
| 402 | Incorporate Stakeholder Feedback on C2 Use Cases | 2007-11-20 A |  |  | 0% → 25% |  |
| 403 | Collaborate with Documentation to Support Online Help, User Guides | 2007-11-05 A |  |  | 0% → 10% | -109d → 0d |
| 404 | **Analysis and Design** | 2007-11-02 A |  |  | 0% → 43% | -107d → -9d |
| 406 | Support Analysis Services Integration as Needed | 2007-11-02 A | 2007-11-06 A |  | 0% → 100% | -98d → none |
| 410 | **Implementation** |  |  |  | 30% → 56% |  |
| 411 | **Inroduce and Complete C3 UC's** |  |  |  | 42% → 53% |  |
| 412 | Search Repository UC |  | 2007-11-09 A |  | 75% → 100% | -100.45d → none |
| 415 | **Complete C2 UC's** |  |  |  | 34% → 70% |  |
| 416 | Manage Exp Data Files - Full UI (Add Filter, Associate File<->Sample) |  |  |  | 50% → 80% |  |
| 417 | Download Exp. Data UC (Download Job) |  | 2007-11-05 A |  | 50% → 100% | -97d → none |
| 418 | Manage Experiment Permissions UC - Complete Sample Level and TCGA Policy | 2007-11-02 A | 2007-11-06 → 2007-11-08 (+2d) | 3d → 5d | 0% → 75% | -109d → -100d |
| 420 | Submit Experiment Proposal (validation, draft, incorporate UCV) |  |  |  | 25% → 80% | 0d → -104d |
| 421 | Update Experiment Proposal (validation, across states, edit entity association) |  |  |  | 25% → 80% |  |
| 422 | Import Experiment Data (improve validation, add genepix, fix UI scheme for large file sets, auto-chain choice) |  |  |  | 25% → 50% |  |
| 423 | Manage Collaborators |  | 2007-11-05 A |  | 80% → 100% | -97d → none |
| 427 | **Data Management** |  |  |  | 25% → 27% | -7d → 0d |
| 432 | Create Initial 1.x Migration Scripts | 2007-11-14 A |  |  | 0% → 10% |  |
| 433 | Fix Defects Found in QA7&8 |  |  |  | 10% → 30% |  |
| 443 | **Configuration and Change Management** |  |  |  | 5% → 16% |  |
| 444 | Manage Gforge Content |  |  |  | 5% → 25% |  |
| 445 | Prioritize 2.0 Defects |  |  |  | 5% → 10% |  |

## Version 44 (saved 2007-11-19)

Note of the change: updated through monday

Last finish stays 2008-01-18. Complete tasks 261 → 273.

Changed:

| ID | Task | Start | Finish | Complete | Total float |
| --- | --- | --- | --- | --- | --- |
| 1 | **caArray 2.0** |  |  | 77% → 80% |  |
| 233 | **Construction Phase** |  |  | 73% → 79% |  |
| 388 | **Construction - Iteration 3** |  |  | 34% → 61% |  |
| 400 | **Requirements** |  |  | 14% → 80% |  |
| 401 | Finalize Vision, Scope, UC Summary, Supplemental Spec |  |  | 25% → 80% |  |
| 402 | Incorporate Stakeholder Feedback on C2 Use Cases |  |  | 25% → 80% |  |
| 403 | Collaborate with Documentation to Support Online Help, User Guides |  |  | 10% → 80% |  |
| 404 | **Analysis and Design** |  |  | 43% → 86% | -9d → -7d |
| 405 | Revise Domain Object (Logical) Model with GeneID | 2007-11-05 A | 2007-11-05 A | 0% → 100% | -101d → none |
| 407 | Investigate EVS Methods for Vocabulary Retrieval | 2007-11-07 A | 2007-11-07 A | 0% → 100% | -99d → none |
| 408 | Design Migration Strategy for 1.x Experiments | 2007-11-08 A | 2007-11-08 A | 0% → 100% | -101d → none |
| 410 | **Implementation** |  |  | 56% → 91% |  |
| 411 | **Inroduce and Complete C3 UC's** |  |  | 53% → 97% | -2d → 0d |
| 413 | Navigate Repository UC |  | 2007-11-16 A | 25% → 100% | -107.91d → none |
| 414 | Import Array Design UC | 2007-11-16 A |  | 0% → 80% |  |
| 415 | **Complete C2 UC's** |  |  | 70% → 91% |  |
| 416 | Manage Exp Data Files - Full UI (Add Filter, Associate File<->Sample) |  | 2007-11-13 A | 80% → 100% | -103d → none |
| 418 | Manage Experiment Permissions UC - Complete Sample Level and TCGA Policy |  |  | 75% → 90% |  |
| 420 | Submit Experiment Proposal (validation, draft, incorporate UCV) |  | 2007-11-14 A | 80% → 100% | -104d → none |
| 421 | Update Experiment Proposal (validation, across states, edit entity association) |  | 2007-11-21 A | 80% → 100% | -109d → none |
| 422 | Import Experiment Data (improve validation, add genepix, fix UI scheme for large file sets, auto-chain choice) |  | 2007-11-07 A | 50% → 100% | -99d → none |
| 424 | Manage Users (ensure UPT3.2 works) |  | 2007-11-02 A | 25% → 100% | -96d → none |
| 425 | Validate Data Files (Add Illumina, GenePix Validation, Other File Skip Validation) |  | 2007-11-05 A | 25% → 100% | -97d → none |
| 427 | **Data Management** |  |  | 27% → 75% |  |
| 430 | Support MAGE-TAB Import (allow for .txt to be valid) |  | 2007-11-05 A | 50% → 100% | -101d → none |
| 431 | Annotate Model for caDSR Submission | 2007-11-09 A |  | 0% → 80% | -104d → 0d |
| 433 | Fix Defects Found in QA7&8 |  |  | 30% → 90% |  |
| 434 | **Test** |  |  | 23% → 46% | -1d → 0d |
| 435 | Write, Execute and Record UI Test Cases in Selenium |  |  | 25% → 50% |  |
| 436 | Write, Execute and Record Performance Test Cases in Jmeter |  |  | 25% → 50% |  |
| 437 | Release QA Build C3A - External 1 | 2007-11-21 A | 2007-11-21 A | 0% → 100% | -108d → none |
| 439 | **Environment** | 2007-11-05 A |  | 0% → 21% | -109d → -3d |
| 440 | Design and Create caArray 2.0 Installer | 2007-11-05 A |  | 0% → 25% |  |

## Version 45 (saved 2007-11-20)

Note of the change: added dev documentation task

Last finish stays 2008-01-18.

Added:

| ID | Task | Duration | Start | Finish |
| --- | --- | --- | --- | --- |
| 486 | Technical Guide | 1d? | 2007-11-30 | 2007-11-30 |
| 487 | Installation Guide | 1d? | 2007-11-30 | 2007-11-30 |

Changed:

| ID | Task | Finish | Duration | Total float | Other |
| --- | --- | --- | --- | --- | --- |
| 1 | **caArray 2.0** |  | 210d → 210d? |  |  |
| 448 | **Transition Phase** |  | 42d → 42d? |  |  |
| 449 | **Transition - Iteration 1** |  | 16d → 16d? |  |  |
| 482 | **Configuration and Change Management** |  | 10d → 10d? |  |  |
| 485 | **Documentation** | 2007-12-03 → 2007-11-30 (-3d) | 2d → 1d? | -91d → -90d | was named Release Download Center Material, Release Notes |

## Version 46 (saved 2007-11-28)

Note of the change: added links to deployment activity tasks (documentation tasks only)

Last finish stays 2008-01-18.

Added:

| ID | Task | Duration | Start | Finish | Predecessors | Constraint |
| --- | --- | --- | --- | --- | --- | --- |
| 487 | Tech Guide | 10d? | 2007-12-03 | 2007-12-14 | 486 | finish no earlier than 2007-12-14 |
| 489 | Installation Guide | 10d? | 2007-12-03 | 2007-12-14 | 488 | finish no earlier than 2007-12-14 |

## Version 47 (saved 2007-11-29)

Note of the change: added beta-x release schedule

Last finish stays 2008-01-18.

Added:

| ID | Task | Duration | Start | Finish | Predecessors | Constraint | Resources |
| --- | --- | --- | --- | --- | --- | --- | --- |
| 473 | **Iterative Bug Fixes - Beta#2** | 6.46d | 2007-11-22 | 2007-11-30 |  |  |  |
| 480 | Load 1.x Data from DEV to QA | 5d | 2007-11-26 | 2007-11-30 |  | finish no earlier than 2007-11-30 |  |
| 481 | **Iterative Bug Fixes - Beta#3** | 6d | 2007-11-30 | 2007-12-07 | 474 |  |  |
| 482 | **Implementation** | 5d | 2007-11-30 | 2007-12-06 |  |  |  |
| 483 | Complete Targeted Defects for GA | 5d | 2007-11-30 | 2007-12-06 |  | finish no earlier than 2007-12-06 | etavela [80%]; bmason; tparnell; dkokotov; jhedden |
| 484 | Complete caArray 2.0 Installer + Data Migrator | 5d | 2007-11-30 | 2007-12-06 |  | finish no earlier than 2007-12-06 | smatyas [50%] |
| 485 | **Test** | 1d | 2007-12-07 | 2007-12-07 | 482 |  |  |
| 486 | Release QA Build Beta 3 | 1d | 2007-12-07 | 2007-12-07 |  | finish no earlier than 2007-12-07 |  |
| 487 | Release QA Build T1B - RC2 (Bundle) | 0d | 2007-12-07 | 2007-12-07 |  | finish no earlier than 2007-12-07 |  |

Changed:

| ID | Task | Start | Finish | Duration | Total float | Predecessors | Other |
| --- | --- | --- | --- | --- | --- | --- | --- |
| 474 | **Implementation** |  | 2007-12-05 → 2007-11-29 (-6d) | 10d → 5.46d | -93d → -95d |  |  |
| 475 | Complete Targeted Defects for GA |  | 2007-12-04 → 2007-11-29 (-5d) | 8.46d → 5.46d | -91.46d → -95d |  | constraint none → finish no earlier than 2007-11-29 |
| 476 | Complete caArray 2.0 Installer + Data Migrator | 2007-11-22 → 2007-11-23 (+1d) | 2007-12-05 → 2007-11-29 (-6d) | 10d → 5d | -93d → -95d |  | constraint none → finish no earlier than 2007-11-29 |
| 477 | **Test** |  | 2007-12-14 → 2007-11-30 (-14d) | 14d → 5d | -99d → -90d |  |  |
| 478 | Release QA Build Beta 2 |  |  |  |  | none → 474 | was named Release QA Build Beta 1; constraint start no earlier than 2007-11-30 → finish no earlier than 2007-11-30 |
| 479 | Release QA Build T1B - RC1 (Bundle) | 2007-12-14 → 2007-11-30 (-14d) | 2007-12-14 → 2007-11-30 (-14d) |  | -99d → -90d |  | constraint start no earlier than 2007-12-14 → finish no earlier than 2007-11-30 |
| 488 | Load 1.x Data from DEV to QA to STAGE to PROD | 2007-11-26 → 2007-12-07 (+11d) |  | 10d → 1d |  |  | constraint start no earlier than 2007-11-26 → finish no earlier than 2007-12-07 |
| 494 | Prioritize 2.0 Defects and UC for 2.x |  |  |  |  | 493 → none |  |
| 495 | **Documentation** | 2007-11-30 → 2007-12-03 (+3d) | 2007-11-30 → 2007-12-03 (+3d) |  | -90d → -91d |  |  |
| 496 | Technical Guide | 2007-11-30 → 2007-12-03 (+3d) | 2007-11-30 → 2007-12-03 (+3d) |  | -90d → -91d |  |  |
| 497 | Tech Guide | 2007-12-03 → 2007-12-04 (+1d) | 2007-12-14 → 2007-12-17 (+3d) |  |  |  |  |
| 498 | Installation Guide | 2007-11-30 → 2007-12-03 (+3d) | 2007-11-30 → 2007-12-03 (+3d) |  | -90d → -91d |  |  |
| 499 | Installation Guide | 2007-12-03 → 2007-12-04 (+1d) | 2007-12-14 → 2007-12-17 (+3d) |  |  |  |  |
| 500 | T1 Complete |  |  |  |  | 494 → none |  |

## Version 48 (saved 2007-11-30)

Note of the change: schedule completed through end of T1

Last finish stays 2008-01-18. Complete tasks 273 → 312.

Added:

| ID | Task | Duration | Start | Finish | Predecessors | Constraint | Resources |
| --- | --- | --- | --- | --- | --- | --- | --- |
| 464 | Update Use Cases | 10d | 2007-11-22 A | 2007-12-05 |  |  | bgendleman [10%] |
| 465 | Write UC Manage Protocols | 0.5d | 2007-12-03 | 2007-12-03 |  | start no earlier than 2007-12-03 |  |
| 467 | Redesign User Controlled Vocabulary | 1d | 2007-11-26 A | 2007-11-26 A |  | start no earlier than 2007-11-26 | smiller |
| 468 | Redesign Chain Annotation | 1d | 2007-11-26 A | 2007-11-26 A |  |  | smiller |
| 470 | Finalize SAD | 2d | 2007-12-05 | 2007-12-06 |  | start no earlier than 2007-12-05 | bgendleman [10%]; tparnell [20%]; etavela [20%]; smiller [10%]; pduvall [10%] |
| 471 | **Implementation** | 17d | 2007-11-22 A | 2007-12-14 |  |  |  |
| 472 | **Incremental Bug Fixes - Beta 1** | 5d | 2007-11-22 A | 2007-11-28 |  |  |  |
| 473 | Generic UI Behavior | 3d | 2007-11-26 A | 2007-11-28 A |  | start no earlier than 2007-11-26 | smiller [50%]; dkokotov [50%] |
| 474 | Array Data Management (UI + Internal) | 3d | 2007-11-26 A | 2007-11-28 A |  | start no earlier than 2007-11-26 | etavela; wcheng |
| 475 | API Fixes | 3d | 2007-11-26 A | 2007-11-28 A |  | start no earlier than 2007-11-26 | tparnell [10%]; etavela [10%] |
| 476 | Experiment Management | 1d | 2007-11-26 A | 2007-11-26 A |  | start no earlier than 2007-11-26 | dkokotov [50%] |
| 477 | Navigate and Search | 1d | 2007-11-27 A | 2007-11-27 A |  | start no earlier than 2007-11-27 | wcheng |
| 478 | User Management (Collaborators, UPT, CSM) | 1.5d | 2007-11-26 A | 2007-11-27 A |  | start no earlier than 2007-11-26 | tparnell |
| 479 | Change Grid Deployment to Jboss 4.0.4 | 3d | 2007-11-26 A | 2007-11-28 |  | start no earlier than 2007-11-26 | smatyas [50%]; lgurses [50%] |
| 480 | Create 2.0 Installer | 3d | 2007-11-26 A | 2007-11-28 |  | start no earlier than 2007-11-26 | pduvall; lgurses [25%]; smatyas [10%] |
| 481 | **Testing** | 5d | 2007-11-22 A | 2007-11-28 A |  |  |  |
| 482 | Move Performance Tests Against Dev and QA | 1d | 2007-11-22 A | 2007-11-22 A |  |  | rsrinivasa |
| 483 | Update Selenium Tests to reflect new UI | 2d | 2007-11-26 A | 2007-11-27 A |  | start no earlier than 2007-11-26 | bmason |
| 484 | Validate Fixed Bugs | 3d | 2007-11-26 A | 2007-11-28 A |  | start no earlier than 2007-11-26 | rsrinivasa; bmason |
| 485 | Release Beta 1 to QA & Stage | 0d | 2007-11-28 A | 2007-11-28 A |  | start no earlier than 2007-11-28 |  |
| 488 | Modify Experiment Chain Behavior | 2d | 2007-11-28 A | 2007-11-29 A |  | finish no earlier than 2007-11-29 | smiller |
| 489 | Modify Vocabulary Experiment Interaction | 1d | 2007-11-28 A | 2007-11-28 A | 488 |  | smiller |
| 490 | Generic UI Behavior | 2d | 2007-11-28 A | 2007-11-29 A |  |  | dkokotov |
| 491 | Navigate and Search | 1d | 2007-11-28 A | 2007-11-28 A |  |  | wcheng |
| 492 | Revise Left Menu | 0.25d | 2007-11-29 A | 2007-11-29 A |  |  | bmason |
| 493 | Array Data Management (Internal) | 3d | 2007-11-28 A | 2007-11-30 A |  |  | etavela |
| 498 | Validate Beta 1+ Prior Bug Fixes | 3d | 2007-11-28 A | 2007-11-30 A |  |  | bmason; rsrinivasa |
| 502 | Improve Permissions UI | 1d | 2007-12-03 | 2007-12-03 |  |  | dkokotov |
| 504 | Complete Export of 1.x Data/Import into 2.0 | 1d | 2007-12-03 | 2007-12-03 |  |  | smatyas [50%] |
| 509 | **Incremental Bug Fixes - GA** | 5d | 2007-12-10 | 2007-12-14 | 500 |  |  |
| 510 | **Implementation** | 3d | 2007-12-10 | 2007-12-12 |  |  |  |
| 512 | Complete Export of 1.x Data/Import into 2.0 | 1d | 2007-12-10 | 2007-12-10 |  |  | smatyas [50%] |
| 514 | **Test** | 2d | 2007-12-12 | 2007-12-14 | 510 |  |  |
| 515 | Release GA Build to QA, Stage | 0d | 2007-12-12 | 2007-12-12 |  | finish no earlier than 2007-12-07 |  |
| 516 | Release GA Build to Production | 0d | 2007-12-12 | 2007-12-12 | 515 |  |  |
| 517 | Load 1.x Data from DEV to QA to STAGE to PROD | 2d | 2007-12-12 | 2007-12-14 |  | finish no earlier than 2007-12-07 |  |
| 518 | Release QA Build RC1 (Bundle) | 0d | 2007-12-14 | 2007-12-14 |  | start no earlier than 2007-12-14 |  |
| 519 | UC Manage Protocols | 7d | 2007-12-03 | 2007-12-11 | 486 |  | smiller |
| 532 | 2.0 Generational Review Meeting | 1d | 2007-12-18 | 2007-12-18 | 530 | start no earlier than 2007-12-18 |  |

Removed: 455 C3 Assessment; 457 Plan for Next Iteration; 466 Write 2.x Use Cases; 467 UC Manage Institutional Groups; 468 Update UC Search Repository; 469 UC Register For An Account; 470 UC Manage Collaborators

Changed:

| ID | Task | Start | Finish | Duration | Complete | Total float | Predecessors | Other |
| --- | --- | --- | --- | --- | --- | --- | --- | --- |
| 1 | **caArray 2.0** |  |  |  | 80% → 84% | -42d → -26d |  |  |
| 233 | **Construction Phase** |  |  |  | 79% → 86% |  |  |  |
| 388 | **Construction - Iteration 3** |  |  |  | 61% → 89% |  |  |  |
| 389 | **Project Management** |  |  |  | 42% → 83% |  |  |  |
| 390 | Weekly Status Meetings |  | 2007-11-19 A |  | 50% → 100% | 0d → none |  |  |
| 392 | Prepare External Release Plan |  |  |  | 25% → 75% |  |  |  |
| 394 | Plan for Next Iteration | 2007-11-02 A | 2007-11-02 A |  | 0% → 100% | -96d → none |  |  |
| 395 | **Finalize Deliverables** |  |  |  | 50% → 90% |  |  |  |
| 397 | Update Beta Release Plan | 2007-11-07 A |  |  | 0% → 80% | -101d → -99d |  |  |
| 398 | Finalize T1 Iteration Plan | 2007-11-08 A | 2007-11-09 A |  | 0% → 100% | -101d → none |  |  |
| 400 | **Requirements** |  |  |  | 80% → 97% |  |  |  |
| 402 | Incorporate Stakeholder Feedback on C2 Use Cases |  | 2007-11-21 A |  | 80% → 100% | -109d → none |  |  |
| 403 | Collaborate with Documentation to Support Online Help, User Guides |  | 2007-11-21 A |  | 80% → 100% | 0d → none |  |  |
| 410 | **Implementation** |  |  |  | 91% → 94% |  |  |  |
| 411 | **Inroduce and Complete C3 UC's** |  | 2007-11-20 A |  | 97% → 100% | 0d → none |  |  |
| 414 | Import Array Design UC |  | 2007-11-20 A |  | 80% → 100% | -107.91d → none |  |  |
| 415 | **Complete C2 UC's** |  | 2007-11-21 A |  | 91% → 100% | 0d → none |  |  |
| 418 | Manage Experiment Permissions UC - Complete Sample Level and TCGA Policy |  | 2007-11-08 A |  | 90% → 100% | -100d → none |  |  |
| 426 | Acquire Experiment Data Via API (Convenience Queries and Response to Size Limit) |  | 2007-11-08 A |  | 10% → 100% | -100d → none |  |  |
| 433 | Fix Defects Found in QA7&8 (42 of 61) |  |  |  | 90% → 80% |  |  | was named Fix Defects Found in QA7&8 |
| 434 | **Test** |  |  |  | 46% → 92% |  |  |  |
| 435 | Write, Execute and Record UI Test Cases in Selenium |  | 2007-11-19 A |  | 50% → 100% | -107d → none |  |  |
| 436 | Write, Execute and Record Performance Test Cases in Jmeter |  | 2007-11-19 A |  | 50% → 100% | -107d → none |  |  |
| 439 | **Environment** |  |  |  | 21% → 31% | -3d → 0d |  |  |
| 441 | Update Build and Deploy Plan with SCM Initiative | 2007-11-21 A | 2007-11-21 A |  | 0% → 100% | -109d → none |  |  |
| 442 | Prepare Deployment to Bundle Environment | 2007-11-14 A |  |  | 0% → 25% |  |  |  |
| 443 | **Configuration and Change Management** |  |  |  | 16% → 93% |  |  |  |
| 444 | Manage Gforge Content |  | 2007-11-21 A |  | 25% → 100% | -109d → none |  |  |
| 445 | Prioritize 2.0 Defects |  | 2007-11-21 A |  | 10% → 100% | -109d → none |  |  |
| 447 | C3 Complete | 2007-11-21 A | 2007-11-21 A |  | 0% → 100% | -109d → none |  |  |
| 448 | **Transition Phase** | 2007-11-22 A |  |  | 0% → 27% | -125d → -26d |  |  |
| 449 | **Transition - Iteration 1** | 2007-11-22 A |  | 16d? → 17d? | 0% → 44% | -109d → -1d |  |  |
| 450 | **Project Management** | 2007-11-22 A | 2007-12-05 → 2007-12-13 (+8d) | 10d → 16d | 0% → 33% | -93d → 0d |  |  |
| 451 | Weekly Status Meetings | 2007-11-22 → 2007-11-26 A (+4d) | 2007-12-05 → 2007-12-13 (+8d) | 10d → 14d | 0% → 25% | -93d → -99d | none → 453 | resources none → bgendleman; tparnell [25%]; bmason |
| 452 | Dev Team Iteration Plan | 2007-11-22 A |  |  | 0% → 50% |  |  | resources none → bgendleman; tparnell [50%] |
| 454 | Organize Feedback from Beta Testers | 2007-11-22 A | 2007-11-22 A |  | 0% → 100% | -84d → none |  |  |
| 456 | **Finalize Deliverables** | 2007-11-22 A |  |  | 0% → 50% | -90d → 0d |  |  |
| 457 | Deliver T1 Plan | 2007-11-22 A | 2007-11-26 A |  | 0% → 100% | -90d → none |  |  |
| 459 | November Status Report | 2007-11-22 → 2007-11-30 A (+8d) | 2007-11-22 → 2007-11-30 A (+8d) |  | 0% → 100% | -84d → none |  | constraint start no earlier than 2007-11-15 → start no earlier than 2007-11-30 |
| 462 | **Requirements** | 2007-11-22 A | 2007-11-28 → 2007-12-06 (+8d) | 5d → 11d | 0% → 35% | -88d → 0d |  |  |
| 463 | Finalize Documentation for GA Release | 2007-11-22 → 2007-11-30 A (+8d) | 2007-11-28 → 2007-12-06 (+8d) |  | 0% → 10% | -88d → -94d |  | constraint none → start no earlier than 2007-11-30 |
| 466 | **Analysis and Design** | 2007-11-22 → 2007-11-26 A (+4d) | 2007-11-22 → 2007-12-06 (+14d) | 1d → 9d | 0% → 29% | -84d → -8d |  |  |
| 469 | Complete Model Annotation for caDSR Preparation | 2007-11-22 → 2007-11-27 (+5d) | 2007-11-22 → 2007-11-29 (+7d) | 1d → 3d |  | -84d → -89d |  | was named Model Manipulation as needed; constraint none → start no earlier than 2007-11-27; resources none → etavela; tparnell [10%]; smiller [10%]; dkokotov [10%] |
| 486 | **Incremental Bug Fixes - Beta 2** | 2007-11-22 → 2007-11-28 A (+6d) |  | 6.46d → 3d | 0% → 99% | -95d → 0d | none → 485 | was named Iterative Bug Fixes - Beta#2 |
| 487 | **Implementation** | 2007-11-22 → 2007-11-28 A (+6d) | 2007-11-29 → 2007-11-30 (+1d) | 5.46d → 3d | 0% → 99% | -95d → 0d |  |  |
| 494 | Complete caArray 2.0 Installer | 2007-11-23 → 2007-11-28 A (+5d) | 2007-11-29 → 2007-11-30 A (+1d) | 5d → 3d | 0% → 100% | -95d → none |  | was named Complete caArray 2.0 Installer + Data Migrator; resources smatyas [50%] → smatyas [50%]; lgurses; pduvall [20%] |
| 495 | **Test** | 2007-11-26 → 2007-11-28 A (+2d) |  | 5d → 3d | 0% → 99% | -90d → 0d |  |  |
| 496 | Add and Update Selenium Tests | 2007-11-30 → 2007-11-28 A (-2d) | 2007-11-30 A | 0d → 3d | 0% → 100% | -91d → none | 487 → none | was named Release QA Build Beta 2; resources none → bmason |
| 497 | Continue Performance Testing | 2007-11-30 → 2007-11-28 A (-2d) | 2007-11-30 A | 0d → 3d | 0% → 100% | -90d → none |  | was named Release QA Build T1B - RC1 (Bundle); resources none → rsrinivasa |
| 499 | Release Beta 2 to QA & Stage | 2007-11-26 → 2007-11-30 (+4d) |  | 5d → 0d |  | -90d → -100d |  | was named Load 1.x Data from DEV to QA; resources none → bmason |
| 500 | **Incremental Bug Fixes - Beta 3** | 2007-11-30 → 2007-12-03 (+3d) |  | 6d → 5d |  | -95d → -100d |  | was named Iterative Bug Fixes - Beta#3 |
| 501 | **Implementation** | 2007-11-30 → 2007-12-03 (+3d) | 2007-12-06 → 2007-12-07 (+1d) |  |  | -95d → -100d |  |  |
| 503 | Complete Targeted Defects for GA | 2007-11-30 → 2007-12-03 (+3d) | 2007-12-06 → 2007-12-07 (+1d) |  |  | -95d → -100d |  |  |
| 505 | Complete caArray 2.0 Installer | 2007-11-30 → 2007-12-04 (+4d) |  | 5d → 2.5d |  | -95d → -99d |  | was named Complete caArray 2.0 Installer + Data Migrator; resources smatyas [50%] → lgurses |
| 506 | **Test** |  |  | 1d → 0d |  | -95d → -100d |  |  |
| 507 | Release QA Build Beta 3 |  |  | 1d → 0d |  | -95d → -100d |  |  |
| 511 | Complete Targeted Defects for GA | 2007-11-22 → 2007-12-10 (+18d) | 2007-11-29 → 2007-12-12 (+13d) | 5.46d → 3d |  | -95d → -100d |  | constraint finish no earlier than 2007-11-29 → finish no earlier than 2007-12-06; resources etavela [80%]; bmason; tparnell; dkokotov; jhedden → etavela [53.3%]; bmason [66.7%]; tparnell [66.7%]; dkokotov [66.7%]; wcheng [67%] |
| 513 | Load 1.x Data from DEV to QA to STAGE to PROD | 2007-12-07 → 2007-12-10 (+3d) | 2007-12-07 → 2007-12-11 (+4d) | 1d → 2d |  | -95d → -99d |  | constraint finish no earlier than 2007-12-07 → start no earlier than 2007-12-05 |
| 522 | **Configuration and Change Management** |  | 2007-12-05 → 2007-12-14 (+9d) | 10d? → 16d? |  | -93d → -109d |  |  |
| 525 | **Documentation** |  | 2007-12-03 → 2007-12-07 (+4d) | 1d? → 5d? |  | -91d → -95d |  |  |
| 526 | Technical Guide | 2007-12-03 → 2007-12-07 (+4d) | 2007-12-03 → 2007-12-07 (+4d) |  |  | -91d → -95d | none → 470 |  |
| 527 | Tech Guide | 2007-12-04 → 2007-12-10 (+6d) | 2007-12-17 → 2007-12-21 (+4d) |  |  |  |  |  |

## Version 49 (saved 2008-01-07)

Note of the change: updated t1 completion and added t2 activities mostly. resource specification remains.

Last finish 2008-01-18 → 2008-03-03 (+45d). Complete tasks 312 → 326.

Added:

| ID | Task | Duration | Start | Finish | Predecessors | Constraint | Resources |
| --- | --- | --- | --- | --- | --- | --- | --- |
| 530 | **Project Management** | 31d | 2007-12-14 A | 2008-01-25 |  |  |  |
| 531 | Weekly Status Meetings | 31d | 2007-12-14 | 2008-01-25 |  |  |  |
| 532 | Dev Team Iteration Plan | 1d | 2007-12-14 A | 2007-12-14 A |  |  |  |
| 533 | Prepare GA Release Plan | 2d | 2007-12-14 | 2007-12-17 |  |  |  |
| 534 | Organize Feedback from Beta Testers | 1d | 2007-12-14 | 2007-12-14 |  |  |  |
| 535 | T2 Review | 1d | 2007-12-14 | 2007-12-14 |  |  |  |
| 536 | **Finalize Deliverables** | 26d | 2007-12-14 A | 2008-01-18 |  |  |  |
| 537 | Deliver T2 Plan | 3d | 2007-12-14 | 2007-12-18 |  |  |  |
| 538 | Prepare GA Release Plan | 1d | 2008-01-18 | 2008-01-18 |  | start no earlier than 2008-01-18 |  |
| 539 | December Status Report | 1d | 2007-12-31 | 2007-12-31 |  | start no earlier than 2007-12-31 |  |
| 540 | Finalize T2 Iteration Plan | 2d | 2007-12-31 A | 2008-01-01 A |  | start no earlier than 2007-12-31 |  |
| 541 | Update Risk List | 1d | 2007-12-31 | 2007-12-31 |  | start no earlier than 2007-12-31 |  |
| 542 | **Requirements** | 15d | 2007-12-14 | 2008-01-03 |  |  |  |
| 543 | Finalize Documentation for GA Release | 5d | 2007-12-14 | 2007-12-20 |  |  |  |
| 544 | Update Use Cases | 15d | 2007-12-14 | 2008-01-03 |  |  |  |
| 545 | **Analysis and Design** | 28d? | 2007-12-17 | 2008-01-23 |  |  |  |
| 546 | Update Model Annotation for caDSR Preparation | 3d | 2008-01-07 | 2008-01-09 |  | start no earlier than 2008-01-07 | etavela |
| 547 | Register Model to caDSR Sandbox | 5d | 2008-01-10 | 2008-01-16 | 546 |  |  |
| 548 | Register Model to caDSR Production | 5d | 2008-01-17 | 2008-01-23 | 547 |  |  |
| 549 | Finalize SAD | 18d? | 2007-12-17 | 2008-01-09 |  | start no earlier than 2007-12-15 | tparnell; etavela; bgendleman |
| 550 | **Implementation** | 26d? | 2007-12-17 | 2008-01-21 |  |  |  |
| 551 | **Incremental Bug Fixes - Beta 7** | 21d? | 2007-12-17 | 2008-01-14 |  |  |  |
| 552 | **Implementation** | 20d? | 2007-12-17 | 2008-01-11 |  |  |  |
| 553 | Complete Targeted Defects for Beta 7 | 19d | 2007-12-17 | 2008-01-10 |  | finish no earlier than 2008-01-10 | tparnell; smiller; dkokotov; wcheng; etavela; bmason |
| 554 | Complete Export of 1.x Data/Import into 2.0 | 18d | 2007-12-17 | 2008-01-09 |  | start no earlier than 2007-12-17 | smatyas |
| 555 | Complete the 2.0 Installer | 1d? | 2008-01-11 | 2008-01-11 |  | finish no earlier than 2008-01-11 |  |
| 556 | **Test** | 3d? | 2008-01-10 | 2008-01-14 |  |  |  |
| 557 | Release Beta 7 Build to QA, Stage | 1d? | 2008-01-14 | 2008-01-14 | 552 |  |  |
| 558 | Release Beta 7 Build to Production | 1d? | 2008-01-14 | 2008-01-14 | 552 |  |  |
| 559 | Load 1.x Data to DEV | 2d | 2008-01-10 | 2008-01-11 | 554 |  |  |
| 560 | **Incremental Bug Fixes - GA Release** | 5d? | 2008-01-15 | 2008-01-21 | 551 |  |  |
| 561 | **Implementation** | 4d? | 2008-01-15 | 2008-01-18 |  |  |  |
| 562 | Complete Targeted Defects for GA Release | 4d? | 2008-01-15 | 2008-01-18 |  | start no earlier than 2008-01-14 |  |
| 563 | **Test** | 1d | 2008-01-21 | 2008-01-21 |  |  |  |
| 564 | Release Beta 7 Build to QA, Stage | 1d | 2008-01-21 | 2008-01-21 | 561 |  |  |
| 565 | Release Beta 7 Build to Production | 1d | 2008-01-21 | 2008-01-21 | 561 |  | Systems |
| 566 | **Environment** | 1d | 2008-01-11 | 2008-01-11 |  |  |  |
| 567 | Update Build and Deploy Plan with SCM Initiative | 1d | 2008-01-11 | 2008-01-11 |  | start no earlier than 2008-01-11 |  |
| 568 | **Configuration and Change Management** | 31d? | 2007-12-14 A | 2008-01-25 |  |  |  |
| 569 | Manage Gforge Content | 10d | 2008-01-14 | 2008-01-25 |  | start no earlier than 2008-01-14 |  |
| 570 | Prioritize 2.0 Defects and UC for 2.x | 1d | 2007-12-14 | 2007-12-14 |  |  |  |
| 571 | **Documentation** | 15d? | 2007-12-31 | 2008-01-18 |  |  |  |
| 572 | Complete Technical Guide | 5d? | 2008-01-14 | 2008-01-18 | 549 | start no earlier than 2008-01-14 | jhadfield |
| 573 | Complete User Guide | 1d? | 2008-01-18 | 2008-01-18 |  | finish no earlier than 2008-01-18 | jhadfield |
| 574 | Complete Online Help | 3d? | 2008-01-08 | 2008-01-10 |  | start no earlier than 2008-01-08 | jhadfield |
| 575 | Complete the Draft Installation Guide | 10d? | 2007-12-31 | 2008-01-11 |  | start no earlier than 2007-12-31 | pduvall |
| 576 | Complete Installation Guide | 1d? | 2008-01-18 | 2008-01-18 | 575 | finish no earlier than 2008-01-18 | jhadfield |
| 577 | **Manage Zope Site** | 17d? | 2007-12-31 | 2008-01-22 |  |  |  |
| 578 | Update Zope Site on Dev | 7d? | 2007-12-31 | 2008-01-08 |  | finish no earlier than 2008-01-08 |  |
| 579 | Review Update on Dev | 2d | 2008-01-09 | 2008-01-10 | 578 |  |  |
| 580 | Update with Feedback on Dev | 2d | 2008-01-11 | 2008-01-14 | 579 |  |  |
| 581 | Update Zope Site on Stage | 3d | 2008-01-15 | 2008-01-17 | 580 |  |  |
| 582 | Update Zope Site on Prod | 3d | 2008-01-18 | 2008-01-22 | 581 |  |  |
| 583 | **Manage Download Center** | 13d? | 2007-12-31 A | 2008-01-16 |  |  |  |
| 584 | Update Download Center on Dev | 4d? | 2007-12-31 A | 2008-01-03 A |  | finish no earlier than 2008-01-03 |  |
| 585 | Review Update on Dev | 1d? | 2008-01-03 | 2008-01-03 |  | start no earlier than 2008-01-03 |  |
| 586 | Update with Feedback on Dev | 3d | 2008-01-04 | 2008-01-08 | 585 |  |  |
| 587 | Update Download Center on Stage | 3d | 2008-01-09 | 2008-01-11 | 586 |  |  |
| 588 | Update Download Center on Prod | 3d | 2008-01-14 | 2008-01-16 | 587 |  |  |
| 589 | **Manage Product Landing Site** | 13d | 2008-01-07 | 2008-01-23 |  |  |  |
| 590 | Update Product Landing Site on Dev | 2d | 2008-01-07 | 2008-01-08 |  | start no earlier than 2008-01-07 |  |
| 591 | Update Search Result Page on Dev | 3d | 2008-01-07 | 2008-01-09 |  | start no earlier than 2008-01-07 |  |
| 592 | Review Update on Dev | 1d | 2008-01-10 | 2008-01-10 | 590, 591 |  |  |
| 593 | Update Product Landing Site on Stage | 2d | 2008-01-14 | 2008-01-15 |  | start no earlier than 2008-01-14 |  |
| 594 | Update Product Landing Site on Prod | 2d | 2008-01-22 | 2008-01-23 |  | start no earlier than 2008-01-22 |  |
| 595 | T2 Complete | 0d | 2008-01-25 | 2008-01-25 |  | start no earlier than 2008-01-25 |  |
| 596 | **Transition - Iteration 3** | 26d | 2008-01-25 | 2008-03-03 | 529 |  |  |

Removed: 527 Tech Guide; 529 Installation Guide

Changed:

| ID | Task | Start | Finish | Duration | Complete | Total float | Predecessors | Other |
| --- | --- | --- | --- | --- | --- | --- | --- | --- |
| 1 | **caArray 2.0** |  | 2008-01-18 → 2008-03-03 (+45d) | 210d? → 241d? | 84% → 75% | -26d → -42d |  |  |
| 448 | **Transition Phase** |  | 2008-01-18 → 2008-03-03 (+45d) | 42d? → 73d? | 27% → 19% | -26d → -42d |  |  |
| 449 | **Transition - Iteration 1** |  |  | 17d? → 16d? | 44% → 58% | -1d → 0d |  |  |
| 450 | **Project Management** |  |  |  | 33% → 41% |  |  |  |
| 456 | **Finalize Deliverables** |  |  |  | 50% → 75% |  |  |  |
| 460 | Finalize T1 Iteration Plan | 2007-11-28 A | 2007-11-29 A |  | 0% → 100% | -90d → none |  |  |
| 466 | **Analysis and Design** |  |  |  | 29% → 71% | -8d → -5d |  |  |
| 469 | Complete Model Annotation for caDSR Preparation | 2007-11-27 A | 2007-11-29 A |  | 0% → 100% | -89d → none |  |  |
| 471 | **Implementation** |  |  | 17d → 16d | 61% → 79% | -10d → -4d |  |  |
| 472 | **Incremental Bug Fixes - Beta 1** |  |  |  | 88% → 94% |  |  |  |
| 479 | Change Grid Deployment to Jboss 4.0.4 |  | 2007-11-28 A |  | 50% → 100% | -88d → none |  |  |
| 486 | **Incremental Bug Fixes - Beta 2** |  | 2007-11-30 A |  | 99% → 100% | 0d → none |  |  |
| 487 | **Implementation** |  | 2007-11-30 A |  | 99% → 100% | 0d → none |  |  |
| 495 | **Test** |  | 2007-11-30 A |  | 99% → 100% | 0d → none |  |  |
| 499 | Release Beta 2 to QA & Stage | 2007-11-30 A | 2007-11-30 A |  | 0% → 100% | -100d → none |  |  |
| 500 | **Incremental Bug Fixes - Beta 3** | 2007-12-03 → 2007-11-22 A (-11d) |  | 5d → 12d | 0% → 82% | -100d → 0d | 487 → none |  |
| 501 | **Implementation** | 2007-12-03 → 2007-11-22 A (-11d) | 2007-12-07 → 2007-12-06 (-1d) | 5d → 11d | 0% → 82% | -100d → 0d |  |  |
| 502 | Improve Permissions UI | 2007-12-03 → 2007-11-22 A (-11d) | 2007-12-03 → 2007-11-22 A (-11d) |  | 0% → 100% | -96d → none |  |  |
| 503 | Complete Targeted Defects for Beta 3 | 2007-12-03 → 2007-11-30 A (-3d) | 2007-12-07 → 2007-12-06 A (-1d) |  | 0% → 100% | -100d → none |  | was named Complete Targeted Defects for GA |
| 504 | Complete Export of 1.x Data/Import into 2.0 | 2007-12-03 → 2007-11-22 A (-11d) | 2007-12-03 → 2007-11-22 (-11d) |  | 0% → 50% | -96d → -84d |  |  |
| 505 | Complete caArray 2.0 Installer | 2007-12-04 A |  |  | 0% → 50% | -99d → 0d |  |  |
| 506 | **Test** | 2007-12-07 A | 2007-12-07 A |  | 0% → 100% | -100d → none |  |  |
| 507 | Release QA Build LSD | 2007-12-07 A | 2007-12-07 A |  | 0% → 100% | -100d → none |  | was named Release QA Build Beta 3 |
| 508 | Release QA Build T1B - RC2 (Bundle) | 2007-12-07 A | 2007-12-07 A |  | 0% → 100% | -100d → none |  |  |
| 509 | **Incremental Bug Fixes - LSD Bundle Release** | 2007-12-10 → 2007-11-22 A (-18d) |  | 5d → 16d | 0% → 44% | -100d → -4d | 500 → none | was named Incremental Bug Fixes - GA |
| 510 | **Implementation** | 2007-12-10 → 2007-11-22 A (-18d) | 2007-12-12 → 2007-12-06 (-6d) | 3d → 11d | 0% → 58% | -100d → 0d |  |  |
| 511 | Complete Targeted Defects for LSD | 2007-12-10 → 2007-12-04 A (-6d) | 2007-12-12 → 2007-12-06 A (-6d) |  | 0% → 100% | -100d → none |  | was named Complete Targeted Defects for GA |
| 512 | Complete Export of 1.x Data/Import into 2.0 | 2007-12-10 → 2007-11-22 A (-18d) | 2007-12-10 → 2007-11-22 (-18d) |  | 0% → 50% | -98d → -115d |  |  |
| 513 | Load 1.x Data from DEV to QA to STAGE to PROD | 2007-12-10 → 2007-12-05 (-5d) | 2007-12-11 → 2007-12-06 (-5d) |  |  | -99d → -125d |  |  |
| 514 | **Test** | 2007-12-12 → 2007-12-06 A (-6d) |  | 2d → 6d |  | -100d → -4d | 510 → none |  |
| 515 | Release LSD Build to QA, Stage | 2007-12-12 → 2007-12-07 A (-5d) | 2007-12-12 → 2007-12-07 A (-5d) |  | 0% → 100% | -98d → none |  | was named Release GA Build to QA, Stage |
| 516 | Release LSD Build to Production | 2007-12-12 → 2007-12-07 A (-5d) | 2007-12-12 → 2007-12-07 A (-5d) |  | 0% → 100% | -98d → none |  | was named Release GA Build to Production |
| 517 | Load 1.x Data from DEV to QA to STAGE to PROD | 2007-12-12 → 2007-12-06 (-6d) | 2007-12-14 → 2007-12-07 (-7d) |  |  | -100d → -126d |  |  |
| 525 | **Documentation** | 2007-12-03 → 2007-11-22 (-11d) |  | 5d? → 12d? |  | -95d → -152d | 496 → none |  |
| 527 | Installation Guide | 2007-12-03 → 2007-11-22 (-11d) | 2007-12-03 → 2007-11-22 (-11d) |  |  | -91d → -85d |  |  |
| 529 | **Transition - Iteration 2** | 2007-12-14 A | 2008-01-18 → 2008-01-25 (+7d) | 26d → 31d? | 0% → 3% | -125d → -16d | 528 → 449 |  |
| 597 | 2.0 Generational Review Meeting | 2007-12-18 → 2008-01-28 (+41d) | 2007-12-18 → 2008-01-28 (+41d) |  |  | -102d → -131d | 528 → none |  |
| 598 | Address Functional Defects in RC1 | 2007-12-14 → 2008-01-28 (+45d) | 2008-01-18 → 2008-03-03 (+45d) |  |  | -125d → -156d |  |  |
| 599 | Address LSD Bundle Environment Defects | 2007-12-14 → 2008-01-28 (+45d) | 2008-01-18 → 2008-03-03 (+45d) |  |  | -125d → -156d |  |  |
| 600 | Address LSDBundle Deployment Documentation | 2007-12-14 → 2008-01-28 (+45d) | 2008-01-18 → 2008-03-03 (+45d) |  |  | -125d → -156d |  |  |
| 601 | Ensure Installation Integrates with LSD Bundle | 2007-12-14 → 2008-01-28 (+45d) | 2007-12-18 → 2008-01-30 (+43d) |  |  | -102d → -133d |  |  |
| 602 | GA Bundle Release | 2008-01-18 → 2008-01-25 (+7d) | 2008-01-18 → 2008-01-25 (+7d) |  |  | -125d → -130d |  |  |
| 603 | **caArray 2.0.x** | 2007-12-14 → 2008-01-28 (+45d) | 2008-01-10 → 2008-02-22 (+43d) |  |  |  | 528 → 529 |  |
| 604 | TBD | 2007-12-14 → 2008-01-28 (+45d) | 2008-01-10 → 2008-02-22 (+43d) |  |  |  |  |  |
| 605 | TBD | 2007-12-14 → 2008-01-28 (+45d) | 2008-01-10 → 2008-02-22 (+43d) |  |  |  |  |  |
| 606 | TBD | 2007-12-14 → 2008-01-28 (+45d) | 2008-01-10 → 2008-02-22 (+43d) |  |  |  |  |  |
