# caarray_schedule_2_1_0

How a schedule from MS Project changed from version to version. A marks actual dates.

## Version 1 (saved 2008-06-05)

Note of the change: draft 2.1.0 schedule committed.

| ID | WBS | Task | Duration | Start | Finish | Predecessors | Total float | Constraint |
| --- | --- | --- | --- | --- | --- | --- | --- | --- |
| 1 | 1 | **Construction alpha3** | 20d? | 2008-05-27 | 2008-06-23 |  | 2.75d |  |
| 2 |  | Project Management | 1d? | 2008-05-27 | 2008-05-27 |  | 47d |  |
| 3 |  | Requirements Management | 1d? | 2008-05-27 | 2008-05-27 |  | 47d |  |
| 4 |  | Implementation | 8.25d | 2008-05-29 | 2008-06-10 |  | 0d | finish no earlier than 2008-06-10 |
| 5 | 1.4 | **Test** | 9d | 2008-06-11 | 2008-06-23 | 4 | 28d |  |
| 6 |  | Test on DEV | 1d | 2008-06-11 | 2008-06-11 |  | 28d |  |
| 7 |  | Verify Defects | 5d | 2008-06-12 | 2008-06-18 | 6 | 28d | start no earlier than 2008-06-12 |
| 8 |  | Regression Test | 2d | 2008-06-12 | 2008-06-13 | 6 | 31d | start no earlier than 2008-06-12 |
| 9 |  | Deploy to Stage | 1d | 2008-06-19 | 2008-06-19 | 7, 8 | 28d | start no earlier than 2008-06-16 |
| 10 |  | Stage Test | 2d | 2008-06-20 | 2008-06-23 | 9 | 28d | start no earlier than 2008-06-20 |
| 11 | 2 | **Construction alpha4 (model lock down)** | 31d? | 2008-05-27 | 2008-07-08 |  | 11d |  |
| 12 |  | Project Management | 1d? | 2008-05-27 | 2008-05-27 |  | 47d |  |
| 13 |  | Requirements Management | 2d | 2008-05-27 | 2008-05-28 |  | 46d |  |
| 14 |  | Implementation | 10d | 2008-06-11 | 2008-06-24 | 4 | 0d |  |
| 15 | 2.4 | **Test** | 10d? | 2008-06-25 | 2008-07-08 | 14 | 17d |  |
| 16 |  | Test on DEV | 1d? | 2008-06-25 | 2008-06-25 |  | 17d |  |
| 17 |  | Verify Defects | 4d | 2008-06-26 | 2008-07-01 | 16 | 17d | finish no earlier than 2008-07-01 |
| 18 |  | Regression Test | 2d | 2008-06-25 | 2008-06-26 |  | 25d |  |
| 19 |  | Deploy to Stage | 1d | 2008-07-02 | 2008-07-02 | 17 | 17d |  |
| 20 |  | Stage Test | 2d | 2008-07-03 | 2008-07-04 | 19 | 17d |  |
| 21 |  | Prod Deployment Test | 4d | 2008-07-03 | 2008-07-08 | 19 | 17d |  |
| 22 | 3 | **Construction RC (feature lock down)** | 48d? | 2008-05-27 | 2008-07-31 |  | 0d |  |
| 23 |  | Project Management | 1d? | 2008-05-27 | 2008-05-27 |  | 47d |  |
| 24 |  | Requirements Management | 1d? | 2008-05-27 | 2008-05-27 |  | 47d |  |
| 25 | 3.3 | **Design** | 27d | 2008-06-25 | 2008-07-31 |  | 0d |  |
| 26 |  | Final update to the model | 2d | 2008-06-25 | 2008-06-26 | 14 | 0d |  |
| 27 |  | Register model on caDSR | 25d | 2008-06-27 | 2008-07-31 | 26 | 0d |  |
| 28 |  | Implementation | 1d? | 2008-07-01 | 2008-07-01 | 14 | 0d | finish no earlier than 2008-07-01 |
| 29 | 3.5 | **Test** | 7d | 2008-07-02 | 2008-07-10 | 28 | 0d |  |
| 30 |  | Test on DEV | 1d | 2008-07-02 | 2008-07-02 |  | 0d |  |
| 31 |  | Verify Defects | 3d | 2008-07-03 | 2008-07-07 | 30 | 0d |  |
| 32 |  | Regression Test | 2d | 2008-07-03 | 2008-07-04 | 30 | 1d |  |
| 33 |  | Installer Test | 2d | 2008-07-08 | 2008-07-09 | 31, 32 | 16d |  |
| 34 |  | Deploy to Stage | 1d | 2008-07-08 | 2008-07-08 | 31, 32 | 15d |  |
| 35 |  | Stage Test | 2d | 2008-07-09 | 2008-07-10 | 34 | 15d |  |
| 36 | 4 | **Construction RC2** | 27d? | 2008-06-25 | 2008-07-31 | 14 | 0d |  |
| 37 |  | Project Management | 1d? | 2008-06-25 | 2008-06-25 |  | 26d |  |
| 38 |  | Requirements Management | 2d | 2008-06-25 | 2008-06-26 |  | 25d |  |
| 39 | 4.3 | **Design** | 4d | 2008-07-02 | 2008-07-07 |  | 18d |  |
| 40 |  | Update SAD | 4d | 2008-07-02 | 2008-07-07 | 28 | 18d |  |
| 41 |  | Implementation | 5d | 2008-07-08 | 2008-07-14 | 31, 32 | 0d |  |
| 42 | 4.5 | **Test** | 8d | 2008-07-15 | 2008-07-24 | 41 | 0d |  |
| 43 |  | Verify Defects | 5d | 2008-07-15 | 2008-07-21 |  | 0d |  |
| 44 |  | Regression Test | 2d | 2008-07-15 | 2008-07-16 |  | 3d |  |
| 45 |  | Deploy to Stage | 1d | 2008-07-22 | 2008-07-22 | 43, 44 | 0d |  |
| 46 |  | Stage Test | 2d | 2008-07-23 | 2008-07-24 | 45 | 0d |  |
| 47 |  | Installer Test | 3d | 2008-07-22 | 2008-07-24 | 43, 44 | 4d |  |
| 48 | 4.6 | **Configuration and Change Management** | 27d | 2008-06-25 | 2008-07-31 |  | 0d |  |
| 49 |  | Prepare Release Note | 1d | 2008-07-25 | 2008-07-25 | 46 | 4d |  |
| 50 | 4.6.2 | **Documentation** | 25d | 2008-06-25 | 2008-07-29 |  | 2d |  |
| 51 |  | Draft Update User Guide | 4d | 2008-07-15 | 2008-07-18 | 41 | 2d |  |
| 52 |  | Review User Guide | 4d | 2008-07-21 | 2008-07-24 | 51 | 2d |  |
| 53 |  | Complete User Guide | 3d | 2008-07-25 | 2008-07-29 | 52 | 2d |  |
| 54 |  | Update Technical Guide | 3d | 2008-06-25 | 2008-06-27 | 14 | 24d |  |
| 55 |  | Update Online Help | 2d | 2008-07-07 | 2008-07-08 | 20 | 17d |  |
| 56 |  | Update Installation Guide | 5d | 2008-06-25 | 2008-07-01 |  | 22d |  |
| 57 |  | Update gForge | 1d | 2008-07-25 | 2008-07-25 | 47 | 4d |  |
| 58 |  | Update Download Center | 5d | 2008-07-25 | 2008-07-31 | 46 | 0d |  |
| 59 |  | Update Tools/Landing Site | 2d | 2008-07-25 | 2008-07-28 | 46 | 3d |  |
| 60 | 4.7 | **Environment** | 1d | 2008-07-31 | 2008-07-31 | 47 | 0d |  |
| 61 |  | Deploy to Prod | 1d | 2008-07-31 | 2008-07-31 | 48FF | 0d |  |

## Version 2 (saved 2008-06-30)

Note of the change: updated schedule for RC release after the holidays.

Last finish stays 2008-07-31.

Changed:

| ID | Task | Start | Finish | Duration | Total float | Other |
| --- | --- | --- | --- | --- | --- | --- |
| 28 | Implementation | 2008-07-01 → 2008-06-25 (-6d) | 2008-07-01 → 2008-07-02 (+1d) | 1d? → 6d? | 0d → 1d | constraint finish no earlier than 2008-07-01 → finish no earlier than 2008-07-02 |
| 29 | **Test** | 2008-07-02 → 2008-07-03 (+1d) | 2008-07-10 → 2008-07-11 (+1d) |  | 0d → 1d |  |
| 30 | Test on DEV | 2008-07-02 → 2008-07-03 (+1d) | 2008-07-02 → 2008-07-03 (+1d) |  | 0d → 1d |  |
| 31 | Verify Defects | 2008-07-03 → 2008-07-07 (+4d) | 2008-07-07 → 2008-07-08 (+1d) | 3d → 2d |  | constraint none → start no earlier than 2008-07-07 |
| 32 | Regression Test | 2008-07-03 → 2008-07-07 (+4d) | 2008-07-04 → 2008-07-08 (+4d) |  | 1d → 0d | constraint none → start no earlier than 2008-07-07 |
| 33 | Installer Test | 2008-07-08 → 2008-07-09 (+1d) | 2008-07-09 → 2008-07-10 (+1d) |  |  |  |
| 34 | Deploy to Stage | 2008-07-08 → 2008-07-09 (+1d) | 2008-07-08 → 2008-07-09 (+1d) |  |  |  |
| 35 | Stage Test | 2008-07-09 → 2008-07-10 (+1d) | 2008-07-10 → 2008-07-11 (+1d) |  |  |  |
| 39 | **Design** | 2008-07-02 → 2008-07-03 (+1d) | 2008-07-07 → 2008-07-08 (+1d) |  |  |  |
| 40 | Update SAD | 2008-07-02 → 2008-07-03 (+1d) | 2008-07-07 → 2008-07-08 (+1d) |  |  |  |
| 41 | Implementation | 2008-07-08 → 2008-07-09 (+1d) | 2008-07-14 → 2008-07-15 (+1d) |  |  |  |
| 42 | **Test** | 2008-07-15 → 2008-07-16 (+1d) | 2008-07-24 → 2008-07-25 (+1d) |  |  |  |
| 43 | Verify Defects | 2008-07-15 → 2008-07-16 (+1d) | 2008-07-21 → 2008-07-22 (+1d) |  |  |  |
| 44 | Regression Test | 2008-07-15 → 2008-07-16 (+1d) | 2008-07-16 → 2008-07-17 (+1d) |  |  |  |
| 45 | Deploy to Stage | 2008-07-22 → 2008-07-23 (+1d) | 2008-07-22 → 2008-07-23 (+1d) |  |  |  |
| 46 | Stage Test | 2008-07-23 → 2008-07-24 (+1d) | 2008-07-24 → 2008-07-25 (+1d) |  |  |  |
| 47 | Installer Test | 2008-07-22 → 2008-07-23 (+1d) | 2008-07-24 → 2008-07-25 (+1d) |  |  |  |
| 49 | Prepare Release Note | 2008-07-25 → 2008-07-28 (+3d) | 2008-07-25 → 2008-07-28 (+3d) |  | 4d → 3d |  |
| 50 | **Documentation** |  | 2008-07-29 → 2008-07-30 (+1d) | 25d → 26d | 2d → 1d |  |
| 51 | Draft Update User Guide | 2008-07-15 → 2008-07-16 (+1d) | 2008-07-18 → 2008-07-21 (+3d) |  | 2d → 1d |  |
| 52 | Review User Guide | 2008-07-21 → 2008-07-22 (+1d) | 2008-07-24 → 2008-07-25 (+1d) |  | 2d → 1d |  |
| 53 | Complete User Guide | 2008-07-25 → 2008-07-28 (+3d) | 2008-07-29 → 2008-07-30 (+1d) |  | 2d → 1d |  |
| 57 | Update gForge | 2008-07-25 → 2008-07-28 (+3d) | 2008-07-25 → 2008-07-28 (+3d) |  | 4d → 3d |  |
| 58 | Update Download Center | 2008-07-25 → 2008-07-28 (+3d) |  | 5d → 4d |  |  |
| 59 | Update Tools/Landing Site | 2008-07-25 → 2008-07-28 (+3d) | 2008-07-28 → 2008-07-29 (+1d) |  | 3d → 2d |  |

## Version 3 (saved 2008-07-07)

Note of the change: updated with the latest RC1 schedule.

Last finish stays 2008-07-31.

Changed:

| ID | Task | Start | Finish | Duration | Total float | Predecessors | Other |
| --- | --- | --- | --- | --- | --- | --- | --- |
| 28 | Implementation |  | 2008-07-02 → 2008-07-07 (+5d) | 6d? → 9d? | 1d → 2d |  | constraint finish no earlier than 2008-07-02 → finish no earlier than 2008-07-07 |
| 29 | **Test** | 2008-07-03 → 2008-07-08 (+5d) | 2008-07-11 → 2008-07-15 (+4d) | 7d → 6d | 1d → 13d |  |  |
| 30 | Test on DEV | 2008-07-03 → 2008-07-08 (+5d) | 2008-07-03 → 2008-07-08 (+5d) |  | 1d → 13d |  |  |
| 31 | Verify Defects | 2008-07-07 → 2008-07-09 (+2d) | 2008-07-08 → 2008-07-10 (+2d) |  | 0d → 13d |  |  |
| 32 | Regression Test | 2008-07-07 → 2008-07-09 (+2d) | 2008-07-08 → 2008-07-10 (+2d) |  | 0d → 13d |  |  |
| 33 | Installer Test | 2008-07-09 → 2008-07-11 (+2d) | 2008-07-10 → 2008-07-14 (+4d) |  | 16d → 14d |  |  |
| 34 | Deploy to Stage | 2008-07-09 → 2008-07-11 (+2d) | 2008-07-09 → 2008-07-11 (+2d) |  | 15d → 13d |  |  |
| 35 | Stage Test | 2008-07-10 → 2008-07-14 (+4d) | 2008-07-11 → 2008-07-15 (+4d) |  | 15d → 13d |  |  |
| 36 | **Construction RC2** |  | 2008-07-31 → 2008-07-30 (-1d) | 27d? → 26d? | 0d → 1d |  |  |
| 39 | **Design** | 2008-07-03 → 2008-07-08 (+5d) | 2008-07-08 → 2008-07-11 (+3d) |  | 18d → 15d |  |  |
| 40 | Update SAD | 2008-07-03 → 2008-07-08 (+5d) | 2008-07-08 → 2008-07-11 (+3d) |  | 18d → 15d |  |  |
| 41 | Implementation |  |  |  | 0d → 1d | 31, 32 → 28 | constraint none → finish no earlier than 2008-07-15 |
| 42 | **Test** |  | 2008-07-25 → 2008-07-23 (-2d) | 8d → 6d | 0d → 2d |  |  |
| 43 | Verify Defects |  | 2008-07-22 → 2008-07-18 (-4d) | 5d → 3d | 0d → 2d |  |  |
| 45 | Deploy to Stage | 2008-07-23 → 2008-07-21 (-2d) | 2008-07-23 → 2008-07-21 (-2d) |  | 0d → 2d |  |  |
| 46 | Stage Test | 2008-07-24 → 2008-07-22 (-2d) | 2008-07-25 → 2008-07-23 (-2d) |  | 0d → 2d |  |  |
| 47 | Installer Test | 2008-07-23 → 2008-07-21 (-2d) | 2008-07-25 → 2008-07-23 (-2d) |  | 4d → 5d |  |  |
| 48 | **Configuration and Change Management** |  | 2008-07-31 → 2008-07-30 (-1d) | 27d → 26d | 0d → 1d |  |  |
| 49 | Prepare Release Note | 2008-07-28 → 2008-07-24 (-4d) | 2008-07-28 → 2008-07-24 (-4d) |  | 3d → 5d |  |  |
| 57 | Update gForge | 2008-07-28 → 2008-07-24 (-4d) | 2008-07-28 → 2008-07-24 (-4d) |  | 3d → 5d |  |  |
| 58 | Update Download Center | 2008-07-28 → 2008-07-24 (-4d) | 2008-07-31 → 2008-07-29 (-2d) |  | 0d → 2d |  |  |
| 59 | Update Tools/Landing Site | 2008-07-28 → 2008-07-24 (-4d) | 2008-07-29 → 2008-07-25 (-4d) |  | 2d → 4d |  |  |
| 60 | **Environment** | 2008-07-31 → 2008-07-30 (-1d) | 2008-07-31 → 2008-07-30 (-1d) |  | 0d → 1d |  |  |
| 61 | Deploy to Prod | 2008-07-31 → 2008-07-30 (-1d) | 2008-07-31 → 2008-07-30 (-1d) |  | 0d → 1d |  |  |
