# caarray_schedule_2_1_1

How a schedule from MS Project changed from version to version. A marks actual dates.

## Version 1 (saved 2008-08-29)

Note of the change: draft 2.1.1 schedule

| ID | WBS | Task | Duration | Start | Finish | Predecessors | Total float | Constraint |
| --- | --- | --- | --- | --- | --- | --- | --- | --- |
| 1 | 1 | **Construction RC** | 29d? | 2008-08-01 | 2008-09-10 |  | 0d |  |
| 2 |  | Project Management | 1d? | 2008-08-01 | 2008-08-01 |  | 54d |  |
| 3 |  | Requirements Management | 1d? | 2008-08-01 | 2008-08-01 |  | 54d |  |
| 4 | 1.3 | **Implementation** | 20d? | 2008-08-01 | 2008-08-28 |  | 0d |  |
| 5 |  | Develop RC release | 19d? | 2008-08-01 | 2008-08-27 |  | 0d | finish no earlier than 2008-08-27 |
| 6 |  | Verify Defects on DEV | 1d | 2008-08-28 | 2008-08-28 | 5 | 0d |  |
| 7 |  | Milestone: Deploy RC to QA | 0d | 2008-08-28 | 2008-08-28 | 6 | 0d |  |
| 8 | 1.4 | **Test** | 9d | 2008-08-29 | 2008-09-10 |  | 26d |  |
| 9 |  | Verify Defects on QA | 4d | 2008-08-29 | 2008-09-03 | 7 | 26d |  |
| 10 |  | Regression Test | 5d | 2008-08-29 | 2008-09-04 | 7 | 26d |  |
| 11 |  | Deploy to Stage | 1d | 2008-09-04 | 2008-09-04 | 9 | 26d |  |
| 12 |  | Stage Test | 4d | 2008-09-05 | 2008-09-10 | 11 | 26d |  |
| 13 |  | Installer Testing | 4d | 2008-09-05 | 2008-09-10 | 9, 10 | 26d |  |
| 14 |  | Security Scan | 4d | 2008-09-05 | 2008-09-10 | 9, 10 | 26d |  |
| 15 |  | Milestone: RC testing completed | 0d | 2008-09-10 | 2008-09-10 | 12, 13, 14 | 26d |  |
| 16 | 2 | **Construction RC2** | 40d? | 2008-08-01 | 2008-09-25 |  | 19d |  |
| 17 |  | Project Management | 1d? | 2008-08-01 | 2008-08-01 |  | 58d |  |
| 18 | 2.2 | **Implementation** | 9.5d | 2008-08-29 | 2008-09-11 |  | 0d |  |
| 19 |  | Address RC bugs | 9d | 2008-08-29 | 2008-09-10 | 4 | 0d |  |
| 20 |  | Verify Defects on DEV | 0.5d | 2008-09-11 | 2008-09-11 | 19 | 12.5d |  |
| 21 |  | Milestone: Deploy RC2 to QA | 0d | 2008-09-11 | 2008-09-11 | 20 | 12.5d |  |
| 22 | 2.3 | **Test** | 10.5d | 2008-09-11 | 2008-09-25 |  | 12.5d |  |
| 23 |  | Verify Defects on QA | 4d | 2008-09-11 | 2008-09-17 | 21 | 13.5d |  |
| 24 |  | Regression Test | 5d | 2008-09-11 | 2008-09-18 | 21 | 12.5d |  |
| 25 |  | Deploy to Stage | 1d | 2008-09-17 | 2008-09-18 | 23 | 20.5d |  |
| 26 |  | Stage Test | 4d | 2008-09-18 | 2008-09-24 | 25 | 20.5d |  |
| 27 |  | Installer Testing | 3d | 2008-09-18 | 2008-09-23 | 23, 24 | 13.5d |  |
| 28 |  | Installer Testing - kc | 4d | 2008-09-18 | 2008-09-24 | 23, 24 | 12.5d |  |
| 29 |  | Security Scan | 4d | 2008-09-18 | 2008-09-24 | 25 | 20.5d |  |
| 30 |  | Deployment Test | 2d | 2008-09-18 | 2008-09-22 | 23, 24 | 22.5d |  |
| 31 |  | Milestone: RC2 testing completed | 0d | 2008-09-25 | 2008-09-25 | 26, 27, 30, 34 | 19d |  |
| 32 | 3 | **Construction RC3** | 17d | 2008-09-11 | 2008-10-03 |  | 0d |  |
| 33 |  | Address RC2 bugs | 10d | 2008-09-11 | 2008-09-24 | 19 | 0d |  |
| 34 | 3.2 | **Implementation** | 11d | 2008-09-11 | 2008-09-25 |  | 0d |  |
| 35 |  | Verify Defects on DEV | 1d | 2008-09-25 | 2008-09-25 | 33 | 0d |  |
| 36 |  | Milestone: Deploy RC3 to QA | 0d | 2008-09-25 | 2008-09-25 | 35 | 0d |  |
| 37 | 3.3 | **Test** | 6d | 2008-09-26 | 2008-10-03 |  | 0d |  |
| 38 |  | Verify Defects on QA | 2d | 2008-09-26 | 2008-09-29 | 36 | 0d |  |
| 39 |  | Regression Test | 3d | 2008-09-26 | 2008-09-30 | 35 | 0d |  |
| 40 |  | Deploy to Stage | 0.5d | 2008-09-30 | 2008-09-30 | 38 | 0.5d |  |
| 41 |  | Stage Test | 3d | 2008-09-30 | 2008-10-03 | 40 | 0.5d |  |
| 42 |  | Installer Testing | 3d | 2008-10-01 | 2008-10-03 | 38, 39 | 0d |  |
| 43 |  | Installer Testing - kc | 3d | 2008-10-01 | 2008-10-03 | 38, 39 | 0d |  |
| 44 |  | LSD compliance testing | 3d | 2008-10-01 | 2008-10-03 | 38, 39 | 0d |  |
| 45 |  | Security scan | 4d | 2008-09-30 | 2008-10-03 | 38 | 0d |  |
| 46 |  | Deployment Testing | 2d | 2008-10-01 | 2008-10-02 | 39 | 1d |  |
| 47 |  | Milestone: RC3 testing completed | 0d | 2008-10-03 | 2008-10-03 | 46, 45, 44, 41, 42, 43 | 0d |  |
| 48 | 4 | **Construction RC4 - GA** | 55d? | 2008-08-01 | 2008-10-16 |  | 4d |  |
| 49 |  | Project Management | 1d? | 2008-08-01 | 2008-08-01 |  | 58d |  |
| 50 | 4.2 | **Implementation** | 2.5d | 2008-10-06 | 2008-10-08 |  | 0d |  |
| 51 |  | Address bugs | 2d | 2008-10-06 | 2008-10-07 | 47 | 0d |  |
| 52 |  | Verify Defects on DEV | 0.5d | 2008-10-08 | 2008-10-08 | 51 | 0d |  |
| 53 |  | Milestone: Deploy GA to QA | 0d | 2008-10-08 | 2008-10-08 | 52 | 0d |  |
| 54 | 4.3 | **Test** | 6.5d | 2008-10-08 | 2008-10-16 |  | 0d |  |
| 55 |  | Verify Defects on QA | 2d | 2008-10-08 | 2008-10-10 | 53 | 0d | start no earlier than 2008-09-26 |
| 56 |  | Regression Test | 3d | 2008-10-08 | 2008-10-13 | 53 | 1.5d | start no earlier than 2008-09-26 |
| 57 |  | Deploy to Stage | 0.5d | 2008-10-10 | 2008-10-10 | 55 | 0d | start no earlier than 2008-09-30 |
| 58 |  | Stage Test | 3d | 2008-10-13 | 2008-10-15 | 57 | 1d | start no earlier than 2008-09-30 |
| 59 |  | Installer Testing | 3d | 2008-10-10 | 2008-10-15 | 55 | 1.5d | start no earlier than 2008-10-01 |
| 60 |  | Installer Testing - kc | 3d | 2008-10-10 | 2008-10-15 | 55 | 1.5d | start no earlier than 2008-10-01 |
| 61 |  | LSD compliance testing | 3d | 2008-10-10 | 2008-10-15 | 55 | 1.5d | start no earlier than 2008-10-01 |
| 62 |  | Security scan | 4d | 2008-10-13 | 2008-10-16 | 57 | 0d | start no earlier than 2008-09-30 |
| 63 |  | Deployment Testing | 2d | 2008-10-13 | 2008-10-15 | 56, 57 | 1.5d |  |
| 64 |  | Update User Guide | 20d | 2008-08-29 | 2008-09-25 |  | 19d |  |
| 65 | 4.3.11 | **Milestone: GA testing completed** | 0d | 2008-10-16 | 2008-10-16 | 58, 59, 60, 61, 63, 62 | 0d | start no earlier than 2008-10-03 |
| 66 |  | GUI change summary to Jill | 7d | 2008-08-29 | 2008-09-08 | 7 | 15d |  |
| 67 | 5 | **Configuration and Change Management** | 35d | 2008-08-29 | 2008-10-16 |  | 4d |  |
| 68 |  | Update User Guide | 5d | 2008-09-09 | 2008-09-15 | 66 | 15d |  |
| 69 | 5.2 | **Documentation** | 32d | 2008-08-29 | 2008-10-13 |  | 7d |  |
| 70 | 5.2.1 | **Review User Guide** | 5d | 2008-09-16 | 2008-09-22 | 68 | 15d |  |

| ID | WBS | Task | Duration | Start | Finish | Predecessors | Total float |
| --- | --- | --- | --- | --- | --- | --- | --- |
| 71 |  | Incorporate feedback to User Guide | 3d | 2008-09-23 | 2008-09-25 | 70 | 15d |
| 72 |  | Send installer guide update to Jill: RC2 | 4d | 2008-09-24 | 2008-09-30 | 27, 28 | 8.5d |
| 73 |  | Update installer guide: RC2 | 4d | 2008-09-30 | 2008-10-06 | 72 | 8.5d |
| 74 |  | Send installer guide update to Jill: RC3 | 2d | 2008-10-06 | 2008-10-07 | 42, 43 | 3d |
| 75 | 5.2.2 | **Update Installer Guide** | 13.5d | 2008-09-24 | 2008-10-13 |  | 7d |
| 76 |  | Update installer guide: RC3 | 2d | 2008-10-08 | 2008-10-09 | 74 | 3d |
| 77 |  | Review update to installer guide | 2d | 2008-10-10 | 2008-10-13 | 76 | 3d |
| 78 |  | Prepare 2.1.1 Release Note | 2d | 2008-10-13 | 2008-10-15 | 55, 56 | 5.5d |
| 79 |  | Prepare 2.1.1 client.jar | 1d | 2008-10-16 | 2008-10-16 | 58 | 4d |
| 80 | 5.3 | **Release Artifacts** | 4.5d | 2008-10-10 | 2008-10-16 |  | 4d |
| 81 |  | Prepare 2.1.1 javadoc | 1d | 2008-10-16 | 2008-10-16 | 58 | 4d |
| 82 |  | Prepare 2.1.1 source.zip | 1d | 2008-10-16 | 2008-10-16 | 58 | 4d |
| 83 |  | Update Download Center | 4d | 2008-10-10 | 2008-10-16 | 55 | 4.5d |
| 84 |  | Update Tools Page | 2d | 2008-10-13 | 2008-10-14 | 57 | 6d |
| 85 |  | Update LSD Files Tab | 1d | 2008-10-15 | 2008-10-16 | 61 | 4.5d |
| 86 |  | Update Landing Site | 2d | 2008-10-13 | 2008-10-14 | 57 | 6d |
| 87 |  | Deploy to PROD | 1d | 2008-10-17 | 2008-10-17 | 65 | 0d |
| 88 | 6 | **Environment** | 4d | 2008-10-17 | 2008-10-22 |  | 0d |
| 89 |  | Verify PROD Deployment | 3d | 2008-10-20 | 2008-10-22 | 87 | 0d |
| 90 |  | Milestone: 2.1.1 Release Completed | 0d | 2008-10-22 | 2008-10-22 | 89 | 0d |

## Version 2 (saved 2008-08-29)

Note of the change: Fixed corrupted 2.1.1 schedule file.

Last finish stays 2008-10-22.

Added:

| ID | Task | Duration | Start | Finish | Predecessors | Constraint | Resources |
| --- | --- | --- | --- | --- | --- | --- | --- |
| 1 | Milestone: Begin 2.1.1 Release | 0d | 2008-08-01 | 2008-08-01 |  |  |  |
| 3 | Milestone: Begin RC Construction | 0d | 2008-08-01 | 2008-08-01 | 1 |  |  |
| 8 | Milestone: Begin Implementation of RC | 0d | 2008-08-01 | 2008-08-01 | 3 |  |  |
| 13 | Milestone: Begin RC1 Testing | 0d | 2008-08-28 | 2008-08-28 | 9 |  |  |
| 17 | Installer Test | 4d | 2008-09-05 | 2008-09-10 | 14, 11 | start no earlier than 2008-09-05 | keener |
| 19 | Milestone: RC testing complete | 0d | 2008-09-10 | 2008-09-10 | 16, 17 |  |  |
| 20 | Milestone: RC Completed | 0d | 2008-09-10 | 2008-09-10 | 19 |  |  |
| 22 | Milestone: Begin RC2 Construction | 0d | 2008-08-28 | 2008-08-28 | 9 |  |  |
| 25 | Milestone: Begin RC2 Implementation | 0d | 2008-08-28 | 2008-08-28 | 22 |  |  |
| 30 | Milestone: Begin RC2 Testing | 0d | 2008-09-11 | 2008-09-11 | 28 |  |  |
| 40 | Milestone: RC2 Completed | 0d | 2008-09-24 | 2008-09-24 | 39 |  |  |
| 42 | Milestone: Begin RC3 Construction | 0d | 2008-09-11 | 2008-09-11 | 28 |  |  |
| 45 | Milestone: Begin RC3 Implementation | 0d | 2008-09-11 | 2008-09-11 | 42 |  |  |
| 50 | Milestone: Begin RC3 Testing | 0d | 2008-09-24 | 2008-09-24 | 48 |  |  |
| 59 | Deployment Test | 2d | 2008-09-30 | 2008-10-01 | 52, 51 |  |  |
| 61 | Milestone: RC3 Completed | 0d | 2008-10-03 | 2008-10-03 | 60 |  |  |
| 63 | Milestone:Begin RC4 Construction | 0d | 2008-10-02 | 2008-10-02 | 58 |  |  |
| 64 | Project Management | 1d? | 2008-10-03 | 2008-10-03 | 63 |  |  |
| 66 | Milestone: Begin RC4 Implementation | 0d | 2008-10-03 | 2008-10-03 | 63 |  |  |
| 72 | Milestone: Begin RC4 Testing | 0d | 2008-10-08 | 2008-10-08 | 68 |  |  |
| 80 | Milestone: GA testing completed | 0d | 2008-10-16 | 2008-10-16 | 75, 76, 77, 78, 79 | start no earlier than 2008-10-03 |  |
| 82 | **Milestone: Begin Configuration and Change Management** | 0d | 2008-08-28 | 2008-08-28 | 9 |  |  |
| 83 | **GUI change summary to Jill** | 5d | 2008-08-29 | 2008-09-04 | 90 |  |  |
| 86 | **Milestone: Begin Documentation** | 0d | 2008-08-28 | 2008-08-28 | 82 |  |  |
| 87 | Review User Guide | 5d | 2008-09-12 | 2008-09-18 | 84 |  |  |
| 88 | **Update User Guide** | 18d | 2008-08-28 | 2008-09-23 |  |  |  |
| 90 | Milestone: Begin User Guide Update | 0d | 2008-08-28 | 2008-08-28 | 86 |  |  |
| 91 | Milestone: User Guide updated for 2.1.1 | 0d | 2008-09-23 | 2008-09-23 | 89 |  |  |
| 92 | Milestone: Begin Install Guide Update | 0d | 2008-09-24 | 2008-09-24 | 35, 36 |  |  |
| 98 | Review installer guide | 1d | 2008-10-13 | 2008-10-13 | 97 |  |  |
| 99 | Milestone: Installer Guide for 2.1.1 updated | 0d | 2008-10-13 | 2008-10-13 | 98 |  |  |
| 100 | Milestone: Complete Documentation | 0d | 2008-10-13 | 2008-10-13 | 91, 99 |  |  |
| 102 | Milestone: Begin release artifact preparation | 0d | 2008-10-03 | 2008-10-03 | 60 |  |  |
| 111 | Milestone: Complete release artifact preparation | 0d | 2008-10-17 | 2008-10-17 | 103, 104, 105, 106, 107, 108, 109, 110 |  |  |
| 112 | Milestone: Complete Configuration Management | 0d | 2008-10-17 | 2008-10-17 | 100, 111 |  |  |
| 114 | Milestone: Begin deployment to PROD activities | 0d | 2008-10-16 | 2008-10-16 | 80 |  |  |
| 117 | Milestone: Complete PROD deployment activities | 0d | 2008-10-22 | 2008-10-22 | 116 |  |  |
| 118 | Milestone: Complete 2.1.1 | 0d | 2008-10-22 | 2008-10-22 | 117 |  |  |

Removed: 3 Requirements Management; 15 Milestone: RC testing completed; 59 Installer Testing; 63 Deployment Testing; 65 Milestone: GA testing completed; 66 GUI change summary to Jill; 68 Update User Guide; 70 Review User Guide; 77 Review update to installer guide; 90 Milestone: 2.1.1 Release Completed

Changed:

| ID | Task | Start | Finish | Duration | Total float | Predecessors | Other |
| --- | --- | --- | --- | --- | --- | --- | --- |
| 4 | Project Management |  |  |  | 54d → 57.5d | none → 3 |  |
| 5 | **Requirements Management** | 2008-10-01 → 2008-08-01 (-61d) | 2008-10-02 → 2008-08-01 (-62d) | 2d → 1d? | 1d → 57.5d | 51 → 3 | was named Deployment Testing; resources DBA; Systems → rsrinivasa |
| 10 | Develop RC release |  |  |  |  | none → 3 |  |
| 12 | **Test** | 2008-08-29 → 2008-08-28 (-1d) |  |  | 26d → 29.5d |  |  |
| 14 | Verify Defects on QA |  |  |  | 26d → 29.5d | 9 → 13 |  |
| 21 | **Construction RC2** | 2008-08-01 → 2008-08-28 (+27d) | 2008-09-25 → 2008-09-24 (-1d) | 40d? → 18.5d? | 19d → 0d |  |  |
| 23 | Project Management | 2008-08-01 → 2008-08-29 (+28d) | 2008-08-01 → 2008-08-29 (+28d) |  | 58d → 37.5d | none → 22 |  |
| 24 | **Implementation** | 2008-08-29 → 2008-08-28 (-1d) |  |  |  |  |  |
| 26 | Address RC bugs |  |  |  |  | 7 → 25 |  |
| 29 | **Test** |  | 2008-09-25 → 2008-09-24 (-1d) | 10.5d → 9d | 12.5d → 14d |  |  |
| 31 | Verify Defects on QA |  |  |  | 13.5d → 15d | 28 → 30 |  |
| 35 | Installer Testing | 2008-09-05 → 2008-09-18 (+13d) | 2008-09-10 → 2008-09-23 (+13d) | 4d → 3d | 26d → 15d | 14, 11 → 31, 32 |  |
| 39 | Milestone: RC2 testing completed | 2008-09-25 → 2008-09-24 (-1d) | 2008-09-25 → 2008-09-24 (-1d) |  | 19d → 20d | 34, 56, 38, 44 → 34, 35, 38, 36, 37 |  |
| 41 | **Construction RC3** |  |  | 17d → 16.5d? |  |  |  |
| 43 | Project Management | 2008-08-01 → 2008-09-11 (+41d) | 2008-08-01 → 2008-09-16 (+46d) | 1d? → 3d? | 58d → 26d | none → 42 | resources none → reedya; keener; misquitta |
| 44 | **Implementation** |  | 2008-09-25 → 2008-09-24 (-1d) | 11d → 9.5d |  |  |  |
| 46 | Address RC2 bugs |  |  | 10d → 9d |  | 26 → 28 | resources none → dkokotov; slustbader; mshestopalov; jgill; bpickeral |
| 47 | Verify Defects on DEV | 2008-09-25 → 2008-09-24 (-1d) | 2008-09-25 → 2008-09-24 (-1d) | 1d → 0.5d |  |  | resources none → dkokotov; slustbader; mshestopalov; jgill; bpickeral |
| 48 | Milestone: Deploy RC3 to QA | 2008-09-25 → 2008-09-24 (-1d) | 2008-09-25 → 2008-09-24 (-1d) |  |  |  |  |
| 49 | **Test** | 2008-09-26 → 2008-09-24 (-2d) |  | 6d → 7d |  |  |  |
| 51 | Regression Test | 2008-09-26 → 2008-09-25 (-1d) | 2008-09-30 → 2008-09-29 (-1d) |  | 0d → 1d | 47 → 48 |  |
| 52 | Verify Defects on QA | 2008-09-26 → 2008-09-25 (-1d) | 2008-09-29 → 2008-09-26 (-3d) |  |  | 48 → 50 | resources reedya; keener; misquitta → none |
| 53 | Deploy to Stage | 2008-09-30 → 2008-09-29 (-1d) | 2008-09-30 → 2008-09-29 (-1d) | 0.5d → 1d | 0.5d → 0d |  |  |
| 54 | Stage Test |  |  | 3d → 4d | 0.5d → 0d |  | resources reedya; keener; misquitta → none |
| 55 | LSD compliance testing | 2008-10-01 → 2008-09-30 (-1d) | 2008-10-03 → 2008-10-02 (-1d) |  | 0d → 1d | 52, 51 → 51 |  |
| 56 | Installer Testing | 2008-09-18 → 2008-09-30 (+12d) | 2008-09-23 → 2008-10-02 (+9d) |  | 13.5d → 1d | 31, 32 → 51, 53 |  |
| 57 | Installer Testing - kc | 2008-10-01 → 2008-09-30 (-1d) | 2008-10-03 → 2008-10-02 (-1d) |  | 0d → 1d | 52, 51 → 51, 53 |  |
| 58 | Security scan | 2008-09-30 → 2008-09-29 (-1d) | 2008-10-03 → 2008-10-02 (-1d) |  | 0d → 1d |  |  |
| 60 | Milestone: RC3 testing completed |  |  |  |  | 5, 58, 55, 54, 76, 57 → 56, 57, 55, 54, 59 |  |
| 62 | **Construction RC4 - GA** | 2008-08-01 → 2008-10-02 (+62d) |  | 55d? → 10d? | 4d → 1d |  |  |
| 65 | **Implementation** | 2008-10-06 → 2008-10-03 (-3d) |  |  |  | none → 60 |  |
| 69 | Address bugs |  |  |  |  | 60 → 66 |  |
| 73 | Verify Defects on QA |  |  |  |  | 68 → 72 |  |
| 76 | Installer Testing | 2008-10-01 → 2008-10-10 (+9d) | 2008-10-03 → 2008-10-15 (+12d) |  | 0d → 1.5d | 52, 51 → 73 | constraint none → start no earlier than 2008-10-01 |
| 81 | **Configuration and Change Management** | 2008-08-29 → 2008-08-28 (-1d) | 2008-10-16 → 2008-10-17 (+1d) | 35d → 36d | 4d → 2.5d |  |  |
| 84 | Update User Guide | 2008-08-29 → 2008-09-05 (+7d) | 2008-09-25 → 2008-09-11 (-14d) | 20d → 5d | 19d → 20.5d | none → 83 |  |
| 85 | **Documentation** | 2008-08-29 → 2008-08-28 (-1d) |  |  | 7d → 6.5d |  |  |
| 89 | Incorporate feedback to User Guide | 2008-09-23 → 2008-09-19 (-4d) | 2008-09-25 → 2008-09-23 (-2d) |  | 15d → 20.5d | Review User Guide → 87 |  |
| 93 | Send installer guide update to Jill: RC2 |  | 2008-09-30 → 2008-09-29 (-1d) | 4d → 3d | 8.5d → 14d | 56, 36 → 92 |  |
| 94 | Update installer guide: RC2 | 2008-09-30 → 2008-09-29 (-1d) | 2008-10-06 → 2008-10-02 (-4d) | 4d → 3d | 8.5d → 14d |  |  |
| 95 | Send installer guide update to Jill: RC3 | 2008-10-06 → 2008-10-03 (-3d) |  | 2d → 3d | 3d → 6.5d | 76, 57 → 56, 57 |  |
| 97 | Update installer guide: RC3 |  | 2008-10-09 → 2008-10-10 (+1d) | 2d → 3d | 3d → 6.5d |  |  |
| 101 | **Release Artifacts** | 2008-10-10 → 2008-10-03 (-7d) | 2008-10-16 → 2008-10-17 (+1d) | 4.5d → 10d | 4d → 2.5d |  |  |
| 103 | Prepare 2.1.1 Release Note | 2008-10-13 → 2008-10-06 (-7d) | 2008-10-15 → 2008-10-07 (-8d) |  | 5.5d → 4.5d | 73, 70 → 102 |  |
| 107 | Update Download Center | 2008-10-10 → 2008-10-08 (-2d) | 2008-10-16 → 2008-10-15 (-1d) | 4d → 6d |  | 73 → 103 |  |
| 108 | Update Tools Page | 2008-10-13 → 2008-10-16 (+3d) | 2008-10-14 → 2008-10-17 (+3d) |  | 6d → 2.5d | 74 → 75 |  |
| 109 | Update LSD Files Tab | 2008-10-15 → 2008-10-16 (+1d) |  |  | 4.5d → 3.5d | 78 → 75 |  |
| 110 | Update Landing Site | 2008-10-13 → 2008-10-16 (+3d) | 2008-10-14 → 2008-10-17 (+3d) |  | 6d → 2.5d | 74 → 75 |  |
| 113 | **Environment** | 2008-10-17 → 2008-10-16 (-1d) |  | 4d → 3.5d |  |  |  |
| 115 | Deploy to PROD |  |  | 1d → 0.5d |  | Milestone: GA testing completed → 114 |  |
| 116 | Verify PROD Deployment | 2008-10-20 → 2008-10-17 (-3d) |  |  |  |  |  |

## Version 3 (saved 2008-09-05)

Note of the change: MS Project 2008 version of 2.1.1 schedule to correct file corruption.

Last finish stays 2008-10-22.

Added:

| ID | Task | Duration | Start | Finish | Predecessors | Constraint |
| --- | --- | --- | --- | --- | --- | --- |
| 5 | Requirements Management | 1d? | 2008-08-01 | 2008-08-01 | 3 |  |
| 46 | Address RC3 bugs | 9d | 2008-09-11 | 2008-09-23 | 45 |  |
| 65 | Address RC4 bugs | 5d | 2008-09-30 | 2008-10-06 | 64 |  |
| 67 | Milestone: Deploy RC4 to QA | 0d | 2008-10-07 | 2008-10-07 | 66 |  |
| 78 | Milestone: RC4 Testing completed | 0d | 2008-10-17 | 2008-10-17 | 73, 74, 75, 80 | start no earlier than 2008-10-16 |
| 79 | Milestone: RC4 Completed | 0d | 2008-10-17 | 2008-10-17 | 78 |  |
| 81 | Milestone: Begin Configuration and Change Management | 0d | 2008-08-30 | 2008-08-30 | 10 |  |
| 83 | Milestone: Begin Documentation | 0d | 2008-08-30 | 2008-08-30 | 81 |  |
| 86 | GUI change summary to Jill | 5d | 2008-09-01 | 2008-09-05 | 85 |  |
| 90 | Milestone: User Guide Updated for 2.1.1 | 0d | 2008-09-24 | 2008-09-24 | 89 |  |
| 91 | **Update Install Guide** | 14d | 2008-09-23 | 2008-10-13 |  |  |
| 93 | Send install guide update to Jill: RC2 | 3d | 2008-09-24 | 2008-09-26 | 92 |  |
| 94 | Update Install Guide: RC3 | 3d | 2008-09-29 | 2008-10-01 | 93 |  |
| 96 | Update Install Guide: RC3 | 3d | 2008-10-08 | 2008-10-10 | 95 |  |
| 97 | Review install guide | 1d | 2008-10-13 | 2008-10-13 | 96 |  |
| 98 | Milestone: Complete Install Guide | 0d | 2008-10-13 | 2008-10-13 | 97 |  |
| 100 | **Upload release artifacts** | 5d | 2008-10-10 | 2008-10-17 |  |  |
| 101 | Milestone: Begin preparation of release artifacts | 0d | 2008-10-10 | 2008-10-10 | 71 |  |
| 105 | Upload installer | 1d | 2008-10-15 | 2008-10-16 | 74, 75 |  |
| 106 | Upload documentation | 1d | 2008-10-14 | 2008-10-14 | 99 |  |

Removed: 46 Address RC2 bugs; 64 Project Management; 68 Milestone: Deploy GA to QA; 69 Address bugs; 79 Security scan; 80 Milestone: GA testing completed; 82 Milestone: Begin Configuration and Change Management; 83 GUI change summary to Jill; 86 Milestone: Begin Documentation; 91 Milestone: User Guide updated for 2.1.1; 93 Send installer guide update to Jill: RC2; 94 Update installer guide: RC2; 95 Send installer guide update to Jill: RC3; 96 Update Installer Guide; 97 Update installer guide: RC3; 98 Review installer guide; 99 Milestone: Installer Guide for 2.1.1 updated; 101 Release Artifacts; 102 Milestone: Begin release artifact preparation; 106 Prepare 2.1.1 source.zip

Changed:

| ID | Task | Start | Finish | Duration | Total float | Predecessors | Other |
| --- | --- | --- | --- | --- | --- | --- | --- |
| 2 | **Construction RC** |  | 2008-09-10 → 2008-09-12 (+2d) | 29d? → 31d? | 0d → 15.5d |  |  |
| 4 | Project Management |  |  |  | 57.5d → 20d |  | resources mduncan → none |
| 6 | **Implementation** |  | 2008-08-28 → 2008-08-30 (+2d) | 20d? → 21d? | 0d → 15.5d |  |  |
| 8 | Develop RC release |  | 2008-08-27 → 2008-08-30 (+3d) | 19d? → 21d? | 0d → 15.5d | 3 → 7 | constraint finish no earlier than 2008-08-27 → finish no earlier than 2008-08-30; resources dkokotov; slustbader; mshestopalov; jgill; bpickeral → none |
| 9 | Verify Defects on DEV |  |  | 1d → 1d? | 0d → 16.5d | 8 → 3 | constraint none → start no earlier than 2008-08-28; resources dkokotov; slustbader; mshestopalov; jgill; bpickeral → none |
| 10 | Milestone: Deploy RC to QA | 2008-08-28 → 2008-08-30 (+2d) | 2008-08-28 → 2008-08-30 (+2d) |  | 0d → 5d | 9 → 8, 9 |  |
| 11 | **Test** | 2008-08-28 → 2008-08-30 (+2d) | 2008-09-10 → 2008-09-12 (+2d) | 9d → 10d | 29.5d → 28d |  |  |
| 12 | Milestone: Begin RC1 Testing | 2008-08-28 → 2008-08-30 (+2d) | 2008-08-28 → 2008-08-30 (+2d) |  | 29.5d → 5d |  |  |
| 13 | Verify Defects on QA | 2008-08-29 → 2008-09-01 (+3d) | 2008-09-03 → 2008-09-04 (+1d) |  | 29.5d → 1d |  | resources reedya; keener; misquitta → none |
| 14 | Regression Test | 2008-08-29 → 2008-09-01 (+3d) | 2008-09-04 → 2008-09-05 (+1d) |  | 26d → 5d | 10 → 12 | resources reedya; keener; misquitta → none |
| 15 | Deploy to Stage | 2008-09-04 → 2008-09-08 (+4d) | 2008-09-04 → 2008-09-08 (+4d) |  | 29.5d → 5d | 13 → 13, 14 |  |
| 16 | Stage Test | 2008-09-05 → 2008-09-09 (+4d) | 2008-09-10 → 2008-09-12 (+2d) |  | 29.5d → 5d |  | resources reedya; keener; misquitta → none |
| 17 | Installer Test | 2008-09-05 → 2008-09-08 (+3d) | 2008-09-10 → 2008-09-11 (+1d) |  | 29.5d → 1d |  | constraint start no earlier than 2008-09-05 → none; resources keener → none |
| 18 | Security Scan | 2008-09-05 → 2008-09-09 (+4d) | 2008-09-10 → 2008-09-12 (+2d) |  | 29.5d → 5d | 13, 14 → 15 |  |
| 19 | Milestone: RC testing complete | 2008-09-10 → 2008-09-12 (+2d) | 2008-09-10 → 2008-09-12 (+2d) |  | 29.5d → 28d | 16, 17 → 16, 17, 18 |  |
| 20 | Milestone: RC Completed | 2008-09-10 → 2008-09-12 (+2d) | 2008-09-10 → 2008-09-12 (+2d) |  | 29.5d → 5d |  |  |
| 21 | **Construction RC2** | 2008-08-28 → 2008-08-01 (-27d) | 2008-09-24 → 2008-09-23 (-1d) | 18.5d? → 38d? | 0d → 21d |  |  |
| 22 | Milestone: Begin RC2 Construction | 2008-08-28 → 2008-08-30 (+2d) | 2008-08-28 → 2008-08-30 (+2d) |  | 0d → 38d |  |  |
| 23 | Project Management | 2008-08-29 → 2008-08-01 (-28d) | 2008-08-29 → 2008-08-01 (-28d) |  | 37.5d → 58d | 22 → none |  |
| 24 | **Implementation** | 2008-08-28 → 2008-08-30 (+2d) | 2008-09-11 → 2008-09-10 (-1d) | 9.5d → 8d |  |  |  |
| 25 | Milestone: Begin RC2 Implementation | 2008-08-28 → 2008-08-30 (+2d) | 2008-08-28 → 2008-08-30 (+2d) |  | 0d → 15d | 22 → 10 |  |
| 26 | Address RC bugs | 2008-08-29 → 2008-09-01 (+3d) | 2008-09-10 → 2008-09-09 (-1d) | 9d → 7d |  | 25 → none | constraint none → start no earlier than 2008-09-01; resources dkokotov; slustbader; mshestopalov; jgill; bpickeral → none |
| 27 | Verify Defects on DEV | 2008-09-11 → 2008-09-10 (-1d) | 2008-09-11 → 2008-09-10 (-1d) | 0.5d → 1d |  |  | resources dkokotov; slustbader; mshestopalov; jgill; bpickeral → none |
| 28 | Milestone: Deploy RC2 to QA | 2008-09-11 → 2008-09-10 (-1d) | 2008-09-11 → 2008-09-10 (-1d) |  |  |  |  |
| 29 | **Test** | 2008-09-11 → 2008-09-10 (-1d) | 2008-09-24 → 2008-09-23 (-1d) |  | 14d → 11.5d |  |  |
| 30 | Milestone: Begin RC2 Testing | 2008-09-11 → 2008-09-10 (-1d) | 2008-09-11 → 2008-09-10 (-1d) |  | 15d → 11.5d |  |  |
| 31 | Verify Defects on QA |  | 2008-09-17 → 2008-09-16 (-1d) |  | 15d → 1d |  | resources reedya; keener; misquitta → none |
| 32 | Regression Test |  | 2008-09-18 → 2008-09-17 (-1d) |  | 14d → 1d | 28 → 30 | resources reedya; keener; misquitta → none |
| 33 | Deploy to Stage |  | 2008-09-18 → 2008-09-17 (-1d) |  | 20d → 1d |  |  |
| 34 | Stage Test |  | 2008-09-24 → 2008-09-23 (-1d) |  | 20d → 1d |  | resources reedya; keener; misquitta → none |
| 35 | Installer Testing |  | 2008-09-23 → 2008-09-22 (-1d) |  | 15d → 1d |  | resources keener → none |
| 36 | Installer Testing - kc |  | 2008-09-24 → 2008-09-23 (-1d) |  | 14d → 1d |  | resources kc → none |
| 37 | Security Scan |  | 2008-09-24 → 2008-09-23 (-1d) |  | 20d → 1d |  |  |
| 38 | Deployment Test |  | 2008-09-22 → 2008-09-19 (-3d) |  | 22d → 2d | 31, 32 → 33 |  |
| 39 | Milestone: RC2 testing completed | 2008-09-24 → 2008-09-23 (-1d) | 2008-09-24 → 2008-09-23 (-1d) |  | 20d → 21d |  |  |
| 40 | Milestone: RC2 Completed | 2008-09-24 → 2008-09-23 (-1d) | 2008-09-24 → 2008-09-23 (-1d) |  | 20d → 21d |  |  |
| 41 | **Construction RC3** | 2008-09-11 → 2008-09-10 (-1d) |  | 16.5d? → 17d? |  |  |  |
| 42 | Milestone: Begin RC3 Construction | 2008-09-11 → 2008-09-10 (-1d) | 2008-09-11 → 2008-09-10 (-1d) |  | 26d → 0d |  |  |
| 43 | Project Management |  | 2008-09-16 → 2008-09-11 (-5d) | 3d? → 1d? | 26d → 8d |  | resources reedya; keener; misquitta → none |
| 44 | **Implementation** | 2008-09-11 → 2008-09-10 (-1d) |  | 9.5d → 10d |  |  |  |
| 45 | Milestone: Begin RC3 Implementation | 2008-09-11 → 2008-09-10 (-1d) | 2008-09-11 → 2008-09-10 (-1d) |  | 29d → 0d |  |  |
| 47 | Verify Defects on DEV |  |  | 0.5d → 1d |  | Address RC2 bugs → 46 | resources dkokotov; slustbader; mshestopalov; jgill; bpickeral → none |
| 52 | Regression Test |  |  |  | 1d → 0d | 48 → 50 | resources reedya; keener; misquitta → none |
| 55 | Installer Testing |  |  |  |  | 52, 53 → 51, 52 | resources keener → none |
| 56 | Installer Testing - kc |  |  |  |  | 52, 53 → 51, 52 | resources kc → none |
| 57 | LSD compliance testing |  |  |  |  | 52 → 51, 52 |  |
| 58 | Deployment Test | 2008-09-30 → 2008-09-25 (-5d) | 2008-10-01 → 2008-09-26 (-5d) |  | 2d → 5d | 51, 52 → 48 |  |
| 61 | **Construction RC4 - GA** | 2008-10-02 → 2008-09-29 (-3d) | 2008-10-16 → 2008-10-17 (+1d) | 10d? → 13.5d | 1d → 0d |  |  |
| 62 | Milestone:Begin RC4 Construction | 2008-10-02 → 2008-09-29 (-3d) | 2008-10-02 → 2008-09-29 (-3d) |  | 1d → 0d | 77 → 51, 52 |  |
| 63 | **Implementation** | 2008-10-03 → 2008-09-29 (-4d) | 2008-10-08 → 2008-10-07 (-1d) | 2.5d → 5.5d |  | 59 → none |  |
| 64 | Milestone: Begin RC4 Implementation | 2008-10-03 → 2008-09-29 (-4d) | 2008-10-03 → 2008-09-29 (-4d) |  |  |  |  |
| 66 | Verify Defects on DEV | 2008-10-08 → 2008-10-07 (-1d) | 2008-10-08 → 2008-10-07 (-1d) |  |  | Address bugs → 65 |  |
| 68 | **Test** | 2008-10-08 → 2008-10-07 (-1d) | 2008-10-16 → 2008-10-17 (+1d) | 6.5d → 8d |  |  |  |
| 69 | Milestone: Begin RC4 Testing | 2008-10-08 → 2008-10-07 (-1d) | 2008-10-08 → 2008-10-07 (-1d) |  |  | Milestone: Deploy GA to QA → 67 |  |
| 70 | Verify Defects on QA | 2008-10-08 → 2008-10-07 (-1d) | 2008-10-10 → 2008-10-09 (-1d) |  | 0d → 1d |  | constraint start no earlier than 2008-09-26 → none; resources reedya; keener; misquitta → none |
| 71 | Regression Test | 2008-10-08 → 2008-10-07 (-1d) | 2008-10-13 → 2008-10-10 (-3d) |  | 7d → 0d | Milestone: Deploy GA to QA → 69 | constraint start no earlier than 2008-09-26 → none; resources reedya; keener; misquitta → none |
| 72 | Deploy to Stage | 2008-10-10 → 2008-10-09 (-1d) | 2008-10-10 → 2008-10-09 (-1d) |  | 0d → 0.5d |  | constraint start no earlier than 2008-09-30 → none |
| 73 | Stage Test | 2008-10-13 → 2008-10-10 (-3d) | 2008-10-15 → 2008-10-14 (-1d) |  | 1d → 1.5d |  | constraint start no earlier than 2008-09-30 → none; resources reedya; keener; misquitta → none |
| 74 | Installer Testing |  |  |  | 1.5d → 1d | 70 → 70, 71 | constraint start no earlier than 2008-10-01 → none; resources keener → none |
| 75 | Installer Testing - kc |  |  |  | 1.5d → 1d | 70 → 70, 71 | constraint start no earlier than 2008-10-01 → none; resources kc → none |
| 76 | LSD compliance testing |  |  |  | 1.5d → 1d | 70 → 70, 71 | constraint start no earlier than 2008-10-01 → none |
| 77 | Security scan | 2008-09-29 → 2008-10-10 (+11d) | 2008-10-02 → 2008-10-15 (+13d) |  | 1d → 1.5d | 51 → 72 |  |
| 80 | **Configuration and Change Management** | 2008-08-28 → 2008-08-30 (+2d) |  | 36d → 34.5d | 2.5d → 0d |  |  |
| 82 | **Documentation** | 2008-08-28 → 2008-08-30 (+2d) |  | 32d → 31d | 6.5d → 3.5d | none → 81 |  |
| 84 | **Update User Guide** | 2008-08-28 → 2008-08-30 (+2d) | 2008-09-23 → 2008-09-24 (+1d) |  | 20.5d → 15.5d |  |  |
| 85 | Milestone: Begin User Guide Update | 2008-08-28 → 2008-08-30 (+2d) | 2008-08-28 → 2008-08-30 (+2d) |  | 20.5d → 15.5d | Milestone: Begin Documentation → 83 |  |
| 87 | Update User Guide | 2008-09-05 → 2008-09-08 (+3d) | 2008-09-11 → 2008-09-12 (+1d) |  | 20.5d → 15.5d | GUI change summary to Jill → 86 |  |
| 88 | Review User Guide | 2008-09-12 → 2008-09-15 (+3d) | 2008-09-18 → 2008-09-19 (+1d) |  | 20.5d → 15.5d |  |  |
| 89 | Incorporate feedback to User Guide | 2008-09-19 → 2008-09-22 (+3d) | 2008-09-23 → 2008-09-24 (+1d) |  | 20.5d → 15.5d |  |  |
| 92 | Milestone: Begin Install Guide Update | 2008-09-24 → 2008-09-23 (-1d) | 2008-09-24 → 2008-09-23 (-1d) |  | 14d → 11.5d |  |  |

| ID | Task | Start | Finish | Duration | Total float | Predecessors | Other |
| --- | --- | --- | --- | --- | --- | --- | --- |
| 95 | Send install guide update to Jill: RC3 | 2008-08-01 → 2008-10-03 (+63d) | 2008-08-01 → 2008-10-07 (+67d) | 1d? → 3d | 57.5d → 2.5d | 3 → 55, 56 | was named Requirements Management; resources rsrinivasa → none |
| 99 | Milestone: Complete Documentation |  |  |  | 6.5d → 2.5d | Milestone: User Guide updated for 2.1.1, Milestone: Installer Guide for 2.1.1 updated → 90, 98 |  |
| 102 | Prepare 2.1.1 Release Note | 2008-10-06 → 2008-10-10 (+4d) | 2008-10-07 → 2008-10-14 (+7d) |  | 4.5d → 3d | Milestone: Begin release artifact preparation → 101 |  |
| 103 | Prepare 2.1.1 client.jar | 2008-10-16 → 2008-10-15 (-1d) |  |  | 3.5d → 1d | 73 → 73, 74, 75 |  |
| 104 | Prepare 2.1.1 javadoc | 2008-10-16 → 2008-10-15 (-1d) |  |  | 3.5d → 1d | 73 → 73, 74, 75 |  |
| 107 | Update Download Center | 2008-10-08 → 2008-10-10 (+2d) | 2008-10-15 → 2008-10-17 (+2d) | 6d → 5d | 4.5d → 0d | 102 → 70, 71 |  |
| 108 | Update Tools Page | 2008-10-16 → 2008-10-15 (-1d) | 2008-10-17 → 2008-10-16 (-1d) |  | 2.5d → 0.5d |  |  |
| 109 | Update LSD Files Tab | 2008-10-16 → 2008-10-15 (-1d) |  |  | 3.5d → 1d | 73 → 76 |  |
| 110 | Update Landing Site | 2008-10-16 → 2008-10-15 (-1d) | 2008-10-17 → 2008-10-16 (-1d) |  | 2.5d → 0.5d |  |  |
| 111 | Milestone: Complete release artifact preparation |  |  |  | 2.5d → 0d | 102, 103, 104, Prepare 2.1.1 source.zip, 107, 108, 109, 110 → 102, 103, 104, 105, 106, 107, 108, 109, 110 |  |
| 113 | **Environment** | 2008-10-16 → 2008-10-17 (+1d) |  |  |  |  |  |
| 114 | Milestone: Begin deployment to PROD activities | 2008-10-16 → 2008-10-17 (+1d) | 2008-10-16 → 2008-10-17 (+1d) |  |  | Milestone: GA testing completed → 78 |  |
| 116 | Verify PROD Deployment | 2008-10-17 → 2008-10-20 (+3d) |  |  |  |  |  |

## Version 4 (saved 2008-09-16)

Note of the change: 2.1.1 schedule updated with latest status.

Last finish stays 2008-10-22. Complete tasks 0 → 20.

Removed: 36 Installer Testing - kc; 93 Send install guide update to Jill: RC2; 94 Update Install Guide: RC3

Changed:

| ID | Task | Start | Finish | Duration | Complete | Total float | Predecessors | Other |
| --- | --- | --- | --- | --- | --- | --- | --- | --- |
| 2 | **Construction RC** | 2008-08-01 A |  |  | 0% → 78% | 15.5d → 27.5d |  |  |
| 5 | Requirements Management | 2008-08-01 A | 2008-08-01 A |  | 0% → 100% | 20d → none |  | resources none → rsrinivasa |
| 6 | **Implementation** | 2008-08-01 A |  |  | 0% → 99% | 15.5d → 37.5d |  |  |
| 8 | Develop RC release | 2008-08-01 A | 2008-08-30 A |  | 0% → 100% | 15.5d → none |  | resources none → slustbader; dkokotov; mshestopalov; jgill |
| 9 | Verify Defects on DEV | 2008-08-28 A | 2008-08-28 A |  | 0% → 100% | 16.5d → none |  | resources none → slustbader; dkokotov; mshestopalov; jgill |
| 11 | **Test** | 2008-08-30 A |  |  | 0% → 59% | 28d → 27.5d |  |  |
| 13 | Verify Defects on QA | 2008-09-01 A | 2008-09-04 A |  | 0% → 100% | 1d → none |  | resources none → misquitta; reddya; keener |
| 14 | Regression Test | 2008-09-01 A | 2008-09-05 A |  | 0% → 100% | 5d → none |  | resources none → misquitta; reddya |
| 15 | Deploy to Stage |  |  |  |  | 5d → 27.5d |  | resources none → systems |
| 16 | Stage Test |  |  |  |  | 5d → 27.5d |  | resources none → misquitta; reddya; keener |
| 17 | Installer Test | 2008-09-08 A | 2008-09-11 A |  | 0% → 100% | 1d → none |  | resources none → keener |
| 18 | Security Scan |  |  |  |  | 5d → 27.5d |  | resources none → systems |
| 21 | **Construction RC2** | 2008-08-01 A | 2008-09-23 → 2008-09-19 (-4d) | 38d? → 36d? | 0% → 76% | 21d → 22.5d |  |  |
| 23 | Project Management |  |  |  |  | 58d → 57.5d |  | resources none → duncanmk |
| 24 | **Implementation** | 2008-08-30 A | 2008-09-10 → 2008-09-05 A (-5d) | 8d → 5d | 0% → 100% | 0d → none |  |  |
| 25 | Milestone: Begin RC2 Implementation | 2008-08-30 A | 2008-08-30 A |  | 0% → 100% | 15d → none |  |  |
| 26 | Address RC2 bugs | 2008-09-01 A | 2008-09-09 → 2008-09-05 A (-4d) | 7d → 5d | 0% → 100% | 0d → none |  | was named Address RC bugs; resources none → slustbader; dkokotov |
| 27 | Verify Defects on DEV | 2008-09-10 → 2008-09-05 A (-5d) | 2008-09-10 → 2008-09-05 A (-5d) | 1d → 0.5d | 0% → 100% | 0d → none |  | resources none → slustbader; dkokotov |
| 28 | Milestone: Deploy RC2 to QA | 2008-09-10 → 2008-09-05 A (-5d) | 2008-09-10 → 2008-09-05 A (-5d) |  | 0% → 100% | 0d → none |  |  |
| 29 | **Test** | 2008-09-10 → 2008-09-05 A (-5d) | 2008-09-23 → 2008-09-19 (-4d) | 9d → 10.5d | 0% → 73% | 11.5d → 22.5d |  |  |
| 30 | Milestone: Begin RC2 Testing | 2008-09-10 → 2008-09-05 (-5d) | 2008-09-10 → 2008-09-05 (-5d) |  |  | 11.5d → 33d |  |  |
| 31 | Verify Defects on QA | 2008-09-11 → 2008-09-05 A (-6d) | 2008-09-16 → 2008-09-12 A (-4d) | 4d → 5d | 0% → 100% | 1d → none |  | resources none → misquitta; reddya; keener |
| 32 | Regression Test | 2008-09-11 → 2008-09-05 A (-6d) | 2008-09-17 → 2008-09-10 A (-7d) | 5d → 3d | 0% → 100% | 1d → none |  | resources none → misquitta; reddya |
| 33 | Deploy to Stage -> QA-VM | 2008-09-17 → 2008-09-12 A (-5d) | 2008-09-17 → 2008-09-12 A (-5d) | 1d → 0.5d | 0% → 100% | 1d → none |  | was named Deploy to Stage; resources none → systems |
| 34 | Stage Test -> QA-VM | 2008-09-18 → 2008-09-15 (-3d) | 2008-09-23 → 2008-09-19 (-4d) | 4d → 5d |  | 1d → 22.5d |  | was named Stage Test; resources none → misquitta; reddya; keener |
| 35 | Installer Testing | 2008-09-18 → 2008-09-05 A (-13d) | 2008-09-22 → 2008-09-10 A (-12d) |  | 0% → 100% | 1d → none | 31, 32 → 30 | resources none → keener |
| 36 | Deployment Test | 2008-09-18 → 2008-09-15 A (-3d) | 2008-09-19 → 2008-09-16 A (-3d) |  | 0% → 100% | 2d → none |  | resources none → dba; systems; slustbader; dkokotov; misquitta; reddya |
| 37 | Milestone: RC2 testing completed | 2008-09-23 → 2008-09-19 (-4d) | 2008-09-23 → 2008-09-19 (-4d) |  |  | 21d → 22.5d | 34, 35, Installer Testing - kc, 57, 36 → 34, 35, 36 |  |
| 38 | Milestone: RC2 Completed | 2008-09-23 → 2008-09-19 (-4d) | 2008-09-23 → 2008-09-19 (-4d) |  |  | 21d → 22.5d |  |  |
| 39 | **Construction RC3** | 2008-09-10 → 2008-09-05 A (-5d) | 2008-10-03 → 2008-10-02 (-1d) | 17d? → 19d? | 0% → 26% | 0d → 14d |  |  |
| 40 | Milestone: Begin RC3 Construction | 2008-09-10 → 2008-09-05 (-5d) | 2008-09-10 → 2008-09-05 (-5d) |  |  | 0d → 3d |  |  |
| 41 | Project Management | 2008-09-11 → 2008-09-05 (-6d) | 2008-09-11 → 2008-09-08 (-3d) |  |  | 8d → 32d |  | resources none → duncanmk |
| 42 | **Implementation** | 2008-09-10 → 2008-09-05 A (-5d) | 2008-09-24 → 2008-09-19 A (-5d) |  | 0% → 100% | 0d → none |  |  |
| 43 | Milestone: Begin RC3 Implementation | 2008-09-10 → 2008-09-05 A (-5d) | 2008-09-10 → 2008-09-05 A (-5d) |  | 0% → 100% | 0d → none |  |  |
| 44 | Address RC3 bugs | 2008-09-11 → 2008-09-05 A (-6d) | 2008-09-23 → 2008-09-18 A (-5d) |  | 0% → 100% | 0d → none |  | resources none → slustbader; dkokotov; dharley |
| 45 | Verify Defects on DEV | 2008-09-24 → 2008-09-18 A (-6d) | 2008-09-24 → 2008-09-19 A (-5d) |  | 0% → 100% | 0d → none |  | resources none → slustbader; dkokotov; dharley; bmason |
| 46 | Milestone: Deploy RC3 to QA | 2008-09-24 → 2008-09-19 A (-5d) | 2008-09-24 → 2008-09-19 A (-5d) |  | 0% → 100% | 0d → none |  |  |
| 47 | **Test** | 2008-09-24 → 2008-09-19 (-5d) | 2008-10-03 → 2008-10-02 (-1d) | 7d → 9d |  | 0d → 2d |  |  |
| 48 | Milestone: Begin RC3 Testing | 2008-09-24 → 2008-09-19 (-5d) | 2008-09-24 → 2008-09-19 (-5d) |  |  | 0d → 2d |  |  |
| 49 | Verify Defects on QA | 2008-09-25 → 2008-09-19 (-6d) | 2008-09-26 → 2008-09-25 (-1d) | 2d → 4d |  | 1d → 2d |  | resources none → misquitta; reddya; keener |
| 50 | Regression Test | 2008-09-25 → 2008-09-19 (-6d) | 2008-09-29 → 2008-09-24 (-5d) |  |  | 0d → 3d |  | resources none → misquitta; reddya |
| 51 | Deploy to Stage | 2008-09-29 → 2008-09-25 (-4d) | 2008-09-29 → 2008-09-26 (-3d) |  |  | 1d → 14d |  | resources none → systems |
| 52 | Stage Test | 2008-09-30 → 2008-09-26 (-4d) | 2008-10-03 → 2008-10-02 (-1d) |  |  | 1d → 14d |  | resources none → misquitta; reddya; keener |
| 53 | Installer Testing | 2008-09-30 → 2008-09-25 (-5d) | 2008-10-02 → 2008-09-30 (-2d) |  |  | 1d → 4.5d |  | resources none → keener |
| 54 | Installer Testing - kc | 2008-09-30 → 2008-09-25 (-5d) | 2008-10-02 → 2008-09-30 (-2d) |  |  | 1d → 4.5d |  | resources none → kc |
| 55 | LSD compliance testing | 2008-09-30 → 2008-09-25 (-5d) | 2008-10-02 → 2008-09-30 (-2d) |  |  | 1d → 16d |  | resources none → misquitta; reddya; keener |
| 56 | Deployment Test | 2008-09-25 → 2008-09-19 (-6d) | 2008-09-26 → 2008-09-23 (-3d) |  |  | 5d → 21d |  | resources none → dba; systems; slustbader; dkokotov; misquitta; reddya |
| 57 | Security Scan | 2008-09-18 → 2008-09-26 (+8d) | 2008-09-23 → 2008-10-02 (+9d) |  |  | 1d → 14d | 33 → 51 | resources none → systems |
| 58 | Milestone: RC3 testing completed | 2008-10-03 → 2008-10-02 (-1d) | 2008-10-03 → 2008-10-02 (-1d) |  |  | 1d → 14d | 52, 53, 54, 55, 56 → 52, 53, 54, 55, 57 |  |
| 59 | Milestone: RC3 Completed | 2008-10-03 → 2008-10-02 (-1d) | 2008-10-03 → 2008-10-02 (-1d) |  |  | 1d → 14d |  |  |
| 60 | **Construction RC4 - GA** | 2008-09-29 → 2008-09-25 (-4d) | 2008-10-17 → 2008-10-16 (-1d) | 13.5d → 15.5d |  | 0d → 2d |  |  |
| 61 | Milestone:Begin RC4 Construction | 2008-09-29 → 2008-09-25 (-4d) | 2008-09-29 → 2008-09-25 (-4d) |  |  | 0d → 2d |  |  |
| 62 | **Implementation** | 2008-09-29 → 2008-09-25 (-4d) | 2008-10-07 → 2008-10-02 (-5d) |  |  | 0d → 2d |  |  |
| 63 | Milestone: Begin RC4 Implementation | 2008-09-29 → 2008-09-25 (-4d) | 2008-09-29 → 2008-09-25 (-4d) |  |  | 0d → 2d |  |  |
| 64 | Address RC4 bugs | 2008-09-30 → 2008-09-25 (-5d) | 2008-10-06 → 2008-10-02 (-4d) |  |  | 0d → 2d |  | resources none → slustbader; dkokotov; dharley |
| 65 | Verify Defects on DEV | 2008-10-07 → 2008-10-02 (-5d) | 2008-10-07 → 2008-10-02 (-5d) |  |  | 0d → 2d |  | resources none → slustbader; dkokotov; dharley; bmason |
| 66 | Milestone: Deploy RC4 to QA | 2008-10-07 → 2008-10-02 (-5d) | 2008-10-07 → 2008-10-02 (-5d) |  |  | 0d → 2d |  |  |
| 67 | **Test** | 2008-10-07 → 2008-10-02 (-5d) | 2008-10-17 → 2008-10-16 (-1d) | 8d → 10d |  | 0d → 2d |  |  |
| 68 | Milestone: Begin RC4 Testing | 2008-10-07 → 2008-10-02 (-5d) | 2008-10-07 → 2008-10-02 (-5d) |  |  | 0d → 2d |  |  |
| 69 | Verify Defects on QA | 2008-10-07 → 2008-10-03 (-4d) | 2008-10-09 → 2008-10-06 (-3d) |  |  | 1d → 2.5d |  | resources none → misquitta; reddya; keener |
| 70 | Regression Test | 2008-10-07 → 2008-10-03 (-4d) | 2008-10-10 → 2008-10-07 (-3d) |  |  | 0d → 2d |  | resources none → misquitta; reddya |
| 71 | Deploy to Stage | 2008-10-09 → 2008-10-07 (-2d) | 2008-10-09 → 2008-10-07 (-2d) |  |  | 0.5d → 2.5d |  | resources none → systems |
| 72 | Stage Test | 2008-10-10 → 2008-10-07 (-3d) | 2008-10-14 → 2008-10-10 (-4d) |  |  | 1.5d → 2.5d |  | resources none → misquitta; reddya; keener |
| 73 | Installer Testing | 2008-10-10 → 2008-10-08 (-2d) | 2008-10-15 → 2008-10-10 (-5d) |  |  | 1d → 3d |  | resources none → keener |
| 74 | Installer Testing - kc | 2008-10-10 → 2008-10-08 (-2d) | 2008-10-15 → 2008-10-10 (-5d) |  |  | 1d → 3d |  | resources none → kc |
| 75 | LSD compliance testing | 2008-10-10 → 2008-10-08 (-2d) | 2008-10-15 → 2008-10-10 (-5d) |  |  | 1d → 3d |  | resources none → misquitta; reddya; keener |
| 76 | Security scan | 2008-10-10 → 2008-10-07 (-3d) | 2008-10-15 → 2008-10-13 (-2d) |  |  | 1.5d → 7d |  | resources none → systems |
| 77 | Milestone: RC4 Testing completed | 2008-10-17 → 2008-10-16 (-1d) | 2008-10-17 → 2008-10-16 (-1d) |  |  |  |  |  |
| 78 | Milestone: RC4 Completed | 2008-10-17 → 2008-10-16 (-1d) | 2008-10-17 → 2008-10-16 (-1d) |  |  |  |  |  |
| 79 | **Configuration and Change Management** | 2008-08-30 A | 2008-10-17 → 2008-10-14 (-3d) | 34.5d → 32d | 0% → 23% | 0d → 2d |  |  |

| ID | Task | Start | Finish | Duration | Complete | Total float | Predecessors | Other |
| --- | --- | --- | --- | --- | --- | --- | --- | --- |
| 80 | Milestone: Begin Configuration and Change Mgmt |  |  |  |  | 34d → 0d |  | was named Milestone: Begin Configuration and Change Management |
| 81 | **Documentation** | 2008-08-30 A | 2008-10-13 → 2008-10-09 (-4d) | 31d → 28.5d | 0% → 38% | 3.5d → 5.5d |  |  |
| 83 | **Update User Guide** | 2008-08-30 A |  |  | 0% → 53% | 15.5d → 16d |  |  |
| 85 | GUI change summary to Jill | 2008-09-01 A | 2008-09-05 A |  | 0% → 100% | 15.5d → none |  | resources none → rsrinivasa |
| 86 | Update User Guide and Help Text | 2008-09-08 A |  |  | 0% → 90% | 15.5d → 15d |  | was named Update User Guide; resources none → hadfieldj |
| 87 | Review User Guide and Help Text |  |  |  |  | 15.5d → 15d |  | was named Review User Guide; resources none → klemmj; rsrinivasa |
| 88 | Incorporate feedback to User Guide |  |  |  |  | 15.5d → 15d |  | resources none → hadfieldj |
| 90 | **Update Install Guide** | 2008-09-23 → 2008-09-10 (-13d) | 2008-10-13 → 2008-10-09 (-4d) | 14d → 21d |  | 3.5d → 5.5d |  |  |
| 91 | Milestone: Begin Install Guide Update | 2008-09-23 → 2008-09-10 (-13d) | 2008-09-23 → 2008-09-10 (-13d) |  |  | 11.5d → 26.5d | 35, Installer Testing - kc → 35 |  |
| 92 | Send install guide update to Jill: RC3 | 2008-10-03 → 2008-09-30 (-3d) | 2008-10-07 → 2008-10-03 (-4d) |  |  | 2.5d → 4.5d |  | resources none → keener; kc |
| 93 | Update Install Guide: RC3 | 2008-10-08 → 2008-10-03 (-5d) | 2008-10-10 → 2008-10-08 (-2d) |  |  | 2.5d → 4.5d |  | resources none → hadfieldj |
| 94 | Review install guide | 2008-10-13 → 2008-10-08 (-5d) | 2008-10-13 → 2008-10-09 (-4d) |  |  | 2.5d → 4.5d |  | resources none → keener; kc; dharley |
| 95 | Milestone: Complete Install Guide | 2008-10-13 → 2008-10-09 (-4d) | 2008-10-13 → 2008-10-09 (-4d) |  |  | 2.5d → 4.5d |  |  |
| 96 | Milestone: Complete Documentation | 2008-10-13 → 2008-10-09 (-4d) | 2008-10-13 → 2008-10-09 (-4d) |  |  | 2.5d → 4.5d |  |  |
| 97 | **Upload release artifacts** | 2008-10-10 → 2008-10-07 (-3d) | 2008-10-17 → 2008-10-14 (-3d) |  |  | 0d → 2d |  |  |
| 98 | Milestone: Begin preparation of release artifacts | 2008-10-10 → 2008-10-07 (-3d) | 2008-10-10 → 2008-10-07 (-3d) |  |  | 3d → 5d |  |  |
| 99 | Prepare 2.1.1 Release Note | 2008-10-10 → 2008-10-08 (-2d) | 2008-10-14 → 2008-10-09 (-5d) |  |  | 3d → 5d |  | resources none → duncanmk |
| 100 | Prepare 2.1.1 client.jar | 2008-10-15 → 2008-10-13 (-2d) | 2008-10-16 → 2008-10-13 (-3d) |  |  | 1d → 3d |  | resources none → slustbader |
| 101 | Prepare 2.1.1 javadoc | 2008-10-15 → 2008-10-13 (-2d) | 2008-10-16 → 2008-10-13 (-3d) |  |  | 1d → 3d |  | resources none → slustbader |
| 102 | Upload installer | 2008-10-15 → 2008-10-13 (-2d) | 2008-10-16 → 2008-10-13 (-3d) |  |  | 1d → 3d |  | resources none → duncanmk |
| 103 | Upload documentation | 2008-10-14 → 2008-10-09 (-5d) | 2008-10-14 → 2008-10-10 (-4d) |  |  | 2.5d → 4.5d |  | resources none → duncanmk |
| 104 | Update Download Center | 2008-10-10 → 2008-10-08 (-2d) | 2008-10-17 → 2008-10-14 (-3d) |  |  | 0d → 2d |  | resources none → duncanmk |
| 105 | Update Tools Page | 2008-10-15 → 2008-10-10 (-5d) | 2008-10-16 → 2008-10-14 (-2d) |  |  | 0.5d → 2.5d |  | resources none → duncanmk |
| 106 | Update LSD Files Tab | 2008-10-15 → 2008-10-13 (-2d) | 2008-10-16 → 2008-10-13 (-3d) |  |  | 1d → 3d |  | resources none → duncanmk |
| 107 | Update Landing Site | 2008-10-15 → 2008-10-10 (-5d) | 2008-10-16 → 2008-10-14 (-2d) |  |  | 0.5d → 2.5d |  | resources none → duncanmk |
| 108 | Milestone: Complete release artifact preparation | 2008-10-17 → 2008-10-14 (-3d) | 2008-10-17 → 2008-10-14 (-3d) |  |  | 0d → 2d |  |  |
| 109 | Milestone: Complete Configuration Management | 2008-10-17 → 2008-10-14 (-3d) | 2008-10-17 → 2008-10-14 (-3d) |  |  | 0d → 2d |  |  |
| 110 | **Environment** | 2008-10-17 → 2008-10-16 (-1d) |  |  |  |  |  |  |
| 111 | Milestone: Begin deployment to PROD activities | 2008-10-17 → 2008-10-16 (-1d) | 2008-10-17 → 2008-10-16 (-1d) |  |  |  |  |  |
| 112 | Deploy to PROD |  |  |  |  |  |  | resources none → systems |
| 113 | Verify PROD Deployment | 2008-10-20 → 2008-10-17 (-3d) |  |  |  |  |  | resources none → misquitta; bmason; slustbader; keener |

## Version 5 (saved 2008-09-17)

Note of the change: updated 2.1.1 status with the latest status.

Last finish 2008-10-22 → 2008-10-15 (-7d).

Changed:

| ID | Task | Start | Finish | Duration | Complete | Total float | Predecessors | Other |
| --- | --- | --- | --- | --- | --- | --- | --- | --- |
| 21 | **Construction RC2** |  | 2008-09-19 → 2008-09-24 (+5d) | 36d? → 38.5d? |  | 22.5d → 15d |  |  |
| 29 | **Test** |  | 2008-09-19 → 2008-09-24 (+5d) | 10.5d → 13d |  | 22.5d → 20d |  |  |
| 33 | Deploy to Stage -> QA-VM | 2008-09-12 A → 2008-09-17 A (+5d) | 2008-09-12 A → 2008-09-17 A (+5d) |  |  |  |  |  |
| 34 | Stage Test -> QA-VM | 2008-09-15 → 2008-09-17 (+2d) | 2008-09-19 → 2008-09-24 (+5d) |  |  | 22.5d → 20d |  |  |
| 37 | Milestone: RC2 testing completed | 2008-09-19 → 2008-09-24 (+5d) | 2008-09-19 → 2008-09-24 (+5d) |  |  | 22.5d → 20d |  |  |
| 38 | Milestone: RC2 Completed | 2008-09-19 → 2008-09-24 (+5d) | 2008-09-19 → 2008-09-24 (+5d) |  |  | 22.5d → 20d |  |  |
| 39 | **Construction RC3** |  | 2008-10-02 → 2008-09-30 (-2d) | 19d? → 17.5d? | 26% → 22% | 14d → 10.5d |  |  |
| 42 | **Implementation** |  | 2008-09-19 A → 2008-09-18 A (-1d) | 10d → 8.5d |  |  |  |  |
| 44 | Address RC3 bugs |  | 2008-09-18 A → 2008-09-16 A (-2d) | 9d → 7.5d |  |  |  |  |
| 45 | Verify Defects on DEV | 2008-09-18 A → 2008-09-17 A (-1d) | 2008-09-19 A → 2008-09-17 A (-2d) | 1d → 0.5d |  |  |  |  |
| 46 | Milestone: Deploy RC3 to QA | 2008-09-19 A → 2008-09-18 A (-1d) | 2008-09-19 A → 2008-09-18 A (-1d) |  |  |  |  |  |
| 47 | **Test** | 2008-09-19 → 2008-09-18 (-1d) | 2008-10-02 → 2008-09-30 (-2d) |  |  | 2d → 0d |  |  |
| 48 | Milestone: Begin RC3 Testing | 2008-09-19 → 2008-09-18 (-1d) | 2008-09-19 → 2008-09-18 (-1d) |  |  | 2d → 0d |  |  |
| 49 | Verify Defects on QA | 2008-09-19 → 2008-09-18 (-1d) | 2008-09-25 → 2008-09-23 (-2d) |  |  | 2d → 0d |  |  |
| 50 | Regression Test on QA | 2008-09-19 → 2008-09-18 (-1d) | 2008-09-24 → 2008-09-23 (-1d) | 3d → 4d |  | 3d → 0d |  | was named Regression Test |
| 51 | Deploy to Stage | 2008-09-25 → 2008-09-24 (-1d) | 2008-09-26 → 2008-09-24 (-2d) |  |  | 14d → 15.5d |  |  |
| 52 | Stage Test | 2008-09-26 → 2008-09-25 (-1d) | 2008-10-02 → 2008-09-30 (-2d) |  |  | 14d → 15.5d |  |  |
| 53 | Installer Testing | 2008-09-25 → 2008-09-24 (-1d) | 2008-09-30 → 2008-09-26 (-4d) |  |  | 4.5d → 6d |  |  |
| 54 | Installer Testing - kc | 2008-09-25 → 2008-09-24 (-1d) | 2008-09-30 → 2008-09-26 (-4d) |  |  | 4.5d → 6d |  |  |
| 55 | LSD compliance testing | 2008-09-25 → 2008-09-24 (-1d) | 2008-09-30 → 2008-09-26 (-4d) |  |  | 16d → 17.5d |  |  |
| 56 | Deployment Test | 2008-09-19 → 2008-09-18 (-1d) | 2008-09-23 → 2008-09-19 (-4d) |  |  | 21d → 22.5d |  |  |
| 57 | Security Scan | 2008-09-26 → 2008-09-25 (-1d) | 2008-10-02 → 2008-09-30 (-2d) |  |  | 14d → 15.5d |  |  |
| 58 | Milestone: RC3 testing completed | 2008-10-02 → 2008-09-30 (-2d) | 2008-10-02 → 2008-09-30 (-2d) |  |  | 14d → 15.5d |  |  |
| 59 | Milestone: RC3 Completed | 2008-10-02 → 2008-09-30 (-2d) | 2008-10-02 → 2008-09-30 (-2d) |  |  | 14d → 15.5d |  |  |
| 60 | **Construction RC4 - GA** | 2008-09-25 → 2008-09-23 (-2d) | 2008-10-16 → 2008-10-09 (-7d) | 15.5d → 12d |  | 2d → 0d |  |  |
| 61 | Milestone:Begin RC4 Construction | 2008-09-25 → 2008-09-23 (-2d) | 2008-09-25 → 2008-09-23 (-2d) |  |  | 2d → 0d |  |  |
| 62 | **Implementation** | 2008-09-25 → 2008-09-23 (-2d) | 2008-10-02 → 2008-10-01 (-1d) |  |  | 2d → 0d |  |  |
| 63 | Milestone: Begin RC4 Implementation | 2008-09-25 → 2008-09-23 (-2d) | 2008-09-25 → 2008-09-23 (-2d) |  |  | 2d → 0d |  |  |
| 64 | Address RC4 bugs | 2008-09-25 → 2008-09-24 (-1d) | 2008-10-02 → 2008-09-30 (-2d) |  |  | 2d → 0d |  |  |
| 65 | Verify Defects on DEV | 2008-10-02 → 2008-10-01 (-1d) | 2008-10-02 → 2008-10-01 (-1d) |  |  | 2d → 0d |  |  |
| 66 | Milestone: Deploy RC4 to QA | 2008-10-02 → 2008-10-01 (-1d) | 2008-10-02 → 2008-10-01 (-1d) |  |  | 2d → 0d |  |  |
| 67 | **Test** | 2008-10-02 → 2008-10-01 (-1d) | 2008-10-16 → 2008-10-09 (-7d) | 10d → 6.5d |  | 2d → 0d |  |  |
| 68 | Milestone: Begin RC4 Testing | 2008-10-02 → 2008-10-01 (-1d) | 2008-10-02 → 2008-10-01 (-1d) |  |  | 2d → 0d |  |  |
| 69 | Verify Defects on QA | 2008-10-03 → 2008-10-01 (-2d) | 2008-10-06 → 2008-10-03 (-3d) |  |  | 2.5d → 0d |  |  |
| 70 | Regression Test | 2008-10-03 → 2008-10-01 (-2d) | 2008-10-07 → 2008-10-06 (-1d) |  |  | 2d → 3.5d |  |  |
| 71 | Deploy to Stage | 2008-10-07 → 2008-10-03 (-4d) | 2008-10-07 → 2008-10-03 (-4d) |  |  | 2.5d → 0d |  |  |
| 72 | Stage Test | 2008-10-07 → 2008-10-06 (-1d) | 2008-10-10 → 2008-10-08 (-2d) |  |  | 2.5d → 4d |  |  |
| 73 | Installer Testing | 2008-10-08 → 2008-10-06 (-2d) | 2008-10-10 → 2008-10-09 (-1d) |  |  | 3d → 4.5d |  |  |
| 74 | Installer Testing - kc | 2008-10-08 → 2008-10-06 (-2d) | 2008-10-10 → 2008-10-09 (-1d) |  |  | 3d → 4.5d |  |  |
| 75 | LSD compliance testing | 2008-10-08 → 2008-10-06 (-2d) | 2008-10-10 → 2008-10-09 (-1d) |  |  | 3d → 4.5d |  |  |
| 76 | Security scan | 2008-10-07 → 2008-10-06 (-1d) | 2008-10-13 → 2008-10-09 (-4d) |  |  | 7d → 0d |  |  |
| 77 | Milestone: RC4 Testing completed | 2008-10-16 → 2008-10-09 (-7d) | 2008-10-16 → 2008-10-09 (-7d) |  |  |  | 72, 73, 74, 79 → 72, 73, 74, 76 | constraint start no earlier than 2008-10-16 → start no earlier than 2008-10-09 |
| 78 | Milestone: RC4 Completed | 2008-10-16 → 2008-10-09 (-7d) | 2008-10-16 → 2008-10-09 (-7d) |  |  |  |  |  |
| 79 | **Configuration and Change Management** |  | 2008-10-14 → 2008-10-10 (-4d) | 32d → 30d | 23% → 24% | 2d → 2.5d |  |  |
| 81 | **Documentation** |  | 2008-10-09 → 2008-10-07 (-2d) | 28.5d → 27d |  |  |  |  |
| 90 | **Update Install Guide** |  | 2008-10-09 → 2008-10-07 (-2d) | 21d → 19.5d |  |  |  |  |
| 92 | Send install guide update to Jill: RC3 | 2008-09-30 → 2008-09-29 (-1d) | 2008-10-03 → 2008-10-01 (-2d) |  |  | 4.5d → 6d |  |  |
| 93 | Update Install Guide: RC3 | 2008-10-03 → 2008-10-02 (-1d) | 2008-10-08 → 2008-10-06 (-2d) |  |  | 4.5d → 6d |  |  |
| 94 | Review install guide | 2008-10-08 → 2008-10-07 (-1d) | 2008-10-09 → 2008-10-07 (-2d) |  |  | 4.5d → 6d |  |  |
| 95 | Milestone: Complete Install Guide | 2008-10-09 → 2008-10-07 (-2d) | 2008-10-09 → 2008-10-07 (-2d) |  |  |  |  |  |
| 96 | Milestone: Complete Documentation | 2008-10-09 → 2008-10-07 (-2d) | 2008-10-09 → 2008-10-07 (-2d) |  |  |  |  |  |
| 97 | **Upload release artifacts** | 2008-10-07 → 2008-10-06 (-1d) | 2008-10-14 → 2008-10-10 (-4d) | 5d → 4.5d |  | 2d → 2.5d |  |  |
| 98 | Milestone: Begin preparation of release artifacts | 2008-10-07 → 2008-10-06 (-1d) | 2008-10-07 → 2008-10-06 (-1d) |  |  | 5d → 6.5d |  |  |
| 99 | Prepare 2.1.1 Release Note | 2008-10-08 → 2008-10-06 (-2d) | 2008-10-09 → 2008-10-08 (-1d) |  |  | 5d → 6.5d |  |  |
| 100 | Prepare 2.1.1 client.jar | 2008-10-13 → 2008-10-09 (-4d) | 2008-10-13 → 2008-10-10 (-3d) |  |  | 3d → 4.5d |  |  |
| 101 | Prepare 2.1.1 javadoc | 2008-10-13 → 2008-10-09 (-4d) | 2008-10-13 → 2008-10-10 (-3d) |  |  | 3d → 4.5d |  |  |
| 102 | Upload installer | 2008-10-13 → 2008-10-09 (-4d) | 2008-10-13 → 2008-10-10 (-3d) |  |  | 3d → 4.5d |  |  |
| 103 | Upload documentation | 2008-10-09 → 2008-10-08 (-1d) | 2008-10-10 → 2008-10-08 (-2d) |  |  | 4.5d → 6d |  |  |
| 104 | Update Download Center | 2008-10-08 → 2008-10-06 (-2d) | 2008-10-14 → 2008-10-09 (-5d) | 5d → 3d |  | 2d → 4d |  |  |
| 105 | Update Tools Page | 2008-10-10 → 2008-10-09 (-1d) | 2008-10-14 → 2008-10-10 (-4d) |  |  | 2.5d → 4d |  |  |
| 106 | Update LSD Files Tab | 2008-10-13 → 2008-10-09 (-4d) | 2008-10-13 → 2008-10-10 (-3d) |  |  | 3d → 4.5d |  |  |
| 107 | Update Landing Site | 2008-10-10 → 2008-10-09 (-1d) | 2008-10-14 → 2008-10-10 (-4d) |  |  | 2.5d → 4d |  |  |
| 108 | Milestone: Complete release artifact preparation | 2008-10-14 → 2008-10-10 (-4d) | 2008-10-14 → 2008-10-10 (-4d) |  |  | 2d → 2.5d |  |  |
| 109 | Milestone: Complete Configuration Management | 2008-10-14 → 2008-10-10 (-4d) | 2008-10-14 → 2008-10-10 (-4d) |  |  | 2d → 2.5d |  |  |
| 110 | **Environment** | 2008-10-16 → 2008-10-09 (-7d) | 2008-10-22 → 2008-10-15 (-7d) |  |  |  |  |  |
| 111 | Milestone: Begin deployment to PROD activities | 2008-10-16 → 2008-10-09 (-7d) | 2008-10-16 → 2008-10-09 (-7d) |  |  |  |  |  |
| 112 | Deploy to PROD | 2008-10-17 → 2008-10-10 (-7d) | 2008-10-17 → 2008-10-10 (-7d) |  |  |  |  |  |
| 113 | Verify PROD Deployment | 2008-10-17 → 2008-10-10 (-7d) | 2008-10-22 → 2008-10-15 (-7d) |  |  |  |  |  |
| 114 | Milestone: Complete PROD deployment activities | 2008-10-22 → 2008-10-15 (-7d) | 2008-10-22 → 2008-10-15 (-7d) |  |  |  |  |  |
| 115 | Milestone: Complete 2.1.1 | 2008-10-22 → 2008-10-15 (-7d) | 2008-10-22 → 2008-10-15 (-7d) |  |  |  |  |  |
