# caarray_schedule_2_2_0

How a schedule from MS Project changed from version to version. A marks actual dates.

## Version 1 (saved 2008-10-29)

Note of the change: 220 schedule

| ID | WBS | Task | Duration | Start | Finish | Predecessors | Complete | Total float | Constraint |
| --- | --- | --- | --- | --- | --- | --- | --- | --- | --- |
| 1 | 1 | **Milestone: Beging 2.2.0 Release** | 99d? | 2008-08-14 A | 2009-01-13 |  |  | 0d |  |
| 2 | 1.1 | **Inception** | 22.33d? | 2008-08-14 A | 2008-09-15 |  | 3% | 76.67d |  |
| 3 |  | Milestone: Begin Inception/Elaboration | 0d | 2008-08-14 | 2008-08-14 |  |  | 99d |  |
| 4 | 1.1.2 | **Requirements** | 20d? | 2008-08-14 | 2008-09-10 |  |  | 79d |  |
| 5 |  | Document Use cases | 20d? | 2008-08-14 | 2008-09-10 |  |  | 78d | start no earlier than 2008-08-14 |
| 6 | 1.1.3 | **Project Management** | 22.33d? | 2008-08-14 A | 2008-09-15 |  | 41% | 76.67d |  |
| 7 |  | Milestone: Begin project management | 0d | 2008-08-14 | 2008-08-14 |  |  | 22.33d |  |
| 8 |  | Estimate LOEs | 1.5d? | 2008-08-14 A | 2008-09-12 |  | 50% | 0d | finish no earlier than 2008-09-12 |
| 9 |  | Define release scope | 0.33d? | 2008-09-15 | 2008-09-15 | 8 |  | 0d |  |
| 10 |  | Milestone: Complete project management | 0d | 2008-09-15 | 2008-09-15 | 9 |  | 0d |  |
| 11 |  | Milestone: Complete Inception/Elaboration | 0d | 2008-09-15 | 2008-09-15 | 10 |  | 0d |  |
| 12 | 1.2 | **Construction Alpha1** | 51.67d? | 2008-09-15 | 2008-11-26 | 11 |  | 0d |  |
| 13 |  | Milestone: Begin Alpha1 Construction | 0d | 2008-09-15 | 2008-09-15 |  |  | 75.67d |  |
| 14 | 1.2.2 | **Implementation** | 32.67d? | 2008-09-15 | 2008-10-29 |  |  | 0d |  |
| 15 |  | Develop alpha1 features and defects | 31.67d? | 2008-09-15 | 2008-10-28 | 11 |  | 0d | finish no earlier than 2008-10-28 |
| 16 |  | Verify Defects on DEV | 1d | 2008-10-29 | 2008-10-29 | 15 |  | 0d |  |
| 17 |  | Milestone: Deploy Alpha1 to QA | 0d | 2008-10-29 | 2008-10-29 | 16 |  | 0d |  |
| 18 | 1.2.3 | **Test** | 19d | 2008-10-30 | 2008-11-26 | 17 |  | 25d |  |
| 19 |  | Verify new features and defects on QA | 10d | 2008-10-30 | 2008-11-13 | 17 |  | 25d |  |
| 20 |  | Regression Test on QA | 10d | 2008-10-30 | 2008-11-13 | 17 |  | 26d |  |
| 21 |  | Deploy to Stage | 1d | 2008-11-14 | 2008-11-14 | 19 |  | 25d |  |
| 22 |  | Verify new features and defects on Stage | 7d | 2008-11-17 | 2008-11-25 | 21 |  | 26d |  |
| 23 |  | Regression Test on Stage | 5d | 2008-11-17 | 2008-11-21 | 20, 21 |  | 25d |  |
| 24 |  | Installer Testing | 3d | 2008-11-24 | 2008-11-26 | 23 |  | 25d |  |
| 25 |  | Milestone: Alpha1 testing completed | 0d | 2008-11-26 | 2008-11-26 | 22, 24 |  | 25d |  |
| 26 |  | Milestone: Complete Alpha1 Construction | 0d | 2008-11-26 | 2008-11-26 | 25 |  | 25d |  |
| 27 | 1.3 | **Construction RC 1** | 24d | 2008-10-29 | 2008-12-04 | 17 |  | 0d |  |
| 28 |  | Milestone: Begin RC1 Construction | 0d | 2008-10-29 | 2008-10-29 | 17 |  | 44d |  |
| 29 | 1.3.2 | **Implementation** | 11d | 2008-10-30 | 2008-11-14 |  |  | 0d |  |
| 30 |  | Develop RC1 features and defects | 10d | 2008-10-30 | 2008-11-13 | 17 |  | 0d | finish no earlier than 2008-10-28 |
| 31 |  | Verify Defects on DEV | 1d | 2008-11-14 | 2008-11-14 | 30 |  | 0d |  |
| 32 |  | Milestone: Deploy RC1 to QA | 0d | 2008-11-14 | 2008-11-14 | 31 |  | 0d |  |
| 33 | 1.3.3 | **Test** | 13d | 2008-11-17 | 2008-12-04 | 32 |  | 20d |  |
| 34 |  | Verify new features and defects on QA | 7d | 2008-11-17 | 2008-11-25 | 32 |  | 20d |  |
| 35 |  | Regression Test on QA | 7d | 2008-11-17 | 2008-11-25 | 32 |  | 21d |  |
| 36 |  | Deploy to Stage | 1d | 2008-11-26 | 2008-11-26 | 34 |  | 20d |  |
| 37 |  | Verify new features and defects on Stage | 5d | 2008-11-26 | 2008-12-03 | 34 |  | 21d |  |
| 38 |  | Regression Test on Stage | 5d | 2008-11-26 | 2008-12-03 | 34, 35 |  | 21d |  |
| 39 |  | Installer Testing | 5d | 2008-11-17 | 2008-11-21 | 32 |  | 28d |  |
| 40 |  | App Scan RC1 | 5d | 2008-11-28 | 2008-12-04 | 36 |  | 20d |  |
| 41 |  | Deployment Test | 3d | 2008-11-17 | 2008-11-19 | 32 |  | 30d |  |
| 42 |  | Milestone: RC1 testing completed | 0d | 2008-12-03 | 2008-12-03 | 37, 41 |  | 21d |  |
| 43 |  | Milestone: Complete RC1 Construction | 0d | 2008-12-03 | 2008-12-03 | 42 |  | 21d |  |
| 44 | 1.4 | **Construction RC2** | 21d | 2008-11-14 | 2008-12-16 | 32 |  | 0d |  |
| 45 |  | Milestone: Begin RC2 Construction | 0d | 2008-11-14 | 2008-11-14 |  |  | 33d |  |
| 46 | 1.4.2 | **Implementation** | 8d | 2008-11-17 | 2008-11-26 |  |  | 0d |  |
| 47 |  | Develop RC1 defects | 7d | 2008-11-17 | 2008-11-25 | 32 |  | 0d |  |
| 48 |  | Verify Defects on DEV | 1d | 2008-11-26 | 2008-11-26 | 47 |  | 0d |  |
| 49 |  | Milestone: Deploy RC2 to QA | 0d | 2008-11-26 | 2008-11-26 | 48 |  | 0d |  |
| 50 | 1.4.3 | **Test** | 13d | 2008-11-28 | 2008-12-16 | 49 |  | 0d |  |
| 51 |  | Verify defects on QA | 5d | 2008-11-28 | 2008-12-04 |  |  | 0d |  |
| 52 |  | Regression Test on QA | 5d | 2008-11-28 | 2008-12-04 |  |  | 0d |  |
| 53 |  | Deployment Test | 3d | 2008-11-28 | 2008-12-02 | 49 |  | 22d |  |
| 54 |  | Deploy to Stage | 1d | 2008-12-05 | 2008-12-05 | 51 |  | 12d |  |
| 55 |  | App Scan | 3d | 2008-12-08 | 2008-12-10 | 54 |  | 12d |  |
| 56 |  | Verify defects on Stage | 4d | 2008-12-11 | 2008-12-16 | 55 |  | 12d |  |
| 57 |  | Regression Test on Stage | 4d | 2008-12-11 | 2008-12-16 | 55 |  | 12d |  |
| 58 |  | Installer Testing | 3d | 2008-11-28 | 2008-12-02 | 49 |  | 9d |  |
| 59 |  | Milestone: RC2 testing completed | 0d | 2008-12-16 | 2008-12-16 | 55, 56, 57, 58 |  | 12d |  |
| 60 |  | Milestone: Complete RC2 Construction | 0d | 2008-12-16 | 2008-12-16 | 59 |  | 12d |  |
| 61 | 1.5 | **Construction RC3** | 16d | 2008-12-04 | 2009-01-07 | 51, 52 |  | 0d |  |
| 62 |  | Milestone: Begin RC3 Construction | 0d | 2008-12-04 | 2008-12-04 |  |  | 20d |  |
| 63 | 1.5.2 | **Implementation** | 6d | 2008-12-05 | 2008-12-12 |  |  | 0d |  |
| 64 |  | Develop RC2 defects | 5d | 2008-12-05 | 2008-12-11 |  |  | 0d |  |
| 65 |  | Verify Defects on DEV | 1d | 2008-12-12 | 2008-12-12 | 64 |  | 0d |  |
| 66 |  | Milestone: Deploy RC3 to QA | 0d | 2008-12-12 | 2008-12-12 | 65 |  | 0d |  |
| 67 | 1.5.3 | **Test** | 10d | 2008-12-15 | 2009-01-07 | 66 |  | 0d |  |
| 68 |  | Verify defects on QA | 3d | 2008-12-15 | 2008-12-17 |  |  | 0d |  |
| 69 |  | Regression Test on QA | 5d | 2008-12-15 | 2008-12-19 |  |  | 9d |  |
| 70 |  | Deploy to Stage | 1d | 2008-12-18 | 2008-12-18 | 68 |  | 0d |  |

| ID | WBS | Task | Duration | Start | Finish | Predecessors | Total float |
| --- | --- | --- | --- | --- | --- | --- | --- |
| 71 |  | App Scan | 3d | 2008-12-19 | 2008-12-23 | 70 | 0d |
| 72 |  | Verify defects on Stage | 3d | 2009-01-05 | 2009-01-07 | 71 | 0d |
| 73 |  | Regression Test on Stage | 3d | 2009-01-05 | 2009-01-07 | 71 | 0d |
| 74 |  | Installer Testing | 3d | 2008-12-15 | 2008-12-17 | 66 | 2d |
| 75 |  | LSD Complinace Testing | 5d | 2008-12-18 | 2009-01-05 | 74 | 2d |
| 76 |  | Milestone: RC3 testing completed | 0d | 2009-01-07 | 2009-01-07 | 71, 72, 73, 74, 75 | 0d |
| 77 |  | Milestone: Complete RC3 Construction | 0d | 2009-01-07 | 2009-01-07 | 76 | 0d |
| 78 | 1.6 | **Transition** | 99d? | 2008-08-14 | 2009-01-13 |  | 0d |
| 79 | 1.6.1 | **Configuration and Change Management** | 99d? | 2008-08-14 | 2009-01-13 |  | 0d |
| 80 |  | Milestone: Begin Configuration and Change Mgmt | 0d | 2008-08-14 | 2008-08-14 |  | 98d |
| 81 | 1.6.1.2 | **Documentation** | 23d? | 2008-11-14 | 2008-12-18 |  | 10d |
| 82 |  | Milestone: Begin Documentation | 0d | 2008-11-14 | 2008-11-14 | 32 | 33d |
| 83 | 1.6.1.2.2 | **Update User Guide** | 15d | 2008-11-14 | 2008-12-08 |  | 14d |
| 84 |  | Milestone: Begin User Guide Update | 0d | 2008-11-14 | 2008-11-14 | 32 | 33d |
| 85 |  | GUI change summary to Jill | 2d | 2008-11-17 | 2008-11-18 | 32 | 14d |
| 86 |  | Update User Guide | 5d | 2008-11-19 | 2008-11-25 | 85 | 14d |
| 87 |  | Review User Guide | 4d | 2008-11-26 | 2008-12-02 | 86 | 14d |
| 88 |  | Incorporate feedback to User Guide | 4d | 2008-12-03 | 2008-12-08 | 87 | 14d |
| 89 |  | Milestone: User Guide Updated for 2.1.1 | 0d | 2008-12-08 | 2008-12-08 | 88 | 14d |
| 90 | 1.6.1.2.3 | **Update Install Guide** | 15d? | 2008-11-26 | 2008-12-18 |  | 10d |
| 91 |  | Milestone: Begin Install Guide Update | 0d | 2008-11-26 | 2008-11-26 | 49 | 25d |
| 92 |  | Send install guide update to Jill: RC2 | 1d | 2008-12-03 | 2008-12-03 | 58 | 9d |
| 93 |  | Update Install Guide: RC3 | 3d | 2008-12-04 | 2008-12-08 | 92 | 9d |
| 94 |  | Send install guide update to Jill: RC3 | 1d? | 2008-12-18 | 2008-12-18 | 74 | 10d |
| 95 |  | Update Install Guide: RC3 | 2d | 2008-12-09 | 2008-12-10 | 93 | 9d |
| 96 |  | Review install guide | 3d | 2008-12-11 | 2008-12-15 | 95 | 9d |
| 97 |  | Milestone: Complete Install Guide | 0d | 2008-12-15 | 2008-12-15 | 96 | 9d |
| 98 |  | Milestone: Complete Documentation | 0d | 2008-12-15 | 2008-12-15 | 89, 97 | 9d |
| 99 | 1.6.1.3 | **Upload release artifacts** | 4d | 2009-01-07 | 2009-01-13 | 77, 98 | 0d |
| 100 |  | Milestone: Begin preparation of release artifacts | 0d | 2009-01-07 | 2009-01-07 |  | 4d |
| 101 |  | Prepare 2.2.0 Release Note | 1d | 2009-01-08 | 2009-01-08 |  | 3d |
| 102 |  | Prepare 2.2.0 client.jar | 1d | 2009-01-08 | 2009-01-08 |  | 3d |
| 103 |  | Prepare 2.2.0 javadoc | 1d | 2009-01-08 | 2009-01-08 |  | 3d |
| 104 |  | Upload installer | 1d | 2009-01-08 | 2009-01-08 |  | 3d |
| 105 |  | Upload documentation | 1d | 2009-01-08 | 2009-01-08 |  | 3d |
| 106 |  | Update Download Center | 4d | 2009-01-08 | 2009-01-13 |  | 0d |
| 107 |  | Update Tools Page | 2d | 2009-01-08 | 2009-01-09 |  | 2d |
| 108 |  | Update LSD Files Tab | 1d | 2009-01-08 | 2009-01-08 |  | 3d |
| 109 |  | Update Landing Site | 1d | 2009-01-08 | 2009-01-08 |  | 3d |
| 110 |  | Milestone: Complete release artifact preparation | 0d | 2009-01-13 | 2009-01-13 | 101, 102, 103, 104, 105, 106, 107, 108, 109 | 0d |
| 111 |  | Milestone: Complete Configuration Management | 0d | 2009-01-13 | 2009-01-13 | 110 | 0d |
| 112 | 1.6.2 | **Environment** | 4d | 2009-01-07 | 2009-01-13 |  | 0d |
| 113 |  | Milestone: Begin deployment to PROD activities | 0d | 2009-01-07 | 2009-01-07 | 77 | 4d |
| 114 |  | Deploy to PROD | 2d | 2009-01-08 | 2009-01-09 | 77 | 0d |
| 115 |  | Verify PROD Deployment | 2d | 2009-01-12 | 2009-01-13 | 114 | 0d |
| 116 |  | Milestone: Complete PROD deployment activities | 0d | 2009-01-13 | 2009-01-13 | 115, 111 | 0d |

## Version 2 (saved 2008-11-06)

Note of the change: Updated 2.2.0 schedule.

Last finish 2009-01-13 → 2009-01-20 (+7d). Complete tasks 0 → 9.

Removed: 7 Milestone: Begin project management; 10 Milestone: Complete project management

Changed:

| ID | Task | Start | Finish | Duration | Complete | Total float | Predecessors | Other |
| --- | --- | --- | --- | --- | --- | --- | --- | --- |
| 1 | **caArray 2.2.0** |  | 2009-01-13 → 2009-01-20 (+7d) | 99d? → 103d? | 0% → 24% |  |  | was named Milestone: Beging 2.2.0 Release |
| 2 | **Inception and Elaboration** |  | 2008-09-15 → 2008-09-10 A (-5d) | 22.33d? → 20d | 3% → 100% | 76.67d → none |  | was named Inception |
| 3 | Milestone: Begin Inception/Elaboration | 2008-08-14 A | 2008-08-14 A |  | 0% → 100% | 99d → none |  |  |
| 4 | **Requirements** | 2008-08-14 A | 2008-09-10 A | 20d? → 20d | 0% → 100% | 79d → none |  |  |
| 5 | Design and Document Use cases | 2008-08-14 A | 2008-09-10 A | 20d? → 20d | 0% → 100% | 78d → none | none → 3 | was named Document Use cases; constraint start no earlier than 2008-08-14 → none; resources rsrinivasa [15%] → rsrinivasa [50%]; klemmj [50%]; duncanmk [50%]; dkokotov [50%] |
| 6 | **Project Management** | 2008-08-14 A → 2008-09-01 A (+18d) | 2008-09-15 → 2008-09-04 A (-11d) | 22.33d? → 3d | 41% → 100% | 76.67d → none |  |  |
| 7 | Estimate LOEs | 2008-08-14 A → 2008-09-01 A (+18d) | 2008-09-12 → 2008-09-03 A (-9d) | 1.5d? → 2d | 50% → 100% | 0d → none |  | constraint finish no earlier than 2008-09-12 → none |
| 8 | Define release scope | 2008-09-15 → 2008-09-04 A (-11d) | 2008-09-15 → 2008-09-04 A (-11d) | 0.33d? → 1d | 0% → 100% | 0d → none |  | resources klemmj [37.5%]; duncanmk [37.5%]; rsrinivasa [37.5%]; dkokotov [37.5%] → klemmj [30%]; duncanmk [30%]; rsrinivasa [30%]; dkokotov [30%] |
| 9 | Milestone: Complete Inception/Elaboration | 2008-09-15 → 2008-09-10 A (-5d) | 2008-09-15 → 2008-09-10 A (-5d) |  | 0% → 100% | 0d → none | Milestone: Complete project management → 5, 8 |  |
| 10 | **Construction Alpha1** | 2008-09-15 → 2008-09-10 A (-5d) | 2008-11-26 → 2008-12-01 (+5d) | 51.67d? → 55d | 0% → 47% | 0d → 27d |  |  |
| 11 | Milestone: Begin Alpha1 Construction | 2008-09-15 → 2008-09-10 A (-5d) | 2008-09-15 → 2008-09-10 A (-5d) |  | 0% → 100% | 75.67d → none | none → 8 |  |
| 12 | **Implementation** | 2008-09-15 A | 2008-10-29 → 2008-10-30 A (+1d) | 32.67d? → 33.67d | 0% → 100% | 0d → none |  |  |
| 13 | Develop alpha1 features and defects | 2008-09-15 A | 2008-10-28 → 2008-10-27 A (-1d) | 31.67d? → 30d | 0% → 100% | 0d → none |  | resources none → dkokotov [50%]; slustbader; mshestopalov; dharley; rsrinivasa [30%] |
| 14 | Verify Defects on DEV | 2008-10-29 → 2008-10-27 A (-2d) | 2008-10-29 → 2008-10-28 A (-1d) |  | 0% → 100% | 0d → none |  |  |
| 15 | Milestone: Deploy Alpha1 to QA | 2008-10-29 A | 2008-10-29 → 2008-10-30 A (+1d) | 0d → 1d | 0% → 100% | 0d → none |  |  |
| 16 | **Test** | 2008-10-30 → 2008-10-31 (+1d) | 2008-11-26 → 2008-12-01 (+5d) |  |  | 25d → 0d |  |  |
| 17 | Verify new features and defects on QA | 2008-10-30 → 2008-10-31 (+1d) | 2008-11-13 → 2008-11-14 (+1d) |  |  | 25d → 0d |  | resources none → lmisquitta [80%] |
| 18 | Regression Test on QA | 2008-10-30 → 2008-10-31 (+1d) | 2008-11-13 → 2008-11-14 (+1d) |  |  | 26d → 0d |  | resources none → areddy |
| 19 | Deploy to Stage | 2008-11-14 → 2008-11-17 (+3d) | 2008-11-14 → 2008-11-17 (+3d) |  |  | 25d → 0d | 17 → 17, 18 |  |
| 20 | Verify new features and defects on Stage | 2008-11-17 → 2008-11-18 (+1d) | 2008-11-25 → 2008-11-26 (+1d) |  |  | 26d → 19d |  | resources none → lmisquitta [50%] |
| 21 | Regression Test on Stage | 2008-11-17 → 2008-11-18 (+1d) | 2008-11-21 → 2008-11-24 (+3d) |  |  | 25d → 21d | 18, 19 → 19 | resources none → areddy [50%] |
| 22 | Installer Testing | 2008-11-24 → 2008-11-25 (+1d) | 2008-11-26 → 2008-12-01 (+5d) |  |  | 25d → 27d |  | resources none → areddy |
| 23 | Milestone: Alpha1 testing completed | 2008-11-26 → 2008-12-01 (+5d) | 2008-11-26 → 2008-12-01 (+5d) |  |  | 25d → 27d |  |  |
| 24 | Milestone: Complete Alpha1 Construction | 2008-11-26 → 2008-12-01 (+5d) | 2008-11-26 → 2008-12-01 (+5d) |  |  | 25d → 27d |  |  |
| 25 | **Construction RC 1** | 2008-10-29 → 2008-10-30 A (+1d) | 2008-12-04 → 2008-12-12 (+8d) | 24d → 28d | 0% → 10% | 0d → 18d |  |  |
| 26 | Milestone: Begin RC1 Construction | 2008-10-29 → 2008-10-30 (+1d) | 2008-10-29 → 2008-10-30 (+1d) |  |  | 44d → 46d |  |  |
| 27 | **Implementation** | 2008-10-30 → 2008-10-31 A (+1d) | 2008-11-14 → 2008-11-18 (+4d) | 11d → 12d | 0% → 42% |  |  |  |
| 28 | Develop RC1 features and defects | 2008-10-30 → 2008-10-31 A (+1d) | 2008-11-13 → 2008-11-14 (+1d) |  | 0% → 50% |  |  | resources none → dkokotov [50%]; slustbader; mshestopalov; dharley |
| 29 | Verify Defects on DEV | 2008-11-14 → 2008-11-17 (+3d) | 2008-11-14 → 2008-11-17 (+3d) |  |  |  |  |  |
| 30 | Milestone: Deploy RC1 to QA | 2008-11-14 → 2008-11-18 (+4d) | 2008-11-14 → 2008-11-18 (+4d) | 0d → 1d |  |  | 29 → 29, 19 |  |
| 31 | **Test** | 2008-11-17 → 2008-11-19 (+2d) | 2008-12-04 → 2008-12-12 (+8d) | 13d → 16d |  | 20d → 18d |  |  |
| 32 | Verify new features and defects on QA | 2008-11-17 → 2008-11-19 (+2d) | 2008-11-25 → 2008-12-01 (+6d) |  |  | 20d → 18d |  | resources none → lmisquitta [50%] |
| 33 | Regression Test on QA | 2008-11-17 → 2008-11-19 (+2d) | 2008-11-25 → 2008-12-01 (+6d) |  |  | 21d → 18d |  | resources none → areddy [50%] |
| 34 | Deploy to Stage | 2008-11-26 → 2008-12-02 (+6d) | 2008-11-26 → 2008-12-02 (+6d) |  |  | 20d → 18d | 32 → 32, 20, 21, 33 | constraint none → start no earlier than 2008-12-01 |
| 35 | Verify new features and defects on Stage | 2008-11-26 → 2008-12-03 (+7d) | 2008-12-03 → 2008-12-09 (+6d) |  |  |  | 32 → 34 |  |
| 36 | Regression Test on Stage | 2008-11-26 → 2008-12-03 (+7d) | 2008-12-03 → 2008-12-09 (+6d) |  |  | 21d → 18d | 32, 33 → 34 |  |
| 37 | Installer Testing | 2008-11-17 → 2008-12-10 (+23d) | 2008-11-21 → 2008-12-12 (+21d) | 5d → 3d |  | 28d → 18d | 30 → 36 | resources none → areddy |
| 38 | App Scan RC1 | 2008-11-28 → 2008-12-03 (+5d) | 2008-12-04 → 2008-12-09 (+5d) |  |  | 20d → 21d |  |  |
| 39 | Deployment Test???? | 2008-11-17 → 2008-11-19 (+2d) | 2008-11-19 → 2008-11-21 (+2d) |  |  | 30d → 31d |  | was named Deployment Test |
| 40 | Milestone: RC1 testing completed | 2008-12-03 → 2008-12-12 (+9d) | 2008-12-03 → 2008-12-12 (+9d) |  |  | 21d → 18d | 35, 39 → 37, 38 |  |
| 41 | Milestone: Complete RC1 Construction | 2008-12-03 → 2008-12-12 (+9d) | 2008-12-03 → 2008-12-12 (+9d) |  |  | 21d → 18d |  |  |
| 42 | **Construction RC2** | 2008-11-14 → 2008-11-18 (+4d) | 2008-12-16 → 2008-12-22 (+6d) | 21d → 22d |  |  |  |  |
| 43 | Milestone: Begin RC2 Construction | 2008-11-14 → 2008-11-18 (+4d) | 2008-11-14 → 2008-11-18 (+4d) |  |  | 33d → 35d | none → 30 |  |
| 44 | **Implementation** | 2008-11-17 → 2008-11-19 (+2d) | 2008-11-26 → 2008-12-03 (+7d) | 8d → 9d |  |  |  |  |
| 45 | Address defects | 2008-11-17 → 2008-11-19 (+2d) | 2008-11-25 → 2008-12-01 (+6d) |  |  |  |  | was named Develop RC1 defects |
| 46 | Verify Defects on DEV | 2008-11-26 → 2008-12-02 (+6d) | 2008-11-26 → 2008-12-02 (+6d) |  |  |  |  |  |
| 47 | Milestone: Deploy RC2 to QA | 2008-11-26 → 2008-12-03 (+7d) | 2008-11-26 → 2008-12-03 (+7d) | 0d → 1d |  |  |  |  |
| 48 | **Test** | 2008-11-28 → 2008-12-04 (+6d) | 2008-12-16 → 2008-12-22 (+6d) |  |  |  |  |  |
| 49 | Verify defects on QA | 2008-11-28 → 2008-12-04 (+6d) | 2008-12-04 → 2008-12-10 (+6d) |  |  |  | none → 47 | resources none → lmisquitta [80%] |
| 50 | Regression Test on QA | 2008-11-28 → 2008-12-04 (+6d) | 2008-12-04 → 2008-12-10 (+6d) |  |  |  | none → 47 | resources none → areddy |
| 51 | Deployment Test???? | 2008-11-28 → 2008-12-04 (+6d) | 2008-12-02 → 2008-12-08 (+6d) |  |  | 22d → 23d |  | was named Deployment Test |
| 52 | Deploy to Stage | 2008-12-05 → 2008-12-11 (+6d) | 2008-12-05 → 2008-12-11 (+6d) |  |  | 12d → 0d | 49 → 49, 50 |  |
| 53 | App Scan | 2008-12-08 → 2008-12-12 (+4d) | 2008-12-10 → 2008-12-16 (+6d) |  |  | 12d → 17d |  |  |
| 54 | Verify defects on Stage | 2008-12-11 → 2008-12-12 (+1d) | 2008-12-16 → 2008-12-17 (+1d) |  |  | 12d → 16d | 53 → 52 | resources none → lmisquitta [80%] |
| 55 | Regression Test on Stage | 2008-12-11 → 2008-12-12 (+1d) | 2008-12-16 → 2008-12-17 (+1d) |  |  | 12d → 0d | 53 → 52 | resources none → areddy |
| 56 | Installer Testing | 2008-11-28 → 2008-12-18 (+20d) | 2008-12-02 → 2008-12-22 (+20d) |  |  | 9d → 0d | 47 → 47, 55 | resources none → areddy |
| 57 | Milestone: RC2 testing completed | 2008-12-16 → 2008-12-22 (+6d) | 2008-12-16 → 2008-12-22 (+6d) |  |  | 12d → 13d |  |  |
| 58 | Milestone: Complete RC2 Construction | 2008-12-16 → 2008-12-22 (+6d) | 2008-12-16 → 2008-12-22 (+6d) |  |  | 12d → 13d |  |  |
| 59 | **Construction RC3** | 2008-12-04 → 2008-12-10 (+6d) | 2009-01-07 → 2009-01-13 (+6d) |  |  | 0d → 1d |  |  |
| 60 | Milestone: Begin RC3 Construction | 2008-12-04 → 2008-12-10 (+6d) | 2008-12-04 → 2008-12-10 (+6d) |  |  | 20d → 21d | none → 47 |  |
| 61 | **Implementation** | 2008-12-05 → 2008-12-11 (+6d) | 2008-12-12 → 2008-12-18 (+6d) |  |  | 0d → 1d |  |  |
| 62 | Develop RC2 defects | 2008-12-05 → 2008-12-11 (+6d) | 2008-12-11 → 2008-12-17 (+6d) |  |  | 0d → 1d |  |  |
| 63 | Verify Defects on DEV | 2008-12-12 → 2008-12-18 (+6d) | 2008-12-12 → 2008-12-18 (+6d) |  |  | 0d → 1d |  |  |
| 64 | Milestone: Deploy RC3 to QA | 2008-12-12 → 2008-12-18 (+6d) | 2008-12-12 → 2008-12-18 (+6d) |  |  | 0d → 1d |  |  |
| 65 | **Test** | 2008-12-15 → 2008-12-19 (+4d) | 2009-01-07 → 2009-01-13 (+6d) |  |  | 0d → 1d |  |  |
| 66 | Verify defects on QA | 2008-12-15 → 2008-12-19 (+4d) | 2008-12-17 → 2008-12-23 (+6d) |  |  | 0d → 1d |  |  |
| 67 | Regression Test on QA | 2008-12-15 → 2008-12-19 (+4d) | 2008-12-19 → 2009-01-06 (+18d) |  |  | 9d → 10d |  |  |
| 68 | Deploy to Stage | 2008-12-18 → 2009-01-05 (+18d) | 2008-12-18 → 2009-01-05 (+18d) |  |  | 0d → 1d |  |  |
| 69 | App Scan | 2008-12-19 → 2009-01-06 (+18d) | 2008-12-23 → 2009-01-08 (+16d) |  |  | 0d → 1d |  |  |
| 70 | Verify defects on Stage | 2009-01-05 → 2009-01-09 (+4d) | 2009-01-07 → 2009-01-13 (+6d) |  |  | 0d → 1d |  |  |

| ID | Task | Start | Finish | Duration | Total float | Other |
| --- | --- | --- | --- | --- | --- | --- |
| 71 | Regression Test on Stage | 2009-01-05 → 2009-01-09 (+4d) | 2009-01-07 → 2009-01-13 (+6d) |  | 0d → 1d |  |
| 72 | Installer Testing | 2008-12-15 → 2008-12-19 (+4d) | 2008-12-17 → 2008-12-23 (+6d) |  | 2d → 3d |  |
| 73 | LSD Compliance Testing | 2008-12-18 → 2009-01-05 (+18d) | 2009-01-05 → 2009-01-09 (+4d) |  | 2d → 3d | was named LSD Complinace Testing |
| 74 | Milestone: RC3 testing completed | 2009-01-07 → 2009-01-13 (+6d) | 2009-01-07 → 2009-01-13 (+6d) |  | 0d → 1d |  |
| 75 | Milestone: Complete RC3 Construction | 2009-01-07 → 2009-01-13 (+6d) | 2009-01-07 → 2009-01-13 (+6d) |  | 0d → 1d |  |
| 76 | **Transition** |  | 2009-01-13 → 2009-01-20 (+7d) | 99d? → 103d? |  |  |
| 77 | **Configuration and Change Management** |  | 2009-01-13 → 2009-01-20 (+7d) | 99d? → 103d? |  |  |
| 79 | **Documentation** | 2008-11-14 → 2008-11-18 (+4d) | 2008-12-18 → 2009-01-14 (+27d) | 23d? → 31d? | 10d → 4d |  |
| 80 | Milestone: Begin Documentation | 2008-11-14 → 2008-11-18 (+4d) | 2008-11-14 → 2008-11-18 (+4d) |  | 33d → 35d |  |
| 81 | **Update User Guide** | 2008-11-14 → 2008-11-18 (+4d) | 2008-12-08 → 2008-12-11 (+3d) |  | 14d → 16d |  |
| 82 | Milestone: Begin User Guide Update | 2008-11-14 → 2008-11-18 (+4d) | 2008-11-14 → 2008-11-18 (+4d) |  | 33d → 35d |  |
| 83 | GUI change summary to Jill | 2008-11-17 → 2008-11-19 (+2d) | 2008-11-18 → 2008-11-20 (+2d) |  | 14d → 16d |  |
| 84 | Update User Guide | 2008-11-19 → 2008-11-21 (+2d) | 2008-11-25 → 2008-12-01 (+6d) |  | 14d → 16d |  |
| 85 | Review User Guide | 2008-11-26 → 2008-12-02 (+6d) | 2008-12-02 → 2008-12-05 (+3d) |  | 14d → 16d |  |
| 86 | Incorporate feedback to User Guide | 2008-12-03 → 2008-12-08 (+5d) | 2008-12-08 → 2008-12-11 (+3d) |  | 14d → 16d |  |
| 87 | Milestone: User Guide Updated for 2.1.1 | 2008-12-08 → 2008-12-11 (+3d) | 2008-12-08 → 2008-12-11 (+3d) |  | 14d → 16d |  |
| 88 | **Update Install Guide** | 2008-11-26 → 2008-12-03 (+7d) | 2008-12-18 → 2009-01-14 (+27d) | 15d? → 22d? | 10d → 4d |  |
| 89 | Milestone: Begin Install Guide Update | 2008-11-26 → 2008-12-03 (+7d) | 2008-11-26 → 2008-12-03 (+7d) |  | 25d → 26d |  |
| 90 | Send install guide update to Jill: RC2 | 2008-12-03 → 2008-12-23 (+20d) | 2008-12-03 → 2008-12-23 (+20d) |  | 9d → 0d |  |
| 91 | Update Install Guide: RC3 | 2008-12-04 → 2009-01-05 (+32d) | 2008-12-08 → 2009-01-07 (+30d) |  | 9d → 0d |  |
| 92 | Send install guide update to Jill: RC3 | 2008-12-18 → 2009-01-05 (+18d) | 2008-12-18 → 2009-01-05 (+18d) |  | 10d → 11d |  |
| 93 | Update Install Guide: RC3 | 2008-12-09 → 2009-01-08 (+30d) | 2008-12-10 → 2009-01-09 (+30d) |  | 9d → 0d |  |
| 94 | Review install guide | 2008-12-11 → 2009-01-12 (+32d) | 2008-12-15 → 2009-01-14 (+30d) |  | 9d → 0d |  |
| 95 | Milestone: Complete Install Guide | 2008-12-15 → 2009-01-14 (+30d) | 2008-12-15 → 2009-01-14 (+30d) |  | 9d → 0d |  |
| 96 | Milestone: Complete Documentation | 2008-12-15 → 2009-01-14 (+30d) | 2008-12-15 → 2009-01-14 (+30d) |  | 9d → 0d |  |
| 97 | **Upload release artifacts** | 2009-01-07 → 2009-01-14 (+7d) | 2009-01-13 → 2009-01-20 (+7d) |  |  |  |
| 98 | Milestone: Begin preparation of release artifacts | 2009-01-07 → 2009-01-14 (+7d) | 2009-01-07 → 2009-01-14 (+7d) |  |  |  |
| 99 | Prepare 2.2.0 Release Note | 2009-01-08 → 2009-01-15 (+7d) | 2009-01-08 → 2009-01-15 (+7d) |  |  |  |
| 100 | Prepare 2.2.0 client.jar | 2009-01-08 → 2009-01-15 (+7d) | 2009-01-08 → 2009-01-15 (+7d) |  |  |  |
| 101 | Prepare 2.2.0 javadoc | 2009-01-08 → 2009-01-15 (+7d) | 2009-01-08 → 2009-01-15 (+7d) |  |  |  |
| 102 | Upload installer | 2009-01-08 → 2009-01-15 (+7d) | 2009-01-08 → 2009-01-15 (+7d) |  |  |  |
| 103 | Upload documentation | 2009-01-08 → 2009-01-15 (+7d) | 2009-01-08 → 2009-01-15 (+7d) |  |  |  |
| 104 | Update Download Center | 2009-01-08 → 2009-01-15 (+7d) | 2009-01-13 → 2009-01-20 (+7d) |  |  |  |
| 105 | Update Tools Page | 2009-01-08 → 2009-01-15 (+7d) | 2009-01-09 → 2009-01-16 (+7d) |  |  |  |
| 106 | Update LSD Files Tab | 2009-01-08 → 2009-01-15 (+7d) | 2009-01-08 → 2009-01-15 (+7d) |  |  |  |
| 107 | Update Landing Site | 2009-01-08 → 2009-01-15 (+7d) | 2009-01-08 → 2009-01-15 (+7d) |  |  |  |
| 108 | Milestone: Complete release artifact preparation | 2009-01-13 → 2009-01-20 (+7d) | 2009-01-13 → 2009-01-20 (+7d) |  |  |  |
| 109 | Milestone: Complete Configuration Management | 2009-01-13 → 2009-01-20 (+7d) | 2009-01-13 → 2009-01-20 (+7d) |  |  |  |
| 110 | **Environment** | 2009-01-07 → 2009-01-13 (+6d) | 2009-01-13 → 2009-01-20 (+7d) | 4d → 5d |  |  |
| 111 | Milestone: Begin deployment to PROD activities | 2009-01-07 → 2009-01-13 (+6d) | 2009-01-07 → 2009-01-13 (+6d) |  | 4d → 5d |  |
| 112 | Deploy to PROD | 2009-01-08 → 2009-01-14 (+6d) | 2009-01-09 → 2009-01-15 (+6d) |  | 0d → 1d |  |
| 113 | Verify PROD Deployment | 2009-01-12 → 2009-01-16 (+4d) | 2009-01-13 → 2009-01-19 (+6d) |  | 0d → 1d |  |
| 114 | Milestone: Complete PROD deployment activities | 2009-01-13 → 2009-01-20 (+7d) | 2009-01-13 → 2009-01-20 (+7d) |  |  |  |

## Version 3 (saved 2008-12-09)

Note of the change: Updated 2.2.0 schedule.

Last finish 2009-01-20 → 2009-01-26 (+6d). Complete tasks 9 → 35.

Added:

| ID | Task | Duration | Start | Finish | Predecessors | Resources |
| --- | --- | --- | --- | --- | --- | --- |
| 88 | Update BDA wiki page with installer properties | 1d | 2008-12-12 A | 2008-12-12 A |  | dharley |
| 89 | Send change summary to Jill | 2d | 2008-12-12 A | 2008-12-15 | 46 | dharley |
| 112 | Milestone: Complete 2.2.0 release | 0d | 2009-01-26 | 2009-01-26 | 106, 111 |  |

Removed: 39 Deployment Test????; 51 Deployment Test????; 92 Send install guide update to Jill: RC3; 93 Update Install Guide: RC3; 94 Review install guide

Changed:

| ID | Task | Start | Finish | Duration | Complete | Total float | Predecessors | Other |
| --- | --- | --- | --- | --- | --- | --- | --- | --- |
| 1 | **caArray 2.2.0** |  | 2009-01-20 → 2009-01-26 (+6d) | 103d? → 107d | 24% → 59% |  |  |  |
| 10 | **Construction Alpha1** |  | 2008-12-01 A |  | 47% → 100% | 27d → none |  |  |
| 16 | **Test** | 2008-10-31 A | 2008-12-01 A |  | 0% → 100% | 0d → none |  |  |
| 17 | Verify new features and defects on QA | 2008-10-31 A | 2008-11-14 A |  | 0% → 100% | 0d → none |  |  |
| 18 | Regression Test on QA | 2008-10-31 A | 2008-11-14 A |  | 0% → 100% | 0d → none |  |  |
| 19 | Deploy to Stage | 2008-11-17 A | 2008-11-17 A |  | 0% → 100% | 0d → none |  |  |
| 20 | Verify new features and defects on Stage | 2008-11-18 A | 2008-11-26 A |  | 0% → 100% | 19d → none |  |  |
| 21 | Regression Test on Stage | 2008-11-18 A | 2008-11-24 A |  | 0% → 100% | 21d → none |  |  |
| 22 | Installer Testing | 2008-11-25 A | 2008-12-01 A |  | 0% → 100% | 27d → none |  |  |
| 23 | Milestone: Alpha1 testing completed | 2008-12-01 A | 2008-12-01 A |  | 0% → 100% | 27d → none |  |  |
| 24 | Milestone: Complete Alpha1 Construction | 2008-12-01 A | 2008-12-01 A |  | 0% → 100% | 27d → none |  |  |
| 25 | **Construction RC 1** |  | 2008-12-12 A |  | 10% → 100% | 18d → none |  |  |
| 26 | Milestone: Begin RC1 Construction | 2008-10-30 A | 2008-10-30 A |  | 0% → 100% | 46d → none |  |  |
| 27 | **Implementation** |  | 2008-11-18 A |  | 42% → 100% | 0d → none |  |  |
| 28 | Develop RC1 features and defects |  | 2008-11-14 A |  | 50% → 100% | 0d → none |  |  |
| 29 | Verify Defects on DEV | 2008-11-17 A | 2008-11-17 A |  | 0% → 100% | 0d → none |  |  |
| 30 | Milestone: Deploy RC1 to QA | 2008-11-18 A | 2008-11-18 A |  | 0% → 100% | 0d → none |  |  |
| 31 | **Test** | 2008-11-19 A | 2008-12-12 A |  | 0% → 100% | 18d → none |  |  |
| 32 | Verify new features and defects on QA | 2008-11-19 A | 2008-12-01 A |  | 0% → 100% | 18d → none |  |  |
| 33 | Regression Test on QA | 2008-11-19 A | 2008-12-01 A |  | 0% → 100% | 18d → none |  |  |
| 34 | Deploy to Stage | 2008-12-02 A | 2008-12-02 A |  | 0% → 100% | 18d → none |  |  |
| 35 | Verify new features and defects on Stage | 2008-12-03 A | 2008-12-09 A |  | 0% → 100% | 21d → none |  |  |
| 36 | Regression Test on Stage | 2008-12-03 A | 2008-12-09 A |  | 0% → 100% | 18d → none |  |  |
| 37 | Installer Testing | 2008-12-10 A | 2008-12-12 A |  | 0% → 100% | 18d → none |  |  |
| 38 | App Scan RC1 | 2008-12-03 A | 2008-12-09 A |  | 0% → 100% | 21d → none |  |  |
| 39 | Milestone: RC1 testing completed | 2008-12-12 A | 2008-12-12 A |  | 0% → 100% | 18d → none |  |  |
| 40 | Milestone: Complete RC1 Construction | 2008-12-12 A | 2008-12-12 A |  | 0% → 100% | 18d → none |  |  |
| 41 | **Construction RC2** | 2008-11-18 A | 2008-12-22 → 2009-01-09 (+18d) | 22d → 28d | 0% → 24% | 0d → 11d |  |  |
| 42 | Milestone: Begin RC2 Construction | 2008-11-18 A | 2008-11-18 A |  | 0% → 100% | 35d → none |  |  |
| 43 | **Implementation** | 2008-11-19 A | 2008-12-03 → 2008-12-11 (+8d) | 9d → 15d | 0% → 64% |  |  |  |
| 44 | Address defects | 2008-11-19 A | 2008-12-01 → 2008-12-09 (+8d) | 7d → 13d | 0% → 74% |  |  |  |
| 45 | Verify Defects on DEV | 2008-12-02 → 2008-12-10 (+8d) | 2008-12-02 → 2008-12-10 (+8d) |  |  |  |  |  |
| 46 | Milestone: Deploy RC2 to QA | 2008-12-03 → 2008-12-11 (+8d) | 2008-12-03 → 2008-12-11 (+8d) |  |  |  |  |  |
| 47 | **Test** | 2008-12-04 → 2008-12-12 (+8d) | 2008-12-22 → 2009-01-09 (+18d) |  |  |  |  |  |
| 48 | Verify defects on QA | 2008-12-04 → 2008-12-12 (+8d) | 2008-12-10 → 2008-12-18 (+8d) |  |  |  |  |  |
| 49 | Regression Test on QA | 2008-12-04 → 2008-12-12 (+8d) | 2008-12-10 → 2008-12-18 (+8d) |  |  |  |  | resources areddy → khann |
| 50 | Deploy to Stage | 2008-12-11 → 2008-12-19 (+8d) | 2008-12-11 → 2008-12-19 (+8d) |  |  |  |  |  |
| 51 | App Scan | 2008-12-12 → 2008-12-22 (+10d) | 2008-12-16 → 2009-01-05 (+20d) |  |  | 17d → 15d |  |  |
| 52 | Verify defects on Stage | 2008-12-12 → 2008-12-22 (+10d) | 2008-12-17 → 2009-01-06 (+20d) |  |  | 16d → 14d |  |  |
| 53 | Regression Test on Stage | 2008-12-12 → 2008-12-22 (+10d) | 2008-12-17 → 2009-01-06 (+20d) |  |  |  |  | resources areddy → khann |
| 54 | Installer Testing | 2008-12-18 → 2009-01-07 (+20d) | 2008-12-22 → 2009-01-09 (+18d) |  |  |  |  | resources areddy → tboal |
| 55 | Milestone: RC2 testing completed | 2008-12-22 → 2009-01-09 (+18d) | 2008-12-22 → 2009-01-09 (+18d) |  |  | 13d → 11d |  |  |
| 56 | Milestone: Complete RC2 Construction | 2008-12-22 → 2009-01-09 (+18d) | 2008-12-22 → 2009-01-09 (+18d) |  |  | 13d → 11d |  |  |
| 57 | **Construction RC3** | 2008-12-10 → 2008-12-11 (+1d) | 2009-01-13 → 2009-01-19 (+6d) | 16d → 19d |  | 1d → 3d | 48, 49 → none |  |
| 58 | Milestone: Begin RC3 Construction | 2008-12-10 → 2008-12-11 (+1d) | 2008-12-10 → 2008-12-11 (+1d) |  |  | 21d → 3d |  |  |
| 59 | **Implementation** | 2008-12-11 → 2008-12-12 (+1d) | 2008-12-18 → 2009-01-07 (+20d) | 6d → 11d |  | 1d → 3d |  |  |
| 60 | Develop RC3 defects | 2008-12-11 → 2008-12-12 (+1d) | 2008-12-17 → 2009-01-06 (+20d) | 5d → 10d |  | 1d → 3d | none → 58 | was named Develop RC2 defects |
| 61 | Verify Defects on DEV | 2008-12-18 → 2009-01-07 (+20d) | 2008-12-18 → 2009-01-07 (+20d) |  |  | 1d → 3d |  |  |
| 62 | Milestone: Deploy RC3 to QA | 2008-12-18 → 2009-01-07 (+20d) | 2008-12-18 → 2009-01-07 (+20d) |  |  | 1d → 3d |  |  |
| 63 | **Test** | 2008-12-19 → 2009-01-08 (+20d) | 2009-01-13 → 2009-01-19 (+6d) | 10d → 8d |  | 1d → 3d |  |  |
| 64 | Verify defects on QA | 2008-12-19 → 2009-01-08 (+20d) | 2008-12-23 → 2009-01-12 (+20d) |  |  | 1d → 4d |  |  |
| 65 | Regression Test on QA | 2008-12-19 → 2009-01-08 (+20d) | 2009-01-06 → 2009-01-14 (+8d) |  |  | 10d → 8d |  |  |
| 66 | Deploy to Stage | 2009-01-05 → 2009-01-13 (+8d) | 2009-01-05 → 2009-01-13 (+8d) |  |  | 1d → 4d |  |  |
| 67 | App Scan | 2009-01-06 → 2009-01-14 (+8d) | 2009-01-08 → 2009-01-16 (+8d) |  |  | 1d → 4d |  |  |
| 68 | Verify defects on Stage | 2009-01-09 → 2009-01-14 (+5d) | 2009-01-13 → 2009-01-16 (+3d) |  |  | 1d → 4d | 67 → 66 |  |
| 69 | Regression Test on Stage | 2009-01-09 → 2009-01-14 (+5d) | 2009-01-13 → 2009-01-16 (+3d) |  |  | 1d → 4d | 67 → 66 |  |
| 70 | Installer Testing | 2008-12-19 → 2009-01-08 (+20d) | 2008-12-23 → 2009-01-12 (+20d) |  |  |  |  |  |
| 71 | LSD Compliance Testing | 2009-01-05 → 2009-01-13 (+8d) | 2009-01-09 → 2009-01-19 (+10d) |  |  |  |  |  |
| 72 | Milestone: RC3 testing completed | 2009-01-13 → 2009-01-19 (+6d) | 2009-01-13 → 2009-01-19 (+6d) |  |  | 1d → 3d |  |  |
| 73 | Milestone: Complete RC3 Construction | 2009-01-13 → 2009-01-19 (+6d) | 2009-01-13 → 2009-01-19 (+6d) |  |  | 1d → 3d |  |  |
| 74 | **Transition** | 2008-08-14 A | 2009-01-20 → 2009-01-26 (+6d) | 103d? → 107d | 0% → 10% |  |  |  |
| 75 | **Configuration and Change Management** | 2008-08-14 A | 2009-01-20 → 2009-01-26 (+6d) | 103d? → 107d | 0% → 11% |  |  |  |
| 77 | **Documentation** | 2008-11-18 A | 2009-01-14 → 2009-01-22 (+8d) | 31d? → 37d | 0% → 15% | 4d → 2d |  |  |
| 79 | **Update User Guide** | 2008-11-18 A | 2008-12-11 → 2008-12-10 (-1d) | 15d → 14d | 0% → 14% | 16d → 23d |  |  |
| 80 | Milestone: Begin User Guide Update | 2008-11-18 A | 2008-11-18 A |  | 0% → 100% | 35d → none |  |  |
| 81 | Send change summary to Jill | 2008-11-19 A | 2008-11-20 A |  | 0% → 100% | 16d → none |  | was named GUI change summary to Jill; resources none → rsrinivasa |
| 84 | Incorporate feedback to User Guide |  | 2008-12-11 → 2008-12-10 (-1d) | 4d → 3d |  | 16d → 23d |  |  |
| 85 | Milestone: User Guide Updated for 2.1.1 | 2008-12-11 → 2008-12-10 (-1d) | 2008-12-11 → 2008-12-10 (-1d) |  |  | 16d → 23d |  |  |
| 86 | **Update Install Guide** | 2008-12-03 → 2008-12-11 A (+8d) | 2009-01-14 → 2009-01-22 (+8d) | 22d? → 22d | 0% → 17% | 4d → 2d | none → 46 |  |
| 87 | Milestone: Begin Install Guide Update | 2008-12-03 → 2008-12-11 A (+8d) | 2008-12-03 → 2008-12-11 A (+8d) |  | 0% → 100% | 26d → none |  |  |

| ID | Task | Start | Finish | Duration | Total float | Predecessors | Other |
| --- | --- | --- | --- | --- | --- | --- | --- |
| 90 | Update install guide | 2008-12-23 → 2009-01-12 (+20d) | 2008-12-23 → 2009-01-16 (+24d) | 1d → 5d |  |  | was named Send install guide update to Jill: RC2; resources none → jhadfield |
| 91 | Get Install Guide reviewed and incorporate changes | 2009-01-05 → 2009-01-19 (+14d) | 2009-01-07 → 2009-01-22 (+15d) | 3d → 4d |  |  | was named Update Install Guide: RC3 |
| 92 | Milestone: Complete Install Guide | 2009-01-14 → 2009-01-22 (+8d) | 2009-01-14 → 2009-01-22 (+8d) |  |  | Review install guide → 91 |  |
| 93 | Milestone: Complete Documentation | 2009-01-14 → 2009-01-22 (+8d) | 2009-01-14 → 2009-01-22 (+8d) |  |  |  |  |
| 94 | **Upload release artifacts** | 2009-01-14 → 2009-01-07 (-7d) | 2009-01-20 → 2009-01-26 (+6d) | 4d → 13d |  | 73, 93 → none |  |
| 95 | Milestone: Begin preparation of release artifacts | 2009-01-14 → 2009-01-07 (-7d) | 2009-01-14 → 2009-01-07 (-7d) |  | 4d → 13d | none → 62 |  |
| 96 | Prepare 2.2.0 Release Notes | 2009-01-15 → 2009-01-08 (-7d) | 2009-01-15 → 2009-01-08 (-7d) |  | 3d → 12d | none → 62 | was named Prepare 2.2.0 Release Note |
| 97 | Prepare 2.2.0 client.jar (Reuse 2.1.0 jar) | 2009-01-15 → 2009-01-08 (-7d) | 2009-01-15 → 2009-01-08 (-7d) |  | 3d → 12d | none → 62 | was named Prepare 2.2.0 client.jar |
| 98 | Prepare 2.2.0 javadoc (Reuse 2.1.0 javadoc?) | 2009-01-15 → 2009-01-08 (-7d) | 2009-01-15 → 2009-01-08 (-7d) |  | 3d → 12d | none → 62 | was named Prepare 2.2.0 javadoc |
| 99 | Upload installer | 2009-01-15 → 2009-01-23 (+8d) | 2009-01-15 → 2009-01-23 (+8d) |  | 3d → 1d | none → 93 |  |
| 100 | Upload documentation | 2009-01-15 → 2009-01-23 (+8d) | 2009-01-15 → 2009-01-23 (+8d) |  | 3d → 1d | none → 93 |  |
| 101 | Update Download Center | 2009-01-15 → 2009-01-23 (+8d) | 2009-01-20 → 2009-01-26 (+6d) | 4d → 2d |  | none → 93 |  |
| 102 | Update Tools Page | 2009-01-15 → 2009-01-23 (+8d) | 2009-01-16 → 2009-01-26 (+10d) |  | 2d → 0d | none → 93 |  |
| 103 | Update LSD Files Tab | 2009-01-15 → 2009-01-23 (+8d) | 2009-01-15 → 2009-01-23 (+8d) |  | 3d → 1d | none → 93 |  |
| 104 | Update Landing Site | 2009-01-15 → 2009-01-23 (+8d) | 2009-01-15 → 2009-01-23 (+8d) |  | 3d → 1d | none → 93 |  |
| 105 | Milestone: Complete release artifact preparation | 2009-01-20 → 2009-01-26 (+6d) | 2009-01-20 → 2009-01-26 (+6d) |  |  |  |  |
| 106 | Milestone: Complete Configuration Management | 2009-01-20 → 2009-01-26 (+6d) | 2009-01-20 → 2009-01-26 (+6d) |  |  |  |  |
| 107 | **Environment** | 2009-01-13 → 2009-01-19 (+6d) | 2009-01-20 → 2009-01-26 (+6d) |  |  |  |  |
| 108 | Milestone: Begin deployment to PROD activities | 2009-01-13 → 2009-01-19 (+6d) | 2009-01-13 → 2009-01-19 (+6d) |  | 5d → 7d |  |  |
| 109 | Deploy to PROD | 2009-01-14 → 2009-01-20 (+6d) | 2009-01-15 → 2009-01-20 (+5d) | 2d → 1d | 1d → 5d |  |  |
| 110 | Verify PROD Deployment | 2009-01-16 → 2009-01-21 (+5d) | 2009-01-19 → 2009-01-21 (+2d) | 2d → 1d | 1d → 5d |  |  |
| 111 | Milestone: Complete PROD deployment activities | 2009-01-20 → 2009-01-21 (+1d) | 2009-01-20 → 2009-01-21 (+1d) |  | 0d → 3d | 110, 106 → 110 |  |

## Version 4 (saved 2008-12-18)

Note of the change: Updated 2.2.0 schedule.

Last finish stays 2009-01-26. Complete tasks 35 → 40.

Removed: 51 App Scan

Changed:

| ID | Task | Start | Finish | Complete | Total float | Predecessors | Other |
| --- | --- | --- | --- | --- | --- | --- | --- |
| 1 | **caArray 2.2.0** |  |  | 59% → 67% |  |  |  |
| 41 | **Construction RC2** |  |  | 24% → 57% |  |  |  |
| 43 | **Implementation** |  | 2008-12-11 A | 64% → 100% | 0d → none |  |  |
| 44 | Address defects |  | 2008-12-09 A | 74% → 100% | 0d → none |  |  |
| 45 | Verify Defects on DEV | 2008-12-10 A | 2008-12-10 A | 0% → 100% | 0d → none |  |  |
| 46 | Milestone: Deploy RC2 to QA | 2008-12-11 A | 2008-12-11 A | 0% → 100% | 0d → none |  |  |
| 47 | **Test** | 2008-12-12 A |  | 0% → 27% | 0d → 11d |  |  |
| 48 | Verify defects on QA | 2008-12-12 A |  | 0% → 40% | 0d → 1.5d |  | resources lmisquitta [80%] → none |
| 49 | Regression Test on QA | 2008-12-12 A |  | 0% → 50% | 0d → 1.5d |  | resources khann → none |
| 51 | Verify defects on Stage |  |  |  |  |  | resources lmisquitta [80%] → none |
| 52 | Regression Test on Stage |  |  |  | 0d → 1.5d |  | resources khann → none |
| 53 | Installer Testing | 2009-01-07 A |  | 0% → 50% |  |  | resources tboal → none |
| 54 | Milestone: RC2 testing completed |  |  |  |  | App Scan, 51, 52, 53 → 51, 52, 53 |  |
| 73 | **Transition** |  |  | 10% → 26% |  |  |  |
| 74 | **Configuration and Change Management** |  |  | 11% → 27% |  |  |  |
| 76 | **Documentation** |  |  | 15% → 38% |  |  |  |
| 78 | **Update User Guide** |  |  | 14% → 50% |  |  |  |
| 81 | Update User Guide | 2008-11-21 A | 2008-12-01 A | 0% → 100% | 23d → none |  |  |
| 85 | **Update Install Guide** |  |  | 17% → 25% | 2d → 0d |  |  |
| 88 | Send change summary to Jill |  | 2008-12-15 A | 50% → 100% | 22d → none |  |  |

## Version 5 (saved 2008-12-29)

Note of the change: Updated 2.2.0 schedule.

Last finish 2009-01-26 → 2009-01-21 (-5d). Complete tasks 40 → 42.

Changed:

| ID | Task | Start | Finish | Duration | Complete | Total float | Predecessors |
| --- | --- | --- | --- | --- | --- | --- | --- |
| 1 | **caArray 2.2.0** |  | 2009-01-26 → 2009-01-21 (-5d) | 107d → 104d | 67% → 68% | 0d → 3d |  |
| 37 | Installer Testing |  |  |  |  |  | 36 → 30 |
| 41 | **Construction RC2** |  |  |  | 57% → 64% | 11d → 8d |  |
| 47 | **Test** |  |  |  | 27% → 44% | 11d → 8d |  |
| 48 | Verify defects on QA |  | 2008-12-18 → 2008-12-23 (+5d) | 5d → 8d | 40% → 25% | 1.5d → 8d |  |
| 49 | Regression Test on QA |  | 2008-12-18 → 2008-12-22 A (+4d) | 5d → 7d | 50% → 100% | 1.5d → none |  |
| 50 | Deploy to Stage | 2008-12-19 → 2009-01-05 (+17d) | 2008-12-19 → 2009-01-05 (+17d) |  |  | 1.5d → 8d |  |
| 51 | Verify defects on Stage | 2008-12-22 → 2009-01-06 (+15d) | 2009-01-06 → 2009-01-09 (+3d) |  |  | 14d → 8d |  |
| 52 | Regression Test on Stage | 2008-12-22 → 2009-01-06 (+15d) | 2009-01-06 → 2009-01-09 (+3d) |  |  | 1.5d → 8d |  |
| 53 | Installer Testing | 2009-01-07 A → 2008-12-17 A (-21d) | 2009-01-09 → 2008-12-19 A (-21d) |  | 50% → 100% | 0d → none | 46, 52 → 46 |
| 73 | **Transition** |  | 2009-01-26 → 2009-01-21 (-5d) | 107d → 104d | 26% → 32% | 0d → 3d |  |
| 74 | **Configuration and Change Management** |  | 2009-01-26 → 2009-01-21 (-5d) | 107d → 104d | 27% → 33% | 0d → 3d |  |
| 76 | **Documentation** |  | 2009-01-22 → 2009-01-13 (-9d) | 37d → 30d | 38% → 44% | 2d → 9d |  |
| 78 | **Update User Guide** |  | 2008-12-10 → 2008-12-22 (+12d) | 14d → 22d | 50% → 55% | 23d → 12d |  |
| 81 | Update User Guide |  | 2008-12-01 A → 2008-12-08 A (+7d) | 5d → 10d |  |  |  |
| 82 | Review User Guide | 2008-12-02 → 2008-12-09 (+7d) | 2008-12-05 → 2008-12-17 (+12d) | 4d → 7d |  | 23d → 12d |  |
| 83 | Incorporate feedback to User Guide | 2008-12-08 → 2008-12-18 (+10d) | 2008-12-10 → 2008-12-22 (+12d) |  |  | 23d → 12d |  |
| 84 | Milestone: User Guide Updated for 2.1.1 | 2008-12-10 → 2008-12-22 (+12d) | 2008-12-10 → 2008-12-22 (+12d) |  |  | 23d → 12d |  |
| 85 | **Update Install Guide** |  | 2009-01-22 → 2009-01-13 (-9d) | 22d → 15d |  | 0d → 4d |  |
| 89 | Update install guide | 2009-01-12 → 2008-12-22 (-21d) | 2009-01-16 → 2009-01-07 (-9d) |  |  | 0d → 4d |  |
| 90 | Get Install Guide reviewed and incorporate changes | 2009-01-19 → 2009-01-08 (-11d) | 2009-01-22 → 2009-01-13 (-9d) |  |  | 0d → 4d |  |
| 91 | Milestone: Complete Install Guide | 2009-01-22 → 2009-01-13 (-9d) | 2009-01-22 → 2009-01-13 (-9d) |  |  | 0d → 4d |  |
| 92 | Milestone: Complete Documentation | 2009-01-22 → 2009-01-13 (-9d) | 2009-01-22 → 2009-01-13 (-9d) |  |  | 0d → 4d |  |
| 93 | **Upload release artifacts** |  | 2009-01-26 → 2009-01-21 (-5d) | 13d → 10d |  | 0d → 3d |  |
| 98 | Upload installer | 2009-01-23 → 2009-01-20 (-3d) | 2009-01-23 → 2009-01-20 (-3d) |  |  |  | 92 → 92, 71 |
| 99 | Upload documentation | 2009-01-23 → 2009-01-20 (-3d) | 2009-01-23 → 2009-01-20 (-3d) |  |  |  | 92 → 92, 71 |
| 100 | Update Download Center | 2009-01-23 → 2009-01-20 (-3d) | 2009-01-26 → 2009-01-21 (-5d) |  |  |  | 92 → 92, 71 |
| 101 | Update Tools Page | 2009-01-23 → 2009-01-20 (-3d) | 2009-01-26 → 2009-01-21 (-5d) |  |  |  | 92 → 92, 71 |
| 102 | Update LSD Files Tab | 2009-01-23 → 2009-01-20 (-3d) | 2009-01-23 → 2009-01-20 (-3d) |  |  |  | 92 → 92, 71 |
| 103 | Update Landing Site | 2009-01-23 → 2009-01-20 (-3d) | 2009-01-23 → 2009-01-20 (-3d) |  |  |  | 92 → 92, 71 |
| 104 | Milestone: Complete release artifact preparation | 2009-01-26 → 2009-01-21 (-5d) | 2009-01-26 → 2009-01-21 (-5d) |  |  |  |  |
| 105 | Milestone: Complete Configuration Management | 2009-01-26 → 2009-01-21 (-5d) | 2009-01-26 → 2009-01-21 (-5d) |  |  |  |  |
| 106 | **Environment** |  | 2009-01-26 → 2009-01-21 (-5d) | 5d → 2d |  |  |  |
| 111 | Milestone: Complete 2.2.0 release | 2009-01-26 → 2009-01-21 (-5d) | 2009-01-26 → 2009-01-21 (-5d) |  |  |  |  |

## Version 6 (saved 2009-01-05)

Note of the change: Updated 2.2.0 schedule.

Last finish stays 2009-01-21. Complete tasks 42 → 51.

Changed:

| ID | Task | Start | Finish | Complete | Total float | Other |
| --- | --- | --- | --- | --- | --- | --- |
| 1 | **caArray 2.2.0** |  |  | 68% → 76% |  |  |
| 41 | **Construction RC2** |  |  | 64% → 83% |  |  |
| 47 | **Test** |  |  | 44% → 73% |  |  |
| 48 | Verify defects on QA |  | 2008-12-23 A | 25% → 100% | 8d → none |  |
| 50 | Deploy to Stage | 2009-01-05 A | 2009-01-05 A | 0% → 100% | 8d → none |  |
| 51 | Verify defects on Stage | 2009-01-06 A |  | 0% → 10% |  |  |
| 52 | Regression Test on Stage | 2009-01-06 A |  | 0% → 10% |  |  |
| 56 | **Construction RC3** | 2008-12-11 A |  | 0% → 27% | 0d → 2d |  |
| 57 | Milestone: Begin RC3 Construction | 2008-12-11 A | 2008-12-11 A | 0% → 100% | 0d → none |  |
| 58 | **Implementation** | 2008-12-12 A |  | 0% → 91% |  |  |
| 59 | Develop RC3 defects | 2008-12-12 A | 2009-01-06 A | 0% → 100% | 0d → none |  |
| 68 | Regression Test on Stage including Perf testing |  |  |  |  | was named Regression Test on Stage |
| 73 | **Transition** |  |  | 32% → 38% |  |  |
| 74 | **Configuration and Change Management** |  |  | 33% → 40% |  |  |
| 81 | Update User Guide | 2008-11-21 A → 2008-11-21 | 2008-12-08 A → 2008-12-08 | 100% → 0% | none → 24d | resources none → jhadfield |
| 82 | Review User Guide | 2008-12-09 A | 2008-12-17 A | 0% → 100% | 12d → none |  |
| 83 | Incorporate feedback to User Guide | 2008-12-18 A | 2008-12-22 A | 0% → 100% | 12d → none |  |
| 84 | Milestone: User Guide Updated for 2.1.1 | 2008-12-22 A | 2008-12-22 A | 0% → 100% | 12d → none |  |
| 93 | **Upload release artifacts** | 2009-01-07 A |  | 0% → 27% |  |  |
| 95 | Prepare 2.2.0 Release Notes | 2009-01-08 A | 2009-01-08 A | 0% → 100% | 12d → none |  |
| 96 | Prepare 2.2.0 client.jar (Reuse 2.1.0 jar) | 2009-01-08 A | 2009-01-08 A | 0% → 100% | 12d → none |  |
| 97 | Prepare 2.2.0 javadoc (Reuse 2.1.0 javadoc) | 2009-01-08 A | 2009-01-08 A | 0% → 100% | 12d → none | was named Prepare 2.2.0 javadoc (Reuse 2.1.0 javadoc?) |

## Version 7 (saved 2009-01-12)

Note of the change: Updated 2.2.0 schedule.

Last finish stays 2009-01-21. Complete tasks 51 → 59.

Changed:

| ID | Task | Start | Finish | Complete | Total float |
| --- | --- | --- | --- | --- | --- |
| 1 | **caArray 2.2.0** |  |  | 76% → 86% |  |
| 41 | **Construction RC2** |  | 2009-01-09 A | 83% → 100% | 8d → none |
| 47 | **Test** |  | 2009-01-09 A | 73% → 100% | 8d → none |
| 51 | Verify defects on Stage |  | 2009-01-09 A | 10% → 100% | 8d → none |
| 52 | Regression Test on Stage |  | 2009-01-09 A | 10% → 100% | 8d → none |
| 54 | Milestone: RC2 testing completed | 2009-01-09 A | 2009-01-09 A | 0% → 100% | 8d → none |
| 55 | Milestone: Complete RC2 Construction | 2009-01-09 A | 2009-01-09 A | 0% → 100% | 8d → none |
| 56 | **Construction RC3** |  |  | 27% → 34% |  |
| 58 | **Implementation** |  | 2009-01-07 A | 91% → 100% | 0d → none |
| 60 | Verify Defects on DEV | 2009-01-07 A | 2009-01-07 A | 0% → 100% | 0d → none |
| 61 | Milestone: Deploy RC3 to QA | 2009-01-07 A | 2009-01-07 A | 0% → 100% | 0d → none |
| 62 | **Test** | 2009-01-08 A |  | 0% → 6% | 0d → 2d |
| 63 | Verify defects on QA | 2009-01-08 A |  | 0% → 20% |  |
| 64 | Regression Test on QA | 2009-01-08 A |  | 0% → 20% |  |
| 73 | **Transition** |  |  | 38% → 74% |  |
| 74 | **Configuration and Change Management** |  |  | 40% → 78% |  |
| 76 | **Documentation** |  |  | 44% → 94% |  |
| 78 | **Update User Guide** |  | 2008-12-22 A | 55% → 100% | 14d → none |
| 81 | Update User Guide | 2008-11-21 A | 2008-12-08 A | 0% → 100% | 24d → none |
| 85 | **Update Install Guide** |  |  | 25% → 83% |  |
| 89 | Update install guide | 2008-12-22 A | 2009-01-07 A | 0% → 100% | 4d → none |
| 90 | Get Install Guide reviewed and incorporate changes | 2009-01-08 A |  | 0% → 50% |  |

## Version 8 (saved 2009-01-14)

Note of the change: Updated 2.2.0 schedule.

Last finish stays 2009-01-21. Complete tasks 59 → 73.

Added:

| ID | Task | Duration | Start | Finish | Predecessors |
| --- | --- | --- | --- | --- | --- |
| 103 | Update Gforge (caArray,LSD), Download Center, Tools and Product pages. | 1d | 2009-01-21 | 2009-01-21 | 107, 102 |

Removed: 97 Prepare 2.2.0 javadoc (Reuse 2.1.0 javadoc); 103 Update Landing Site

Changed:

| ID | Task | Start | Finish | Duration | Complete | Total float | Predecessors | Other |
| --- | --- | --- | --- | --- | --- | --- | --- | --- |
| 1 | **caArray 2.2.0** |  |  |  | 86% → 94% | 3d → 0d |  |  |
| 56 | **Construction RC3** |  |  |  | 34% → 66% | 2d → 0d |  |  |
| 62 | **Test** |  |  |  | 6% → 51% | 2d → 0d |  |  |
| 63 | Verify defects on QA |  | 2009-01-12 A |  | 20% → 100% | 1d → none |  |  |
| 64 | Regression Test on QA |  | 2009-01-14 A |  | 20% → 100% | 5d → none |  |  |
| 65 | Deploy to Stage | 2009-01-13 A | 2009-01-13 → 2009-01-14 A (+1d) | 1d → 2d | 0% → 100% | 1d → none |  |  |
| 66 | App Scan | 2009-01-14 → 2009-01-15 (+1d) | 2009-01-16 → 2009-01-19 (+3d) |  |  | 1d → 0d |  |  |
| 67 | Verify defects on Stage | 2009-01-14 → 2009-01-15 (+1d) | 2009-01-16 → 2009-01-19 (+3d) |  |  | 1d → 0d |  |  |
| 68 | Regression Test on Stage including Perf testing | 2009-01-14 → 2009-01-15 (+1d) | 2009-01-16 → 2009-01-19 (+3d) |  |  | 1d → 0d |  |  |
| 69 | Installer Testing | 2009-01-08 A |  |  | 0% → 75% | 0d → 3d |  |  |
| 70 | LSD Compliance Testing |  | 2009-01-19 → 2009-01-14 (-5d) | 5d → 2d |  | 0d → 3d |  |  |
| 73 | **Transition** |  |  |  | 74% → 93% | 3d → 0d |  |  |
| 74 | **Configuration and Change Management** |  |  |  | 78% → 98% | 3d → 0d |  |  |
| 75 | Milestone: Begin Configuration and Change Mgmt | 2008-08-14 A | 2008-08-14 A |  | 0% → 100% | 107d → none |  |  |
| 76 | **Documentation** |  | 2009-01-13 A |  | 94% → 100% | 9d → none |  |  |
| 77 | Milestone: Begin Documentation | 2008-11-18 A | 2008-11-18 A |  | 0% → 100% | 39d → none |  |  |
| 85 | **Update Install Guide** |  | 2009-01-13 A |  | 83% → 100% | 4d → none |  |  |
| 90 | Get Install Guide reviewed and incorporate changes |  | 2009-01-13 A |  | 50% → 100% | 4d → none |  |  |
| 91 | Milestone: Complete Install Guide | 2009-01-13 A | 2009-01-13 A |  | 0% → 100% | 4d → none |  |  |
| 92 | Milestone: Complete Documentation | 2009-01-13 A | 2009-01-13 A |  | 0% → 100% | 4d → none |  |  |
| 93 | **Upload release artifacts** |  |  |  | 27% → 88% | 3d → 0d |  |  |
| 94 | Milestone: Begin preparation of release artifacts | 2009-01-07 A | 2009-01-07 A |  | 0% → 100% | 13d → none |  |  |
| 96 | Build release artifacts from tag. |  |  |  |  |  |  | was named Prepare 2.2.0 client.jar (Reuse 2.1.0 jar) |
| 97 | Prepare caArray Gforge site updates. | 2009-01-20 A | 2009-01-20 A |  | 0% → 100% | 1d → none |  | was named Upload installer |
| 98 | Prepare LSD Gforge site updates. | 2009-01-20 A | 2009-01-20 A |  | 0% → 100% | 1d → none |  | was named Upload documentation |
| 99 | Submit request to update Download Center. | 2009-01-20 A | 2009-01-21 → 2009-01-20 A (-1d) | 2d → 1d | 0% → 100% | 0d → none |  | was named Update Download Center |
| 100 | Submit request to update Tools page. | 2009-01-20 A | 2009-01-21 → 2009-01-20 A (-1d) | 2d → 1d | 0% → 100% | 0d → none |  | was named Update Tools Page |
| 101 | Submit request to update Product page. | 2009-01-20 A | 2009-01-20 A |  | 0% → 100% | 1d → none |  | was named Update LSD Files Tab |
| 102 | Milestone: Complete release artifact preparation | 2009-01-21 → 2009-01-20 A (-1d) | 2009-01-21 → 2009-01-20 A (-1d) |  | 0% → 100% | 0d → none | 95, 96, Prepare 2.2.0 javadoc (Reuse 2.1.0 javadoc), 97, 98, 99, 100, 101, Update Landing Site → 95, 96, 97, 98, 99, 100, 101 |  |
| 104 | Milestone: Complete Configuration Management | 2009-01-21 → 2009-01-20 (-1d) | 2009-01-21 → 2009-01-20 (-1d) |  |  | 0d → 1d |  |  |
| 105 | **Environment** | 2009-01-19 → 2008-08-14 (-158d) |  | 2d → 104d |  |  |  |  |
| 109 | Milestone: Complete PROD deployment activities | 2009-01-21 → 2008-08-14 (-160d) | 2009-01-21 → 2008-08-14 (-160d) |  |  | 0d → 104d | 108 → none |  |
| 110 | Milestone: Complete 2.2.0 release | 2009-01-21 → 2009-01-20 (-1d) | 2009-01-21 → 2009-01-20 (-1d) |  |  | 0d → 1d |  |  |

## Version 9 (saved 2009-01-16)

Note of the change: Updated 2.2.0 schedule.

Last finish stays 2009-01-21. Complete tasks 73 → 81.

Changed:

| ID | Task | Start | Finish | Duration | Complete | Total float | Predecessors | Other |
| --- | --- | --- | --- | --- | --- | --- | --- | --- |
| 1 | **caArray 2.2.0** |  |  |  | 94% → 99% |  |  |  |
| 56 | **Construction RC3** |  | 2009-01-19 A |  | 66% → 100% | 0d → none |  |  |
| 62 | **Test** |  | 2009-01-19 A |  | 51% → 100% | 0d → none |  |  |
| 66 | App Scan | 2009-01-15 A | 2009-01-19 A |  | 0% → 100% | 0d → none |  |  |
| 67 | Verify defects on Stage | 2009-01-15 A | 2009-01-19 A |  | 0% → 100% | 0d → none |  |  |
| 68 | Regression Test on Stage including Perf testing | 2009-01-15 A | 2009-01-19 A |  | 0% → 100% | 0d → none |  |  |
| 69 | Installer Testing |  | 2009-01-12 A |  | 75% → 100% | 3d → none |  |  |
| 70 | LSD Compliance Testing | 2009-01-13 A | 2009-01-14 A |  | 0% → 100% | 3d → none |  |  |
| 71 | Milestone: RC3 testing completed | 2009-01-19 A | 2009-01-19 A |  | 0% → 100% | 0d → none |  |  |
| 72 | Milestone: Complete RC3 Construction | 2009-01-19 A | 2009-01-19 A |  | 0% → 100% | 0d → none |  |  |
| 105 | **Environment** | 2008-08-14 → 2009-01-19 A (+158d) |  | 104d → 2d |  |  |  |  |
| 106 | Milestone: Begin deployment to PROD activities | 2009-01-19 A | 2009-01-19 A |  | 0% → 100% | 2d → none |  |  |
| 109 | Milestone: Complete PROD deployment activities | 2008-08-14 → 2009-01-21 (+160d) | 2008-08-14 → 2009-01-21 (+160d) |  |  | 104d → 0d | none → 108 |  |
| 110 | Milestone: Announce 2.2.0 release | 2009-01-20 → 2009-01-21 (+1d) | 2009-01-20 → 2009-01-21 (+1d) |  |  | 1d → 0d |  | was named Milestone: Complete 2.2.0 release |
