# caarray_schedule_2_3_0

How a schedule from MS Project changed from version to version. A marks actual dates.

## Version 1 (saved 2008-12-09)

Note of the change: Created 2.3.0 project plan

| ID | WBS | Task | Duration | Start | Finish | Predecessors | Complete | Total float |
| --- | --- | --- | --- | --- | --- | --- | --- | --- |
| 1 | 1 | **caArray 2.3.0** | 152d | 2008-10-13 A | 2009-05-27 |  | 29% | 0d |
| 2 | 1.1 | **Inception and Elaboration** | 40d | 2008-10-13 A | 2008-12-10 |  | 99% | 0d |
| 3 |  | Milestone: Begin Inception and Elaboration | 0d | 2008-10-13 A | 2008-10-13 A |  | 100% |  |
| 4 | 1.1.2 | **Requirements analysis** | 40d | 2008-10-13 A | 2008-12-10 |  | 99% | 0d |
| 5 |  | Use cases | 15d | 2008-10-13 A | 2008-10-31 A |  | 100% |  |
| 6 |  | Design new service model and API | 15d | 2008-11-03 A | 2008-11-24 A | 5 | 100% |  |
| 7 |  | Internal and external reviews of new service model/API | 10d | 2008-11-25 A | 2008-12-10 A | 6 | 100% |  |
| 8 | 1.1.3 | **Project Management** | 40d | 2008-10-13 A | 2008-12-10 A |  | 100% |  |
| 9 |  | Define scope | 40d | 2008-10-13 A | 2008-12-10 A |  | 100% |  |
| 10 |  | Estimate LOEs | 40d | 2008-10-13 A | 2008-12-10 A |  | 100% |  |
| 11 |  | Milestone: Complete Inception and Elaboration | 0d | 2008-12-10 A | 2008-12-10 A | 4, 9, 10 | 100% |  |
| 12 | 1.2 | **Construction Alpha1** | 42d | 2008-12-10 | 2009-02-18 |  |  | 0d |
| 13 |  | Milestone: Begin Alpha1 Construction | 0d | 2008-12-10 | 2008-12-10 | 4 |  | 0d |
| 14 | 1.2.2 | **Implementation** | 24d | 2008-12-11 | 2009-01-23 |  |  | 0d |
| 15 |  | Implement Alpha1 items | 22d | 2008-12-11 | 2009-01-21 | 13 |  | 0d |
| 16 |  | Verify Alpha1 items on DEV tier | 1d | 2009-01-22 | 2009-01-22 | 15 |  | 0d |
| 17 |  | Milestone: Deploy Alpha1 to QA | 1d | 2009-01-23 | 2009-01-23 | 16 |  | 0d |
| 18 | 1.2.3 | **QA Testing** | 18d | 2009-01-26 | 2009-02-18 | 17 |  | 70d |
| 19 |  | Verify new items on QA | 10d | 2009-01-26 | 2009-02-06 |  |  | 44d |
| 20 |  | Regression test on QA | 3d | 2009-01-26 | 2009-01-28 |  |  | 51d |
| 21 |  | Deploy Alpha1 to STAGE | 1d | 2009-02-09 | 2009-02-09 | 19, 20 |  | 44d |
| 22 |  | Verify new items on STAGE | 7d | 2009-02-10 | 2009-02-18 | 21 |  | 44d |
| 23 |  | Regression test on STAGE | 3d | 2009-02-10 | 2009-02-12 | 21 |  | 48d |
| 24 |  | Installer testing | 3d | 2009-01-26 | 2009-01-28 |  |  | 85d |
| 25 |  | Milestone: Complete Alpha1 QA testing | 0d | 2009-02-18 | 2009-02-18 | 22, 23, 24 |  | 70d |
| 26 |  | Milestone: Complete Alpha1 Construction | 0d | 2009-02-18 | 2009-02-18 | 25 |  | 70d |
| 27 | 1.3 | **Construction Alpha2** | 40d | 2009-01-23 | 2009-03-20 |  |  | 0d |
| 28 |  | Milestone: Begin Alpha2 Construction | 0d | 2009-01-23 | 2009-01-23 | 17 |  | 0d |
| 29 | 1.3.2 | **Implementation** | 22d | 2009-01-26 | 2009-02-24 |  |  | 0d |
| 30 |  | Implement Alpha2 items | 20d | 2009-01-26 | 2009-02-20 | 28 |  | 0d |
| 31 |  | Verify Alpha1 items on DEV tier | 1d | 2009-02-23 | 2009-02-23 | 30 |  | 0d |
| 32 |  | Milestone: Deploy Alpha1 to QA | 1d | 2009-02-24 | 2009-02-24 | 31 |  | 0d |
| 33 | 1.3.3 | **QA Testing** | 18d | 2009-02-25 | 2009-03-20 | 32 |  | 48d |
| 34 |  | Verify new items on QA | 10d | 2009-02-25 | 2009-03-10 |  |  | 22d |
| 35 |  | Regression test on QA | 3d | 2009-02-25 | 2009-02-27 |  |  | 29d |
| 36 |  | Deploy Alpha2 to STAGE | 1d | 2009-03-11 | 2009-03-11 | 34, 35 |  | 22d |
| 37 |  | Verify new items on STAGE | 7d | 2009-03-12 | 2009-03-20 | 36 |  | 22d |
| 38 |  | Regression test on STAGE | 3d | 2009-03-12 | 2009-03-16 | 36 |  | 26d |
| 39 |  | Installer testing | 3d | 2009-02-25 | 2009-02-27 |  |  | 63d |
| 40 |  | Milestone: Complete Alpha2 QA testing | 0d | 2009-03-20 | 2009-03-20 | 37, 38, 39 |  | 48d |
| 41 |  | Milestone: Complete Alpha1 Construction | 0d | 2009-03-20 | 2009-03-20 | 40 |  | 22d |
| 42 | 1.4 | **Construction RC1** | 40d | 2009-02-24 | 2009-04-21 |  |  | 0d |
| 43 |  | Milestone: Begin RC1 Construction | 0d | 2009-02-24 | 2009-02-24 | 32 |  | 0d |
| 44 | 1.4.2 | **Implementation** | 22d | 2009-02-25 | 2009-03-26 |  |  | 0d |
| 45 |  | Implement RC1 items | 20d | 2009-02-25 | 2009-03-24 | 43 |  | 0d |
| 46 |  | Verify RC1 items on DEV tier | 1d | 2009-03-25 | 2009-03-25 | 45 |  | 0d |
| 47 |  | Milestone: Deploy RC1 to QA | 1d | 2009-03-26 | 2009-03-26 | 46 |  | 0d |
| 48 | 1.4.3 | **QA Testing** | 18d | 2009-03-27 | 2009-04-21 | 47 |  | 26d |
| 49 |  | Verify new items on QA | 10d | 2009-03-27 | 2009-04-09 |  |  | 26d |
| 50 |  | Regression test on QA | 3d | 2009-03-27 | 2009-03-31 |  |  | 33d |
| 51 |  | Deploy RC1 to STAGE | 1d | 2009-04-10 | 2009-04-10 | 49, 50 |  | 26d |
| 52 |  | Verify new items on STAGE | 7d | 2009-04-13 | 2009-04-21 | 51 |  | 26d |
| 53 |  | Regression test on STAGE | 3d | 2009-04-13 | 2009-04-15 | 51 |  | 30d |
| 54 |  | Installer testing | 3d | 2009-03-27 | 2009-03-31 |  |  | 41d |
| 55 |  | App scan on STAGE | 3d | 2009-04-13 | 2009-04-15 | 51 |  | 30d |
| 56 |  | Milestone: Complete RC1 QA testing | 0d | 2009-04-21 | 2009-04-21 | 52, 53, 55 |  | 26d |
| 57 |  | Milestone: Complete RC1 Construction | 0d | 2009-04-21 | 2009-04-21 | 56 |  | 26d |
| 58 | 1.5 | **Construction RC2** | 30d | 2009-03-26 | 2009-05-07 |  |  | 0d |
| 59 |  | Milestone: Begin RC2 Construction | 0d | 2009-03-26 | 2009-03-26 | 47 |  | 0d |
| 60 | 1.5.2 | **Implementation** | 12d | 2009-03-27 | 2009-04-13 |  |  | 0d |
| 61 |  | Implement RC2 items | 10d | 2009-03-27 | 2009-04-09 | 59 |  | 0d |
| 62 |  | Verify RC2 items on DEV tier | 1d | 2009-04-10 | 2009-04-10 | 61 |  | 0d |
| 63 |  | Milestone: Deploy RC2 to QA | 1d | 2009-04-13 | 2009-04-13 | 62 |  | 0d |
| 64 | 1.5.3 | **QA Testing** | 18d | 2009-04-14 | 2009-05-07 | 63 |  | 14d |
| 65 |  | Verify new items on QA | 10d | 2009-04-14 | 2009-04-27 |  |  | 12d |
| 66 |  | Regression test on QA | 3d | 2009-04-14 | 2009-04-16 |  |  | 19d |
| 67 |  | Deploy RC2 to STAGE | 1d | 2009-04-28 | 2009-04-28 | 65, 66 |  | 12d |
| 68 |  | Verify new items on STAGE | 7d | 2009-04-29 | 2009-05-07 | 67 |  | 12d |
| 69 |  | Regression test on STAGE | 3d | 2009-04-29 | 2009-05-01 | 67 |  | 16d |
| 70 |  | Installer testing | 3d | 2009-04-14 | 2009-04-16 |  |  | 29d |

| ID | WBS | Task | Duration | Start | Finish | Predecessors | Total float |
| --- | --- | --- | --- | --- | --- | --- | --- |
| 71 |  | Milestone: Complete RC2 QA testing | 0d | 2009-05-07 | 2009-05-07 | 68, 69, 70 | 14d |
| 72 |  | Milestone: Complete RC2 Construction | 0d | 2009-05-07 | 2009-05-07 | 71 | 14d |
| 73 | 1.6 | **Construction RC3** | 30d | 2009-04-13 | 2009-05-25 |  | 0d |
| 74 |  | Milestone: Begin RC3 Construction | 0d | 2009-04-13 | 2009-04-13 | 63 | 0d |
| 75 | 1.6.2 | **Implementation** | 12d | 2009-04-14 | 2009-04-29 |  | 0d |
| 76 |  | Implement RC3 items | 10d | 2009-04-14 | 2009-04-27 | 74 | 0d |
| 77 |  | Verify RC3 items on DEV tier | 1d | 2009-04-28 | 2009-04-28 | 76 | 0d |
| 78 |  | Milestone: Deploy RC3 to QA | 1d | 2009-04-29 | 2009-04-29 | 77 | 0d |
| 79 | 1.6.3 | **QA Testing** | 18d | 2009-04-30 | 2009-05-25 | 78 | 0d |
| 80 |  | Verify new items on QA | 10d | 2009-04-30 | 2009-05-13 |  | 0d |
| 81 |  | Regression test on QA | 3d | 2009-04-30 | 2009-05-04 |  | 7d |
| 82 |  | Deploy RC3 to STAGE | 1d | 2009-05-14 | 2009-05-14 | 80, 81 | 0d |
| 83 |  | Verify new items on STAGE | 7d | 2009-05-15 | 2009-05-25 | 82 | 0d |
| 84 |  | Regression test on STAGE | 3d | 2009-05-15 | 2009-05-19 | 82 | 4d |
| 85 |  | App scan on STAGE | 3d | 2009-05-15 | 2009-05-19 | 82 | 7d |
| 86 |  | Installer testing | 3d | 2009-04-30 | 2009-05-04 |  | 12d |
| 87 |  | LSD compliance testing | 3d | 2009-05-05 | 2009-05-07 | 86 | 12d |
| 88 |  | Milestone: Complete RC3 QA testing | 0d | 2009-05-25 | 2009-05-25 | 83, 84, 87 | 0d |
| 89 |  | Milestone: Complete RC3 Construction | 0d | 2009-05-25 | 2009-05-25 | 88 | 0d |
| 90 | 1.7 | **Transition** | 44d | 2009-03-27 | 2009-05-27 |  | 0d |
| 91 | 1.7.1 | **CBIIT Deployment** | 2d | 2009-05-26 | 2009-05-27 | 89 | 0d |
| 92 |  | Deploy to PROD | 1d | 2009-05-26 | 2009-05-26 |  | 0d |
| 93 |  | Verify PROD deployment | 1d | 2009-05-27 | 2009-05-27 | 92 | 0d |
| 94 |  | Milestone: Complete PROD deployment | 0d | 2009-05-27 | 2009-05-27 | 93 | 0d |
| 95 | 1.7.2 | **All Release Artifacts** | 44d | 2009-03-27 | 2009-05-27 |  | 0d |
| 96 | 1.7.2.1 | **User's Guide** | 21d | 2009-03-27 | 2009-04-24 |  | 22d |
| 97 |  | Send changes to Jill | 1d | 2009-03-27 | 2009-03-27 | 47 | 22d |
| 98 |  | Update User's Guide | 15d | 2009-03-30 | 2009-04-17 | 97 | 22d |
| 99 |  | Revise User's Guide after review | 5d | 2009-04-20 | 2009-04-24 | 98 | 22d |
| 100 |  | Milestone: Complete User's Guide | 0d | 2009-04-24 | 2009-04-24 | 99 | 22d |
| 101 | 1.7.2.2 | **Installation Guide** | 22d | 2009-04-14 | 2009-05-13 |  | 9d |
| 102 |  | Update BDA wiki page with installer properties | 1d | 2009-04-14 | 2009-04-14 | 63 | 9d |
| 103 |  | Send changes to Jill | 1d | 2009-04-15 | 2009-04-15 | 102 | 9d |
| 104 |  | Update Installation Guide | 15d | 2009-04-16 | 2009-05-06 | 103 | 9d |
| 105 |  | Revise Installation Guide after review | 5d | 2009-05-07 | 2009-05-13 | 104 | 9d |
| 106 |  | Milestone: Complete Installation Guide | 0d | 2009-05-13 | 2009-05-13 | 105 | 9d |
| 107 | 1.7.2.3 | **Other Release Artifacts** | 1d | 2009-05-26 | 2009-05-26 | 88 | 0d |
| 108 |  | Prepare Release Notes | 1d | 2009-05-26 | 2009-05-26 |  | 0d |
| 109 |  | Prepare Client Libraries and javadoc | 1d | 2009-05-26 | 2009-05-26 |  | 0d |
| 110 |  | Prepare installer packages | 1d | 2009-05-26 | 2009-05-26 |  | 0d |
| 111 |  | Milestone: Complete other release artifacts | 0d | 2009-05-26 | 2009-05-26 | 108, 109, 110 | 0d |
| 112 | 1.7.2.4 | **Update sites and Announce release** | 1d | 2009-05-27 | 2009-05-27 | 106, 100, 111 | 0d |
| 113 |  | Update caArray Gforge site | 1d | 2009-05-27 | 2009-05-27 |  | 0d |
| 114 |  | Update Download Centre page | 1d | 2009-05-27 | 2009-05-27 |  | 0d |
| 115 |  | Update Tools page | 1d | 2009-05-27 | 2009-05-27 |  | 0d |
| 116 |  | Update Landing site | 1d | 2009-05-27 | 2009-05-27 |  | 0d |
| 117 |  | Update LSD Gforge site | 1d | 2009-05-27 | 2009-05-27 |  | 0d |

## Version 2 (saved 2009-01-23)

Note of the change: add holidays to 230 project schedule

Last finish 2009-05-27 → 2009-06-05 (+9d).

Changed:

| ID | Task | Start | Finish | Duration | Total float | Other |
| --- | --- | --- | --- | --- | --- | --- |
| 1 | **caArray 2.3.0** |  | 2009-05-27 → 2009-06-05 (+9d) | 152d → 155d |  |  |
| 12 | **Construction Alpha1** |  | 2009-02-18 → 2009-02-26 (+8d) | 42d → 45d | 0d → 3d |  |
| 14 | **Implementation** | 2008-12-11 → 2008-12-16 (+5d) | 2009-01-23 → 2009-01-30 (+7d) |  |  |  |
| 15 | Implement Alpha1 items | 2008-12-11 → 2008-12-16 (+5d) | 2009-01-21 → 2009-01-28 (+7d) |  |  | constraint none → finish no earlier than 2009-01-28 |
| 16 | Verify Alpha1 items on DEV tier | 2009-01-22 → 2009-01-29 (+7d) | 2009-01-22 → 2009-01-29 (+7d) |  |  |  |
| 17 | Milestone: Deploy Alpha1 to QA | 2009-01-23 → 2009-01-30 (+7d) | 2009-01-23 → 2009-01-30 (+7d) |  |  |  |
| 18 | **QA Testing** | 2009-01-26 → 2009-02-02 (+7d) | 2009-02-18 → 2009-02-26 (+8d) |  |  |  |
| 19 | Verify new items on QA | 2009-01-26 → 2009-02-02 (+7d) | 2009-02-06 → 2009-02-13 (+7d) |  | 44d → 70d |  |
| 20 | Regression test on QA | 2009-01-26 → 2009-02-02 (+7d) | 2009-01-28 → 2009-02-04 (+7d) |  | 51d → 77d |  |
| 21 | Deploy Alpha1 to STAGE | 2009-02-09 → 2009-02-17 (+8d) | 2009-02-09 → 2009-02-17 (+8d) |  | 44d → 70d |  |
| 22 | Verify new items on STAGE | 2009-02-10 → 2009-02-18 (+8d) | 2009-02-18 → 2009-02-26 (+8d) |  | 44d → 70d |  |
| 23 | Regression test on STAGE | 2009-02-10 → 2009-02-18 (+8d) | 2009-02-12 → 2009-02-20 (+8d) |  | 48d → 74d |  |
| 24 | Installer testing | 2009-01-26 → 2009-02-02 (+7d) | 2009-01-28 → 2009-02-04 (+7d) |  |  |  |
| 25 | Milestone: Complete Alpha1 QA testing | 2009-02-18 → 2009-02-26 (+8d) | 2009-02-18 → 2009-02-26 (+8d) |  |  |  |
| 26 | Milestone: Complete Alpha1 Construction | 2009-02-18 → 2009-02-26 (+8d) | 2009-02-18 → 2009-02-26 (+8d) |  |  |  |
| 27 | **Construction Alpha2** | 2009-01-23 → 2009-01-30 (+7d) | 2009-03-20 → 2009-03-30 (+10d) |  |  |  |
| 28 | Milestone: Begin Alpha2 Construction | 2009-01-23 → 2009-01-30 (+7d) | 2009-01-23 → 2009-01-30 (+7d) |  |  |  |
| 29 | **Implementation** | 2009-01-26 → 2009-02-02 (+7d) | 2009-02-24 → 2009-03-04 (+8d) |  |  |  |
| 30 | Implement Alpha2 items | 2009-01-26 → 2009-02-02 (+7d) | 2009-02-20 → 2009-03-02 (+10d) |  |  |  |
| 31 | Verify Alpha1 items on DEV tier | 2009-02-23 → 2009-03-03 (+8d) | 2009-02-23 → 2009-03-03 (+8d) |  |  |  |
| 32 | Milestone: Deploy Alpha1 to QA | 2009-02-24 → 2009-03-04 (+8d) | 2009-02-24 → 2009-03-04 (+8d) |  |  |  |
| 33 | **QA Testing** | 2009-02-25 → 2009-03-05 (+8d) | 2009-03-20 → 2009-03-30 (+10d) |  |  |  |
| 34 | Verify new items on QA | 2009-02-25 → 2009-03-05 (+8d) | 2009-03-10 → 2009-03-18 (+8d) |  | 22d → 48d |  |
| 35 | Regression test on QA | 2009-02-25 → 2009-03-05 (+8d) | 2009-02-27 → 2009-03-09 (+10d) |  | 29d → 55d |  |
| 36 | Deploy Alpha2 to STAGE | 2009-03-11 → 2009-03-19 (+8d) | 2009-03-11 → 2009-03-19 (+8d) |  | 22d → 48d |  |
| 37 | Verify new items on STAGE | 2009-03-12 → 2009-03-20 (+8d) | 2009-03-20 → 2009-03-30 (+10d) |  | 22d → 48d |  |
| 38 | Regression test on STAGE | 2009-03-12 → 2009-03-20 (+8d) | 2009-03-16 → 2009-03-24 (+8d) |  | 26d → 52d |  |
| 39 | Installer testing | 2009-02-25 → 2009-03-05 (+8d) | 2009-02-27 → 2009-03-09 (+10d) |  |  |  |
| 40 | Milestone: Complete Alpha2 QA testing | 2009-03-20 → 2009-03-30 (+10d) | 2009-03-20 → 2009-03-30 (+10d) |  |  |  |
| 41 | Milestone: Complete Alpha1 Construction | 2009-03-20 → 2009-03-30 (+10d) | 2009-03-20 → 2009-03-30 (+10d) |  | 22d → 48d |  |
| 42 | **Construction RC1** | 2009-02-24 → 2009-03-04 (+8d) | 2009-04-21 → 2009-04-29 (+8d) |  |  |  |
| 43 | Milestone: Begin RC1 Construction | 2009-02-24 → 2009-03-04 (+8d) | 2009-02-24 → 2009-03-04 (+8d) |  |  |  |
| 44 | **Implementation** | 2009-02-25 → 2009-03-05 (+8d) | 2009-03-26 → 2009-04-03 (+8d) |  |  |  |
| 45 | Implement RC1 items | 2009-02-25 → 2009-03-05 (+8d) | 2009-03-24 → 2009-04-01 (+8d) |  |  |  |
| 46 | Verify RC1 items on DEV tier | 2009-03-25 → 2009-04-02 (+8d) | 2009-03-25 → 2009-04-02 (+8d) |  |  |  |
| 47 | Milestone: Deploy RC1 to QA | 2009-03-26 → 2009-04-03 (+8d) | 2009-03-26 → 2009-04-03 (+8d) |  |  |  |
| 48 | **QA Testing** | 2009-03-27 → 2009-04-06 (+10d) | 2009-04-21 → 2009-04-29 (+8d) |  |  |  |
| 49 | Verify new items on QA | 2009-03-27 → 2009-04-06 (+10d) | 2009-04-09 → 2009-04-17 (+8d) |  |  |  |
| 50 | Regression test on QA | 2009-03-27 → 2009-04-06 (+10d) | 2009-03-31 → 2009-04-08 (+8d) |  |  |  |
| 51 | Deploy RC1 to STAGE | 2009-04-10 → 2009-04-20 (+10d) | 2009-04-10 → 2009-04-20 (+10d) |  |  |  |
| 52 | Verify new items on STAGE | 2009-04-13 → 2009-04-21 (+8d) | 2009-04-21 → 2009-04-29 (+8d) |  |  |  |
| 53 | Regression test on STAGE | 2009-04-13 → 2009-04-21 (+8d) | 2009-04-15 → 2009-04-23 (+8d) |  |  |  |
| 54 | Installer testing | 2009-03-27 → 2009-04-06 (+10d) | 2009-03-31 → 2009-04-08 (+8d) |  |  |  |
| 55 | App scan on STAGE | 2009-04-13 → 2009-04-21 (+8d) | 2009-04-15 → 2009-04-23 (+8d) |  |  |  |
| 56 | Milestone: Complete RC1 QA testing | 2009-04-21 → 2009-04-29 (+8d) | 2009-04-21 → 2009-04-29 (+8d) |  |  |  |
| 57 | Milestone: Complete RC1 Construction | 2009-04-21 → 2009-04-29 (+8d) | 2009-04-21 → 2009-04-29 (+8d) |  |  |  |
| 58 | **Construction RC2** | 2009-03-26 → 2009-04-03 (+8d) | 2009-05-07 → 2009-05-15 (+8d) |  |  |  |
| 59 | Milestone: Begin RC2 Construction | 2009-03-26 → 2009-04-03 (+8d) | 2009-03-26 → 2009-04-03 (+8d) |  |  |  |
| 60 | **Implementation** | 2009-03-27 → 2009-04-06 (+10d) | 2009-04-13 → 2009-04-21 (+8d) |  |  |  |
| 61 | Implement RC2 items | 2009-03-27 → 2009-04-06 (+10d) | 2009-04-09 → 2009-04-17 (+8d) |  |  |  |
| 62 | Verify RC2 items on DEV tier | 2009-04-10 → 2009-04-20 (+10d) | 2009-04-10 → 2009-04-20 (+10d) |  |  |  |
| 63 | Milestone: Deploy RC2 to QA | 2009-04-13 → 2009-04-21 (+8d) | 2009-04-13 → 2009-04-21 (+8d) |  |  |  |
| 64 | **QA Testing** | 2009-04-14 → 2009-04-22 (+8d) | 2009-05-07 → 2009-05-15 (+8d) |  |  |  |
| 65 | Verify new items on QA | 2009-04-14 → 2009-04-22 (+8d) | 2009-04-27 → 2009-05-05 (+8d) |  | 12d → 14d |  |
| 66 | Regression test on QA | 2009-04-14 → 2009-04-22 (+8d) | 2009-04-16 → 2009-04-24 (+8d) |  | 19d → 21d |  |
| 67 | Deploy RC2 to STAGE | 2009-04-28 → 2009-05-06 (+8d) | 2009-04-28 → 2009-05-06 (+8d) |  | 12d → 14d |  |
| 68 | Verify new items on STAGE | 2009-04-29 → 2009-05-07 (+8d) | 2009-05-07 → 2009-05-15 (+8d) |  | 12d → 14d |  |
| 69 | Regression test on STAGE | 2009-04-29 → 2009-05-07 (+8d) | 2009-05-01 → 2009-05-11 (+10d) |  | 16d → 18d |  |
| 70 | Installer testing | 2009-04-14 → 2009-04-22 (+8d) | 2009-04-16 → 2009-04-24 (+8d) |  |  |  |
| 71 | Milestone: Complete RC2 QA testing | 2009-05-07 → 2009-05-15 (+8d) | 2009-05-07 → 2009-05-15 (+8d) |  |  |  |
| 72 | Milestone: Complete RC2 Construction | 2009-05-07 → 2009-05-15 (+8d) | 2009-05-07 → 2009-05-15 (+8d) |  |  |  |
| 73 | **Construction RC3** | 2009-04-13 → 2009-04-21 (+8d) | 2009-05-25 → 2009-06-03 (+9d) |  |  |  |
| 74 | Milestone: Begin RC3 Construction | 2009-04-13 → 2009-04-21 (+8d) | 2009-04-13 → 2009-04-21 (+8d) |  |  |  |
| 75 | **Implementation** | 2009-04-14 → 2009-04-22 (+8d) | 2009-04-29 → 2009-05-07 (+8d) |  |  |  |
| 76 | Implement RC3 items | 2009-04-14 → 2009-04-22 (+8d) | 2009-04-27 → 2009-05-05 (+8d) |  |  |  |
| 77 | Verify RC3 items on DEV tier | 2009-04-28 → 2009-05-06 (+8d) | 2009-04-28 → 2009-05-06 (+8d) |  |  |  |
| 78 | Milestone: Deploy RC3 to QA | 2009-04-29 → 2009-05-07 (+8d) | 2009-04-29 → 2009-05-07 (+8d) |  |  |  |
| 79 | **QA Testing** | 2009-04-30 → 2009-05-08 (+8d) | 2009-05-25 → 2009-06-03 (+9d) |  |  |  |
| 80 | Verify new items on QA | 2009-04-30 → 2009-05-08 (+8d) | 2009-05-13 → 2009-05-21 (+8d) |  |  |  |
| 81 | Regression test on QA | 2009-04-30 → 2009-05-08 (+8d) | 2009-05-04 → 2009-05-12 (+8d) |  |  |  |

| ID | Task | Start | Finish | Total float |
| --- | --- | --- | --- | --- |
| 82 | Deploy RC3 to STAGE | 2009-05-14 → 2009-05-22 (+8d) | 2009-05-14 → 2009-05-22 (+8d) |  |
| 83 | Verify new items on STAGE | 2009-05-15 → 2009-05-26 (+11d) | 2009-05-25 → 2009-06-03 (+9d) |  |
| 84 | Regression test on STAGE | 2009-05-15 → 2009-05-26 (+11d) | 2009-05-19 → 2009-05-28 (+9d) |  |
| 85 | App scan on STAGE | 2009-05-15 → 2009-05-26 (+11d) | 2009-05-19 → 2009-05-28 (+9d) | 7d → 6d |
| 86 | Installer testing | 2009-04-30 → 2009-05-08 (+8d) | 2009-05-04 → 2009-05-12 (+8d) |  |
| 87 | LSD compliance testing | 2009-05-05 → 2009-05-13 (+8d) | 2009-05-07 → 2009-05-15 (+8d) |  |
| 88 | Milestone: Complete RC3 QA testing | 2009-05-25 → 2009-06-03 (+9d) | 2009-05-25 → 2009-06-03 (+9d) |  |
| 89 | Milestone: Complete RC3 Construction | 2009-05-25 → 2009-06-03 (+9d) | 2009-05-25 → 2009-06-03 (+9d) |  |
| 90 | **Transition** | 2009-03-27 → 2009-04-06 (+10d) | 2009-05-27 → 2009-06-05 (+9d) |  |
| 91 | **CBIIT Deployment** | 2009-05-26 → 2009-06-04 (+9d) | 2009-05-27 → 2009-06-05 (+9d) |  |
| 92 | Deploy to PROD | 2009-05-26 → 2009-06-04 (+9d) | 2009-05-26 → 2009-06-04 (+9d) |  |
| 93 | Verify PROD deployment | 2009-05-27 → 2009-06-05 (+9d) | 2009-05-27 → 2009-06-05 (+9d) |  |
| 94 | Milestone: Complete PROD deployment | 2009-05-27 → 2009-06-05 (+9d) | 2009-05-27 → 2009-06-05 (+9d) |  |
| 95 | **All Release Artifacts** | 2009-03-27 → 2009-04-06 (+10d) | 2009-05-27 → 2009-06-05 (+9d) |  |
| 96 | **User's Guide** | 2009-03-27 → 2009-04-06 (+10d) | 2009-04-24 → 2009-05-04 (+10d) |  |
| 97 | Send changes to Jill | 2009-03-27 → 2009-04-06 (+10d) | 2009-03-27 → 2009-04-06 (+10d) |  |
| 98 | Update User's Guide | 2009-03-30 → 2009-04-07 (+8d) | 2009-04-17 → 2009-04-27 (+10d) |  |
| 99 | Revise User's Guide after review | 2009-04-20 → 2009-04-28 (+8d) | 2009-04-24 → 2009-05-04 (+10d) |  |
| 100 | Milestone: Complete User's Guide | 2009-04-24 → 2009-05-04 (+10d) | 2009-04-24 → 2009-05-04 (+10d) |  |
| 101 | **Installation Guide** | 2009-04-14 → 2009-04-22 (+8d) | 2009-05-13 → 2009-05-21 (+8d) |  |
| 102 | Update BDA wiki page with installer properties | 2009-04-14 → 2009-04-22 (+8d) | 2009-04-14 → 2009-04-22 (+8d) |  |
| 103 | Send changes to Jill | 2009-04-15 → 2009-04-23 (+8d) | 2009-04-15 → 2009-04-23 (+8d) |  |
| 104 | Update Installation Guide | 2009-04-16 → 2009-04-24 (+8d) | 2009-05-06 → 2009-05-14 (+8d) |  |
| 105 | Revise Installation Guide after review | 2009-05-07 → 2009-05-15 (+8d) | 2009-05-13 → 2009-05-21 (+8d) |  |
| 106 | Milestone: Complete Installation Guide | 2009-05-13 → 2009-05-21 (+8d) | 2009-05-13 → 2009-05-21 (+8d) |  |
| 107 | **Other Release Artifacts** | 2009-05-26 → 2009-06-04 (+9d) | 2009-05-26 → 2009-06-04 (+9d) |  |
| 108 | Prepare Release Notes | 2009-05-26 → 2009-06-04 (+9d) | 2009-05-26 → 2009-06-04 (+9d) |  |
| 109 | Prepare Client Libraries and javadoc | 2009-05-26 → 2009-06-04 (+9d) | 2009-05-26 → 2009-06-04 (+9d) |  |
| 110 | Prepare installer packages | 2009-05-26 → 2009-06-04 (+9d) | 2009-05-26 → 2009-06-04 (+9d) |  |
| 111 | Milestone: Complete other release artifacts | 2009-05-26 → 2009-06-04 (+9d) | 2009-05-26 → 2009-06-04 (+9d) |  |
| 112 | **Update sites and Announce release** | 2009-05-27 → 2009-06-05 (+9d) | 2009-05-27 → 2009-06-05 (+9d) |  |
| 113 | Update caArray Gforge site | 2009-05-27 → 2009-06-05 (+9d) | 2009-05-27 → 2009-06-05 (+9d) |  |
| 114 | Update Download Centre page | 2009-05-27 → 2009-06-05 (+9d) | 2009-05-27 → 2009-06-05 (+9d) |  |
| 115 | Update Tools page | 2009-05-27 → 2009-06-05 (+9d) | 2009-05-27 → 2009-06-05 (+9d) |  |
| 116 | Update Landing site | 2009-05-27 → 2009-06-05 (+9d) | 2009-05-27 → 2009-06-05 (+9d) |  |
| 117 | Update LSD Gforge site | 2009-05-27 → 2009-06-05 (+9d) | 2009-05-27 → 2009-06-05 (+9d) |  |

## Version 3 (saved 2009-01-23)

Last finish 2009-06-05 → 2009-06-16 (+11d).

Added:

| ID | Task | Duration | Start | Finish | Predecessors |
| --- | --- | --- | --- | --- | --- |
| 51 | Deployment test on QA-VM | 3d | 2009-04-09 | 2009-04-13 | 50 |
| 83 | Deployment test on QA-VM | 3d | 2009-05-13 | 2009-05-15 | 82 |
| 120 | caArray 2.3.0 Closeout | 0d | 2009-06-15 | 2009-06-15 | 97 |

Changed:

| ID | Task | Start | Finish | Duration | Complete | Total float | Predecessors | Other |
| --- | --- | --- | --- | --- | --- | --- | --- | --- |
| 1 | **caArray 2.3.0** |  | 2009-06-05 → 2009-06-16 (+11d) | 155d → 162d | 29% → 28% |  |  |  |
| 31 | Verify Alpha2 items on DEV tier |  |  |  |  |  |  | was named Verify Alpha1 items on DEV tier |
| 32 | Milestone: Deploy Alpha2 to QA |  |  |  |  |  |  | was named Milestone: Deploy Alpha1 to QA |
| 41 | Milestone: Complete Alpha2 Construction |  |  |  |  |  |  | was named Milestone: Complete Alpha1 Construction |
| 52 | Deploy RC1 to STAGE |  |  |  |  |  | 49, 50 → 49 |  |
| 74 | **Construction RC3** |  | 2009-06-03 → 2009-06-08 (+5d) | 30d → 33d |  |  |  |  |
| 80 | **QA Testing** |  | 2009-06-03 → 2009-06-08 (+5d) | 18d → 21d |  |  |  |  |
| 87 | App scan on STAGE | 2009-05-26 → 2009-06-04 (+9d) | 2009-05-28 → 2009-06-08 (+11d) |  |  | 6d → 2d | 84 → 85, 86 |  |
| 89 | LSD compliance testing | 2009-05-13 → 2009-06-04 (+22d) | 2009-05-15 → 2009-06-08 (+24d) |  |  | 12d → 0d | 88 → 88, 85, 86 |  |
| 90 | Milestone: Complete RC3 QA testing | 2009-06-03 → 2009-06-08 (+5d) | 2009-06-03 → 2009-06-08 (+5d) |  |  |  |  |  |
| 91 | Milestone: Complete RC3 Construction | 2009-06-03 → 2009-06-08 (+5d) | 2009-06-03 → 2009-06-08 (+5d) |  |  |  |  |  |
| 92 | **Transition** |  | 2009-06-05 → 2009-06-16 (+11d) | 44d → 51d |  |  |  |  |
| 93 | **CBIIT Deployment** | 2009-06-04 → 2009-06-09 (+5d) | 2009-06-05 → 2009-06-16 (+11d) | 2d → 6d |  |  |  |  |
| 94 | Deploy to PROD | 2009-06-04 → 2009-06-09 (+5d) | 2009-06-04 → 2009-06-11 (+7d) | 1d → 3d |  |  |  |  |
| 95 | Verify PROD deployment | 2009-06-05 → 2009-06-12 (+7d) | 2009-06-05 → 2009-06-16 (+11d) | 1d → 3d |  |  |  |  |
| 96 | Milestone: Complete PROD deployment | 2009-06-05 → 2009-06-16 (+11d) | 2009-06-05 → 2009-06-16 (+11d) |  |  |  |  |  |
| 97 | **All Release Artifacts** |  | 2009-06-05 → 2009-06-15 (+10d) | 44d → 50d |  | 0d → 1d |  |  |
| 109 | **Other Release Artifacts** | 2009-06-04 → 2009-06-09 (+5d) | 2009-06-04 → 2009-06-09 (+5d) |  |  | 0d → 1d |  |  |
| 110 | Prepare Release Notes | 2009-06-04 → 2009-06-09 (+5d) | 2009-06-04 → 2009-06-09 (+5d) |  |  | 0d → 1d |  |  |
| 111 | Prepare Client Libraries and javadoc | 2009-06-04 → 2009-06-09 (+5d) | 2009-06-04 → 2009-06-09 (+5d) |  |  | 0d → 1d |  |  |
| 112 | Prepare installer packages | 2009-06-04 → 2009-06-09 (+5d) | 2009-06-04 → 2009-06-09 (+5d) |  |  | 0d → 1d |  |  |
| 113 | Milestone: Complete other release artifacts | 2009-06-04 → 2009-06-09 (+5d) | 2009-06-04 → 2009-06-09 (+5d) |  |  | 0d → 1d |  |  |
| 114 | **Update sites and Announce release** | 2009-06-05 → 2009-06-10 (+5d) | 2009-06-05 → 2009-06-15 (+10d) | 1d → 4d |  | 0d → 1d |  |  |
| 115 | Update caArray Gforge site | 2009-06-05 → 2009-06-10 (+5d) | 2009-06-05 → 2009-06-10 (+5d) |  |  | 0d → 4d |  |  |
| 116 | Update Download Centre page | 2009-06-05 → 2009-06-10 (+5d) | 2009-06-05 → 2009-06-15 (+10d) | 1d → 4d |  | 0d → 1d |  |  |
| 117 | Update Tools page | 2009-06-05 → 2009-06-10 (+5d) | 2009-06-05 → 2009-06-10 (+5d) |  |  | 0d → 4d |  |  |
| 118 | Update Landing site | 2009-06-05 → 2009-06-10 (+5d) | 2009-06-05 → 2009-06-10 (+5d) |  |  | 0d → 4d |  |  |
| 119 | Update LSD Gforge site | 2009-06-05 → 2009-06-10 (+5d) | 2009-06-05 → 2009-06-10 (+5d) |  |  | 0d → 4d |  |  |

## Version 4 (saved 2009-02-04)

Note of the change: adding more days to testing 2.3.0 features in 2.3.0 schedule

Last finish stays 2009-06-16.

Changed:

| ID | Task | Start | Finish | Duration | Total float | Predecessors |
| --- | --- | --- | --- | --- | --- | --- |
| 67 | Regression test on QA |  | 2009-04-24 → 2009-04-28 (+4d) | 3d → 5d | 21d → 19d |  |
| 83 | Deployment test on QA-VM |  | 2009-05-15 → 2009-05-19 (+4d) | 3d → 5d | 14d → 19d |  |
| 120 | caArray 2.3.0 Closeout | 2009-06-15 → 2009-06-16 (+1d) | 2009-06-15 → 2009-06-16 (+1d) |  | 1d → 0d | 97 → 97, 96 |

## Version 5 (saved 2009-02-06)

Note of the change: added more time to QA testing, modified dependency of tasks.

Last finish 2009-06-16 → 2009-06-29 (+13d).

Added:

| ID | Task | Duration | Start | Finish | Predecessors |
| --- | --- | --- | --- | --- | --- |
| 71 | App scan on STAGE | 3d | 2009-05-18 | 2009-05-20 | 67 |

Removed: 24 Installer testing

Changed:

| ID | Task | Start | Finish | Duration | Complete | Total float | Predecessors | Other |
| --- | --- | --- | --- | --- | --- | --- | --- | --- |
| 1 | **caArray 2.3.0** |  | 2009-06-16 → 2009-06-29 (+13d) | 162d → 171d | 28% → 29% |  |  |  |
| 12 | **Construction Alpha1** |  | 2009-02-26 → 2009-02-27 (+1d) | 45d → 46d |  | 3d → 27d |  |  |
| 14 | **Implementation** |  | 2009-01-30 → 2009-02-02 (+3d) | 24d → 25d |  | 0d → 24d |  |  |
| 17 | Milestone: Deploy Alpha1 to QA | 2009-01-30 → 2009-02-02 (+3d) | 2009-01-30 → 2009-02-02 (+3d) |  |  |  | 16 → none | constraint none → start no earlier than 2009-02-02 |
| 18 | **QA Testing** | 2009-02-02 → 2009-02-03 (+1d) | 2009-02-26 → 2009-02-27 (+1d) |  |  | 77d → 6d |  |  |
| 19 | Verify new items on QA | 2009-02-02 → 2009-02-03 (+1d) | 2009-02-13 → 2009-02-17 (+4d) |  |  | 70d → 6d |  |  |
| 20 | Regression test on QA | 2009-02-02 → 2009-02-03 (+1d) | 2009-02-04 → 2009-02-05 (+1d) |  |  | 77d → 84d |  |  |
| 21 | Deploy Alpha1 to STAGE | 2009-02-17 → 2009-02-18 (+1d) | 2009-02-17 → 2009-02-18 (+1d) |  |  | 70d → 6d |  |  |
| 22 | Verify new items on STAGE | 2009-02-18 → 2009-02-19 (+1d) | 2009-02-26 → 2009-02-27 (+1d) |  |  | 70d → 6d |  |  |
| 23 | Regression test on STAGE | 2009-02-18 → 2009-02-19 (+1d) | 2009-02-20 → 2009-02-23 (+3d) |  |  | 74d → 19d |  |  |
| 24 | Milestone: Complete Alpha1 QA testing | 2009-02-26 → 2009-02-27 (+1d) | 2009-02-26 → 2009-02-27 (+1d) |  |  | 77d → 94d | 22, 23, Installer testing → 22, 23 |  |
| 25 | Milestone: Complete Alpha1 Construction | 2009-02-26 → 2009-02-27 (+1d) | 2009-02-26 → 2009-02-27 (+1d) |  |  | 70d → 94d |  |  |
| 26 | **Construction Alpha2** | 2009-01-30 → 2009-02-02 (+3d) | 2009-03-30 → 2009-04-02 (+3d) | 40d → 42d |  |  |  |  |
| 27 | Milestone: Begin Alpha2 Construction | 2009-01-30 → 2009-02-02 (+3d) | 2009-01-30 → 2009-02-02 (+3d) |  |  |  |  |  |
| 28 | **Implementation** | 2009-02-02 → 2009-02-03 (+1d) | 2009-03-04 → 2009-03-05 (+1d) |  |  |  |  |  |
| 29 | Implement Alpha2 items | 2009-02-02 → 2009-02-03 (+1d) | 2009-03-02 → 2009-03-03 (+1d) |  |  |  |  |  |
| 30 | Verify Alpha2 items on DEV tier | 2009-03-03 → 2009-03-04 (+1d) | 2009-03-03 → 2009-03-04 (+1d) |  |  |  |  |  |
| 31 | Milestone: Deploy Alpha2 to QA | 2009-03-04 → 2009-03-05 (+1d) | 2009-03-04 → 2009-03-05 (+1d) |  |  |  |  |  |
| 32 | **QA Testing** | 2009-03-05 → 2009-03-06 (+1d) | 2009-03-30 → 2009-04-02 (+3d) | 18d → 20d |  | 55d → 2d |  |  |
| 33 | Verify new items on QA | 2009-03-05 → 2009-03-06 (+1d) | 2009-03-18 → 2009-03-23 (+5d) | 10d → 12d |  | 48d → 2d | none → 31, 22 |  |
| 34 | Regression test on QA | 2009-03-05 → 2009-03-06 (+1d) | 2009-03-09 → 2009-03-10 (+1d) |  |  | 55d → 11d | none → 31, 23 |  |
| 35 | Deploy Alpha2 to STAGE | 2009-03-19 → 2009-03-24 (+5d) | 2009-03-19 → 2009-03-24 (+5d) |  |  | 48d → 53d |  |  |
| 36 | Verify new items on STAGE | 2009-03-20 → 2009-03-25 (+5d) | 2009-03-30 → 2009-04-02 (+3d) |  |  | 48d → 53d |  |  |
| 37 | Regression test on STAGE | 2009-03-20 → 2009-03-25 (+5d) | 2009-03-24 → 2009-03-27 (+3d) |  |  | 52d → 57d |  |  |
| 38 | Installer testing | 2009-03-05 → 2009-03-24 (+19d) | 2009-03-09 → 2009-03-26 (+17d) |  |  | 70d → 58d | none → 33 |  |
| 39 | Milestone: Complete Alpha2 QA testing | 2009-03-30 → 2009-04-02 (+3d) | 2009-03-30 → 2009-04-02 (+3d) |  |  | 55d → 70d |  |  |
| 40 | Milestone: Complete Alpha2 Construction | 2009-03-30 → 2009-04-02 (+3d) | 2009-03-30 → 2009-04-02 (+3d) |  |  | 48d → 53d |  |  |
| 41 | **Construction RC1** | 2009-03-04 → 2009-03-05 (+1d) | 2009-04-29 → 2009-05-07 (+8d) | 40d → 45d |  |  |  |  |
| 42 | Milestone: Begin RC1 Construction | 2009-03-04 → 2009-03-05 (+1d) | 2009-03-04 → 2009-03-05 (+1d) |  |  |  |  |  |
| 43 | **Implementation** | 2009-03-05 → 2009-03-06 (+1d) | 2009-04-03 → 2009-04-06 (+3d) |  |  |  |  |  |
| 44 | Implement RC1 items | 2009-03-05 → 2009-03-06 (+1d) | 2009-04-01 → 2009-04-02 (+1d) |  |  |  |  |  |
| 45 | Verify RC1 items on DEV tier | 2009-04-02 → 2009-04-03 (+1d) | 2009-04-02 → 2009-04-03 (+1d) |  |  |  |  |  |
| 46 | Milestone: Deploy RC1 to QA | 2009-04-03 → 2009-04-06 (+3d) | 2009-04-03 → 2009-04-06 (+3d) |  |  |  |  |  |
| 47 | **QA Testing** | 2009-04-06 → 2009-04-07 (+1d) | 2009-04-29 → 2009-05-07 (+8d) | 18d → 23d |  | 33d → 0d |  |  |
| 48 | Verify new items on QA | 2009-04-06 → 2009-04-07 (+1d) | 2009-04-17 → 2009-04-22 (+5d) | 10d → 12d |  | 26d → 0d | none → 46, 36 |  |
| 49 | Regression test on QA | 2009-04-06 → 2009-04-07 (+1d) | 2009-04-08 → 2009-04-09 (+1d) |  |  | 38d → 45d | none → 37 |  |
| 50 | Deployment test on QA-VM | 2009-04-09 → 2009-04-10 (+1d) | 2009-04-13 → 2009-04-14 (+1d) |  |  | 38d → 45d |  |  |
| 51 | Deploy RC1 to STAGE | 2009-04-20 → 2009-04-23 (+3d) | 2009-04-20 → 2009-04-23 (+3d) |  |  | 26d → 0d | 48 → 48, 49 |  |
| 52 | Verify new items on STAGE | 2009-04-21 → 2009-04-24 (+3d) | 2009-04-29 → 2009-05-04 (+5d) |  |  | 26d → 0d |  |  |
| 53 | Regression test on STAGE | 2009-04-21 → 2009-04-24 (+3d) | 2009-04-23 → 2009-04-28 (+5d) |  |  | 30d → 38d |  |  |
| 54 | Installer testing | 2009-04-06 → 2009-04-07 (+1d) | 2009-04-08 → 2009-04-09 (+1d) |  |  | 48d → 65d |  |  |
| 55 | App scan on STAGE | 2009-04-21 → 2009-05-05 (+14d) | 2009-04-23 → 2009-05-07 (+14d) |  |  | 30d → 45d | 51 → 51, 52, 53 |  |
| 56 | Milestone: Complete RC1 QA testing | 2009-04-29 → 2009-04-23 (-6d) | 2009-04-29 → 2009-04-23 (-6d) |  |  | 33d → 53d | 52, 53, 55 → 51 |  |
| 57 | Milestone: Complete RC1 Construction | 2009-04-29 → 2009-04-23 (-6d) | 2009-04-29 → 2009-04-23 (-6d) |  |  | 26d → 53d |  |  |
| 58 | **Construction RC2** | 2009-04-03 → 2009-04-06 (+3d) | 2009-05-15 → 2009-05-27 (+12d) | 30d → 36d |  | 0d → 8d |  |  |
| 59 | Milestone: Begin RC2 Construction | 2009-04-03 → 2009-04-06 (+3d) | 2009-04-03 → 2009-04-06 (+3d) |  |  | 0d → 11d |  |  |
| 60 | **Implementation** | 2009-04-06 → 2009-04-07 (+1d) | 2009-04-21 → 2009-04-22 (+1d) |  |  | 0d → 8d |  |  |
| 61 | Implement RC2 items | 2009-04-06 → 2009-04-07 (+1d) | 2009-04-17 → 2009-04-20 (+3d) |  |  | 0d → 11d |  |  |
| 62 | Verify RC2 items on DEV tier | 2009-04-20 → 2009-04-21 (+1d) | 2009-04-20 → 2009-04-21 (+1d) |  |  | 0d → 11d |  |  |
| 63 | Milestone: Deploy RC2 to QA | 2009-04-21 → 2009-04-22 (+1d) | 2009-04-21 → 2009-04-22 (+1d) |  |  | 0d → 11d |  |  |
| 64 | **QA Testing** | 2009-04-22 → 2009-04-23 (+1d) | 2009-05-15 → 2009-05-27 (+12d) | 18d → 24d |  | 14d → 8d |  |  |
| 65 | Verify new items on QA | 2009-04-22 → 2009-05-05 (+13d) | 2009-05-05 → 2009-05-14 (+9d) | 10d → 8d |  | 14d → 0d | none → 63, 52 |  |
| 66 | Regression test on QA | 2009-04-22 → 2009-04-29 (+7d) | 2009-04-28 → 2009-05-01 (+3d) | 5d → 3d |  | 19d → 11d | none → 63, 53 |  |
| 67 | Deploy RC2 to STAGE | 2009-05-06 → 2009-05-15 (+9d) | 2009-05-06 → 2009-05-15 (+9d) |  |  | 14d → 0d |  |  |
| 68 | Verify new items on STAGE | 2009-05-07 → 2009-05-18 (+11d) | 2009-05-15 → 2009-05-27 (+12d) |  |  | 14d → 0d |  |  |
| 69 | Regression test on STAGE | 2009-05-07 → 2009-05-18 (+11d) | 2009-05-11 → 2009-05-20 (+9d) |  |  | 18d → 6d |  |  |
| 70 | Installer testing | 2009-04-22 → 2009-04-23 (+1d) | 2009-04-24 → 2009-04-27 (+3d) |  |  | 36d → 51d |  |  |
| 72 | Milestone: Complete RC2 QA testing | 2009-05-15 → 2009-05-27 (+12d) | 2009-05-15 → 2009-05-27 (+12d) |  |  | 21d → 23d | 68, 69, 70 → 68, 69, 71 |  |
| 73 | Milestone: Complete RC2 Construction | 2009-05-15 → 2009-05-27 (+12d) | 2009-05-15 → 2009-05-27 (+12d) |  |  | 14d → 23d |  |  |
| 74 | **Construction RC3** | 2009-04-21 → 2009-04-22 (+1d) | 2009-06-08 → 2009-06-22 (+14d) | 33d → 42d |  | 0d → 5d |  |  |
| 75 | Milestone: Begin RC3 Construction | 2009-04-21 → 2009-04-22 (+1d) | 2009-04-21 → 2009-04-22 (+1d) |  |  | 0d → 14d |  |  |
| 76 | **Implementation** | 2009-04-22 → 2009-04-23 (+1d) | 2009-05-07 → 2009-05-08 (+1d) |  |  | 0d → 14d |  |  |
| 77 | Implement RC3 items | 2009-04-22 → 2009-04-23 (+1d) | 2009-05-05 → 2009-05-06 (+1d) |  |  | 0d → 14d |  |  |
| 78 | Verify RC3 items on DEV tier | 2009-05-06 → 2009-05-07 (+1d) | 2009-05-06 → 2009-05-07 (+1d) |  |  | 0d → 14d |  |  |
| 79 | Milestone: Deploy RC3 to QA | 2009-05-07 → 2009-05-08 (+1d) | 2009-05-07 → 2009-05-08 (+1d) |  |  | 0d → 14d |  |  |
| 80 | **QA Testing** | 2009-05-08 → 2009-05-11 (+3d) | 2009-06-08 → 2009-06-22 (+14d) | 21d → 30d |  | 0d → 5d |  |  |
| 81 | Verify new items on QA | 2009-05-08 → 2009-05-28 (+20d) | 2009-05-21 → 2009-06-03 (+13d) | 10d → 5d |  |  | none → 79, 68 |  |
| 82 | Regression test on QA | 2009-05-08 → 2009-05-21 (+13d) | 2009-05-12 → 2009-05-26 (+14d) |  |  | 7d → 6d | none → 79, 69 |  |
| 83 | Deployment test on QA-VM | 2009-05-13 → 2009-05-27 (+14d) | 2009-05-19 → 2009-06-02 (+14d) |  |  |  |  |  |
| 84 | Deploy RC3 to STAGE | 2009-05-22 → 2009-06-04 (+13d) | 2009-05-22 → 2009-06-04 (+13d) |  |  |  |  |  |

| ID | Task | Start | Finish | Duration | Total float | Predecessors |
| --- | --- | --- | --- | --- | --- | --- |
| 85 | Verify new items on STAGE | 2009-05-26 → 2009-06-10 (+15d) | 2009-06-03 → 2009-06-18 (+15d) |  |  | 84 → 84, 87 |
| 86 | Regression test on STAGE | 2009-05-26 → 2009-06-10 (+15d) | 2009-05-28 → 2009-06-12 (+15d) |  |  | 84 → 84, 87 |
| 87 | App scan on STAGE | 2009-06-04 → 2009-06-05 (+1d) | 2009-06-08 → 2009-06-09 (+1d) |  | 2d → 0d | 85, 86 → 84 |
| 88 | Installer testing | 2009-05-08 → 2009-05-11 (+3d) | 2009-05-12 → 2009-05-13 (+1d) |  | 15d → 32d |  |
| 89 | LSD compliance testing | 2009-06-04 → 2009-06-19 (+15d) | 2009-06-08 → 2009-06-22 (+14d) | 3d → 2d |  |  |
| 90 | Milestone: Complete RC3 QA testing | 2009-06-08 → 2009-06-22 (+14d) | 2009-06-08 → 2009-06-22 (+14d) |  |  |  |
| 91 | Milestone: Complete RC3 Construction | 2009-06-08 → 2009-06-22 (+14d) | 2009-06-08 → 2009-06-22 (+14d) |  | 0d → 2d |  |
| 92 | **Transition** | 2009-04-06 → 2009-04-07 (+1d) | 2009-06-16 → 2009-06-29 (+13d) | 51d → 59d |  |  |
| 93 | **CBIIT Deployment** | 2009-06-09 → 2009-06-23 (+14d) | 2009-06-16 → 2009-06-25 (+9d) | 6d → 3d | 0d → 2d |  |
| 94 | Deploy to PROD | 2009-06-09 → 2009-06-23 (+14d) | 2009-06-11 → 2009-06-24 (+13d) | 3d → 2d | 0d → 2d |  |
| 95 | Verify PROD deployment | 2009-06-12 → 2009-06-25 (+13d) | 2009-06-16 → 2009-06-25 (+9d) | 3d → 1d | 0d → 2d |  |
| 96 | Milestone: Complete PROD deployment | 2009-06-16 → 2009-06-25 (+9d) | 2009-06-16 → 2009-06-25 (+9d) |  | 0d → 2d |  |
| 97 | **All Release Artifacts** | 2009-04-06 → 2009-04-07 (+1d) | 2009-06-15 → 2009-06-29 (+14d) | 50d → 59d | 1d → 0d |  |
| 98 | **User's Guide** | 2009-04-06 → 2009-04-07 (+1d) | 2009-05-04 → 2009-05-05 (+1d) |  | 26d → 41d |  |
| 99 | Send changes to Jill | 2009-04-06 → 2009-04-07 (+1d) | 2009-04-06 → 2009-04-07 (+1d) |  | 26d → 41d |  |
| 100 | Update User's Guide | 2009-04-07 → 2009-04-08 (+1d) | 2009-04-27 → 2009-04-28 (+1d) |  | 26d → 41d |  |
| 101 | Revise User's Guide after review | 2009-04-28 → 2009-04-29 (+1d) | 2009-05-04 → 2009-05-05 (+1d) |  | 26d → 41d |  |
| 102 | Milestone: Complete User's Guide | 2009-05-04 → 2009-05-05 (+1d) | 2009-05-04 → 2009-05-05 (+1d) |  | 26d → 41d |  |
| 103 | **Installation Guide** | 2009-04-22 → 2009-04-23 (+1d) | 2009-05-21 → 2009-05-22 (+1d) |  | 13d → 28d |  |
| 104 | Update BDA wiki page with installer properties | 2009-04-22 → 2009-04-23 (+1d) | 2009-04-22 → 2009-04-23 (+1d) |  | 13d → 28d |  |
| 105 | Send changes to Jill | 2009-04-23 → 2009-04-24 (+1d) | 2009-04-23 → 2009-04-24 (+1d) |  | 13d → 28d |  |
| 106 | Update Installation Guide | 2009-04-24 → 2009-04-27 (+3d) | 2009-05-14 → 2009-05-15 (+1d) |  | 13d → 28d |  |
| 107 | Revise Installation Guide after review | 2009-05-15 → 2009-05-18 (+3d) | 2009-05-21 → 2009-05-22 (+1d) |  | 13d → 28d |  |
| 108 | Milestone: Complete Installation Guide | 2009-05-21 → 2009-05-22 (+1d) | 2009-05-21 → 2009-05-22 (+1d) |  | 13d → 28d |  |
| 109 | **Other Release Artifacts** | 2009-06-09 → 2009-06-23 (+14d) | 2009-06-09 → 2009-06-23 (+14d) |  | 1d → 0d |  |
| 110 | Prepare Release Notes | 2009-06-09 → 2009-06-23 (+14d) | 2009-06-09 → 2009-06-23 (+14d) |  | 1d → 0d |  |
| 111 | Prepare Client Libraries and javadoc | 2009-06-09 → 2009-06-23 (+14d) | 2009-06-09 → 2009-06-23 (+14d) |  | 1d → 0d |  |
| 112 | Prepare installer packages | 2009-06-09 → 2009-06-23 (+14d) | 2009-06-09 → 2009-06-23 (+14d) |  | 1d → 0d |  |
| 113 | Milestone: Complete other release artifacts | 2009-06-09 → 2009-06-23 (+14d) | 2009-06-09 → 2009-06-23 (+14d) |  | 1d → 0d |  |
| 114 | **Update sites and Announce release** | 2009-06-10 → 2009-06-24 (+14d) | 2009-06-15 → 2009-06-29 (+14d) |  | 1d → 0d |  |
| 115 | Update caArray Gforge site | 2009-06-10 → 2009-06-24 (+14d) | 2009-06-10 → 2009-06-24 (+14d) |  | 4d → 3d |  |
| 116 | Update Download Centre page | 2009-06-10 → 2009-06-24 (+14d) | 2009-06-15 → 2009-06-29 (+14d) |  | 1d → 0d |  |
| 117 | Update Tools page | 2009-06-10 → 2009-06-24 (+14d) | 2009-06-10 → 2009-06-24 (+14d) |  | 4d → 3d |  |
| 118 | Update Landing site | 2009-06-10 → 2009-06-24 (+14d) | 2009-06-10 → 2009-06-24 (+14d) |  | 4d → 3d |  |
| 119 | Update LSD Gforge site | 2009-06-10 → 2009-06-24 (+14d) | 2009-06-10 → 2009-06-24 (+14d) |  | 4d → 3d |  |
| 120 | caArray 2.3.0 Closeout | 2009-06-16 → 2009-06-29 (+13d) | 2009-06-16 → 2009-06-29 (+13d) |  |  |  |

## Version 6 (saved 2009-02-09)

Note of the change: Update alpha 1 release status in 2.3.0 schedule.

Last finish stays 2009-06-29. Complete tasks 7 → 12.

Changed:

| ID | Task | Start | Finish | Complete | Total float |
| --- | --- | --- | --- | --- | --- |
| 1 | **caArray 2.3.0** |  |  | 29% → 38% | 0d → 9d |
| 12 | **Construction Alpha1** | 2008-12-10 A |  | 0% → 77% | 27d → 94d |
| 14 | **Implementation** | 2008-12-16 A | 2009-02-02 A | 0% → 100% | 24d → none |
| 15 | Implement Alpha1 items | 2008-12-16 A | 2009-01-28 A | 0% → 100% | 97d → none |
| 16 | Verify Alpha1 items on DEV tier | 2009-01-29 A | 2009-01-29 A | 0% → 100% | 97d → none |
| 17 | Milestone: Deploy Alpha1 to QA | 2009-02-02 A | 2009-02-02 A | 0% → 100% | 0d → none |
| 18 | **QA Testing** | 2009-02-03 A |  | 0% → 54% | 6d → 94d |
| 19 | Verify new items on QA | 2009-02-03 A | 2009-02-17 A | 0% → 100% | 6d → none |
| 20 | Regression test on QA | 2009-02-03 A | 2009-02-05 A | 0% → 100% | 84d → none |

## Version 7 (saved 2009-02-18)

Note of the change: 230 implementation - task completion update.

Last finish stays 2009-06-29.

Changed:

| ID | Task | Total float | Other |
| --- | --- | --- | --- |
| 33 | Verify new items on QA |  | resources none → misquitt; reddya |
| 34 | Regression test on QA |  | resources none → khannave |
| 35 | Deploy Alpha2 to STAGE | 53d → 2d | resources none → stagebox; wysongr |
| 36 | Verify new items on STAGE | 53d → 2d | resources none → misquitt; reddya |
| 37 | Regression test on STAGE | 57d → 15d | resources none → khannave |
| 38 | Installer testing | 58d → 66d | resources none → reddya |
| 48 | Verify new items on QA |  | resources none → misquitt; reddya |
| 49 | Regression test on QA | 45d → 9d | resources none → khannave |
| 50 | Deployment test on QA-VM | 45d → 53d | resources none → stagebox; wysongr |
| 51 | Deploy RC1 to STAGE |  | resources none → misquitt; reddya |
| 52 | Verify new items on STAGE |  | resources none → khannave |
| 53 | Regression test on STAGE | 38d → 9d | resources none → reddya |
| 54 | Installer testing | 65d → 56d | resources none → reddya |
| 55 | App scan on STAGE | 45d → 36d | resources none → stagebox; scansys |

## Version 8 (saved 2009-03-13)

Note of the change: linked 221 project schedule with 230 for resource mgmt.

Last finish 2009-06-29 → 2009-06-30 (+1d). Complete tasks 12 → 19.

Removed: 21 Deploy Alpha1 to STAGE; 22 Verify new items on STAGE; 23 Regression test on STAGE; 35 Deploy Alpha2 to STAGE; 36 Verify new items on STAGE; 37 Regression test on STAGE; 38 Installer testing

Changed:

| ID | Task | Start | Finish | Duration | Complete | Total float | Predecessors | Other |
| --- | --- | --- | --- | --- | --- | --- | --- | --- |
| 1 | **caArray 2.3.0** |  | 2009-06-29 → 2009-06-30 (+1d) | 171d → 187d | 38% → 42% |  |  |  |
| 2 | **Inception and Elaboration** |  | 2008-12-10 A | 40d → 43d | 99% → 100% | 0d → none |  |  |
| 4 | **Requirements analysis** |  | 2008-12-10 A | 40d → 43d | 99% → 100% | 0d → none |  |  |
| 8 | **Project Management** |  |  | 40d → 43d |  |  |  |  |
| 12 | **Construction Alpha1** |  | 2009-02-27 → 2009-02-05 A (-22d) | 46d → 41d | 77% → 100% | 85d → none |  |  |
| 13 | Milestone: Begin Alpha1 Construction | 2008-12-10 A | 2008-12-10 A |  | 0% → 100% | 131d → none |  |  |
| 14 | **Implementation** |  |  | 25d → 35d |  |  |  |  |
| 18 | **QA Testing** | 2009-02-03 A → 2009-02-02 A (-1d) | 2009-02-27 → 2009-02-05 A (-22d) | 18d → 3d | 54% → 100% | 85d → none |  |  |
| 19 | 230A1:Verify new items on QA |  | 2009-02-17 A → 2009-02-05 A (-12d) | 10d → 3d |  |  |  | was named Verify new items on QA |
| 20 | 230A1:Regression test on QA |  |  |  |  |  |  | was named Regression test on QA |
| 21 | Milestone: Complete Alpha1 QA testing | 2009-02-27 → 2009-02-02 A (-25d) | 2009-02-27 → 2009-02-02 A (-25d) |  | 0% → 100% | 85d → none | Verify new items on STAGE, Regression test on STAGE → none |  |
| 22 | Milestone: Complete Alpha1 Construction | 2009-02-27 → 2009-02-02 A (-25d) | 2009-02-27 → 2009-02-02 A (-25d) |  | 0% → 100% | 85d → none |  |  |
| 23 | **Construction Alpha2** | 2009-02-02 A | 2009-04-02 → 2009-03-18 (-15d) | 42d → 32d | 0% → 58% | 0d → 74d |  |  |
| 24 | Milestone: Begin Alpha2 Construction | 2009-02-02 A | 2009-02-02 A |  | 0% → 100% | 0d → none |  |  |
| 25 | **Implementation** | 2009-02-03 → 2009-02-09 A (+6d) | 2009-03-05 → 2009-03-04 A (-1d) | 22d → 18d | 0% → 100% | 0d → none |  |  |
| 26 | Implement Alpha2 items | 2009-02-03 → 2009-02-09 A (+6d) | 2009-03-03 A | 20d → 17d | 0% → 100% | 0d → none |  | constraint none → finish no earlier than 2009-03-03 |
| 27 | Verify Alpha2 items on DEV tier | 2009-03-04 A | 2009-03-04 A |  | 0% → 100% | 0d → none |  |  |
| 28 | Milestone: Deploy Alpha2 to QA | 2009-03-05 → 2009-03-04 A (-1d) | 2009-03-05 → 2009-03-04 A (-1d) | 1d → 0d | 0% → 100% | 0d → none |  |  |
| 29 | **QA Testing** | 2009-03-06 → 2009-03-04 (-2d) | 2009-04-02 → 2009-03-18 (-15d) | 20d → 10d |  | 2d → 74d |  |  |
| 30 | 230A2:Verify new items on QA | 2009-03-06 → 2009-03-05 (-1d) | 2009-03-23 → 2009-03-18 (-5d) | 12d → 10d |  | 2d → 74d | 28, Verify new items on STAGE → 28 | was named Verify new items on QA; constraint none → finish no earlier than 2009-03-13 |
| 31 | 230A2:Regression test on QA | 2009-03-06 → 2009-03-05 (-1d) | 2009-03-10 → 2009-03-09 (-1d) |  |  | 11d → 29d | 28, Regression test on STAGE → 28 | was named Regression test on QA |
| 32 | Milestone: Complete Alpha2 QA testing | 2009-04-02 → 2009-03-04 (-29d) | 2009-04-02 → 2009-03-04 (-29d) |  |  | 61d → 84d | Verify new items on STAGE, Regression test on STAGE, Installer testing → none |  |
| 33 | Milestone: Complete Alpha2 Construction | 2009-04-02 → 2009-03-04 (-29d) | 2009-04-02 → 2009-03-04 (-29d) |  |  | 53d → 84d |  |  |
| 34 | **Construction RC1** | 2009-03-05 → 2009-03-04 (-1d) | 2009-05-07 → 2009-05-11 (+4d) | 45d → 48d |  |  |  |  |
| 35 | Milestone: Begin RC1 Construction | 2009-03-05 → 2009-03-04 (-1d) | 2009-03-05 → 2009-03-04 (-1d) |  |  |  |  |  |
| 36 | **Implementation** | 2009-03-06 → 2009-03-05 (-1d) | 2009-04-06 → 2009-04-03 (-3d) |  |  |  |  |  |
| 37 | Implement RC1 items | 2009-03-06 → 2009-03-05 (-1d) | 2009-04-02 → 2009-04-01 (-1d) |  |  |  |  |  |
| 38 | Verify RC1 items on DEV tier | 2009-04-03 → 2009-04-02 (-1d) | 2009-04-03 → 2009-04-02 (-1d) |  |  |  |  |  |
| 39 | Milestone: Deploy RC1 to QA | 2009-04-06 → 2009-04-03 (-3d) | 2009-04-06 → 2009-04-03 (-3d) |  |  |  |  |  |
| 40 | **QA Testing** | 2009-04-07 → 2009-04-06 (-1d) | 2009-05-07 → 2009-05-11 (+4d) | 23d → 26d |  |  |  |  |
| 41 | 230RC1: Verify new items on QA | 2009-04-07 → 2009-04-06 (-1d) | 2009-04-22 → 2009-04-24 (+2d) | 12d → 15d |  |  | 39, Verify new items on STAGE → 39 | was named Verify new items on QA |
| 42 | 230RC1: Regression test on QA | 2009-04-07 → 2009-04-06 (-1d) | 2009-04-09 → 2009-04-08 (-1d) |  |  | 9d → 12d | Regression test on STAGE → none | was named Regression test on QA |
| 43 | Deployment test on QA-VM | 2009-04-10 → 2009-04-09 (-1d) | 2009-04-14 → 2009-04-13 (-1d) |  |  | 53d → 56d |  | resources stagebox; wysongr → qavmbox; webapp; dba |
| 44 | Deploy RC1 to STAGE | 2009-04-23 → 2009-04-27 (+4d) | 2009-04-23 → 2009-04-27 (+4d) |  |  |  |  | resources misquitt; reddya → webapp; stagebox |
| 45 | 230RC1: Verify new items on STAGE | 2009-04-24 → 2009-04-28 (+4d) | 2009-05-04 → 2009-05-06 (+2d) |  |  |  |  | was named Verify new items on STAGE; resources khannave → misquitt |
| 46 | 230RC1: Regression test on STAGE | 2009-04-24 → 2009-04-28 (+4d) | 2009-04-28 → 2009-04-30 (+2d) |  |  |  |  | was named Regression test on STAGE; resources reddya → khannave |
| 47 | Installer testing | 2009-04-07 → 2009-04-06 (-1d) | 2009-04-09 → 2009-04-17 (+8d) | 3d → 10d |  | 56d → 52d |  |  |
| 48 | App scan on STAGE | 2009-05-05 → 2009-05-07 (+2d) | 2009-05-07 → 2009-05-11 (+4d) |  |  |  |  | resources stagebox; scansys → stagebox; security |
| 49 | Milestone: Complete RC1 QA testing | 2009-04-23 → 2009-04-27 (+4d) | 2009-04-23 → 2009-04-27 (+4d) |  |  |  |  |  |
| 50 | Milestone: Complete RC1 Construction | 2009-04-23 → 2009-04-27 (+4d) | 2009-04-23 → 2009-04-27 (+4d) |  |  | 53d → 46d |  |  |
| 51 | **Construction RC2** | 2009-04-06 → 2009-04-03 (-3d) | 2009-05-27 → 2009-05-28 (+1d) | 36d → 39d |  | 8d → 11d |  |  |
| 52 | Milestone: Begin RC2 Construction | 2009-04-06 → 2009-04-03 (-3d) | 2009-04-06 → 2009-04-03 (-3d) |  |  | 11d → 29d |  |  |
| 53 | **Implementation** | 2009-04-07 → 2009-04-06 (-1d) | 2009-04-22 → 2009-04-21 (-1d) |  |  | 8d → 11d |  |  |
| 54 | Implement RC2 items | 2009-04-07 → 2009-04-06 (-1d) | 2009-04-20 → 2009-04-17 (-3d) |  |  | 8d → 29d |  |  |
| 55 | Verify RC2 items on DEV tier | 2009-04-21 → 2009-04-20 (-1d) | 2009-04-21 → 2009-04-20 (-1d) |  |  | 8d → 29d |  |  |
| 56 | Milestone: Deploy RC2 to QA | 2009-04-22 → 2009-04-21 (-1d) | 2009-04-22 → 2009-04-21 (-1d) |  |  | 8d → 29d |  |  |
| 57 | **QA Testing** | 2009-04-23 → 2009-04-22 (-1d) | 2009-05-27 → 2009-05-28 (+1d) | 24d → 27d |  | 8d → 11d |  |  |
| 58 | 230RC2: Verify new items on QA | 2009-05-05 → 2009-05-07 (+2d) | 2009-05-14 → 2009-05-18 (+4d) |  |  |  |  | was named Verify new items on QA; resources none → misquitt |
| 59 | 230RC2: Regression test on QA | 2009-04-29 → 2009-05-01 (+2d) | 2009-05-01 → 2009-05-05 (+4d) |  |  |  |  | was named Regression test on QA; resources none → khannave |
| 60 | Deploy RC2 to STAGE | 2009-05-15 → 2009-05-19 (+4d) | 2009-05-15 → 2009-05-19 (+4d) |  |  |  |  | resources none → stagebox; webapp |
| 61 | 230RC2: Verify new items on STAGE | 2009-05-18 → 2009-05-20 (+2d) | 2009-05-27 → 2009-05-28 (+1d) |  |  |  |  | was named Verify new items on STAGE; resources none → misquitt |
| 62 | 230RC2: Regression test on STAGE | 2009-05-18 → 2009-05-20 (+2d) | 2009-05-20 → 2009-05-22 (+2d) |  |  |  |  | was named Regression test on STAGE; resources none → khannave |
| 63 | Installer testing | 2009-04-23 → 2009-04-22 (-1d) | 2009-04-27 → 2009-05-05 (+8d) | 3d → 10d |  | 44d → 58d | none → 56 | resources none → reddya |
| 64 | App scan on STAGE | 2009-05-18 → 2009-05-20 (+2d) | 2009-05-20 → 2009-05-22 (+2d) |  |  |  |  | resources none → stagebox; security |
| 65 | Milestone: Complete RC2 QA testing | 2009-05-27 → 2009-05-28 (+1d) | 2009-05-27 → 2009-05-28 (+1d) |  |  |  | 61, 62, 64 → 61, 62, 64, 63 |  |
| 66 | Milestone: Complete RC2 Construction | 2009-05-27 → 2009-05-28 (+1d) | 2009-05-27 → 2009-05-28 (+1d) |  |  |  |  |  |
| 67 | **Construction RC3** | 2009-04-22 → 2009-04-21 (-1d) | 2009-06-22 → 2009-06-23 (+1d) | 42d → 45d |  |  |  |  |
| 68 | Milestone: Begin RC3 Construction | 2009-04-22 → 2009-04-21 (-1d) | 2009-04-22 → 2009-04-21 (-1d) |  |  | 14d → 35d |  |  |
| 69 | **Implementation** | 2009-04-23 → 2009-04-22 (-1d) | 2009-05-08 → 2009-05-05 (-3d) | 12d → 10d |  | 12d → 17d |  |  |
| 70 | Implement RC3 items | 2009-04-23 → 2009-04-22 (-1d) | 2009-05-06 → 2009-05-01 (-5d) | 10d → 8d |  | 12d → 35d |  |  |
| 71 | Verify RC3 items on DEV tier | 2009-05-07 → 2009-05-04 (-3d) | 2009-05-07 → 2009-05-04 (-3d) |  |  | 12d → 35d |  |  |
| 72 | Milestone: Deploy RC3 to QA | 2009-05-08 → 2009-05-05 (-3d) | 2009-05-08 → 2009-05-05 (-3d) |  |  | 12d → 35d |  |  |
| 73 | **QA Testing** | 2009-05-11 → 2009-05-06 (-5d) | 2009-06-22 → 2009-06-23 (+1d) | 30d → 35d |  |  |  |  |
| 74 | 230RC3: Verify new items on QA | 2009-05-28 → 2009-05-29 (+1d) | 2009-06-03 → 2009-06-04 (+1d) |  |  |  |  | was named Verify new items on QA; resources none → misquitt |
| 75 | 230RC3: Regression test on QA | 2009-05-21 → 2009-05-25 (+4d) | 2009-05-26 → 2009-05-27 (+1d) |  |  |  |  | was named Regression test on QA; resources none → khannave |
| 76 | Deployment test on QA-VM | 2009-05-27 → 2009-05-28 (+1d) | 2009-06-02 → 2009-06-03 (+1d) |  |  |  |  | resources none → stagebox; webapp |
| 77 | Deploy RC3 to STAGE | 2009-06-04 → 2009-06-05 (+1d) | 2009-06-04 → 2009-06-05 (+1d) |  |  |  |  | resources none → misquitt |
| 78 | 230RC3: Verify new items on STAGE | 2009-06-10 → 2009-06-11 (+1d) | 2009-06-18 → 2009-06-19 (+1d) |  |  |  |  | was named Verify new items on STAGE; resources none → khannave |
| 79 | 230RC3: Regression test on STAGE | 2009-06-10 → 2009-06-11 (+1d) | 2009-06-12 → 2009-06-15 (+3d) |  |  |  |  | was named Regression test on STAGE; resources none → reddya |
| 80 | App scan on STAGE | 2009-06-05 → 2009-06-08 (+3d) | 2009-06-09 → 2009-06-10 (+1d) |  |  |  |  | resources none → stagebox; security |

| ID | Task | Start | Finish | Duration | Total float | Other |
| --- | --- | --- | --- | --- | --- | --- |
| 81 | Installer testing | 2009-05-11 → 2009-05-06 (-5d) | 2009-05-13 → 2009-05-15 (+2d) | 3d → 8d |  | resources none → reddya |
| 82 | LSD compliance testing | 2009-06-19 → 2009-06-22 (+3d) | 2009-06-22 → 2009-06-23 (+1d) |  |  | resources none → reddya |
| 83 | Milestone: Complete RC3 QA testing | 2009-06-22 → 2009-06-23 (+1d) | 2009-06-22 → 2009-06-23 (+1d) |  |  |  |
| 84 | Milestone: Complete RC3 Construction | 2009-06-22 → 2009-06-23 (+1d) | 2009-06-22 → 2009-06-23 (+1d) |  |  |  |
| 85 | **Transition** | 2009-04-07 → 2009-04-06 (-1d) | 2009-06-29 → 2009-06-30 (+1d) | 59d → 62d |  |  |
| 86 | **CBIIT Deployment** | 2009-06-23 → 2009-06-24 (+1d) | 2009-06-25 → 2009-06-26 (+1d) |  |  |  |
| 87 | Deploy to PROD | 2009-06-23 → 2009-06-24 (+1d) | 2009-06-24 → 2009-06-25 (+1d) |  |  |  |
| 88 | Verify PROD deployment | 2009-06-25 → 2009-06-26 (+1d) | 2009-06-25 → 2009-06-26 (+1d) |  |  |  |
| 89 | Milestone: Complete PROD deployment | 2009-06-25 → 2009-06-26 (+1d) | 2009-06-25 → 2009-06-26 (+1d) |  |  |  |
| 90 | **All Release Artifacts** | 2009-04-07 → 2009-04-06 (-1d) | 2009-06-29 → 2009-06-30 (+1d) | 59d → 62d |  |  |
| 91 | **User's Guide** | 2009-04-07 → 2009-04-06 (-1d) | 2009-05-05 → 2009-05-04 (-1d) |  | 34d → 37d |  |
| 92 | Send changes to Jill | 2009-04-07 → 2009-04-06 (-1d) | 2009-04-07 → 2009-04-06 (-1d) |  | 34d → 55d |  |
| 93 | Update User's Guide | 2009-04-08 → 2009-04-07 (-1d) | 2009-04-28 → 2009-04-27 (-1d) |  | 34d → 55d |  |
| 94 | Revise User's Guide after review | 2009-04-29 → 2009-04-28 (-1d) | 2009-05-05 → 2009-05-04 (-1d) |  | 34d → 55d |  |
| 95 | Milestone: Complete User's Guide | 2009-05-05 → 2009-05-04 (-1d) | 2009-05-05 → 2009-05-04 (-1d) |  | 34d → 37d |  |
| 96 | **Installation Guide** | 2009-04-23 → 2009-04-22 (-1d) | 2009-05-22 → 2009-05-21 (-1d) |  | 21d → 24d |  |
| 97 | Update BDA wiki page with installer properties | 2009-04-23 → 2009-04-22 (-1d) | 2009-04-23 → 2009-04-22 (-1d) |  | 21d → 42d |  |
| 98 | Send changes to Jill | 2009-04-24 → 2009-04-23 (-1d) | 2009-04-24 → 2009-04-23 (-1d) |  | 21d → 42d |  |
| 99 | Update Installation Guide | 2009-04-27 → 2009-04-24 (-3d) | 2009-05-15 → 2009-05-14 (-1d) |  | 21d → 42d |  |
| 100 | Revise Installation Guide after review | 2009-05-18 → 2009-05-15 (-3d) | 2009-05-22 → 2009-05-21 (-1d) |  | 21d → 42d |  |
| 101 | Milestone: Complete Installation Guide | 2009-05-22 → 2009-05-21 (-1d) | 2009-05-22 → 2009-05-21 (-1d) |  | 21d → 24d |  |
| 102 | **Other Release Artifacts** | 2009-06-23 → 2009-06-24 (+1d) | 2009-06-23 → 2009-06-24 (+1d) |  |  |  |
| 103 | Prepare Release Notes | 2009-06-23 → 2009-06-24 (+1d) | 2009-06-23 → 2009-06-24 (+1d) |  |  |  |
| 104 | Prepare Client Libraries and javadoc | 2009-06-23 → 2009-06-24 (+1d) | 2009-06-23 → 2009-06-24 (+1d) |  |  |  |
| 105 | Prepare installer packages | 2009-06-23 → 2009-06-24 (+1d) | 2009-06-23 → 2009-06-24 (+1d) |  |  |  |
| 106 | Milestone: Complete other release artifacts | 2009-06-23 → 2009-06-24 (+1d) | 2009-06-23 → 2009-06-24 (+1d) |  |  |  |
| 107 | **Update sites and Announce release** | 2009-06-24 → 2009-06-25 (+1d) | 2009-06-29 → 2009-06-30 (+1d) |  |  |  |
| 108 | Update caArray Gforge site | 2009-06-24 → 2009-06-25 (+1d) | 2009-06-24 → 2009-06-25 (+1d) |  |  |  |
| 109 | Update Download Centre page | 2009-06-24 → 2009-06-25 (+1d) | 2009-06-29 → 2009-06-30 (+1d) |  |  |  |
| 110 | Update Tools page | 2009-06-24 → 2009-06-25 (+1d) | 2009-06-24 → 2009-06-25 (+1d) |  |  |  |
| 111 | Update Landing site | 2009-06-24 → 2009-06-25 (+1d) | 2009-06-24 → 2009-06-25 (+1d) |  |  |  |
| 112 | Update LSD Gforge site | 2009-06-24 → 2009-06-25 (+1d) | 2009-06-24 → 2009-06-25 (+1d) |  |  |  |
| 113 | caArray 2.3.0 Closeout | 2009-06-29 → 2009-06-30 (+1d) | 2009-06-29 → 2009-06-30 (+1d) |  |  |  |

## Version 9 (saved 2009-03-19)

Note of the change: add alpha3 iteration to the 2.3.0 schedule.

Last finish 2009-06-30 → 2009-07-28 (+28d).

Added:

| ID | Task | Duration | Start | Finish | Predecessors | Constraint |
| --- | --- | --- | --- | --- | --- | --- |
| 34 | **Construction Alpha3** | 25d | 2009-03-04 | 2009-04-08 |  |  |
| 35 | Milestone: Begin Alpha3 Construction | 0d | 2009-03-04 | 2009-03-04 | 28 |  |
| 36 | **Implementation** | 19d | 2009-03-06 | 2009-04-01 | 35 |  |
| 37 | Implement Alpha3 items | 18d | 2009-03-06 | 2009-03-31 |  | finish no earlier than 2009-03-31 |
| 38 | Verify Alpha3 items on DEV tier | 1d | 2009-04-01 | 2009-04-01 | 37 |  |
| 39 | Milestone: Deploy Alpha3 to QA | 0d | 2009-04-01 | 2009-04-01 | 38 |  |
| 40 | **QA Testing** | 5d | 2009-04-02 | 2009-04-08 | 39 |  |
| 41 | 230A3:Verify new items on QA | 5d | 2009-04-02 | 2009-04-08 |  |  |
| 42 | 230A3:Regression test on QA | 3d | 2009-04-02 | 2009-04-06 |  |  |
| 43 | Milestone: Complete Alpha3 QA testing | 0d | 2009-04-08 | 2009-04-08 | 41, 42 |  |
| 44 | Milestone: Complete Alpha3 Construction | 0d | 2009-04-08 | 2009-04-08 | 43 |  |

Changed:

| ID | Task | Start | Finish | Duration | Complete | Total float | Predecessors |
| --- | --- | --- | --- | --- | --- | --- | --- |
| 1 | **caArray 2.3.0** |  | 2009-06-30 → 2009-07-28 (+28d) | 187d → 207d | 42% → 39% |  |  |
| 45 | **Construction RC1** | 2009-03-04 → 2009-04-01 (+28d) | 2009-05-11 → 2009-06-08 (+28d) |  |  |  |  |
| 46 | Milestone: Begin RC1 Construction | 2009-03-04 → 2009-04-01 (+28d) | 2009-03-04 → 2009-04-01 (+28d) |  |  |  | 28 → 39 |
| 47 | **Implementation** | 2009-03-05 → 2009-04-02 (+28d) | 2009-04-03 → 2009-05-01 (+28d) |  |  |  |  |
| 48 | Implement RC1 items | 2009-03-05 → 2009-04-02 (+28d) | 2009-04-01 → 2009-04-29 (+28d) |  |  |  |  |
| 49 | Verify RC1 items on DEV tier | 2009-04-02 → 2009-04-30 (+28d) | 2009-04-02 → 2009-04-30 (+28d) |  |  |  |  |
| 50 | Milestone: Deploy RC1 to QA | 2009-04-03 → 2009-05-01 (+28d) | 2009-04-03 → 2009-05-01 (+28d) |  |  |  |  |
| 51 | **QA Testing** | 2009-04-06 → 2009-05-04 (+28d) | 2009-05-11 → 2009-06-08 (+28d) |  |  |  |  |
| 52 | 230RC1: Verify new items on QA | 2009-04-06 → 2009-05-04 (+28d) | 2009-04-24 → 2009-05-22 (+28d) |  |  |  |  |
| 53 | 230RC1: Regression test on QA | 2009-04-06 → 2009-05-04 (+28d) | 2009-04-08 → 2009-05-06 (+28d) |  |  |  |  |
| 54 | Deployment test on QA-VM | 2009-04-09 → 2009-05-07 (+28d) | 2009-04-13 → 2009-05-11 (+28d) |  |  |  |  |
| 55 | Deploy RC1 to STAGE | 2009-04-27 → 2009-05-25 (+28d) | 2009-04-27 → 2009-05-25 (+28d) |  |  |  |  |
| 56 | 230RC1: Verify new items on STAGE | 2009-04-28 → 2009-05-26 (+28d) | 2009-05-06 → 2009-06-03 (+28d) |  |  |  |  |
| 57 | 230RC1: Regression test on STAGE | 2009-04-28 → 2009-05-26 (+28d) | 2009-04-30 → 2009-05-28 (+28d) |  |  |  |  |
| 58 | Installer testing | 2009-04-06 → 2009-05-04 (+28d) | 2009-04-17 → 2009-05-15 (+28d) |  |  |  |  |
| 59 | App scan on STAGE | 2009-05-07 → 2009-06-04 (+28d) | 2009-05-11 → 2009-06-08 (+28d) |  |  |  |  |
| 60 | Milestone: Complete RC1 QA testing | 2009-04-27 → 2009-05-25 (+28d) | 2009-04-27 → 2009-05-25 (+28d) |  |  |  |  |
| 61 | Milestone: Complete RC1 Construction | 2009-04-27 → 2009-05-25 (+28d) | 2009-04-27 → 2009-05-25 (+28d) |  |  |  |  |
| 62 | **Construction RC2** | 2009-04-03 → 2009-05-01 (+28d) | 2009-05-28 → 2009-06-25 (+28d) |  |  |  |  |
| 63 | Milestone: Begin RC2 Construction | 2009-04-03 → 2009-05-01 (+28d) | 2009-04-03 → 2009-05-01 (+28d) |  |  | 29d → 11d |  |
| 64 | **Implementation** | 2009-04-06 → 2009-05-04 (+28d) | 2009-04-21 → 2009-05-19 (+28d) |  |  |  |  |
| 65 | Implement RC2 items | 2009-04-06 → 2009-05-04 (+28d) | 2009-04-17 → 2009-05-15 (+28d) |  |  | 29d → 11d |  |
| 66 | Verify RC2 items on DEV tier | 2009-04-20 → 2009-05-18 (+28d) | 2009-04-20 → 2009-05-18 (+28d) |  |  | 29d → 11d |  |
| 67 | Milestone: Deploy RC2 to QA | 2009-04-21 → 2009-05-19 (+28d) | 2009-04-21 → 2009-05-19 (+28d) |  |  | 29d → 11d |  |
| 68 | **QA Testing** | 2009-04-22 → 2009-05-20 (+28d) | 2009-05-28 → 2009-06-25 (+28d) |  |  |  |  |
| 69 | 230RC2: Verify new items on QA | 2009-05-07 → 2009-06-04 (+28d) | 2009-05-18 → 2009-06-15 (+28d) |  |  |  |  |
| 70 | 230RC2: Regression test on QA | 2009-05-01 → 2009-05-29 (+28d) | 2009-05-05 → 2009-06-02 (+28d) |  |  |  |  |
| 71 | Deploy RC2 to STAGE | 2009-05-19 → 2009-06-16 (+28d) | 2009-05-19 → 2009-06-16 (+28d) |  |  |  |  |
| 72 | 230RC2: Verify new items on STAGE | 2009-05-20 → 2009-06-17 (+28d) | 2009-05-28 → 2009-06-25 (+28d) |  |  |  |  |
| 73 | 230RC2: Regression test on STAGE | 2009-05-20 → 2009-06-17 (+28d) | 2009-05-22 → 2009-06-19 (+28d) |  |  |  |  |
| 74 | Installer testing | 2009-04-22 → 2009-05-20 (+28d) | 2009-05-05 → 2009-06-02 (+28d) |  |  | 58d → 40d |  |
| 75 | App scan on STAGE | 2009-05-20 → 2009-06-17 (+28d) | 2009-05-22 → 2009-06-19 (+28d) |  |  |  |  |
| 76 | Milestone: Complete RC2 QA testing | 2009-05-28 → 2009-06-25 (+28d) | 2009-05-28 → 2009-06-25 (+28d) |  |  |  |  |
| 77 | Milestone: Complete RC2 Construction | 2009-05-28 → 2009-06-25 (+28d) | 2009-05-28 → 2009-06-25 (+28d) |  |  |  |  |
| 78 | **Construction RC3** | 2009-04-21 → 2009-05-19 (+28d) | 2009-06-23 → 2009-07-21 (+28d) |  |  |  |  |
| 79 | Milestone: Begin RC3 Construction | 2009-04-21 → 2009-05-19 (+28d) | 2009-04-21 → 2009-05-19 (+28d) |  |  | 35d → 17d |  |
| 80 | **Implementation** | 2009-04-22 → 2009-05-20 (+28d) | 2009-05-05 → 2009-06-02 (+28d) |  |  |  |  |
| 81 | Implement RC3 items | 2009-04-22 → 2009-05-20 (+28d) | 2009-05-01 → 2009-05-29 (+28d) |  |  | 35d → 17d |  |
| 82 | Verify RC3 items on DEV tier | 2009-05-04 → 2009-06-01 (+28d) | 2009-05-04 → 2009-06-01 (+28d) |  |  | 35d → 17d |  |
| 83 | Milestone: Deploy RC3 to QA | 2009-05-05 → 2009-06-02 (+28d) | 2009-05-05 → 2009-06-02 (+28d) |  |  | 35d → 17d |  |
| 84 | **QA Testing** | 2009-05-06 → 2009-06-03 (+28d) | 2009-06-23 → 2009-07-21 (+28d) |  |  |  |  |
| 85 | 230RC3: Verify new items on QA | 2009-05-29 → 2009-06-26 (+28d) | 2009-06-04 → 2009-07-02 (+28d) |  |  |  |  |
| 86 | 230RC3: Regression test on QA | 2009-05-25 → 2009-06-22 (+28d) | 2009-05-27 → 2009-06-24 (+28d) |  |  |  |  |
| 87 | Deployment test on QA-VM | 2009-05-28 → 2009-06-25 (+28d) | 2009-06-03 → 2009-07-01 (+28d) |  |  |  |  |
| 88 | Deploy RC3 to STAGE | 2009-06-05 → 2009-07-03 (+28d) | 2009-06-05 → 2009-07-03 (+28d) |  |  |  |  |
| 89 | 230RC3: Verify new items on STAGE | 2009-06-11 → 2009-07-09 (+28d) | 2009-06-19 → 2009-07-17 (+28d) |  |  |  |  |
| 90 | 230RC3: Regression test on STAGE | 2009-06-11 → 2009-07-09 (+28d) | 2009-06-15 → 2009-07-13 (+28d) |  |  |  |  |
| 91 | App scan on STAGE | 2009-06-08 → 2009-07-06 (+28d) | 2009-06-10 → 2009-07-08 (+28d) |  |  |  |  |
| 92 | Installer testing | 2009-05-06 → 2009-06-03 (+28d) | 2009-05-15 → 2009-06-12 (+28d) |  |  |  |  |
| 93 | LSD compliance testing | 2009-06-22 → 2009-07-20 (+28d) | 2009-06-23 → 2009-07-21 (+28d) |  |  |  |  |
| 94 | Milestone: Complete RC3 QA testing | 2009-06-23 → 2009-07-21 (+28d) | 2009-06-23 → 2009-07-21 (+28d) |  |  |  |  |
| 95 | Milestone: Complete RC3 Construction | 2009-06-23 → 2009-07-21 (+28d) | 2009-06-23 → 2009-07-21 (+28d) |  |  |  |  |
| 96 | **Transition** | 2009-04-06 → 2009-05-04 (+28d) | 2009-06-30 → 2009-07-28 (+28d) |  |  |  |  |
| 97 | **CBIIT Deployment** | 2009-06-24 → 2009-07-22 (+28d) | 2009-06-26 → 2009-07-24 (+28d) |  |  |  |  |
| 98 | Deploy to PROD | 2009-06-24 → 2009-07-22 (+28d) | 2009-06-25 → 2009-07-23 (+28d) |  |  |  |  |
| 99 | Verify PROD deployment | 2009-06-26 → 2009-07-24 (+28d) | 2009-06-26 → 2009-07-24 (+28d) |  |  |  |  |
| 100 | Milestone: Complete PROD deployment | 2009-06-26 → 2009-07-24 (+28d) | 2009-06-26 → 2009-07-24 (+28d) |  |  |  |  |
| 101 | **All Release Artifacts** | 2009-04-06 → 2009-05-04 (+28d) | 2009-06-30 → 2009-07-28 (+28d) |  |  |  |  |
| 102 | **User's Guide** | 2009-04-06 → 2009-05-04 (+28d) | 2009-05-04 → 2009-06-01 (+28d) |  |  |  |  |
| 103 | Send changes to Jill | 2009-04-06 → 2009-05-04 (+28d) | 2009-04-06 → 2009-05-04 (+28d) |  |  | 55d → 37d |  |
| 104 | Update User's Guide | 2009-04-07 → 2009-05-05 (+28d) | 2009-04-27 → 2009-05-25 (+28d) |  |  | 55d → 37d |  |
| 105 | Revise User's Guide after review | 2009-04-28 → 2009-05-26 (+28d) | 2009-05-04 → 2009-06-01 (+28d) |  |  | 55d → 37d |  |
| 106 | Milestone: Complete User's Guide | 2009-05-04 → 2009-06-01 (+28d) | 2009-05-04 → 2009-06-01 (+28d) |  |  |  |  |
| 107 | **Installation Guide** | 2009-04-22 → 2009-05-20 (+28d) | 2009-05-21 → 2009-06-18 (+28d) |  |  |  |  |
| 108 | Update BDA wiki page with installer properties | 2009-04-22 → 2009-05-20 (+28d) | 2009-04-22 → 2009-05-20 (+28d) |  |  | 42d → 24d |  |
| 109 | Send changes to Jill | 2009-04-23 → 2009-05-21 (+28d) | 2009-04-23 → 2009-05-21 (+28d) |  |  | 42d → 24d |  |
| 110 | Update Installation Guide | 2009-04-24 → 2009-05-22 (+28d) | 2009-05-14 → 2009-06-11 (+28d) |  |  | 42d → 24d |  |
| 111 | Revise Installation Guide after review | 2009-05-15 → 2009-06-12 (+28d) | 2009-05-21 → 2009-06-18 (+28d) |  |  | 42d → 24d |  |
| 112 | Milestone: Complete Installation Guide | 2009-05-21 → 2009-06-18 (+28d) | 2009-05-21 → 2009-06-18 (+28d) |  |  |  |  |
| 113 | **Other Release Artifacts** | 2009-06-24 → 2009-07-22 (+28d) | 2009-06-24 → 2009-07-22 (+28d) |  |  |  |  |

| ID | Task | Start | Finish |
| --- | --- | --- | --- |
| 114 | Prepare Release Notes | 2009-06-24 → 2009-07-22 (+28d) | 2009-06-24 → 2009-07-22 (+28d) |
| 115 | Prepare Client Libraries and javadoc | 2009-06-24 → 2009-07-22 (+28d) | 2009-06-24 → 2009-07-22 (+28d) |
| 116 | Prepare installer packages | 2009-06-24 → 2009-07-22 (+28d) | 2009-06-24 → 2009-07-22 (+28d) |
| 117 | Milestone: Complete other release artifacts | 2009-06-24 → 2009-07-22 (+28d) | 2009-06-24 → 2009-07-22 (+28d) |
| 118 | **Update sites and Announce release** | 2009-06-25 → 2009-07-23 (+28d) | 2009-06-30 → 2009-07-28 (+28d) |
| 119 | Update caArray Gforge site | 2009-06-25 → 2009-07-23 (+28d) | 2009-06-25 → 2009-07-23 (+28d) |
| 120 | Update Download Centre page | 2009-06-25 → 2009-07-23 (+28d) | 2009-06-30 → 2009-07-28 (+28d) |
| 121 | Update Tools page | 2009-06-25 → 2009-07-23 (+28d) | 2009-06-25 → 2009-07-23 (+28d) |
| 122 | Update Landing site | 2009-06-25 → 2009-07-23 (+28d) | 2009-06-25 → 2009-07-23 (+28d) |
| 123 | Update LSD Gforge site | 2009-06-25 → 2009-07-23 (+28d) | 2009-06-25 → 2009-07-23 (+28d) |
| 124 | caArray 2.3.0 Closeout | 2009-06-30 → 2009-07-28 (+28d) | 2009-06-30 → 2009-07-28 (+28d) |
