# inception_iteration

How a schedule from MS Project changed from version to version. A marks actual dates.

## Version 1 (saved 2007-03-30)

Note of the change: initial (not even draft) project file

| ID | WBS | Task | Duration | Start | Finish | Predecessors | Complete | Total float | Constraint |
| --- | --- | --- | --- | --- | --- | --- | --- | --- | --- |
| 1 | 1 | **Inception Iteration 1** | 43d | 2007-04-02 A | 2007-05-14 |  | 2% | 0d |  |
| 2 | 1 | **Project Management** | 33d | 2007-04-02 | 2007-05-04 |  |  | 0d |  |
| 3 |  | Plan the project | 30d | 2007-04-02 | 2007-05-01 |  |  | 0d | start no earlier than 2007-04-02 |
| 4 |  | Evaluate Project Scope and Risk | 1d | 2007-05-02 | 2007-05-02 | 3 |  | 0d |  |
| 5 |  | Plan the Project | 1d | 2007-05-03 | 2007-05-03 | 4, 12SS |  | 0d |  |
| 6 |  | Plan Remainder of Initial Iteration | 1d | 2007-05-04 | 2007-05-04 | 5 |  | 0d |  |
| 7 |  | Plan for Next Iteration | 1d | 2007-04-02 | 2007-04-02 | 8FF |  | 41d |  |
| 8 |  | Refine Software Development Plan | 1d | 2007-04-02 | 2007-04-02 |  |  | 41d |  |
| 9 | 3 | **Requirements** | 33d | 2007-04-02 A | 2007-05-04 |  | 13% | 10d |  |
| 10 |  | Define the Preliminary Vision | 5d | 2007-04-02 | 2007-04-06 | 3SS, 11FF |  | 38d | start no earlier than 1999-05-04 |
| 11 |  | Elicit Stakeholder Needs | 3d | 2007-04-02 | 2007-04-04 | 3SS |  | 40d | start no earlier than 1999-05-04 |
| 12 |  | Identify and Describe Use Cases | 3d | 2007-04-06 | 2007-04-08 |  |  | 27d | start no earlier than 2007-04-06 |
| 13 |  | Manage the Scope of the System | 2d | 2007-04-08 | 2007-04-09 | 12SS+1d |  | 35d | start no earlier than 2007-04-08 |
| 14 |  | Refine the System Definition | 0d | 2007-05-04 | 2007-05-04 | 6, 13, 12 |  | 10d | start no earlier than 2007-04-18 |
| 15 |  | Manage Changing Requirements | 2d | 2007-04-25 A | 2007-04-26 A | 10SS | 100% |  | start no earlier than 2007-04-25 |
| 16 | 4 | **Analysis and Design** | 5d | 2007-05-05 | 2007-05-09 |  |  | 5d |  |
| 17 |  | Perform Architectural Synthesis | 5d | 2007-05-05 | 2007-05-09 | 6 |  | 5d |  |
| 18 | 5 | **Test** | 1d | 2007-05-03 | 2007-05-03 |  |  | 11d |  |
| 19 |  | Define Evaluation Mission | 1d | 2007-05-03 | 2007-05-03 | 5SS |  | 11d |  |
| 20 | 6 | **Environment** | 13d | 2007-05-02 | 2007-05-14 |  |  | 0d |  |
| 21 |  | Prepare Environment for Project | 2d | 2007-05-02 | 2007-05-03 | 3 |  | 0d |  |
| 22 |  | Prepare Environment for an Iteration | 1d | 2007-05-04 | 2007-05-04 | 21, 6SS |  | 0d |  |
| 23 |  | Support Environment During an Iteration | 10d | 2007-05-05 | 2007-05-14 | 22 |  | 0d |  |
| 24 | 7 | **Configuration & Change Management** | 9d | 2007-05-02 | 2007-05-10 |  |  | 4d |  |
| 25 |  | Plan Project Configuration and Change Control | 1d | 2007-05-02 | 2007-05-02 | 3 |  | 5d |  |
| 26 |  | Create Project CM Environments | 1d | 2007-05-04 | 2007-05-04 | 25, 6SS |  | 4d |  |
| 27 |  | Change and Deliver Configuration Items | 6d | 2007-05-05 | 2007-05-10 | 26 |  | 4d |  |
| 28 |  | Manage Baselines and Releases | 6d | 2007-05-05 | 2007-05-10 | 26 |  | 4d |  |
| 29 |  | Manage Change Requests | 6d | 2007-05-05 | 2007-05-10 | 26 |  | 4d |  |
| 30 |  | Monitor and Report Configuration Status | 6d | 2007-05-05 | 2007-05-10 | 26 |  | 4d |  |
| 31 |  | Inception Complete | 0d | 2007-05-04 | 2007-05-04 | 2, 3 |  | 10d |  |
| 32 |  | Elaboration - Iteration 2 | 1d? | 2007-04-02 | 2007-04-02 |  |  | 42d |  |
| 33 |  | Elaboration - Iteration 3 | 1d? | 2007-04-02 | 2007-04-02 |  |  | 42d |  |
| 34 |  | Construction - Iteration 4 | 1d? | 2007-04-02 | 2007-04-02 |  |  | 42d |  |
| 35 |  | Construction - Iteration 5 | 1d? | 2007-04-02 | 2007-04-02 |  |  | 42d |  |
| 36 |  | Transition - Iteration 6 | 1d? | 2007-04-02 | 2007-04-02 |  |  | 42d |  |

## Version 2 (saved 2007-04-03)

Note of the change: organized the structure and completed the pm and requirements portions

Last finish 2007-05-14 → 2007-05-18 (+4d).

Added:

| ID | Task | Duration | Start | Finish | Predecessors | Constraint | Resources |
| --- | --- | --- | --- | --- | --- | --- | --- |
| 1 | **caArray 2.0** | 46.25d? | 2007-04-02 A | 2007-05-18 |  |  |  |
| 2 | **Inception Phase** | 43.25d? | 2007-04-02 A | 2007-05-15 |  |  |  |
| 8 | **Finalize Deliverables** | 43.25d? | 2007-04-02 | 2007-05-15 |  |  |  |
| 9 | March Status Report | 2h | 2007-04-16 | 2007-04-16 |  | start no earlier than 2007-04-16 |  |
| 10 | April Status Report | 2h | 2007-05-15 | 2007-05-15 |  | start no earlier than 2007-05-15 |  |
| 11 | Release Risk List | 1d? | 2007-04-02 | 2007-04-02 |  |  |  |
| 16 | Live Meeting with NCICB Stakeholders | 3d? | 2007-04-04 | 2007-04-06 |  | finish no earlier than 2007-04-06 | bgendleman; rdaly; etavela [25%] |
| 17 | Teleconference with Northwestern | 2h | 2007-04-20 | 2007-04-20 |  | start no earlier than 2007-04-20 | bgendleman |
| 18 | Live Meeting with Georgetown | 4h | 2007-04-23 | 2007-04-23 |  | start no earlier than 2007-04-23 | bgendleman |
| 19 | Live Meeting with Thomas Jefferson | 4h | 2007-04-26 | 2007-04-26 |  | start no earlier than 2007-04-26 | bgendleman |
| 20 | Live Meeting with U Pitt | 4h | 2007-04-30 | 2007-04-30 |  | start no earlier than 2007-04-30 | bgendleman |
| 24 | **Finalize Deliverables** | 5d? | 2007-04-02 | 2007-04-06 |  |  |  |
| 25 | Finalize Questionnaire | 2d | 2007-04-02 | 2007-04-03 |  |  | bgendleman |
| 26 | Finalize Vision Document | 1d? | 2007-04-02 | 2007-04-02 |  |  |  |
| 27 | Finalize Supplementary Spec | 1d? | 2007-04-02 | 2007-04-02 |  |  |  |
| 28 | Detail Prioritized Use Cases | 5d | 2007-04-02 | 2007-04-06 |  |  |  |
| 29 | Finalize Use Case Model | 1d? | 2007-04-02 | 2007-04-02 |  |  |  |
| 32 | **Finalize Deliverables** | 5d | 2007-04-02 | 2007-04-06 |  |  |  |
| 33 | Release Candidate Software Architecture Document | 5d | 2007-04-02 | 2007-04-06 |  |  |  |
| 36 | **Finalize Deliverables** | 1d? | 2007-04-02 | 2007-04-02 |  |  |  |
| 37 | Release Test Plan | 1d? | 2007-04-02 | 2007-04-02 |  |  |  |
| 42 | **Finalize Deliverables** | 2d | 2007-04-02 | 2007-04-03 |  |  |  |
| 43 | Release Development Case | 2d | 2007-04-02 | 2007-04-03 |  |  |  |
| 51 | **Finalize Deliverables** | 1d? | 2007-04-02 | 2007-04-02 |  |  |  |
| 52 | Release Configuration Management Plan | 1d? | 2007-04-02 | 2007-04-02 |  |  |  |
| 53 | Release Development Case | 1d? | 2007-04-02 | 2007-04-02 |  |  |  |
| 55 | **Elaboration Phase** | 1d? | 2007-05-15 | 2007-05-16 | 54 |  |  |
| 56 | **Elaboration - Iteration 1** | 0.5d | 2007-05-15 | 2007-05-15 |  |  |  |
| 57 | Iteration Post Mortem | 4h | 2007-05-15 | 2007-05-15 | 54 | start no earlier than 2007-05-14 | etavela; bgendleman; smatyas; jpike; rsrinavasa |
| 60 | **Construction Phase** | 1d? | 2007-05-16 | 2007-05-17 | 55 |  |  |
| 62 | Construction - Iteration 2 | 1d? | 2007-05-16 | 2007-05-17 |  |  |  |
| 64 | **Transition Phase** | 1d? | 2007-05-17 | 2007-05-18 | 60 |  |  |
| 65 | Transition - Iteration 1 | 1d? | 2007-05-17 | 2007-05-18 |  |  |  |

Removed: 4 Evaluate Project Scope and Risk; 5 Plan the Project; 13 Manage the Scope of the System

Changed:

| ID | Task | Start | Finish | Duration | Complete | Total float | Predecessors | Other |
| --- | --- | --- | --- | --- | --- | --- | --- | --- |
| 3 | **Inception Iteration 1** |  | 2007-05-14 → 2007-05-15 (+1d) | 43d → 43.25d? |  | 0d → 3d |  |  |
| 4 | **Project Management** |  | 2007-05-04 → 2007-05-15 (+11d) | 33d → 43.25d? |  |  |  |  |
| 5 | Plan the project |  |  |  |  | 0d → 8.25d |  | resources none → rdaly; etavela; bgendleman |
| 6 | Plan Remainder of Initial Iteration | 2007-05-04 → 2007-04-04 (-30d) | 2007-05-04 → 2007-04-04 (-30d) |  |  | 0d → 38.25d | Plan the Project → none | constraint none → finish no earlier than 2007-04-04 |
| 7 | Plan for Next Iteration | 2007-04-02 → 2007-05-07 (+35d) | 2007-04-02 → 2007-05-11 (+39d) | 1d → 5d |  | 41d → 3.25d |  |  |
| 12 | Release Software Development Plan | 2007-04-02 → 2007-05-11 (+39d) | 2007-04-02 → 2007-05-11 (+39d) |  |  | 41d → 3.25d |  | was named Refine Software Development Plan; constraint none → start no earlier than 2007-05-11 |
| 13 | **Requirements** |  | 2007-05-04 → 2007-04-30 (-4d) | 33d → 28.5d? | 13% → 8% | 10d → 17.75d |  |  |
| 14 | Define the Preliminary Vision | 2007-04-02 → 2007-04-25 (+23d) | 2007-04-06 → 2007-04-30 (+24d) |  |  | 38d → 17.75d |  |  |
| 15 | **Elicit Stakeholder Needs** | 2007-04-02 → 2007-04-04 (+2d) | 2007-04-04 → 2007-04-30 (+26d) | 3d → 26.5d? |  | 40d → 17.75d |  | constraint start no earlier than 1999-05-04 → none |
| 22 | Refine the System Definition | 2007-05-04 → 2007-04-18 (-16d) | 2007-05-04 → 2007-04-18 (-16d) |  |  | 10d → 30.25d | 6, Manage the Scope of the System, 21 → 6, 21 |  |
| 30 | **Analysis and Design** | 2007-05-05 → 2007-04-02 (-33d) | 2007-05-09 → 2007-04-09 (-30d) | 5d → 8d |  | 5d → 38.25d |  |  |
| 31 | Perform Architectural Synthesis | 2007-05-05 → 2007-04-05 (-30d) | 2007-05-09 → 2007-04-09 (-30d) |  |  | 5d → 38.25d |  |  |
| 34 | **Test** | 2007-05-03 → 2007-04-02 (-31d) | 2007-05-03 → 2007-04-02 (-31d) | 1d → 1d? |  | 11d → 42.25d |  |  |
| 35 | Define Evaluation Mission | 2007-05-03 → 2007-04-02 (-31d) | 2007-05-03 → 2007-04-02 (-31d) |  |  | 11d → 45.25d | Plan the ProjectSS → none |  |
| 38 | **Environment** | 2007-05-02 → 2007-04-02 (-30d) | 2007-05-14 → 2007-04-14 (-30d) |  |  | 0d → 33.25d |  |  |
| 39 | Prepare Environment for Project | 2007-05-02 → 2007-04-02 (-30d) | 2007-05-03 → 2007-04-03 (-30d) |  |  | 0d → 33.25d | 5 → none | constraint none → start no earlier than 2007-04-02; resources none → etavela; smatyas; smiller |
| 40 | Prepare Environment for an Iteration | 2007-05-04 → 2007-04-04 (-30d) | 2007-05-04 → 2007-04-04 (-30d) |  |  | 0d → 33.25d |  |  |
| 41 | Support Environment During an Iteration | 2007-05-05 → 2007-04-05 (-30d) | 2007-05-14 → 2007-04-14 (-30d) |  |  | 0d → 33.25d |  |  |
| 44 | **Configuration & Change Management** | 2007-05-02 → 2007-04-02 (-30d) | 2007-05-10 → 2007-05-09 (-1d) | 9d → 38d? |  | 4d → 8.25d |  |  |
| 46 | Create Project CM Environments | 2007-05-04 → 2007-05-03 (-1d) | 2007-05-04 → 2007-05-03 (-1d) |  |  | 4d → 8.25d |  |  |
| 47 | Change and Deliver Configuration Items | 2007-05-05 → 2007-05-04 (-1d) | 2007-05-10 → 2007-05-09 (-1d) |  |  | 4d → 8.25d |  |  |
| 48 | Manage Baselines and Releases | 2007-05-05 → 2007-05-04 (-1d) | 2007-05-10 → 2007-05-09 (-1d) |  |  | 4d → 8.25d |  |  |
| 49 | Manage Change Requests | 2007-05-05 → 2007-05-04 (-1d) | 2007-05-10 → 2007-05-09 (-1d) |  |  | 4d → 8.25d |  |  |
| 50 | Monitor and Report Configuration Status | 2007-05-05 → 2007-05-04 (-1d) | 2007-05-10 → 2007-05-09 (-1d) |  |  | 4d → 8.25d |  |  |
| 54 | Inception Complete | 2007-05-04 → 2007-05-15 (+11d) | 2007-05-04 → 2007-05-15 (+11d) |  |  | 10d → 0d | 4, 5 → 4, 5, 24, 8, 36, 42, 51 |  |
| 58 | Elaboration - Iteration 2 | 2007-04-02 → 2007-05-15 (+43d) | 2007-04-02 → 2007-05-16 (+44d) |  |  | 42d → 0d |  |  |
| 59 | Elaboration - Iteration n | 2007-04-02 → 2007-05-15 (+43d) | 2007-04-02 → 2007-05-16 (+44d) |  |  | 42d → 0d |  | was named Elaboration - Iteration 3 |
| 61 | Construction - Iteration 1 | 2007-04-02 → 2007-05-16 (+44d) | 2007-04-02 → 2007-05-17 (+45d) |  |  | 42d → 0d |  | was named Construction - Iteration 4 |
| 63 | Construction - Iteration n | 2007-04-02 → 2007-05-16 (+44d) | 2007-04-02 → 2007-05-17 (+45d) |  |  | 42d → 0d |  | was named Construction - Iteration 5 |
| 66 | Transition - Iteration n | 2007-04-02 → 2007-05-17 (+45d) | 2007-04-02 → 2007-05-18 (+46d) |  |  | 42d → 0d |  | was named Transition - Iteration 6 |
