# inception_iteration

How a schedule from MS Project changed from version to version. A marks actual dates.

## Version 1 (saved 2007-04-03)

Note of the change: Renamed schedule

| ID | WBS | Task | Duration | Start | Finish | Predecessors | Complete | Total float | Constraint |
| --- | --- | --- | --- | --- | --- | --- | --- | --- | --- |
| 1 | 1 | **caArray 2.0** | 46.25d? | 2007-04-02 A | 2007-05-18 |  | 2% | 0d |  |
| 2 | 1.1 | **Inception Phase** | 43.25d? | 2007-04-02 A | 2007-05-15 |  | 2% | 3d |  |
| 3 | 1.1.1 | **Inception Iteration 1** | 43.25d? | 2007-04-02 A | 2007-05-15 |  | 2% | 3d |  |
| 4 | 1 | **Project Management** | 43.25d? | 2007-04-02 | 2007-05-15 |  |  | 0d |  |
| 5 |  | Plan the project | 30d | 2007-04-02 | 2007-05-01 |  |  | 8.25d | start no earlier than 2007-04-02 |
| 6 |  | Plan Remainder of Initial Iteration | 1d | 2007-04-04 | 2007-04-04 |  |  | 38.25d | finish no earlier than 2007-04-04 |
| 7 |  | Plan for Next Iteration | 5d | 2007-05-07 | 2007-05-11 | 12FF |  | 3.25d |  |
| 8 | 1.1.1.1.4 | **Finalize Deliverables** | 43.25d? | 2007-04-02 | 2007-05-15 |  |  | 0d |  |
| 9 |  | March Status Report | 2h | 2007-04-16 | 2007-04-16 |  |  | 29d | start no earlier than 2007-04-16 |
| 10 |  | April Status Report | 2h | 2007-05-15 | 2007-05-15 |  |  | 0d | start no earlier than 2007-05-15 |
| 11 |  | Release Risk List | 1d? | 2007-04-02 | 2007-04-02 |  |  | 42.25d |  |
| 12 |  | Release Software Development Plan | 1d | 2007-05-11 | 2007-05-11 |  |  | 3.25d | start no earlier than 2007-05-11 |
| 13 | 3 | **Requirements** | 28.5d? | 2007-04-02 A | 2007-04-30 |  | 8% | 17.75d |  |
| 14 |  | Define the Preliminary Vision | 5d | 2007-04-25 | 2007-04-30 | 5SS, 15FF |  | 17.75d | start no earlier than 1999-05-04 |
| 15 | 3.2 | **Elicit Stakeholder Needs** | 26.5d? | 2007-04-04 | 2007-04-30 | 5SS |  | 17.75d |  |
| 16 |  | Live Meeting with NCICB Stakeholders | 3d? | 2007-04-04 | 2007-04-06 |  |  | 41.25d | finish no earlier than 2007-04-06 |
| 17 |  | Teleconference with Northwestern | 2h | 2007-04-20 | 2007-04-20 |  |  | 28d | start no earlier than 2007-04-20 |
| 18 |  | Live Meeting with Georgetown | 4h | 2007-04-23 | 2007-04-23 |  |  | 24.75d | start no earlier than 2007-04-23 |
| 19 |  | Live Meeting with Thomas Jefferson | 4h | 2007-04-26 | 2007-04-26 |  |  | 21.75d | start no earlier than 2007-04-26 |
| 20 |  | Live Meeting with U Pitt | 4h | 2007-04-30 | 2007-04-30 |  |  | 17.75d | start no earlier than 2007-04-30 |
| 21 |  | Identify and Describe Use Cases | 3d | 2007-04-06 | 2007-04-08 |  |  | 39.25d | start no earlier than 2007-04-06 |
| 22 |  | Refine the System Definition | 0d | 2007-04-18 | 2007-04-18 | 6, 21 |  | 30.25d | start no earlier than 2007-04-18 |
| 23 |  | Manage Changing Requirements | 2d | 2007-04-25 A | 2007-04-26 A | 14SS | 100% |  | start no earlier than 2007-04-25 |
| 24 | 1.1.1.2.6 | **Finalize Deliverables** | 5d? | 2007-04-02 | 2007-04-06 |  |  | 38.25d |  |
| 25 |  | Finalize Questionnaire | 2d | 2007-04-02 | 2007-04-03 |  |  | 41.25d |  |
| 26 |  | Finalize Vision Document | 1d? | 2007-04-02 | 2007-04-02 |  |  | 42.25d |  |
| 27 |  | Finalize Supplementary Spec | 1d? | 2007-04-02 | 2007-04-02 |  |  | 42.25d |  |
| 28 |  | Detail Prioritized Use Cases | 5d | 2007-04-02 | 2007-04-06 |  |  | 38.25d |  |
| 29 |  | Finalize Use Case Model | 1d? | 2007-04-02 | 2007-04-02 |  |  | 42.25d |  |
| 30 | 4 | **Analysis and Design** | 8d | 2007-04-02 | 2007-04-09 |  |  | 38.25d |  |
| 31 |  | Perform Architectural Synthesis | 5d | 2007-04-05 | 2007-04-09 | 6 |  | 38.25d |  |
| 32 | 1.1.1.3.2 | **Finalize Deliverables** | 5d | 2007-04-02 | 2007-04-06 |  |  | 41.25d |  |
| 33 |  | Release Candidate Software Architecture Document | 5d | 2007-04-02 | 2007-04-06 |  |  | 41.25d |  |
| 34 | 5 | **Test** | 1d? | 2007-04-02 | 2007-04-02 |  |  | 42.25d |  |
| 35 |  | Define Evaluation Mission | 1d | 2007-04-02 | 2007-04-02 |  |  | 45.25d |  |
| 36 | 1.1.1.4.2 | **Finalize Deliverables** | 1d? | 2007-04-02 | 2007-04-02 |  |  | 42.25d |  |
| 37 |  | Release Test Plan | 1d? | 2007-04-02 | 2007-04-02 |  |  | 42.25d |  |
| 38 | 6 | **Environment** | 13d | 2007-04-02 | 2007-04-14 |  |  | 33.25d |  |
| 39 |  | Prepare Environment for Project | 2d | 2007-04-02 | 2007-04-03 |  |  | 33.25d | start no earlier than 2007-04-02 |
| 40 |  | Prepare Environment for an Iteration | 1d | 2007-04-04 | 2007-04-04 | 39, 6SS |  | 33.25d |  |
| 41 |  | Support Environment During an Iteration | 10d | 2007-04-05 | 2007-04-14 | 40 |  | 33.25d |  |
| 42 | 1.1.1.5.4 | **Finalize Deliverables** | 2d | 2007-04-02 | 2007-04-03 |  |  | 41.25d |  |
| 43 |  | Release Development Case | 2d | 2007-04-02 | 2007-04-03 |  |  | 41.25d |  |
| 44 | 7 | **Configuration & Change Management** | 38d? | 2007-04-02 | 2007-05-09 |  |  | 8.25d |  |
| 45 |  | Plan Project Configuration and Change Control | 1d | 2007-05-02 | 2007-05-02 | 5 |  | 8.25d |  |
| 46 |  | Create Project CM Environments | 1d | 2007-05-03 | 2007-05-03 | 45, 6SS |  | 8.25d |  |
| 47 |  | Change and Deliver Configuration Items | 6d | 2007-05-04 | 2007-05-09 | 46 |  | 8.25d |  |
| 48 |  | Manage Baselines and Releases | 6d | 2007-05-04 | 2007-05-09 | 46 |  | 8.25d |  |
| 49 |  | Manage Change Requests | 6d | 2007-05-04 | 2007-05-09 | 46 |  | 8.25d |  |
| 50 |  | Monitor and Report Configuration Status | 6d | 2007-05-04 | 2007-05-09 | 46 |  | 8.25d |  |
| 51 | 1.1.1.6.7 | **Finalize Deliverables** | 1d? | 2007-04-02 | 2007-04-02 |  |  | 42.25d |  |
| 52 |  | Release Configuration Management Plan | 1d? | 2007-04-02 | 2007-04-02 |  |  | 42.25d |  |
| 53 |  | Release Development Case | 1d? | 2007-04-02 | 2007-04-02 |  |  | 42.25d |  |
| 54 |  | Inception Complete | 0d | 2007-05-15 | 2007-05-15 | 4, 5, 24, 8, 36, 42, 51 |  | 0d |  |
| 55 | 1.2 | **Elaboration Phase** | 1d? | 2007-05-15 | 2007-05-16 | 54 |  | 0d |  |
| 56 | 1.2.1 | **Elaboration - Iteration 1** | 0.5d | 2007-05-15 | 2007-05-15 |  |  | 0.5d |  |
| 57 |  | Iteration Post Mortem | 4h | 2007-05-15 | 2007-05-15 | 54 |  | 0.5d | start no earlier than 2007-05-14 |
| 58 |  | Elaboration - Iteration 2 | 1d? | 2007-05-15 | 2007-05-16 |  |  | 0d |  |
| 59 |  | Elaboration - Iteration n | 1d? | 2007-05-15 | 2007-05-16 |  |  | 0d |  |
| 60 | 1.3 | **Construction Phase** | 1d? | 2007-05-16 | 2007-05-17 | 55 |  | 0d |  |
| 61 |  | Construction - Iteration 1 | 1d? | 2007-05-16 | 2007-05-17 |  |  | 0d |  |
| 62 |  | Construction - Iteration 2 | 1d? | 2007-05-16 | 2007-05-17 |  |  | 0d |  |
| 63 |  | Construction - Iteration n | 1d? | 2007-05-16 | 2007-05-17 |  |  | 0d |  |
| 64 | 1.4 | **Transition Phase** | 1d? | 2007-05-17 | 2007-05-18 | 60 |  | 0d |  |
| 65 |  | Transition - Iteration 1 | 1d? | 2007-05-17 | 2007-05-18 |  |  | 0d |  |
| 66 |  | Transition - Iteration n | 1d? | 2007-05-17 | 2007-05-18 |  |  | 0d |  |

## Version 2 (saved 2007-04-03)

Note of the change: updated across disciplines

Last finish stays 2007-05-18.

Added:

| ID | Task | Duration | Start | Finish | Predecessors | Constraint | Resources |
| --- | --- | --- | --- | --- | --- | --- | --- |
| 8 | Manage Risk List | 1d? | 2007-04-02 | 2007-04-02 |  |  |  |
| 24 | **Implement Requirement and Test Traceability** | 1d? | 2007-04-02 | 2007-04-02 |  |  |  |
| 25 | Determine Approach | 1d? | 2007-04-02 | 2007-04-02 |  |  |  |
| 28 | Requirements Management Plan | 1d? | 2007-04-02 | 2007-04-02 |  |  |  |
| 36 | Use Case Design (Manage Protocols) | 1d | 2007-04-02 | 2007-04-02 |  |  | etavela |
| 37 | Vocabulary Management Subsystem Design | 3d | 2007-04-02 | 2007-04-04 |  |  | etavela [25%]; jpike |
| 38 | Data Access Subsystem Design | 2d | 2007-04-02 | 2007-04-03 |  |  | rsrinavasa; etavela [25%] |
| 39 | MAGE-OM Façade | 3d | 2007-04-02 | 2007-04-04 |  |  | rsrinavasa; etavela [25%] |
| 42 | **Implementation** | 25d? | 2007-04-02 | 2007-05-04 |  |  |  |
| 43 | Structure the Implementation Model | 1d | 2007-04-02 | 2007-04-02 |  |  | etavela |
| 44 | Implement Vocabulary Subsystem | 3w | 2007-04-03 | 2007-04-23 | 43 |  | jpike; etavela [5%] |
| 45 | Implement MAGE-OM | 2w | 2007-04-03 | 2007-04-16 | 43 |  | etavela [15%]; rsrinavasa |
| 46 | Implement Data Access | 3d | 2007-04-17 | 2007-04-19 | 45 |  | rsrinavasa; etavela [5%] |
| 47 | Implement MAGE-OM Façade | 1w | 2007-04-20 | 2007-04-26 | 46 |  | etavela [50%]; rsrinavasa |
| 48 | Implement Protocol Management | 3d | 2007-04-27 | 2007-05-01 | 47 |  | jpike; rsrinavasa; etavela [20%] |
| 49 | Implement Protocol User Interface (minimal) | 3d | 2007-05-02 | 2007-05-04 | 48 |  | etavela [25%]; rsrinavasa; jpike |
| 50 | **Finalize Deliverables** | 1d? | 2007-04-02 | 2007-04-02 |  |  |  |
| 51 | Release Architectural Prototype | 1d? | 2007-04-02 | 2007-04-02 |  |  |  |
| 53 | Implement System Tests Against Protocol Management | 1d? | 2007-04-02 | 2007-04-02 |  |  | smatyas |
| 58 | Launch Development Process | 2h | 2007-04-09 | 2007-04-09 |  | start no earlier than 2007-04-09 | etavela; smatyas; bgendleman; rdaly; jpike; smiller; rsrinavasa |
| 59 | **Set Up Tools** | 4d? | 2007-04-02 | 2007-04-05 |  |  |  |
| 60 | Set Up Maven | 2d | 2007-04-02 | 2007-04-03 |  | start no earlier than 2007-04-02 | smatyas [50%]; smiller [50%] |
| 61 | Set Up Continuous Integration | 1d? | 2007-04-05 | 2007-04-05 |  | start no earlier than 2007-04-05 | smatyas |
| 62 | Set Up Eclipse | 1d? | 2007-04-03 | 2007-04-03 |  | start no earlier than 2007-04-03 | jpike; smiller [50%] |
| 63 | Set Up Selenium | 2d | 2007-04-02 | 2007-04-03 |  |  | smatyas |
| 64 | Set Up Code Quality Tools | 2d? | 2007-04-02 | 2007-04-03 |  |  | smatyas; smiller |
| 67 | Release Guidelines for the Project | 2d | 2007-04-02 | 2007-04-03 |  |  | etavela |
| 68 | Release Templates for the Project | 1d? | 2007-04-02 | 2007-04-02 |  |  | smiller [50%]; etavela |
| 72 | Set Up Change Management Environment | 1d? | 2007-04-02 | 2007-04-02 |  |  | rdaly; bgendleman; smiller |
| 74 | G-Forge Implementation of the Change Control Process | 3d | 2007-04-02 | 2007-04-04 |  |  | bgendleman |

Removed: 39 Prepare Environment for Project; 40 Prepare Environment for an Iteration; 41 Support Environment During an Iteration; 46 Create Project CM Environments; 47 Change and Deliver Configuration Items; 48 Manage Baselines and Releases; 49 Manage Change Requests; 50 Monitor and Report Configuration Status; 53 Release Development Case

Changed:

| ID | Task | Start | Finish | Duration | Complete | Total float | Predecessors | Other |
| --- | --- | --- | --- | --- | --- | --- | --- | --- |
| 1 | **caArray 2.0** |  |  | 46.25d? → 34.25d? | 2% → 1% |  |  |  |
| 2 | **Inception Phase** |  |  | 43.25d? → 31.25d? | 2% → 1% |  |  |  |
| 3 | **Inception Iteration 1** |  |  | 43.25d? → 31.25d? | 2% → 1% |  |  |  |
| 4 | **Project Management** |  |  | 43.25d? → 31.25d? |  |  |  |  |
| 5 | Plan the project |  | 2007-05-01 → 2007-05-11 (+10d) |  |  | 8.25d → 1.25d |  |  |
| 9 | **Finalize Deliverables** |  |  | 43.25d? → 31.25d? |  |  |  |  |
| 14 | **Requirements** |  |  | 28.5d? → 20.5d? | 8% → 7% | 17.75d → 13.75d |  |  |
| 15 | Define the Preliminary Vision | 2007-04-25 → 2007-04-23 (-2d) |  |  |  | 17.75d → 13.75d |  |  |
| 16 | **Elicit Stakeholder Needs** |  |  | 26.5d? → 18.5d? |  | 17.75d → 13.75d |  |  |
| 22 | Identify and Describe Use Cases |  | 2007-04-08 → 2007-04-10 (+2d) |  |  | 39.25d → 27.25d |  |  |
| 34 | **Analysis and Design** |  | 2007-04-09 → 2007-04-06 (-3d) | 8d → 5d |  | 38.25d → 29.25d |  |  |
| 35 | Use Case Analysis (Manage Protocols) |  | 2007-04-09 → 2007-04-05 (-4d) | 5d → 1d |  | 38.25d → 30.25d |  | was named Perform Architectural Synthesis; resources none → etavela |
| 52 | **Test** |  | 2007-04-02 → 2007-04-04 (+2d) | 1d? → 3d? |  | 42.25d → 28.25d |  |  |
| 54 | Analyze and Identify Test Approach |  |  | 1d → 0.25d |  | 45.25d → 34d |  | was named Define Evaluation Mission; resources none → smatyas; etavela; bgendleman; rdaly |
| 55 | **Finalize Deliverables** |  | 2007-04-02 → 2007-04-04 (+2d) | 1d? → 3d |  | 42.25d → 28.25d |  |  |
| 56 | Release Test Plan |  | 2007-04-02 → 2007-04-04 (+2d) | 1d? → 3d |  | 42.25d → 28.25d |  | resources none → smatyas; bgendleman [25%]; etavela [5%] |
| 57 | **Environment** |  | 2007-04-14 → 2007-04-09 (-5d) | 13d → 5.25d? |  | 33.25d → 29d |  |  |
| 65 | **Finalize Deliverables** |  |  | 2d → 2d? |  | 41.25d → 29.25d |  |  |
| 69 | **Configuration & Change Management** |  | 2007-05-09 → 2007-04-06 (-33d) | 38d? → 5d? |  | 8.25d → 28.25d |  |  |
| 70 | Plan Project Configuration and Change Control | 2007-05-02 → 2007-04-02 (-30d) | 2007-05-02 → 2007-04-06 (-26d) | 1d → 5d |  | 8.25d → 29.25d | 5 → none |  |
| 71 | **Finalize Deliverables** |  | 2007-04-02 → 2007-04-04 (+2d) | 1d? → 3d? |  | 42.25d → 28.25d |  |  |
| 73 | Release Configuration Management Plan |  |  |  |  | 42.25d → 30.25d |  | resources none → etavela; bgendleman |

## Version 3 (saved 2007-04-14)

Note of the change: project updated per call with Eric and baselined through week 2 of 6

Last finish 2007-05-18 → 2007-05-21 (+3d). Complete tasks 1 → 8.

Added:

| ID | Task | Duration | Start | Finish | Predecessors | Constraint | Resources |
| --- | --- | --- | --- | --- | --- | --- | --- |
| 17 | Teleconference with Columbia - Aris | 1h | 2007-04-09 A | 2007-04-09 A | 16 |  | bgendleman |
| 53 | Meet with Indepdent QA | 2h | 2007-04-09 | 2007-04-09 |  | finish no later than 2007-04-27 | bgendleman [80%] |

Removed: 8 Manage Risk List; 72 Set Up Change Management Environment

Changed:

| ID | Task | Start | Finish | Duration | Complete | Total float | Predecessors | Other |
| --- | --- | --- | --- | --- | --- | --- | --- | --- |
| 1 | **caArray 2.0** |  | 2007-05-18 → 2007-05-21 (+3d) | 34.25d? → 35.75d? | 1% → 17% |  |  | baseline start none → 2007-04-02; baseline finish none → 2007-05-21 |
| 2 | **Inception Phase** |  |  | 31.25d? → 32d | 1% → 18% | 3d → 3.75d |  | baseline start none → 2007-04-02; baseline finish none → 2007-05-15 |
| 3 | **Inception Iteration 1** |  |  | 31.25d? → 32d | 1% → 18% | 3d → 3.75d |  | baseline start none → 2007-04-02; baseline finish none → 2007-05-15 |
| 4 | **Project Management** | 2007-04-02 A |  | 31.25d? → 31.25d | 0% → 18% |  |  | baseline start none → 2007-04-02; baseline finish none → 2007-05-15 |
| 5 | Plan the project | 2007-04-02 A | 2007-05-11 → 2007-04-19 (-22d) | 30d → 12d | 0% → 25% | 1.25d → 17.25d |  | resources rdaly; etavela; bgendleman → rdaly [5%]; bgendleman; baseline start none → 2007-04-02; baseline finish none → 2007-04-19 |
| 6 | Plan Remainder of Initial Iteration | 2007-04-04 → 2007-04-19 A (+15d) | 2007-04-04 → 2007-04-19 (+15d) |  | 0% → 50% | 28.25d → 8.75d |  | constraint finish no earlier than 2007-04-04 → start no earlier than 2007-04-19; baseline start none → 2007-04-19; baseline finish none → 2007-04-19 |
| 7 | Plan for Next Iteration |  |  |  |  |  |  | baseline start none → 2007-05-07; baseline finish none → 2007-05-11 |
| 8 | **Finalize Deliverables** |  |  | 31.25d? → 31.25d |  |  |  | baseline start none → 2007-04-02; baseline finish none → 2007-05-15 |
| 9 | March Status Report |  |  |  |  | 21d → 2.75d |  | baseline start none → 2007-04-16; baseline finish none → 2007-04-16 |
| 10 | April Status Report |  |  |  |  |  |  | baseline start none → 2007-05-15; baseline finish none → 2007-05-15 |
| 11 | Release Risk List |  |  | 1d? → 2h |  | 30.25d → 31d |  | baseline start none → 2007-04-02; baseline finish none → 2007-04-02 |
| 12 | Release Software Development Plan |  |  |  |  |  |  | baseline start none → 2007-05-11; baseline finish none → 2007-05-11 |
| 13 | **Requirements** |  | 2007-04-30 → 2007-05-14 (+14d) | 20.5d? → 30.35d | 7% → 27% | 13.75d → 5.4d |  | baseline start none → 2007-04-02; baseline finish none → 2007-05-14 |
| 14 | Define the Preliminary Vision | 2007-04-23 A | 2007-04-30 → 2007-05-04 (+4d) |  | 0% → 50% | 13.75d → 4.65d |  | baseline start none → 2007-04-23; baseline finish none → 2007-05-04 |
| 15 | **Elicit Stakeholder Needs** | 2007-04-04 A | 2007-04-30 → 2007-05-04 (+4d) | 18.5d? → 22.75d | 0% → 56% | 13.75d → 4.65d |  | baseline start none → 2007-04-04; baseline finish none → 2007-05-04 |
| 16 | Live Meeting with NCICB Stakeholders | 2007-04-04 A | 2007-04-06 → 2007-04-11 (+5d) | 3d? → 4.38d | 0% → 77% | 29.25d → 21.4d |  | constraint finish no earlier than 2007-04-06 → start no earlier than 2007-04-04; baseline start none → 2007-04-04; baseline finish none → 2007-04-11 |
| 18 | Teleconference with Northwestern |  |  |  |  | 20d → 5.75d |  | baseline start none → 2007-04-20; baseline finish none → 2007-04-20 |
| 19 | Live Meeting with Georgetown | 2007-04-23 → 2007-04-27 (+4d) | 2007-04-23 → 2007-04-27 (+4d) |  |  | 18.75d → 4.65d | none → 18 | baseline start none → 2007-04-27; baseline finish none → 2007-04-27 |
| 20 | Live Meeting with Thomas Jefferson | 2007-04-26 → 2007-04-27 (+1d) | 2007-04-26 → 2007-05-04 (+8d) |  |  | 15.75d → 4.65d | none → 19 | baseline start none → 2007-04-27; baseline finish none → 2007-05-04 |
| 21 | Live Meeting with U Pitt | 2007-04-30 → 2007-05-04 (+4d) | 2007-04-30 → 2007-05-04 (+4d) |  |  | 13.75d → 4.65d | none → 20 | baseline start none → 2007-05-04; baseline finish none → 2007-05-04 |
| 22 | Identify and Describe Use Cases | 2007-04-06 → 2007-04-18 A (+12d) | 2007-04-10 → 2007-04-23 (+13d) | 3d → 4d | 0% → 50% | 27.25d → 3d |  | constraint start no earlier than 2007-04-06 → finish no earlier than 2007-04-20; resources none → bgendleman; rdaly; baseline start none → 2007-04-18; baseline finish none → 2007-04-23 |
| 23 | Refine the System Definition | 2007-04-18 → 2007-04-24 (+6d) | 2007-04-18 → 2007-05-10 (+22d) | 0d → 6.25d |  | 22.25d → 6.75d |  | resources none → bgendleman; etavela [10%]; baseline start none → 2007-04-24; baseline finish none → 2007-05-10 |
| 24 | **Implement Requirement and Test Traceability** | 2007-04-02 → 2007-04-16 (+14d) | 2007-04-02 → 2007-04-20 (+18d) | 1d? → 4.6d |  | 33.25d → 21.15d |  | baseline start none → 2007-04-16; baseline finish none → 2007-04-20 |
| 25 | Determine Approach | 2007-04-02 → 2007-04-16 (+14d) | 2007-04-02 → 2007-04-20 (+18d) | 1d? → 2.25d |  | 33.25d → 21.15d |  | constraint none → start no earlier than 2007-04-16; resources none → bgendleman [20%]; etavela [20%]; baseline start none → 2007-04-16; baseline finish none → 2007-04-20 |
| 26 | Manage Changing Requirements | 2007-04-25 A → 2007-04-27 (+2d) | 2007-04-26 A → 2007-05-04 (+8d) | 2d → 1d | 100% → 0% | none → 11.32d |  | resources none → bgendleman; baseline start none → 2007-04-27; baseline finish none → 2007-05-04 |
| 27 | **Finalize Deliverables** | 2007-04-02 A | 2007-04-06 → 2007-05-14 (+38d) | 5d? → 30.35d | 0% → 8% | 26.25d → 0.9d |  | baseline start none → 2007-04-02; baseline finish none → 2007-05-14 |
| 28 | Requirements Management Plan | 2007-04-02 A | 2007-04-02 → 2007-04-09 (+7d) | 1d? → 0.25d | 0% → 50% | 30.25d → 26.12d |  | resources none → bgendleman; baseline start none → 2007-04-02; baseline finish none → 2007-04-09 |
| 29 | Finalize Questionnaire | 2007-04-02 A | 2007-04-03 → 2007-04-02 A (-1d) | 2d → 0.25d | 0% → 100% | 29.25d → none |  | baseline start none → 2007-04-02; baseline finish none → 2007-04-02 |
| 30 | Finalize Vision Document | 2007-04-02 → 2007-04-30 A (+28d) | 2007-04-02 → 2007-05-11 (+39d) | 1d? → 1d | 0% → 15% | 30.25d → 0.9d | none → 21, 14 | resources none → bgendleman; baseline start none → 2007-04-30; baseline finish none → 2007-05-11 |
| 31 | Finalize Supplementary Spec | 2007-04-02 → 2007-05-11 (+39d) | 2007-04-02 → 2007-05-14 (+42d) | 1d? → 1d |  | 30.25d → 0.9d | none → 30 | resources none → bgendleman; baseline start none → 2007-05-11; baseline finish none → 2007-05-14 |
| 32 | Detail Prioritized Use Cases | 2007-04-02 → 2007-04-27 (+25d) | 2007-04-06 → 2007-05-11 (+35d) | 5d → 3d |  | 26.25d → 1.25d |  | constraint none → start no earlier than 2007-04-23; resources none → bgendleman; baseline start none → 2007-04-27; baseline finish none → 2007-05-11 |
| 33 | Finalize Use Case Model | 2007-04-02 → 2007-04-27 (+25d) | 2007-04-02 → 2007-05-04 (+32d) | 1d? → 1d |  | 30.25d → 0.75d | none → 22 | resources none → bgendleman; baseline start none → 2007-04-27; baseline finish none → 2007-05-04 |
| 34 | **Analysis and Design** | 2007-04-02 A | 2007-04-06 → 2007-04-20 (+14d) | 5d → 15d | 0% → 26% | 29.25d → 20.75d |  | baseline start none → 2007-04-02; baseline finish none → 2007-04-20 |
| 35 | Use Case Analysis (Manage Protocols) | 2007-04-05 A | 2007-04-05 A |  | 0% → 100% | 30.25d → none | 6 → none | constraint none → start no earlier than 2007-04-05; baseline start none → 2007-04-05; baseline finish none → 2007-04-05 |
| 36 | Use Case Design (Manage Protocols) | 2007-04-02 → 2007-04-06 A (+4d) | 2007-04-02 → 2007-04-06 A (+4d) |  | 0% → 100% | 33.25d → none | none → 35 | baseline start none → 2007-04-06; baseline finish none → 2007-04-06 |
| 37 | Vocabulary Management Subsystem Design | 2007-04-02 → 2007-04-04 A (+2d) | 2007-04-04 → 2007-04-12 (+8d) | 3d → 4.95d | 0% → 29% | 31.25d → 9.43d |  | constraint none → start no earlier than 2007-04-04; resources etavela [25%]; jpike → etavela [10%]; jpike; baseline start none → 2007-04-04; baseline finish none → 2007-04-12 |
| 38 | Data Access Subsystem Design | 2007-04-02 → 2007-04-09 (+7d) | 2007-04-03 → 2007-04-20 (+17d) | 2d → 3d |  | 32.25d → 0d |  | constraint none → start no earlier than 2007-04-09; baseline start none → 2007-04-09; baseline finish none → 2007-04-20 |
| 39 | MAGE-OM Façade | 2007-04-02 A | 2007-04-04 → 2007-04-10 (+6d) | 3d → 4.5d | 0% → 37% | 31.25d → 14.87d |  | baseline start none → 2007-04-02; baseline finish none → 2007-04-10 |
| 40 | **Finalize Deliverables** | 2007-04-02 → 2007-04-11 (+9d) | 2007-04-06 → 2007-04-19 (+13d) | 5d → 6d |  | 29.25d → 22.45d |  | baseline start none → 2007-04-11; baseline finish none → 2007-04-19 |
| 41 | Release Candidate Software Architecture Document | 2007-04-02 → 2007-04-11 (+9d) | 2007-04-06 → 2007-04-19 (+13d) |  |  | 29.25d → 22.45d |  | resources none → etavela [90%]; baseline start none → 2007-04-11; baseline finish none → 2007-04-19 |
| 42 | **Implementation** | 2007-04-02 A | 2007-05-04 → 2007-05-15 (+11d) | 25d? → 32d | 0% → 3% | 9.25d → 3.75d |  | baseline start none → 2007-04-02; baseline finish none → 2007-05-15 |
| 43 | Structure the Implementation Model | 2007-04-02 A | 2007-04-02 → 2007-04-04 A (+2d) | 1d → 1.5d | 0% → 100% | 9.25d → none |  | constraint none → start no earlier than 2007-04-09; baseline start none → 2007-04-02; baseline finish none → 2007-04-04 |
| 44 | Implement Vocabulary Subsystem | 2007-04-03 → 2007-04-12 (+9d) | 2007-04-23 → 2007-05-08 (+15d) |  |  | 18.25d → 9.43d | 43 → 43, 37 | resources jpike; etavela [5%] → jpike; baseline start none → 2007-04-12; baseline finish none → 2007-05-08 |
| 45 | Implement MAGE-OM | 2007-04-03 → 2007-04-10 (+7d) | 2007-04-16 → 2007-04-30 (+14d) |  |  | 9.25d → 14.87d | 43 → 43, 39 | resources etavela [15%]; rsrinavasa → rsrinavasa; baseline start none → 2007-04-10; baseline finish none → 2007-04-30 |
| 46 | Implement Data Access | 2007-04-17 → 2007-04-16 (-1d) | 2007-04-19 → 2007-04-24 (+5d) |  |  | 9.25d → -1.88d | 45 → 43 | constraint none → start no earlier than 2007-04-16; resources rsrinavasa; etavela [5%] → rsrinavasa; baseline start none → 2007-04-16; baseline finish none → 2007-04-24 |
| 47 | Implement MAGE-OM Façade | 2007-04-20 → 2007-04-19 (-1d) | 2007-04-26 → 2007-05-15 (+19d) | 1w → 1.7w |  | 9.25d → 3.75d | 46 → none | constraint none → start no earlier than 2007-04-18; resources etavela [50%]; rsrinavasa → etavela [25%]; rsrinavasa; baseline start none → 2007-04-19; baseline finish none → 2007-05-15 |
| 48 | Implement Protocol Management | 2007-04-27 → 2007-04-16 (-11d) | 2007-05-01 → 2007-05-09 (+8d) | 3d → 2.1w |  | 9.25d → 4.43d | 47 → 36 | constraint none → start no earlier than 2007-04-16; resources jpike; rsrinavasa; etavela [20%] → jpike; rsrinavasa; etavela [10%]; baseline start none → 2007-04-16; baseline finish none → 2007-05-09 |
| 49 | Implement Protocol User Interface (minimal) | 2007-05-02 → 2007-05-09 (+7d) | 2007-05-04 → 2007-05-14 (+10d) |  |  | 9.25d → 4.43d |  | resources etavela [25%]; rsrinavasa; jpike → rsrinavasa; jpike; baseline start none → 2007-05-09; baseline finish none → 2007-05-14 |
| 50 | **Finalize Deliverables** | 2007-04-02 → 2007-05-14 (+42d) | 2007-04-02 → 2007-05-15 (+43d) | 1d? → 1d |  | 33.25d → 4.43d |  | baseline start none → 2007-05-14; baseline finish none → 2007-05-15 |
| 51 | Release Architectural Prototype | 2007-04-02 → 2007-05-14 (+42d) | 2007-04-02 → 2007-05-15 (+43d) | 1d? → 1d |  | 33.25d → 4.43d | none → 49 | resources none → etavela [90%]; baseline start none → 2007-05-14; baseline finish none → 2007-05-15 |
| 52 | **Test** |  | 2007-04-04 → 2007-05-15 (+41d) | 3d? → 31.07d |  | 28.25d → 4.43d |  | baseline start none → 2007-04-02; baseline finish none → 2007-05-15 |
| 54 | Implement System Tests Against Protocol Management | 2007-04-02 → 2007-05-15 (+43d) | 2007-04-02 → 2007-05-15 (+43d) | 1d? → 0d |  | 33.25d → 4.43d | none → 51 | constraint none → start no earlier than 2007-05-14; baseline start none → 2007-05-15; baseline finish none → 2007-05-15 |
| 55 | Analyze and Identify Test Approach |  | 2007-04-02 → 2007-04-27 (+25d) | 0.25d → 1d |  | 34d → 6.75d |  | resources smatyas; etavela; bgendleman; rdaly → smatyas; etavela; bgendleman; baseline start none → 2007-04-02; baseline finish none → 2007-04-27 |
| 56 | **Finalize Deliverables** | 2007-04-02 → 2007-04-27 (+25d) | 2007-04-04 → 2007-05-04 (+30d) | 3d → 5d |  | 28.25d → 6.75d |  | baseline start none → 2007-04-27; baseline finish none → 2007-05-04 |
| 57 | Release Test Plan | 2007-04-02 → 2007-04-27 (+25d) | 2007-04-04 → 2007-05-04 (+30d) | 3d → 2.5d |  | 28.25d → 6.75d | none → 55 | baseline start none → 2007-04-27; baseline finish none → 2007-05-04 |
| 58 | **Environment** | 2007-04-02 A | 2007-04-09 → 2007-05-14 (+35d) | 5.25d? → 30.25d | 0% → 41% | 29d → 5.5d |  | baseline start none → 2007-04-02; baseline finish none → 2007-05-14 |
| 59 | Launch Development Process | 2007-04-09 A | 2007-04-09 → 2007-04-18 A (+9d) | 2h → 6h | 0% → 100% | 29d → none |  | resources etavela; smatyas; bgendleman; rdaly; jpike; smiller; rsrinavasa → smatyas; jpike; smiller; rsrinavasa; baseline start none → 2007-04-09; baseline finish none → 2007-04-18 |
| 60 | **Set Up Tools** | 2007-04-02 A | 2007-04-05 → 2007-04-27 (+22d) | 4d? → 20d | 0% → 64% | 30.25d → 15.75d |  | baseline start none → 2007-04-02; baseline finish none → 2007-04-27 |
| 61 | Set Up Maven | 2007-04-02 A | 2007-04-03 → 2007-04-09 A (+6d) | 2d → 4d | 0% → 100% | 32.25d → none |  | baseline start none → 2007-04-02; baseline finish none → 2007-04-09 |
| 62 | Set Up Continuous Integration | 2007-04-05 → 2007-04-16 (+11d) | 2007-04-05 → 2007-04-16 (+11d) | 1d? → 1d |  | 30.25d → 7d |  | constraint start no earlier than 2007-04-05 → start no earlier than 2007-04-16; baseline start none → 2007-04-16; baseline finish none → 2007-04-16 |
| 63 | Set Up Eclipse | 2007-04-03 A | 2007-04-03 → 2007-04-06 A (+3d) | 1d? → 2d | 0% → 100% | 32.25d → none |  | baseline start none → 2007-04-03; baseline finish none → 2007-04-06 |
| 64 | Set Up Selenium | 2007-04-02 → 2007-04-26 (+24d) | 2007-04-03 → 2007-04-27 (+24d) |  |  | 32.25d → 0d | none → 62 | constraint none → finish no earlier than 2007-04-27; baseline start none → 2007-04-26; baseline finish none → 2007-04-27 |
| 65 | Set Up Code Quality Tools | 2007-04-02 A | 2007-04-03 → 2007-04-09 (+6d) | 2d? → 2d | 0% → 50% | 32.25d → 30.25d |  | resources smatyas; smiller → smatyas; etavela; baseline start none → 2007-04-02; baseline finish none → 2007-04-09 |
| 66 | **Finalize Deliverables** | 2007-04-02 → 2007-04-19 (+17d) | 2007-04-03 → 2007-05-14 (+41d) | 2d? → 17.25d |  | 29.25d → 1d |  | baseline start none → 2007-04-19; baseline finish none → 2007-05-14 |
| 67 | Release Development Case | 2007-04-02 → 2007-05-14 (+42d) | 2007-04-03 → 2007-05-14 (+41d) | 2d → 0.25d |  | 29.25d → 1d |  | constraint none → start no earlier than 2007-05-14; resources none → etavela; baseline start none → 2007-05-14; baseline finish none → 2007-05-14 |
| 68 | Release Guidelines for the Project | 2007-04-02 → 2007-04-20 (+18d) | 2007-04-03 → 2007-04-23 (+20d) | 2d → 1.25d |  | 29.25d → 15.45d |  | constraint none → start no earlier than 2007-04-16; baseline start none → 2007-04-20; baseline finish none → 2007-04-23 |
| 69 | Release Templates for the Project | 2007-04-02 → 2007-04-19 (+17d) | 2007-04-02 → 2007-04-30 (+28d) | 1d? → 5.55d |  | 30.25d → 10.25d |  | constraint none → finish no earlier than 2007-04-13; baseline start none → 2007-04-19; baseline finish none → 2007-04-30 |
| 70 | **Configuration & Change Management** |  | 2007-04-06 → 2007-05-15 (+39d) | 5d? → 31.25d |  | 28.25d → 0d |  | baseline start none → 2007-04-02; baseline finish none → 2007-05-15 |
| 71 | Plan Project Configuration and Change Control | 2007-04-02 → 2007-04-20 (+18d) | 2007-04-06 → 2007-04-24 (+18d) | 5d → 0.55d |  | 29.25d → 15.97d |  | constraint none → finish no earlier than 2007-04-20; resources none → etavela; bgendleman; baseline start none → 2007-04-20; baseline finish none → 2007-04-24 |
| 72 | **Finalize Deliverables** |  | 2007-04-04 → 2007-05-15 (+41d) | 3d? → 31.25d |  | 28.25d → 0d |  | baseline start none → 2007-04-02; baseline finish none → 2007-05-15 |

| ID | Task | Start | Finish | Duration | Total float | Other |
| --- | --- | --- | --- | --- | --- | --- |
| 73 | Release Configuration Management Plan |  | 2007-04-02 → 2007-05-15 (+43d) | 1d? → 0.75d | 30.25d → 0d | baseline start none → 2007-04-02; baseline finish none → 2007-05-15 |
| 74 | G-Forge Implementation of the Change Control Process |  | 2007-04-04 → 2007-05-14 (+40d) | 3d → 2d | 28.25d → 0.5d | baseline start none → 2007-04-02; baseline finish none → 2007-05-14 |
| 75 | Inception Complete |  |  |  |  | constraint none → start no earlier than 2007-05-15; baseline start none → 2007-05-15; baseline finish none → 2007-05-15 |
| 76 | **Elaboration Phase** |  | 2007-05-16 → 2007-05-17 (+1d) | 1d? → 2.5d? |  | baseline start none → 2007-05-15; baseline finish none → 2007-05-17 |
| 77 | **Elaboration - Iteration 1** |  | 2007-05-15 → 2007-05-17 (+2d) | 0.5d → 2.5d | 0.5d → 0d | baseline start none → 2007-05-15; baseline finish none → 2007-05-17 |
| 78 | Iteration Post Mortem |  | 2007-05-15 → 2007-05-17 (+2d) | 4h → 20h | 0.5d → 0d | resources etavela; bgendleman; smatyas; jpike; rsrinavasa → smatyas; baseline start none → 2007-05-15; baseline finish none → 2007-05-17 |
| 79 | Elaboration - Iteration 2 |  |  |  | 0d → 1.5d | baseline start none → 2007-05-15; baseline finish none → 2007-05-16 |
| 80 | Elaboration - Iteration n |  |  |  | 0d → 1.5d | baseline start none → 2007-05-15; baseline finish none → 2007-05-16 |
| 81 | **Construction Phase** | 2007-05-16 → 2007-05-17 (+1d) | 2007-05-17 → 2007-05-18 (+1d) |  |  | baseline start none → 2007-05-17; baseline finish none → 2007-05-18 |
| 82 | Construction - Iteration 1 | 2007-05-16 → 2007-05-17 (+1d) | 2007-05-17 → 2007-05-18 (+1d) |  |  | baseline start none → 2007-05-17; baseline finish none → 2007-05-18 |
| 83 | Construction - Iteration 2 | 2007-05-16 → 2007-05-17 (+1d) | 2007-05-17 → 2007-05-18 (+1d) |  |  | baseline start none → 2007-05-17; baseline finish none → 2007-05-18 |
| 84 | Construction - Iteration n | 2007-05-16 → 2007-05-17 (+1d) | 2007-05-17 → 2007-05-18 (+1d) |  |  | baseline start none → 2007-05-17; baseline finish none → 2007-05-18 |
| 85 | **Transition Phase** | 2007-05-17 → 2007-05-18 (+1d) | 2007-05-18 → 2007-05-21 (+3d) |  |  | baseline start none → 2007-05-18; baseline finish none → 2007-05-21 |
| 86 | Transition - Iteration 1 | 2007-05-17 → 2007-05-18 (+1d) | 2007-05-18 → 2007-05-21 (+3d) |  |  | baseline start none → 2007-05-18; baseline finish none → 2007-05-21 |
| 87 | Transition - Iteration n | 2007-05-17 → 2007-05-18 (+1d) | 2007-05-18 → 2007-05-21 (+3d) |  |  | baseline start none → 2007-05-18; baseline finish none → 2007-05-21 |

## Version 4 (saved 2007-04-18)

Note of the change: updated from meeting with Eric

Last finish stays 2007-05-21.

Changed:

| ID | Task | Start | Finish | Duration | Complete | Total float |
| --- | --- | --- | --- | --- | --- | --- |
| 1 | **caArray 2.0** |  |  | 35.75d? → 35.9d? | 17% → 30% |  |
| 2 | **Inception Phase** |  |  |  | 18% → 32% | 3.75d → 3.9d |
| 3 | **Inception Iteration 1** |  |  |  | 18% → 32% | 3.75d → 3.9d |
| 4 | **Project Management** |  |  |  | 18% → 33% | 0d → 0.15d |
| 5 | Plan the project |  |  |  | 25% → 50% | 17.25d → 17.4d |
| 13 | **Requirements** |  |  | 30.35d → 30.5d | 27% → 28% |  |
| 15 | **Elicit Stakeholder Needs** |  |  | 22.75d → 22.9d |  | 4.65d → 4.75d |
| 16 | Live Meeting with NCICB Stakeholders |  | 2007-04-11 → 2007-04-12 (+1d) |  |  | 21.4d → 21.46d |
| 23 | Refine the System Definition |  | 2007-05-10 → 2007-05-04 (-6d) |  |  | 6.75d → 10.93d |
| 24 | **Implement Requirement and Test Traceability** |  | 2007-04-20 → 2007-04-19 (-1d) | 4.6d → 3.25d |  | 21.15d → 22.65d |
| 25 | Determine Approach |  | 2007-04-20 → 2007-04-19 (-1d) |  |  | 21.15d → 22.65d |
| 27 | **Finalize Deliverables** |  |  | 30.35d → 30.5d | 8% → 11% |  |
| 30 | Finalize Vision Document |  |  |  | 15% → 25% |  |
| 33 | Finalize Use Case Model | 2007-04-27 A |  |  | 0% → 10% | 0.75d → 0.85d |
| 34 | **Analysis and Design** |  | 2007-04-20 → 2007-04-23 (+3d) | 15d → 15.49d | 26% → 52% | 20.75d → 20.41d |
| 37 | Vocabulary Management Subsystem Design |  |  |  | 29% → 80% | 9.43d → 15.7d |
| 38 | Data Access Subsystem Design | 2007-04-09 A | 2007-04-20 → 2007-04-13 (-7d) | 3d → 2.75d | 0% → 82% | 0d → 5.29d |
| 39 | MAGE-OM Façade |  |  |  | 37% → 40% | 14.87d → 23.9d |
| 40 | **Finalize Deliverables** |  | 2007-04-19 → 2007-04-23 (+4d) | 6d → 8.19d |  | 22.45d → 20.41d |
| 41 | Release Candidate Software Architecture Document |  | 2007-04-19 → 2007-04-23 (+4d) |  |  | 22.45d → 20.41d |
| 42 | **Implementation** |  |  |  | 3% → 22% | 3.75d → 3.9d |
| 44 | Implement Vocabulary Subsystem | 2007-04-12 → 2007-04-13 A (+1d) |  |  | 0% → 25% | 9.43d → 9.08d |
| 45 | Implement MAGE-OM | 2007-04-10 A | 2007-04-30 → 2007-04-27 (-3d) |  | 0% → 50% | 14.87d → 16.52d |
| 46 | Implement Data Access | 2007-04-16 A | 2007-04-24 → 2007-04-30 (+6d) |  | 0% → 50% | -1.88d → -5.38d |
| 47 | Implement MAGE-OM Façade | 2007-04-19 → 2007-04-18 (-1d) |  |  |  | 3.75d → 3.9d |
| 48 | Implement Protocol Management |  |  | 2.1w → 2.2w |  | 4.43d → 4.08d |
| 52 | **Test** |  |  | 31.07d → 31.82d |  | 4.43d → 4.08d |
| 56 | **Finalize Deliverables** |  |  | 5d → 5.15d |  |  |
| 58 | **Environment** |  |  |  | 41% → 57% | 5.5d → 5.65d |
| 60 | **Set Up Tools** |  |  |  | 64% → 69% | 15.75d → 15.9d |
| 65 | Set Up Code Quality Tools |  |  |  | 50% → 80% | 30.25d → 30.4d |
| 66 | **Finalize Deliverables** | 2007-04-19 → 2007-04-17 A (-2d) |  | 17.25d → 19.25d | 0% → 32% | 1d → 1.15d |
| 67 | Release Development Case | 2007-05-14 A |  |  | 0% → 20% | 1d → 1.15d |
| 69 | Release Templates for the Project | 2007-04-19 → 2007-04-17 A (-2d) |  | 5.55d → 5.5d | 0% → 40% | 10.25d → 10.4d |
| 70 | **Configuration & Change Management** | 2007-04-02 A |  |  | 0% → 6% | 0d → 0.6d |
| 71 | Plan Project Configuration and Change Control |  | 2007-04-24 → 2007-04-20 (-4d) | 0.55d → 0.5d |  | 15.97d → 17d |
| 72 | **Finalize Deliverables** | 2007-04-02 A |  |  | 0% → 7% |  |
| 73 | Release Configuration Management Plan | 2007-04-02 A |  |  | 0% → 25% |  |

## Version 5 (saved 2007-04-25)

Last finish stays 2007-05-21. Complete tasks 8 → 11.

Changed:

| ID | Task | Start | Finish | Duration | Complete | Total float |
| --- | --- | --- | --- | --- | --- | --- |
| 1 | **caArray 2.0** |  |  |  | 30% → 31% |  |
| 2 | **Inception Phase** |  |  |  | 32% → 33% |  |
| 3 | **Inception Iteration 1** |  |  |  | 32% → 33% |  |
| 4 | **Project Management** |  |  |  | 33% → 36% |  |
| 6 | Plan Remainder of Initial Iteration |  |  |  | 50% → 80% | 12.93d → 12.9d |
| 8 | **Finalize Deliverables** | 2007-04-02 A |  |  | 0% → 14% |  |
| 9 | March Status Report | 2007-04-16 A | 2007-04-16 A |  | 0% → 100% | 2.75d → none |
| 13 | **Requirements** |  |  |  | 28% → 31% |  |
| 15 | **Elicit Stakeholder Needs** |  |  | 22.9d → 22.4d | 56% → 68% | 4.75d → 5.6d |
| 18 | Teleconference with Northwestern | 2007-04-20 A | 2007-04-20 A |  | 0% → 100% | 5.75d → none |
| 19 | Live Meeting with Georgetown | 2007-04-27 → 2007-04-23 A (-4d) | 2007-04-27 → 2007-04-23 A (-4d) |  | 0% → 100% | 4.75d → none |
| 20 | Live Meeting with Thomas Jefferson |  | 2007-05-04 → 2007-04-27 (-7d) |  |  | 4.75d → 6.15d |
| 21 | Live Meeting with U Pitt | 2007-05-04 → 2007-05-03 (-1d) |  |  |  | 4.75d → 5.6d |
| 23 | Refine the System Definition |  |  | 6.25d → 6.35d |  | 10.93d → 10.9d |
| 27 | **Finalize Deliverables** |  |  |  | 11% → 17% |  |
| 30 | Finalize Vision Document |  |  |  | 25% → 50% | 0.9d → 1d |
| 31 | Finalize Supplementary Spec | 2007-05-11 A |  |  | 0% → 10% |  |
| 33 | Finalize Use Case Model |  | 2007-05-04 → 2007-05-03 (-1d) |  |  | 0.85d → 1.1d |
| 56 | **Finalize Deliverables** |  |  | 5.15d → 4.9d |  | 6.75d → 6.9d |
| 57 | Release Test Plan |  |  | 2.5d → 2.6d |  | 6.75d → 6.9d |

## Version 6 (saved 2007-05-07)

Note of the change: update per 5.7.07 meeting

Last finish stays 2007-05-21. Complete tasks 11 → 14.

Changed:

| ID | Task | Start | Finish | Duration | Complete | Total float | Other |
| --- | --- | --- | --- | --- | --- | --- | --- |
| 1 | **caArray 2.0** |  |  |  | 31% → 47% |  |  |
| 2 | **Inception Phase** |  | 2007-05-15 → 2007-05-17 (+2d) | 32d → 33.3d | 33% → 50% | 3.9d → 2.6d |  |
| 3 | **Inception Iteration 1** |  | 2007-05-15 → 2007-05-17 (+2d) | 32d → 33.3d | 33% → 50% | 3.9d → 2.6d |  |
| 4 | **Project Management** |  |  |  | 36% → 49% |  |  |
| 6 | Plan Remainder of Initial Iteration |  | 2007-04-19 A |  | 80% → 100% | 12.9d → none |  |
| 7 | Plan for Next Iteration | 2007-05-07 A |  |  | 0% → 50% |  |  |
| 13 | **Requirements** |  |  |  | 31% → 48% |  |  |
| 14 | Define the Preliminary Vision |  | 2007-05-04 A |  | 50% → 100% | 5.6d → none |  |
| 24 | **Implement Requirement and Test Traceability** | 2007-04-16 A |  |  | 0% → 50% |  |  |
| 25 | Determine Approach | 2007-04-16 A |  |  | 0% → 50% |  |  |
| 26 | Manage Changing Requirements | 2007-04-27 A |  |  | 0% → 50% |  |  |
| 27 | **Finalize Deliverables** |  |  |  | 17% → 33% |  |  |
| 30 | Finalize Vision Document |  |  |  | 50% → 90% | 1d → 1.4d |  |
| 31 | Finalize Supplementary Spec |  |  |  | 10% → 50% |  |  |
| 33 | Finalize Use Case Model |  |  |  | 10% → 40% |  |  |
| 34 | **Analysis and Design** |  | 2007-04-23 → 2007-05-17 (+24d) | 15.49d → 33.3d | 52% → 58% | 20.41d → 2.6d |  |
| 40 | **Finalize Deliverables** | 2007-04-11 → 2007-05-14 (+33d) | 2007-04-23 → 2007-05-17 (+24d) | 8.19d → 3.3d |  | 20.41d → 2.6d |  |
| 41 | Release Candidate Software Architecture Document | 2007-04-11 → 2007-05-14 (+33d) | 2007-04-23 → 2007-05-17 (+24d) | 5d → 3d |  | 20.41d → 2.6d | constraint none → start no earlier than 2007-05-14 |
| 42 | **Implementation** |  |  |  | 22% → 48% |  |  |
| 46 | Implement Data Access |  |  |  | 50% → 90% |  |  |
| 48 | Implement Protocol Management | 2007-04-16 A |  |  | 0% → 90% | 4.08d → 2.7d |  |
| 49 | Implement Protocol User Interface (minimal) | 2007-05-09 A |  |  | 0% → 90% | 4.08d → 0d |  |
| 52 | **Test** | 2007-04-02 A |  |  | 0% → 10% |  |  |
| 53 | Meet with Indepdent QA | 2007-04-09 A |  |  | 0% → 50% |  |  |
| 54 | Implement System Tests Against Protocol Management | 2007-05-15 A |  |  | 0% → 50% |  |  |
| 55 | Analyze and Identify Test Approach | 2007-04-02 A |  |  | 0% → 25% |  |  |
| 58 | **Environment** |  |  |  | 57% → 66% |  |  |
| 60 | **Set Up Tools** |  |  |  | 69% → 78% |  |  |
| 62 | Set Up Continuous Integration | 2007-04-16 A | 2007-04-16 A |  | 0% → 100% | 7d → none |  |
| 66 | **Finalize Deliverables** |  |  |  | 32% → 44% |  |  |
| 67 | Release Development Case |  |  |  | 20% → 90% |  |  |
| 68 | Release Guidelines for the Project | 2007-04-20 A |  |  | 0% → 50% |  |  |
| 70 | **Configuration & Change Management** |  |  |  | 6% → 25% |  |  |
| 71 | Plan Project Configuration and Change Control | 2007-04-20 A |  |  | 0% → 50% |  |  |
| 72 | **Finalize Deliverables** |  |  |  | 7% → 20% |  |  |
| 73 | Release Configuration Management Plan |  |  |  | 25% → 75% |  |  |

## Version 7 (saved 2007-05-10)

Last finish stays 2007-05-21. Complete tasks 14 → 17.

Changed:

| ID | Task | Start | Finish | Complete | Total float |
| --- | --- | --- | --- | --- | --- |
| 1 | **caArray 2.0** |  |  | 47% → 56% |  |
| 2 | **Inception Phase** |  |  | 50% → 59% |  |
| 3 | **Inception Iteration 1** |  |  | 50% → 59% |  |
| 42 | **Implementation** |  |  | 48% → 73% |  |
| 44 | Implement Vocabulary Subsystem |  | 2007-05-08 A | 25% → 100% | 9.08d → none |
| 48 | Implement Protocol Management |  | 2007-05-09 A | 90% → 100% | 2.7d → none |
| 49 | Implement Protocol User Interface (minimal) |  | 2007-05-14 A | 90% → 100% | 0d → none |
| 50 | **Finalize Deliverables** | 2007-05-14 A |  | 0% → 50% |  |
| 51 | Release Architectural Prototype | 2007-05-14 A |  | 0% → 50% |  |
